# Office Building 14B01 Substructure Package

Schedule from Primavera P6, 2010-07-12 to 2010-11-15, data date 2010-07-01.

## Calendars

- Gama projects calender: Mon-Thu 08:00-16:00; Fri off; Sat-Sun 08:00-16:00. Exceptions (off unless hours are given): 2010-09-09.

## Resources

| Resource | Group |
| --- | --- |
| Form work labours | labor |
| Steel Fixing labours | labor |
| Pouring labours | labor |
| insulation & water proofing labours | labor |

## Schedule

| ID | WBS | Activity | Type | Duration | Start | Finish | Predecessors | Total float | Free float |
| --- | --- | --- | --- | --- | --- | --- | --- | --- | --- |
|  | 1 | **General** |  |  | 2010-07-12 | 2010-11-15 |  |  |  |
| A1000 |  | Start project | milestone | 0d | 2010-07-12 | 2010-07-12 |  | 0d |  |
| A1020 |  | Mobilization |  | 8d | 2010-07-12 | 2010-07-20 | A1000 | 100d |  |
| A1320 |  | Receive issue for construction drawings | milestone | 0d | 2010-07-12 | 2010-07-12 | A1000 | 2d | 1d |
| A1010 |  | Finish project | milestone | 0d | 2010-11-15 | 2010-11-15 | A2390, A2400, A2160, A2370, A2380, A2180 | 0d |  |
|  | 2 | **Engineering** |  |  | 2010-07-12 | 2010-08-29 |  |  |  |
|  | 1 | **Tower 1** |  |  | 2010-07-12 | 2010-08-18 |  |  |  |
|  | 1 | **Submittals** |  |  | 2010-07-12 | 2010-08-15 |  |  |  |
| A1140 |  | Submittal of All R.C raft dimension | milestone | 0d | 2010-07-12 | 2010-07-12 | A1000 FS+1d, A1320 | 1d | 0d |
| A1150 |  | Submittal of All column layout | milestone | 0d | 2010-07-12 | 2010-07-12 | A1000 FS+1d, A1320 | 3d | 0d |
| A1160 |  | Submittal of All R.C raft RFT&starters | milestone | 0d | 2010-07-21 | 2010-07-21 | A1000 FS+9d, A1320 | 96d | 0d |
| A1170 |  | Submittal of All basement columns & walls RFT | milestone | 0d | 2010-08-01 | 2010-08-01 | A1000 FS+18d, A1320 | 48d | 0d |
| A1180 |  | Submittal of All basement slab concrete dimension | milestone | 0d | 2010-08-08 | 2010-08-08 | A1000 FS+24d, A1320 | 67d | 0d |
| A1190 |  | Submittal of All basement slab RFT | milestone | 0d | 2010-08-15 | 2010-08-15 | A1000 FS+30d, A1320 | 61d | 0d |
|  | 2 | **Approvals** |  |  | 2010-07-15 | 2010-08-18 |  |  |  |
| A1141 |  | Approval of All R.C raft dimension | milestone | 0d | 2010-07-15 | 2010-07-15 | A1140 FS+3d | 1d | 0d |
| A1151 |  | Approval of All column layout | milestone | 0d | 2010-07-15 | 2010-07-15 | A1150 FS+3d | 3d | 2d |
| A1161 |  | Approval of All R.C raft RFT&starters | milestone | 0d | 2010-07-25 | 2010-07-25 | A1160 FS+3d | 96d |  |
| A1171 |  | Approval of All basement columns & walls RFT | milestone | 0d | 2010-08-04 | 2010-08-04 | A1170 FS+3d | 48d | 29d |
| A1181 |  | Approval of All basement slab concrete dimension | milestone | 0d | 2010-08-11 | 2010-08-11 | A1180 FS+3d | 67d | 36d |
| A1191 |  | Approval of All basement slab RFT | milestone | 0d | 2010-08-18 | 2010-08-18 | A1190 FS+3d | 61d | 30d |
|  | 3 | **Tank** |  |  | 2010-07-19 | 2010-07-22 |  |  |  |
| A1260 |  | submittals of all tank's shop drawings | milestone | 0d | 2010-07-19 | 2010-07-19 | A1000 FS+7d, A1320 | 0d |  |
| A2170 |  | Approval of all tank's shop drawings | milestone | 0d | 2010-07-22 | 2010-07-22 | A1260 FS+3d | 0d |  |

| ID | WBS | Activity | Type | Duration | Start | Finish | Predecessors | Total float | Free float | Constraint | Resources | location | type of work | detailed work |
| --- | --- | --- | --- | --- | --- | --- | --- | --- | --- | --- | --- | --- | --- | --- |
|  | 2 | **Tower 2** |  |  | 2010-07-21 | 2010-08-29 |  |  |  |  |  |  |  |  |
|  | 1 | **Submittals** |  |  | 2010-07-21 | 2010-08-25 |  |  |  |  |  |  |  |  |
| A1200 |  | Submittal of All R.C raft dimension | milestone | 0d | 2010-07-21 | 2010-07-21 | A1000 FS+9d, A1320 | 31d | 0d |  |  |  |  |  |
| A1210 |  | Submittal of All column layout | milestone | 0d | 2010-07-21 | 2010-07-21 | A1000 FS+9d, A1320 | 45d | 0d |  |  |  |  |  |
| A1220 |  | Submittal of All R.C raft RFT&starters | milestone | 0d | 2010-08-01 | 2010-08-01 | A1000 FS+18d, A1320 | 87d | 0d |  |  |  |  |  |
| A1230 |  | Submittal of All basement columns & walls RFT | milestone | 0d | 2010-08-08 | 2010-08-08 | A1000 FS+24d, A1320 | 82d | 0d |  |  |  |  |  |
| A1240 |  | Submittal of All basement slab concrete dimension | milestone | 0d | 2010-08-15 | 2010-08-15 | A1000 FS+30d, A1320 | 65d | 0d |  |  |  |  |  |
| A1250 |  | Submittal of All basement slab RFT | milestone | 0d | 2010-08-25 | 2010-08-25 | A1000 FS+39d, A1320 | 66d | 0d |  |  |  |  |  |
|  | 2 | **Approvals** |  |  | 2010-07-25 | 2010-08-29 |  |  |  |  |  |  |  |  |
| A1201 |  | Approval of All R.C raft dimension | milestone | 0d | 2010-07-25 | 2010-07-25 | A1200 FS+3d | 31d | 0d |  |  |  |  |  |
| A1211 |  | Approval of All column layout | milestone | 0d | 2010-07-25 | 2010-07-25 | A1210 FS+3d | 45d | 14d |  |  |  |  |  |
| A1221 |  | Approval of All R.C raft RFT&starters | milestone | 0d | 2010-08-04 | 2010-08-04 | A1220 FS+3d | 87d |  |  |  |  |  |  |
| A1231 |  | Approval of All basement columns & walls RFT | milestone | 0d | 2010-08-10 | 2010-08-10 | A1230 FS+2d | 82d |  |  |  |  |  |  |
| A1241 |  | Approval of All basement slab concrete dimension | milestone | 0d | 2010-08-18 | 2010-08-18 | A1240 FS+3d | 65d | 48d |  |  |  |  |  |
| A1251 |  | Approval of All basement slab RFT | milestone | 0d | 2010-08-29 | 2010-08-29 | A1250 FS+3d | 66d |  |  |  |  |  |  |
|  | 3 | **construction** |  |  | 2010-07-18 | 2010-11-15 |  |  |  |  |  |  |  |  |
|  | OFC | **Office building** |  |  | 2010-07-18 | 2010-11-15 |  |  |  |  |  |  |  |  |
|  | P1 | **Tower 1** |  |  | 2010-07-18 | 2010-10-25 |  |  |  |  |  |  |  |  |
|  | 3 | **R.C Raft** |  |  | 2010-07-18 | 2010-09-28 |  |  |  |  |  |  |  |  |
| A2410 |  | Formwork For R.C raft |  | 58d | 2010-07-18 | 2010-09-23 | A1141 FS+1d | 1d | 0d |  | Form work labours [480 h] | 01 | 02 | 02 |
| A2420 |  | Rebar For R.C raft |  | 60d | 2010-07-19 | 2010-09-27 | A2410 SS+1d, A1151 | 1d | 0d |  | Steel Fixing labours [2800 h] | 01 | 02 | 02 |
| A2780 |  | Pouring For R.C raft (area 1) |  | 1d | 2010-09-05 | 2010-09-05 | A2410 SS+6d, A2420 SS+5d | 0d |  | start on 2010-09-05 | Pouring labours [56 h] | 01 | 02 | 02 |
| A2790 |  | Pouring For R.C raft (area 2) |  | 1d | 2010-09-08 | 2010-09-08 | A2410 SS+9d, A2420 SS+8d | 0d | 57d | start on 2010-09-08 | Pouring labours [56 h] | 01 | 02 | 02 |
| A2700 |  | M&E conduits For R.C raft (by others) |  | 7d | 2010-09-18 | 2010-09-25 | A2420 SS+51d | 1d | 0d |  |  | 01 | 05 |  |
| A2440 |  | Pouring For R.C raft (area 3) |  | 1d | 2010-09-25 | 2010-09-25 | A2410, A2420 FS-3d | 22d | 0d |  | Pouring labours [160 h] | 01 | 02 | 02 |
| A2860 |  | Pouring For R.C raft (area 4) |  | 1d | 2010-09-28 | 2010-09-28 | A2420, A2410 FS+3d | 41d |  |  | Pouring labours [160 h] | 01 | 02 | 02 |

| ID | WBS | Activity | Duration | Start | Finish | Predecessors | Total float | Free float | Resources | location | type of work | detailed work |
| --- | --- | --- | --- | --- | --- | --- | --- | --- | --- | --- | --- | --- |
|  | 4 | **Basement Walls & Columns** |  | 2010-09-08 | 2010-10-09 |  |  |  |  |  |  |  |
| A2460 |  | Rebar For basement walls & col. | 23d | 2010-09-08 | 2010-10-05 | A2450 SS-5d, A1171 | 19d | 0d | Steel Fixing labours [2400 h] | 01 | 02 | 03 |
| A2450 |  | Formwork For basement walls & col. | 20d | 2010-09-15 | 2010-10-07 | A2780 SS+8d, A1151, A1171 | 18d | 0d | Form work labours [2400 h] | 01 | 02 | 03 |
| A2470 |  | Pouring For basement walls & col.(area 1) | 1d | 2010-09-22 | 2010-09-22 | A2450 SS+6d, A2460 SS+10d | 18d | 0d | Pouring labours [32 h] | 01 | 02 | 03 |
| A2870 |  | Pouring For basement walls & col.(area 2) | 1d | 2010-09-28 | 2010-09-28 | A2450 SS+11d, A2460 SS+15d | 26d | 0d | Pouring labours [32 h] | 01 | 02 | 03 |
| A2880 |  | Pouring For basement walls & col.(area 3) | 1d | 2010-10-03 | 2010-10-03 | A2450 SS+15d, A2460 SS+20d, A2440 FS+6d | 22d | 0d | Pouring labours [64 h] | 01 | 02 | 03 |
| A2890 |  | Pouring For basement walls & col.(area 4) | 1d | 2010-10-09 | 2010-10-09 | A2450, A2460 | 18d | 0d | Pouring labours [64 h] | 01 | 02 | 03 |
|  | 5 | **Basement Slab** |  | 2010-09-25 | 2010-10-18 |  |  |  |  |  |  |  |
| A2480 |  | Formwork&Rebar For basement Slab & stairs(area 1) | 7d | 2010-09-25 | 2010-10-02 | A1181, A2470 FS+1d, A1191 | 31d | 0d | Form work labours [480 h]; Steel Fixing labours [320 h] | 01 | 02 | 04 |
| A2900 |  | Formwork&Rebar For basement Slab & stairs(area 2) | 7d | 2010-09-30 | 2010-10-07 | A1181, A1191, A2870 FS+1d | 26d | 0d | Form work labours [480 h]; Steel Fixing labours [320 h] | 01 | 02 | 04 |
| A2800 |  | Pouring For basement Slab & stairs (Area 1) | 1d | 2010-10-03 | 2010-10-03 | A2480 | 31d | 13d | Pouring labours [32 h] | 01 | 02 | 04 |
| A2910 |  | Formwork&Rebar For basement Slab & stairs(area 3) | 7d | 2010-10-05 | 2010-10-12 | A1191, A1181, A2880 FS+1d | 22d | 0d | Form work labours [1920 h]; Steel Fixing labours [1280 h] | 01 | 02 | 04 |
| A2810 |  | Pouring For basement Slab & stairs (Area 2) | 1d | 2010-10-09 | 2010-10-09 | A2900 | 26d | 8d | Pouring labours [32 h] | 01 | 02 | 04 |
| A2920 |  | Formwork&Rebar For basement Slab & stairs(area 4) | 7d | 2010-10-10 | 2010-10-17 | A1191, A1181, A2890 | 18d | 0d | Form work labours [1920 h]; Steel Fixing labours [1280 h] | 01 | 02 | 04 |
| A2510 |  | Pouring For basement Slab & stairs ( Area 3) | 1d | 2010-10-13 | 2010-10-13 | A2910 | 22d | 4d | Pouring labours [64 h] | 01 | 02 | 04 |
| A2930 |  | Pouring For basement Slab & stairs ( Area 4) | 1d | 2010-10-18 | 2010-10-18 | A2920 | 18d | 0d | Pouring labours [64 h] | 01 | 02 | 04 |
|  | 6 | **Insulation & Water Proofing** |  | 2010-09-23 | 2010-10-16 |  |  |  |  |  |  |  |
| A2530 |  | Isolation For Foundation bituminous emulsion | 9d | 2010-09-23 | 2010-10-03 | A2470 | 33d | 15d | insulation & water proofing labours [1280 h] | 01 | 04 |  |
| A2520 |  | Water proofing bituminous membrane | 15d | 2010-09-27 | 2010-10-13 | A2470 FS+3d | 18d | 0d | insulation & water proofing labours [400 h] | 01 | 04 |  |
| A2540 |  | Water proofing protection layer cartonal | 15d | 2010-09-29 | 2010-10-16 | A2520 FS-13d | 18d | 0d | insulation & water proofing labours [1360 h] | 01 | 04 |  |
|  | 1 | **Earth Work For Tower 1** |  | 2010-10-02 | 2010-10-23 |  |  |  |  |  |  |  |
| A2370 |  | Backfilling Around Foundation | 19d | 2010-10-02 | 2010-10-23 | A2540 SS+2d, A2540 FF+6d, A2530 FF+2d | 18d | 0d |  |  |  |  |
|  | 2 | **Handingover For Tower 1** |  | 2010-10-24 | 2010-10-25 |  |  |  |  |  |  |  |
| A2390 |  | Handingover | 2d | 2010-10-24 | 2010-10-25 | A2370, A2510 FS+4d, A2800 FS+4d, A2810 FS+4d, A2930 FS+4d | 18d |  |  |  |  |  |

| ID | WBS | Activity | Duration | Start | Finish | Predecessors | Total float | Free float | Resources | location | type of work | detailed work |
| --- | --- | --- | --- | --- | --- | --- | --- | --- | --- | --- | --- | --- |
|  | P2 | **Tower 2** |  | 2010-08-05 | 2010-11-14 |  |  |  |  |  |  |  |
|  | 3 | **R.C Raft** |  | 2010-08-05 | 2010-10-12 |  |  |  |  |  |  |  |
| A2550 |  | Formwork For R.C raft | 56d | 2010-08-05 | 2010-10-10 | A1201 FS+9d | 31d | 0d | Form work labours [480 h] | 01 | 02 | 02 |
| A2560 |  | Rebar For R.C raft | 48d | 2010-08-15 | 2010-10-10 | A1211 FS+3d, A2550 SS+8d | 31d |  | Steel Fixing labours [2800 h] | 01 | 02 | 02 |
| A2570 |  | M&E conduits For R.C raft (by others) | 7d | 2010-09-26 | 2010-10-03 | A2700 | 1d | 0d |  | 01 | 05 |  |
| A2580 |  | Pouring For R.C raft (Area 1) | 1d | 2010-10-05 | 2010-10-05 | A2570 FS+1d | 1d | 0d | Pouring labours [56 h] | 01 | 02 | 02 |
| A2820 |  | Pouring For R.C raft (Area 2) | 1d | 2010-10-07 | 2010-10-07 | A2580 FS+1d | 3d | 0d | Pouring labours [56 h] | 01 | 02 | 02 |
| A2830 |  | Pouring For R.C raft (Area 3) | 1d | 2010-10-10 | 2010-10-10 | A2820 FS+1d | 3d | 0d | Pouring labours [160 h] | 01 | 02 | 02 |
| A2940 |  | Pouring For R.C raft (Area 4) | 1d | 2010-10-12 | 2010-10-12 | A2830 FS+1d | 3d | 0d | Pouring labours [160 h] | 01 | 02 | 02 |
|  | 4 | **Basement Walls & Columns** |  | 2010-09-08 | 2010-10-28 |  |  |  |  |  |  |  |
| A2600 |  | Rebar For basement walls & col. | 34d | 2010-09-08 | 2010-10-19 | A2590 FF-3d | 24d |  | Steel Fixing labours [2400 h] | 01 | 02 | 03 |
| A2590 |  | Formwork For basement walls & col. | 32d | 2010-09-15 | 2010-10-21 | A2940 FF+8d | 21d | 0d | Form work labours [2400 h] | 01 | 02 | 03 |
| A2610 |  | Pouring For basement walls & col.(Area 1) | 1d | 2010-10-13 | 2010-10-13 | A2580 FS+6d | 1d | 0d | Pouring labours [32 h] | 01 | 02 | 03 |
| A2950 |  | Pouring For basement walls & col.(Area 2) | 1d | 2010-10-18 | 2010-10-18 | A2820 FS+8d | 13d | 0d | Pouring labours [32 h] | 01 | 02 | 03 |
| A2960 |  | Pouring For basement walls & col.(Area 3) | 1d | 2010-10-23 | 2010-10-23 | A2830 FS+10d | 9d | 0d | Pouring labours [64 h] | 01 | 02 | 03 |
| A2970 |  | Pouring For basement walls & col.(Area 4) | 1d | 2010-10-28 | 2010-10-28 | A2940 FS+13d | 3d | 0d | Pouring labours [64 h] | 01 | 02 | 03 |
|  | 5 | **Basement Slab** |  | 2010-10-16 | 2010-11-09 |  |  |  |  |  |  |  |
| A2620 |  | Formwork&Rebar For basement Slab & stairs(Area 1) | 7d | 2010-10-16 | 2010-10-23 | A2610 FS+1d, A1241 | 17d | 0d | Form work labours [480 h]; Steel Fixing labours [320 h] | 01 | 02 | 04 |
| A2990 |  | Formwork&Rebar For basement Slab & stairs(Area 2) | 7d | 2010-10-20 | 2010-10-27 | A1241, A2950 FS+1d | 13d | 0d | Form work labours [480 h]; Steel Fixing labours [320 h] | 01 | 02 | 04 |
| A2650 |  | Pouring For basement Slab & stairs (Area 1) | 1d | 2010-10-24 | 2010-10-24 | A2620 | 17d | 16d | Pouring labours [32 h] | 01 | 02 | 04 |
| A3000 |  | Formwork&Rebar For basement Slab & stairs(Area 3) | 7d | 2010-10-25 | 2010-11-01 | A1241, A2960 FS+1d | 9d | 0d | Form work labours [1920 h]; Steel Fixing labours [1280 h] | 01 | 02 | 04 |
| A2840 |  | Pouring For basement Slab & stairs (Area 2) | 1d | 2010-10-28 | 2010-10-28 | A2990 | 13d | 12d | Pouring labours [32 h] | 01 | 02 | 04 |
| A3010 |  | Formwork&Rebar For basement Slab & stairs(Area 4) | 7d | 2010-11-01 | 2010-11-08 | A1241, A2970 FS+2d | 3d | 0d | Form work labours [1920 h]; Steel Fixing labours [1280 h] | 01 | 02 | 04 |
| A2850 |  | Pouring For basement Slab & stairs (Area 3) | 1d | 2010-11-02 | 2010-11-02 | A3000 | 9d | 8d | Pouring labours [64 h] | 01 | 02 | 04 |
| A2980 |  | Pouring For basement Slab & stairs (Area 4) | 1d | 2010-11-09 | 2010-11-09 | A3010 | 3d | 2d | Pouring labours [64 h] | 01 | 02 | 04 |

| ID | WBS | Activity | Type | Duration | Start | Finish | Predecessors | Total float | Free float | Resources | location | type of work | detailed work |
| --- | --- | --- | --- | --- | --- | --- | --- | --- | --- | --- | --- | --- | --- |
|  | 6 | **Insulation & Water Proofing** |  |  | 2010-10-10 | 2010-11-04 |  |  |  |  |  |  |  |
| A2660 |  | Isolation For Foundation bituminous emulsion |  | 6d | 2010-10-10 | 2010-10-16 | A2580 FS+3d | 6d | 5d | insulation & water proofing labours [1280 h] | 01 | 04 |  |
| A2670 |  | Water proofing bituminous membrane |  | 14d | 2010-10-18 | 2010-11-02 | A2610 FS+3d | 1d | 0d | insulation & water proofing labours [400 h] | 01 | 04 |  |
| A2680 |  | Water proofing protection layer cartonal |  | 14d | 2010-10-20 | 2010-11-04 | A2670 SS+2d | 1d | 0d | insulation & water proofing labours [1360 h] | 01 | 04 |  |
|  | 1 | **Earth Work For Tower 2** |  |  | 2010-10-23 | 2010-11-11 |  |  |  |  |  |  |  |
| A2380 |  | Backfilling Around Foundation |  | 18d | 2010-10-23 | 2010-11-11 | A2660, A2680 SS+2d | 1d | 0d |  |  |  |  |
|  | 2 | **Handingover For Tower 2** |  |  | 2010-11-13 | 2010-11-14 |  |  |  |  |  |  |  |
| A2400 |  | Handingover |  | 2d | 2010-11-13 | 2010-11-14 | A2650, A2380, A2850, A2840, A2980 | 1d |  |  |  |  |  |
|  | TANK | **Tank** |  |  | 2010-09-05 | 2010-11-15 |  |  |  |  |  |  |  |
| A2060 |  | Formworks for R.C raft |  | 2d | 2010-09-05 | 2010-09-06 | A2170 FS+37d | 0d |  | Form work labours [80 h] | 03 | 02 | 02 |
| A2070 |  | Rebar for R.C raft |  | 3d | 2010-09-05 | 2010-09-07 | A2060 SS | 0d |  | Steel Fixing labours [120 h] | 03 | 02 | 02 |
| A2079 |  | M&E conduits For R.C raft (by others) | milestone | 0d | 2010-09-16 | 2010-09-16 | A2070 FS+7d | 0d |  |  |  |  |  |
| A2080 |  | Pouring For R.C raft |  | 1d | 2010-09-18 | 2010-09-18 | A2070, A2079 | 0d |  | Pouring labours [40 h] | 03 | 02 | 02 |
| A2090 |  | Formwork For Tank walls |  | 8d | 2010-09-20 | 2010-09-28 | A2080 FS+1d | 0d |  | Form work labours [240 h] | 03 | 02 | 03 |
| A2100 |  | Rebar For Tank walls |  | 6d | 2010-09-22 | 2010-09-28 | A2090 SS+2d | 0d |  | Steel Fixing labours [120 h] | 03 | 02 | 03 |
| A2109 |  | M&E conduits For R.C walls (by others) | milestone | 0d | 2010-09-27 | 2010-09-27 | A2100 FS-2d | 1d |  |  |  |  |  |
| A2110 |  | Pouring For Tank walls |  | 1d | 2010-09-30 | 2010-09-30 | A2100 FS+1d, A2109 FS+2d | 0d |  | Pouring labours [40 h] | 03 | 02 | 03 |
| A2120 |  | Formwork For Tank Slab |  | 12d | 2010-10-02 | 2010-10-14 | A2110 | 0d |  | Form work labours [120 h] | 03 | 02 | 04 |
| A2130 |  | Rebar For Tank Slab |  | 6d | 2010-10-14 | 2010-10-20 | A2120 FS-1d | 0d |  | Steel Fixing labours [160 h] | 03 | 02 | 04 |
| A2119 |  | M&E conduits For tank's slab (by others) | milestone | 0d | 2010-10-20 | 2010-10-20 | A2130 FF | 0d |  |  |  |  |  |
| A2140 |  | Pouring For Tank slab |  | 1d | 2010-10-23 | 2010-10-23 | A2130, A2119 FS+1d | 0d |  | Pouring labours [40 h] | 03 | 02 | 04 |
| A2150 |  | Internal insulation |  | 5d | 2010-10-31 | 2010-11-04 | A2140 FS+6d | 0d |  |  | 03 | 04 |  |
| A2160 |  | External insulation |  | 5d | 2010-11-06 | 2010-11-10 | A2150 | 0d |  |  | 03 | 04 |  |
| A2180 |  | Testing & Handingover |  | 4d | 2010-11-11 | 2010-11-15 | A2160 | 0d |  |  |  |  |  |

## Activity codes

| Code | Value | Meaning |
| --- | --- | --- |
| detailed work | 02 | R.C foundation |
| detailed work | 03 | columns and walls |
| detailed work | 04 | slab |
| location | 01 | Part 1 |
| location | 03 | Tank |
| type of work | 02 | concrete works |
| type of work | 04 | insulation works |
| type of work | 05 | electro mrchanical work |
