# Beyti (BASELINE- F.M.)

Schedule from Primavera P6, 2011-08-25 to 2012-04-01, data date 2011-08-25, costs in EGP.

## Calendars

- Beyti: Mon-Thu 08:00-16:00; Fri off; Sat-Sun 08:00-16:00. Exceptions (off unless hours are given): 2011-08-27 to 2011-09-01 08:00-16:00, 2011-09-03 to 2011-09-08 08:00-16:00, 2011-11-05 to 2011-11-08, 2011-11-13 to 2011-11-17 08:00-16:00, 2011-11-27.
- walkable calendar: Mon-Thu 08:00-12:00, 13:00-17:00; Fri off; Sat-Sun 08:00-12:00, 13:00-17:00. Exceptions (off unless hours are given): 2011-11-05 to 2011-11-10, 2011-11-27, 2011-12-18 to 2011-12-22, 2011-12-24 to 2011-12-29, 2011-12-31.

## Resources

| Resource | Group | Unit | Rate |
| --- | --- | --- | --- |
| CASH | material |  | 1 |
| CARPENTER | labor |  |  |
| P.C. CONCRETE | material |  |  |
| STEEL LABOUR | labor |  |  |
| R.C. CONCRETE | material |  |  |
| STEEL STRUCTURE | material | ton |  |
| CASH-2 | material |  |  |
| SANDWICH PANEL FOR WALLS 120MM THK | material | m2 |  |
| POLYURETHANE | material | m2 |  |
| EPOXY PAINTER | labor |  |  |
| SANDWICH PANEL FOR WALLS 120MM(FIRE RATED) | material | m2 |  |
| Painter | labor |  |  |
| STEEL STRUCTURE LABOUR | labor |  |  |
| POLYETHELENE SHEET 400M | material | m2 |  |
| SANDWICH PANEL FOR ROOF 150MM THK | material | m2 |  |
| Brickwork Labor | labor |  |  |
| BRICKS | material | m2 |  |
| plastering worker | labor |  |  |

## Schedule

| ID | WBS | Activity | Type | Duration | Start | Finish | Predecessors | Total float | Free float | Constraint | user_text1 | TYPE OF WORK |
| --- | --- | --- | --- | --- | --- | --- | --- | --- | --- | --- | --- | --- |
|  | BEYTI-REV A | **Project Milestones & key dates** |  |  | 2011-08-25 | 2012-04-01 |  |  |  |  |  |  |
| Ms 100 |  | Letter of Acceptance | milestone | 0d | 2011-08-25 | 2011-08-25 |  | 0d |  |  |  |  |
| Ms 105 |  | Site handing over to the contractor | milestone | 0d | 2011-09-17 | 2011-09-17 | Ms 100 FS+19d | 0d |  | start on 2011-09-17 |  |  |
| Ms 106 |  | Contract agreement(to be verified) | milestone | 0d | 2011-09-17 | 2011-09-17 | Ms 105 | 0d |  |  |  |  |
| Ms 107 |  | Receive advanced payment(to be verified) | milestone | 0d | 2011-09-17 | 2011-09-17 | Ms 106 | 0d |  |  |  |  |
| Ms 108 |  | Commencement date(receive advanced payment) | milestone | 0d | 2011-09-17 | 2011-09-17 | Ms 107 | 0d |  |  | Ms 100 |  |
| Ms 110 |  | Mobilization & temporary facilities |  | 7d | 2011-09-17 | 2011-09-24 | Ms 108 | 10d | 0d |  | Ms 110 |  |
| Ms 111 |  | Site survey |  | 7d | 2011-09-25 | 2011-10-02 | Ms 110 | 13d | 0d |  | Ms 111 |  |
| Ms 190 |  | Soil Investigation Report |  | 15d | 2011-09-25 | 2011-10-11 | Ms 110 | 32d | 19d |  | Ms 190 |  |
| QA 001 |  | Internal quality audit #1 |  | 7d | 2011-11-19 | 2011-11-26 | Ms 108 FS+48d | 108d |  |  |  |  |
| QA 002 |  | Internal quality audit #2 |  | 7d | 2012-02-18 | 2012-02-25 | Ms 108 FS+125d | 31d |  |  |  |  |
| Ms 130 |  | UHT FINISH DATE | milestone | 0d | 2012-03-17 | 2012-03-17 | UHT 220, UHT 250, UHT 200 | 2d | 0d |  | Ms 130 |  |
| Ms 160 |  | Juice preparation finish dates | milestone | 0d | 2012-03-25 | 2012-03-25 | JP-A150, JP-A320, JP-A260, JP-A280, JP-A190, JP-A230, JP-A310 | 6d |  |  | Ms 160 |  |
| Ms 120 |  | As built drawings | milestone | 0d | 2012-03-27 | 2012-03-27 | SD 300 | 4d |  |  | Ms 120 |  |
| Ms 180 |  | Snag list finish dates | milestone | 0d | 2012-03-27 | 2012-03-27 | JP-A320, UHT 250, PET-Z1-AR-290, PET-Z2-AR-260 | 4d |  |  | Ms 180 |  |
| Ms 210 |  | Demobilization & Dismantling all temporary facilities |  | 2d | 2012-03-28 | 2012-03-29 | Ms 130 FS+9d | 2d |  |  |  |  |
| Ms 170 |  | Pet filling finish date | milestone | 0d | 2012-04-01 | 2012-04-01 | PET-Z1-CC-280, PET-Z1-AR-350, PET-Z1-AR-140, PET-Z1-AR-250, PET-Z2-AR-260, PET-Z1-AR-260, PET-Z1-AR-330, PET-Z1-AR-290, PET-Z2-AR-190, PET-Z2-AR-240, PET-Z2-AR-210, PET-Z2-AR-220, PET-Z1-AR-120, PET-Z1-AR-200, PET-Z1-AR-180, PET-Z1-AR-270, PET-Z2-AR-280, PET-Z1-AR-340, PET-Z1-CC-290, PET-Z1-AR-220, PET-Z1-AR-220 FF, PET-Z2-AR-130 | 0d |  |  | Ms 170 |  |
| Ms 200 |  | Project completion & final handing over | milestone | 0d | 2012-04-01 | 2012-04-01 | Ms 180, Ms 130, QA 001, QA 002, Ms 160, Ms 170, Ms 120 | 0d |  |  | Ms 200 |  |
|  | 1 | **Material** |  |  | 2011-09-21 | 2012-02-12 |  |  |  |  |  |  |
|  | 15 | **Masonry** |  |  | 2011-10-10 | 2011-11-21 |  |  |  |  |  |  |
| MT-1220 |  | Material submittal |  | 3d | 2011-10-10 | 2011-10-12 | Ms 108 FS+20d | 21d | 0d |  |  | arch |
| MT-1230 |  | Material approval |  | 3d | 2011-11-19 | 2011-11-21 | MT-1220 FF+28d, MT-1220 SS+28d | 21d | 0d |  |  | arch |
|  | 13 | **Acrylic paint** |  |  | 2012-01-08 | 2012-02-12 |  |  |  |  |  |  |
| MT-1340 |  | Material submittal |  | 3d | 2012-01-08 | 2012-01-10 | Ms 108 FS+90d | 20d | 0d |  |  | arch |
| MT-1350 |  | Material approval |  | 3d | 2012-02-09 | 2012-02-12 | MT-1340 FF+28d, MT-1340 SS+28d | 20d | 1d |  |  | arch |

| ID | WBS | Activity | Duration | Start | Finish | Predecessors | Total float | Free float | TYPE OF WORK |
| --- | --- | --- | --- | --- | --- | --- | --- | --- | --- |
|  | 12 | **Epoxy** |  | 2011-12-27 | 2012-01-31 |  |  |  |  |
| MT-1360 |  | Material submittal | 3d | 2011-12-27 | 2011-12-29 | Ms 108 FS+80d | 2d | 0d | arch |
| MT-1370 |  | Material approval | 3d | 2012-01-29 | 2012-01-31 | MT-1360 SS+28d, MT-1360 FF+28d | 2d | 0d | arch |
|  | 16 | **Steel ladder** |  | 2011-12-27 | 2012-01-31 |  |  |  |  |
| MT-1240 |  | Material submittal | 3d | 2011-12-27 | 2011-12-29 | Ms 108 FS+80d | 32d | 0d | arch |
| MT-1250 |  | Material approval | 3d | 2012-01-29 | 2012-01-31 | MT-1240 FF+28d, MT-1240 SS+28d | 32d | 0d | arch |
|  | 14 | **Sand trap louvers** |  | 2012-01-08 | 2012-02-12 |  |  |  |  |
| MT-1320 |  | Material submittal | 3d | 2012-01-08 | 2012-01-10 | Ms 108 FS+90d | 17d | 0d | arch |
| MT-1330 |  | Material approval | 3d | 2012-02-09 | 2012-02-12 | MT-1320 SS+28d, MT-1320 FF+28d | 17d | 0d | arch |
|  | 17 | **Polyethylene sheet** |  | 2011-10-10 | 2011-11-21 |  |  |  |  |
| MT-1260 |  | Material submittal | 3d | 2011-10-10 | 2011-10-12 | Ms 108 FS+20d | 40d | 0d | arch |
| MT-1270 |  | Material approval | 3d | 2011-11-19 | 2011-11-21 | MT-1260 SS+28d, MT-1260 FF+28d | 40d | 27d | arch |
|  | 18 | **Polyurethane floors** |  | 2011-10-16 | 2011-11-28 |  |  |  |  |
| MT-1280 |  | Material submittal | 3d | 2011-10-16 | 2011-10-18 | Ms 108 FS+25d | 0d |  | arch |
| MT-1290 |  | Material approval | 3d | 2011-11-24 | 2011-11-28 | MT-1280 FF+28d, MT-1280 SS+28d | 0d |  | arch |
|  | 19 | **Polystyrene sheet** |  | 2011-10-22 | 2011-12-04 |  |  |  |  |
| MT-1300 |  | Material submittal | 3d | 2011-10-22 | 2011-10-24 | Ms 108 FS+30d | 87d | 0d | arch |
| MT-1310 |  | Material approval | 3d | 2011-12-01 | 2011-12-04 | MT-1300 FF+28d, MT-1300 SS+28d | 87d | 61d | arch |
|  | 3 | **Sandwich panel** |  | 2011-09-27 | 2011-11-01 |  |  |  |  |
| MT-1000 |  | Material submittal | 3d | 2011-09-27 | 2011-09-29 | Ms 108 FS+9d | 23d | 0d | arch |
| MT-1090 |  | Material approval | 3d | 2011-10-30 | 2011-11-01 | MT-1000 SS+28d, MT-1000 FF+28d | 23d | 0d | arch |
|  | 9 | **Steel structure paints** |  | 2011-10-02 | 2011-11-12 |  |  |  |  |
| MT-1030 |  | Material submittal | 2d | 2011-10-02 | 2011-10-03 | Ms 108 FS+13d | 83d | 0d | arch |
| MT-1140 |  | Material approval | 2d | 2011-11-03 | 2011-11-12 | MT-1030 SS+28d, MT-1030 FF+28d | 83d | 62d | arch |

| ID | WBS | Activity | Duration | Start | Finish | Predecessors | Total float | Free float | TYPE OF WORK |
| --- | --- | --- | --- | --- | --- | --- | --- | --- | --- |
|  | 8 | **Galvanized steel flashing** |  | 2011-12-04 | 2012-01-07 |  |  |  |  |
| MT-1080 |  | Material submittal | 2d | 2011-12-04 | 2011-12-05 | Ms 108 FS+60d | 63d | 0d | arch |
| MT-1190 |  | Material approval | 2d | 2012-01-05 | 2012-01-07 | MT-1080 FF+28d, MT-1080 SS+28d | 63d | 49d | arch |
|  | 1 | **Corrugated sheets** |  | 2011-12-04 | 2012-01-07 |  |  |  |  |
| MT-1100 |  | Material submittal | 2d | 2011-12-04 | 2011-12-05 | Ms 108 FS+60d | 41d | 0d | arch |
| MT-1200 |  | Material approval | 2d | 2012-01-05 | 2012-01-07 | MT-1100 SS+28d, MT-1100 FF+28d | 41d | 15d | arch |
|  | 11 | **Steel doors&hardware** |  | 2011-09-21 | 2011-10-25 |  |  |  |  |
| MT-1010 |  | Material submittal | 2d | 2011-09-21 | 2011-09-22 | Ms 108 FS+4d | 16d | 0d | arch |
| MT-1120 |  | Material approval | 2d | 2011-10-24 | 2011-10-25 | MT-1010 FF+28d, MT-1010 SS+28d | 16d | 13d | arch |
|  | 10 | **Stainless steel doors** |  | 2011-10-06 | 2011-11-16 |  |  |  |  |
| MT-1070 |  | Material submittal | 2d | 2011-10-06 | 2011-10-08 | Ms 108 FS+17d | 3d | 0d | arch |
| MT-1180 |  | Material approval | 2d | 2011-11-15 | 2011-11-16 | MT-1070 SS+28d, MT-1070 FF+28d | 3d | 0d | arch |
|  | 4 | **Roll up shutter door** |  | 2011-10-06 | 2011-11-16 |  |  |  |  |
| MT-1060 |  | Material submittal | 2d | 2011-10-06 | 2011-10-08 | Ms 108 FS+17d | 3d | 0d | arch |
| MT-1170 |  | Material approval | 2d | 2011-11-15 | 2011-11-16 | MT-1060 SS+28d, MT-1060 FF+28d | 3d | 0d | arch |
|  | 5 | **Over head door** |  | 2011-10-06 | 2011-11-16 |  |  |  |  |
| MT-1040 |  | Material submittal | 2d | 2011-10-06 | 2011-10-08 | Ms 108 FS+17d | 3d | 0d | arch |
| MT-1150 |  | Material approval | 2d | 2011-11-15 | 2011-11-16 | MT-1040 FF+28d, MT-1040 SS+28d | 3d | 0d | arch |
|  | 6 | **Aluminum windows** |  | 2011-11-30 | 2012-01-09 |  |  |  |  |
| MT-1050 |  | Material submittal | 7d | 2011-11-30 | 2011-12-07 | Ms 110 FS+50d | 10d | 0d | arch |
| MT-1160 |  | Material approval | 7d | 2012-01-02 | 2012-01-09 | MT-1050 FF+28d, MT-1050 SS+28d | 10d | 0d | arch |
|  | 7 | **walk on ceiling** |  | 2011-10-01 | 2011-11-16 |  |  |  |  |
| MT-1020 |  | Material submittal | 7d | 2011-10-01 | 2011-10-08 | Ms 108 FS+12d | 1d | 0d | arch |
| MT-1130 |  | Material approval | 7d | 2011-11-02 | 2011-11-16 | MT-1020 SS+28d, MT-1020 FF+28d | 1d | 0d | arch |

| ID | WBS | Activity | Type | Duration | Start | Finish | Predecessors | Total float | Free float | TYPE OF WORK | user_text1 |
| --- | --- | --- | --- | --- | --- | --- | --- | --- | --- | --- | --- |
|  | 2 | **Rain water gutter** |  |  | 2011-12-04 | 2012-01-07 |  |  |  |  |  |
| MT-1110 |  | Material submittal |  | 2d | 2011-12-04 | 2011-12-05 | Ms 108 FS+60d | 47d | 0d | arch |  |
| MT-1210 |  | Material approval |  | 2d | 2012-01-05 | 2012-01-07 | MT-1110 SS+28d, MT-1110 FF+28d | 47d | 20d | arch |  |
|  | Procurement | **Procurement** |  |  | 2011-09-25 | 2012-03-15 |  |  |  |  |  |
|  | Procurement | **Purchase order** |  |  | 2011-09-25 | 2012-02-04 |  |  |  |  |  |
| PO 120 |  | Steel structure purchase order | milestone | 0d | 2011-09-25 | 2011-09-25 | Ms 108 FS+7d | 13d | 0d | civil | PO 120 |
| PO 110 |  | Sandwich panel purchase order | milestone | 0d | 2011-11-15 | 2011-11-15 | Ms 108 FS+7d, MT-1090 FS+5d | 23d | 0d | arch | PO 110 |
| PO 130 |  | Walk on ceiling purchase order | milestone | 0d | 2011-11-20 | 2011-11-20 | Ms 108 FS+7d, MT-1130 FS+2d | 1d | 0d | arch | PO 130 |
| PO 150 |  | Guard bollard purchase order | milestone | 0d | 2011-11-30 | 2011-11-30 | Ms 108 FS+57d | 13d | 0d | arch |  |
| PO 100 |  | Polyurethane purchase order | milestone | 0d | 2011-12-01 | 2011-12-01 | MT-1290 FS+2d | 0d |  | arch | PO 100 |
| PO 140 |  | Metal works purchase order | milestone | 0d | 2011-12-01 | 2011-12-01 | Ms 108 FS+7d, SD 280, SD 290 | 22d | 0d | metal | PO 140 |
| PO 190 |  | Doors purchase orders | milestone | 0d | 2011-12-17 | 2011-12-17 | SD 260, Ms 108 FS+7d | 3d | 0d | metal | PO 140 |
| PO 180 |  | Windows purchase order | milestone | 0d | 2012-02-04 | 2012-02-04 | Ms 108 FS+7d, SD 270 | 10d | 0d | metal | PO 140 |
|  | Delivery date | **Delivery date** |  |  | 2011-12-15 | 2012-03-15 |  |  |  |  |  |
| DD110 |  | Steel structure delivery on site |  | 12d | 2011-12-15 | 2011-12-28 | SD 240 FS+35d | 13d | 0d | civil | DD110 |
| DD100 |  | Sandwich panel delivery on site | milestone | 0d | 2012-01-08 | 2012-01-08 | SD 190 FS+30d | 23d | 0d | arch | DD100 |
| DD170 |  | Guard bollard delivery on site | milestone | 0d | 2012-02-08 | 2012-02-08 | PO 150 FS+60d | 13d | 0d | arch |  |
| DD130 |  | Metal works delivery on site | milestone | 0d | 2012-02-09 | 2012-02-09 | PO 140 FS+60d | 22d | 13d | metal | DD130 |
| DD150 |  | Steel stairs Delivery on site | milestone | 0d | 2012-02-13 | 2012-02-13 | MT-1250 FS+10d | 32d | 0d | metal |  |
| DD120 |  | Delivery of walk-on-ceiling laminated with electrostatic galvanized steel | milestone | 0d | 2012-02-18 | 2012-02-18 | SD 170 FS+41d | 1d | 0d | arch | DD120 |
| DD210 |  | Doors delivery on site | milestone | 0d | 2012-02-25 | 2012-02-25 | PO 190 FS+60d | 3d | 0d | metal | DD130 |
| DD160 |  | Roll up shutter doors delivery on site | milestone | 0d | 2012-03-07 | 2012-03-07 | PO 190 FS+70d | 4d | 0d | arch |  |
| DD200 |  | Windows delivery on site | milestone | 0d | 2012-03-10 | 2012-03-10 | PO 180 FS+30d | 10d | 0d | metal | DD130 |
| DD140 |  | Polyurethane delivery on site | milestone | 0d | 2012-03-15 | 2012-03-15 | PO 100 FS+90d | 0d |  | arch | DD140 |

| ID | WBS | Activity | Duration | Start | Finish | Predecessors | Total float | Free float | user_text1 | TYPE OF WORK |
| --- | --- | --- | --- | --- | --- | --- | --- | --- | --- | --- |
|  | Engineering | **Engineering** |  | 2011-10-03 | 2012-03-27 |  |  |  |  |  |
|  | 12 | **Shop drawings** |  | 2011-10-03 | 2012-03-27 |  |  |  |  |  |
|  | 6 | **R.C footings** |  | 2011-10-11 | 2011-11-02 |  |  |  |  |  |
| SD 120 |  | Shop Drawings submittal | 6d | 2011-10-11 | 2011-10-17 | Ms 110 FS+14d | 13d | 0d | SD 120 | civil |
| SD 180 |  | Shop Drawings Approval | 6d | 2011-10-27 | 2011-11-02 | SD 120 FF+14d, SD 120 SS+14d | 13d | 0d | SD 180 | civil |
|  | 5 | **Plain concrete footings** |  | 2011-10-03 | 2011-10-25 |  |  |  |  |  |
| SD 100 |  | Shop Drawings submittal | 6d | 2011-10-03 | 2011-10-09 | Ms 111 | 13d | 0d | SD 100 | civil |
| SD 150 |  | Shop Drawings Approval | 6d | 2011-10-19 | 2011-10-25 | SD 100 FF+14d, SD 100 SS+14d | 13d | 0d | SD 150 | civil |
|  | 10 | **Metal fabrications** |  | 2011-10-30 | 2011-11-30 |  |  |  |  |  |
| SD 220 |  | Shop Drawings submittal | 7d | 2011-10-30 | 2011-11-13 | Ms 110 FS+30d | 22d | 0d | SD 220 | arch |
| SD 280 |  | Shop Drawings Approval | 7d | 2011-11-22 | 2011-11-30 | SD 220 FF+14d, SD 220 SS+14d | 22d | 0d | SD 280 | arch |
|  | 11 | **Sandwich panel** |  | 2011-11-15 | 2011-12-03 |  |  |  |  |  |
| SD 130 |  | Shop Drawings submittal | 1d | 2011-11-15 | 2011-11-15 | PO 110 | 23d | 0d | SD 130 | arch |
| SD 190 |  | Shop Drawings Approval | 1d | 2011-12-03 | 2011-12-03 | SD 130 FF+14d, SD 130 SS+14d | 23d | 0d | SD 190 | arch |
|  | 1 | **Steel structure** |  | 2011-10-03 | 2011-10-26 |  |  |  |  |  |
| SD 140 |  | Shop Drawings submittal | 7d | 2011-10-03 | 2011-10-10 | PO 120 FS+7d | 13d | 0d | SD 140 | civil |
| SD 240 |  | Shop Drawings Approval | 7d | 2011-10-19 | 2011-10-26 | SD 140 SS+14d, SD 140 FF+14d | 13d | 0d | SD 240 | civil |
|  | 2 | **Masonry** |  | 2011-10-24 | 2011-11-23 |  |  |  |  |  |
| SD 160 |  | Shop Drawings submittal | 7d | 2011-10-24 | 2011-10-31 | Ms 110 FS+25d | 26d | 0d | SD 160 | arch |
| SD 250 |  | Shop Drawings Approval | 7d | 2011-11-16 | 2011-11-23 | SD 160 SS+14d, SD 160 FF+14d | 26d | 5d | SD 250 | arch |
|  | 8 | **Windows** |  | 2012-01-10 | 2012-02-02 |  |  |  |  |  |
| SD 210 |  | Shop Drawings submittal | 7d | 2012-01-10 | 2012-01-17 | Ms 110 FS+30d, MT-1160 | 10d | 0d | SD 210 | arch |
| SD 270 |  | Shop Drawings Approval | 7d | 2012-01-26 | 2012-02-02 | SD 210 SS+14d, SD 210 FF+14d | 10d | 0d | SD 270 | arch |
|  | 9 | **Louvers** |  | 2011-10-30 | 2011-11-30 |  |  |  |  |  |
| SD 230 |  | Shop Drawings submittal | 7d | 2011-10-30 | 2011-11-13 | Ms 110 FS+30d | 22d | 0d | SD 230 | arch |
| SD 290 |  | Shop Drawings Approval | 7d | 2011-11-22 | 2011-11-30 | SD 230 FF+14d, SD 230 SS+14d | 22d | 0d | SD 290 | arch |

| ID | WBS | Activity | Type | Duration | Start | Finish | Predecessors | Total float | Free float | Resources | Cost | user_text1 | TYPE OF WORK | FLOOR LEVEL |
| --- | --- | --- | --- | --- | --- | --- | --- | --- | --- | --- | --- | --- | --- | --- |
|  | 4 | **Doors** |  |  | 2011-11-17 | 2011-12-15 |  |  |  |  |  |  |  |  |
| SD 200 |  | Shop Drawings submittal |  | 10d | 2011-11-17 | 2011-11-29 | MT-1180, MT-1170, Ms 110 FS+30d, MT-1150, MT-1120 | 3d | 0d |  |  | SD 200 | arch |  |
| SD 260 |  | Shop Drawings Approval |  | 10d | 2011-12-05 | 2011-12-15 | SD 200 FF+14d, SD 200 SS+14d | 3d | 0d |  |  | SD 260 | arch |  |
|  | 3 | **Walk on ceiling** |  |  | 2011-11-20 | 2011-12-31 |  |  |  |  |  |  |  |  |
| SD 110 |  | Shop Drawings submittal |  | 21d | 2011-11-20 | 2011-12-14 | PO 130 | 1d | 0d |  |  | SD 110 | arch |  |
| SD 170 |  | Shop Drawings Approval |  | 21d | 2011-12-07 | 2011-12-31 | SD 110 SS+14d, SD 110 FF+14d | 1d | 0d |  |  | SD 170 | arch |  |
|  | 7 | **As built** |  |  | 2012-03-27 | 2012-03-27 |  |  |  |  |  |  |  |  |
| SD 300 |  | As built submittal | milestone | 0d | 2012-03-27 | 2012-03-27 | UHT 250, PET-Z2-AR-260, JP-A320, PET-Z1-AR-290 | 4d | 0d |  |  | SD 300 | arch |  |
|  | 7 | **Construction** |  |  | 2011-09-25 | 2012-04-01 |  |  |  |  |  |  |  |  |
|  | 3 | **Juice Preparation** |  |  | 2011-09-25 | 2012-03-25 |  |  |  |  |  |  |  |  |
|  | 3 | **Civil works** |  |  | 2011-09-28 | 2012-02-15 |  |  |  |  |  |  |  |  |
| JP-C100 |  | Demolishing Slab on Grade |  | 7d | 2011-09-28 | 2011-10-05 | JP-A110 | 15d | 0d | CASH [20000] | 20,000 | JP-C100 | civil | FOOTING |
| JP-C110 |  | Utilities diversion(plumbing) |  | 8d | 2011-10-06 | 2011-10-15 | JP-C100 | 15d | 0d | CASH-2 [64] |  | JP-C110 | civil | FOOTING |
| JP-C120 |  | Excavation |  | 12d | 2011-10-13 | 2011-10-26 | JP-C110 FF+10d, JP-C110 SS+6d | 15d | 0d | CASH [11000] | 11,000 | JP-C120 | civil | FOOTING |
| JP-C130 |  | Demolishing Footing and Tie Beam |  | 7d | 2011-10-27 | 2011-11-03 | JP-C120 | 15d | 0d | CASH [21432] | 21,432 | JP-C130 | civil | FOOTING |
| JP-C140 |  | Replacement & back fill Under Footing |  | 10d | 2011-11-12 | 2011-11-22 | JP-C130 | 15d | 0d | CASH [17880] | 17,880 | JP-C140 | civil | FOOTING |
| JP-C150 |  | Plain concrete 100 under footings |  | 3d | 2011-11-23 | 2011-11-26 | JP-C140, SD 150 | 15d | 0d | CARPENTER [66 h]; P.C. CONCRETE [100]; CASH [6000] | 6,000 | JP-C150 | civil | FOOTING |
| JP-C160 |  | R.C. for footings & tie beams |  | 7d | 2011-11-28 | 2011-12-05 | SD 180, Ms 190, JP-C150 | 15d | 0d | CARPENTER [27 h]; STEEL LABOUR [40 h]; R.C. CONCRETE [40]; CASH [69240] | 69,240 | JP-C160 | civil | FOOTING |
| JP-C170 |  | R.c for pedestals |  | 8d | 2011-12-06 | 2011-12-14 | JP-C160 | 15d | 0d | R.C. CONCRETE [4]; CASH [10872] | 10,872 | JP-C170 | civil | FOOTING |
| JP-C180 |  | Anchors for steel structure |  | 6d | 2011-12-08 | 2011-12-14 | JP-C170 FF, JP-C160 | 27d | 12d | CASH-2 [48] |  | JP-C180 | civil | GROUND |
| JP-C190 |  | Soil replacement under slab on grade |  | 7d | 2011-12-15 | 2011-12-22 | JP-C170 | 15d | 0d | CASH [6120] | 6,120 | JP-C190 | civil | FOOTING |
| JP-C230 |  | Footings insulation/water proofing |  | 2d | 2011-12-15 | 2011-12-17 | JP-C170 | 91d |  | CASH-2 [16] |  | JP-C230 | civil | FOOTING |
| JP-C210 |  | Slab On Grade |  | 5d | 2011-12-24 | 2011-12-28 | JP-C190 | 15d | 0d | P.C. CONCRETE [170]; CASH [34850] | 34,850 | JP-C210 | civil | GROUND |
| JP-C200 |  | Steel structure erection |  | 25d | 2011-12-29 | 2012-01-26 | JP-C210, DD110 SS, JP-C180, DD110 FF, JP-C170 | 15d | 0d | STEEL STRUCTURE [40 ton]; CASH [412000] | 412,000 | JP-C200 | civil | GROUND |
| JP-C220 |  | Concrete Screed |  | 10d | 2012-01-28 | 2012-02-07 | JP-C200, JP-C210 | 27d | 0d | P.C. CONCRETE [355]; CASH [37275] | 37,275 | JP-C220 | civil | GROUND |
| JP-C240 |  | Concrete guard base |  | 10d | 2012-01-28 | 2012-02-07 | JP-C220 FF, JP-C220 SS | 37d | 31d | CASH [8100] | 8,100 |  | civil | GROUND |
| JP-A160 |  | RC for deck floors |  | 7d | 2012-02-08 | 2012-02-15 | JP-A130 | 24d | 0d | R.C. CONCRETE [170]; CASH [31110] | 31,110 | JP-A160 | civil | MEZZ |
| JP-A170 |  | Roof R.c slab |  | 5d | 2012-02-08 | 2012-02-13 | JP-A140 | 26d | 0d | CASH-2 [40] |  | JP-A170 | civil | ROOF |

| ID | WBS | Activity | Type | Duration | Start | Finish | Predecessors | Total float | Free float | Resources | Cost | user_text1 | TYPE OF WORK | FLOOR LEVEL |
| --- | --- | --- | --- | --- | --- | --- | --- | --- | --- | --- | --- | --- | --- | --- |
|  | 4 | **Arch works** |  |  | 2011-09-25 | 2012-03-25 |  |  |  |  |  |  |  |  |
| JP-A100 |  | Utilities diversion(Electrical) |  | 10d | 2011-09-25 | 2011-10-05 | Ms 110 | 15d | 0d | CASH [33500] | 33,500 | JP-A100 | arch | GROUND |
| JP-A110 |  | Dismantle Steel Handrail |  | 2d | 2011-09-26 | 2011-09-27 | JP-A100 SS+1d | 15d | 0d | CASH [136] | 136 | JP-A110 | arch | GROUND |
| JP-A120 |  | Sandwich Panel for roofs & walls |  | 15d | 2012-01-28 | 2012-02-13 | JP-C200, DD100 | 15d | 0d | SANDWICH PANEL FOR WALLS 120MM THK [145 m2]; CASH [101045] | 101,045 | JP-A120 | arch | GROUND |
| JP-A130 |  | Install corrugated sheets on roof level |  | 10d | 2012-01-28 | 2012-02-07 | JP-C200 | 24d | 0d | CASH [17000] | 17,000 | JP-A130 | arch | MEZZ |
| JP-A140 |  | Install corrugated sheets on mezzanine level |  | 10d | 2012-01-28 | 2012-02-07 | JP-C200 | 26d | 0d | CASH-2 [80] |  | JP-A140 | arch | MEZZ |
| JP-A150 |  | Steel structure paintings |  | 30d | 2012-01-28 | 2012-03-01 | JP-C200 | 26d | 20d | CASH-2 [240] |  | JP-A150 | arch | GROUND |
| JP-A340 |  | Guard bollard erection |  | 7d | 2012-02-08 | 2012-02-15 | DD170 | 32d | 26d | CASH [31000] | 31,000 |  | arch | GROUND |
| JP-A180 |  | External Cement Plaster |  | 9d | 2012-02-14 | 2012-02-23 | JP-A120 | 15d | 0d | CASH [1060] | 1,060 | JP-A180 | arch | GROUND |
| JP-A200 |  | Slopped plain concrete |  | 5d | 2012-02-14 | 2012-02-19 | JP-A170 | 26d | 0d | P.C. CONCRETE [170]; CASH [15980] | 15,980 | JP-A200 | arch | ROOF |
| JP-A190 |  | Sandwich Panel for walls |  | 10d | 2012-02-16 | 2012-02-27 | DD100, JP-A160 | 24d | 0d | SANDWICH PANEL FOR WALLS 120MM(FIRE RATED) [150 m2]; CASH [122375] | 122,375 | JP-A190 | arch | MEZZ |
| JP-A210 |  | Sheet Waterproofing |  | 5d | 2012-02-20 | 2012-02-25 | JP-A200 | 26d | 0d | CASH [50150] | 50,150 | JP-A210 | arch | ROOF |
| JP-A240 |  | Epoxy Paint |  | 10d | 2012-02-25 | 2012-03-06 | MT-1370 FS+7d, JP-A180 | 15d | 9d | EPOXY PAINTER [4 h]; CASH [18930] | 18,930 | JP-A240 | arch | GROUND |
| JP-A250 |  | Doors erection | resource dependent | 10d | 2012-02-25 | 2012-03-06 | DD210 | 13d | 0d | CASH [216442] | 216,442 | JP-A250 | arch | GROUND |
| JP-A260 |  | Louvers erection for upper roof |  | 13d | 2012-02-25 | 2012-03-10 | JP-A250 FF, JP-A250 SS, MT-1330 FS+10d | 19d | 13d | CASH [17115] | 17,115 | JP-A260 | arch | ROOF |
| JP-A270 |  | Dismantle Sandwich Panel(after construction) |  | 13d | 2012-02-25 | 2012-03-10 | JP-A250 FF, JP-A350 SS, JP-A350 FF, JP-A250 SS | 19d | 3d | CASH [15400] | 15,400 | JP-A270 | arch | GROUND |
| JP-A330 |  | Steel ladder &steel hand rail erection |  | 14d | 2012-02-25 | 2012-03-11 | DD130, DD210 | 9d | 3d | CASH [15670] | 15,670 | JP-A330 | arch | GROUND |
| JP-A350 |  | Over head sectional Door erection | resource dependent | 12d | 2012-02-25 | 2012-03-08 | DD210 | 11d | 0d | CASH [61776] | 61,776 | JP-A250 | arch | GROUND |
| JP-A220 |  | Thermal Insulation |  | 5d | 2012-02-26 | 2012-03-01 | JP-A210 | 26d | 0d | CASH [11730] | 11,730 | JP-A220 | arch | ROOF |
| JP-A230 |  | Roof Finish& rigid insulation 20mm thick |  | 5d | 2012-02-26 | 2012-03-01 | JP-A220 SS, JP-A220 FF, MT-1310 FS+10d | 26d | 20d | CASH [18370] | 18,370 | JP-A230 | arch | ROOF |
| JP-A310 |  | Acrylic paint |  | 5d | 2012-02-26 | 2012-03-01 | JP-A180 FS+1d, MT-1350 FS+10d | 19d | 13d | Painter [2 h]; CASH [940] | 940 | JP-A310 | arch | GROUND |
| JP-A280 |  | Dismantle the old existed doors |  | 5d | 2012-02-28 | 2012-03-04 | JP-A190, JP-A270 SS | 24d | 18d | CASH [4020] | 4,020 | JP-A280 | arch | GROUND |
| JP-A290 |  | Polyurethane Flooring |  | 7d | 2012-03-15 | 2012-03-22 | DD140, JP-C220 FS+10d, JP-C240, JP-A330, JP-A350, JP-A250 | 6d | 0d | POLYURETHANE [415 m2]; CASH [244240] | 244,240 | JP-A290 | arch | GROUND |
| JP-A300 |  | Final touch up |  | 4d | 2012-03-18 | 2012-03-21 | JP-A310, JP-A340, JP-A240, JP-A290 SS+2d | 6d | 0d | CASH-2 [32] |  | JP-A300 | arch | GROUND |
| JP-A320 |  | Handing over & comissioning |  | 3d | 2012-03-22 | 2012-03-25 | JP-A300 | 6d | 0d | CASH-2 [24] |  | JP-A320 | arch | GROUND |

| ID | WBS | Activity | Duration | Start | Finish | Predecessors | Total float | Free float | Calendar | Resources | Cost | user_text1 | TYPE OF WORK | FLOOR LEVEL | PET FILLING BUILDING |
| --- | --- | --- | --- | --- | --- | --- | --- | --- | --- | --- | --- | --- | --- | --- | --- |
|  | 4 | **UHT Processing Area** |  | 2011-09-25 | 2012-03-17 |  |  |  |  |  |  |  |  |  |  |
|  | 1 | **Civil works** |  | 2011-10-06 | 2012-01-07 |  |  |  |  |  |  |  |  |  |  |
| UHT 110 |  | Demolishing Slab on Grade | 30d | 2011-10-06 | 2011-11-16 | UHT 100 | 33d | 0d |  | CASH [108540] | 108,540 | UHT 110 | civil | GROUND |  |
| UHT 120 |  | Utilities diversion (Plumbing) | 10d | 2011-11-17 | 2011-11-29 | UHT 110 | 33d | 0d |  | CASH-2 [80] |  | UHT 120 | civil | GROUND |  |
| UHT 130 |  | Plain concrete screed (150mm) | 9d | 2011-11-30 | 2011-12-10 | UHT 120 | 33d | 0d |  | P.C. CONCRETE [405]; CASH [36045] | 36,045 | UHT 130 | civil | GROUND |  |
| UHT 140 |  | Fair face conc. guard base(kerb) | 14d | 2011-12-11 | 2011-12-26 | UHT 130 | 33d | 0d |  | CASH [4590] | 4,590 | UHT 140 | civil | GROUND |  |
| UHT 190 |  | Stainless steel grating cover erection | 10d | 2011-12-27 | 2012-01-07 | UHT 140 | 47d | 45d |  | CASH [104500] | 104,500 | UHT 190 | civil | GROUND |  |
|  | 2 | **Arch works** |  | 2011-09-25 | 2012-03-17 |  |  |  |  |  |  |  |  |  |  |
| UHT 100 |  | Utilities diversion(Electrical) | 10d | 2011-09-25 | 2011-10-05 | Ms 110 | 33d | 0d |  | CASH [33500] | 33,500 | UHT 100 | arch | GROUND |  |
| UHT 150 |  | Sandwich Panel erection | 7d | 2012-01-08 | 2012-01-15 | DD100, UHT 140 | 23d | 21d |  | CASH [4851] | 4,851 | UHT 150 | arch | GROUND |  |
| UHT 160 |  | Epoxy Paint for old sandwich panel & column base | 10d | 2012-02-09 | 2012-02-20 | MT-1370 FS+7d, UHT 150 | 2d | 0d |  | EPOXY PAINTER [16 h]; CASH [48735] | 48,735 | UHT 160 | arch | GROUND |  |
| UHT 260 |  | Guard bollard erection | 4d | 2012-02-21 | 2012-02-25 | UHT 160, DD170 | 2d | 0d |  | CASH [15500] | 15,500 |  | arch | GROUND |  |
| UHT 170 |  | Dismantle Doors & Louvers | 4d | 2012-02-26 | 2012-02-29 | UHT 180 SS, UHT 270 SS | 11d | 0d |  | CASH [1377] | 1,377 | UHT 170 | arch | GROUND |  |
| UHT 180 |  | Doors erection | 3d | 2012-02-26 | 2012-02-28 | DD210, UHT 260 | 2d | 0d |  | CASH [15250] | 15,250 | UHT 180 | arch | GROUND |  |
| UHT 200 |  | Louvers erection | 4d | 2012-02-26 | 2012-02-29 | MT-1330 FS+10d, UHT 180 SS, UHT 180 FF | 16d | 14d |  | CASH [9626] | 9,626 | UHT 200 | arch | GROUND |  |
| UHT 270 |  | Over head sectional Door erection | 3d | 2012-02-26 | 2012-02-28 | UHT 260, DD210 | 2d | 0d |  | CASH [92664] | 92,664 | UHT 180 | arch | GROUND |  |
| UHT 230 |  | Polyurethane Flooring | 10d | 2012-02-29 | 2012-03-11 | UHT 270, UHT 130 FS+10d, UHT 190, UHT 180 | 2d | 0d |  | POLYURETHANE [415 m2]; CASH [285520] | 285,520 | UHT 230 | arch | GROUND |  |
| UHT 220 |  | Dismantle Sandwich Panel | 5d | 2012-03-01 | 2012-03-06 | UHT 170 | 11d | 9d |  | CASH [65] | 65 | UHT 220 | arch | GROUND |  |
| UHT 240 |  | Final touch up | 2d | 2012-03-12 | 2012-03-13 | UHT 230, UHT 260 | 2d | 0d |  | CASH-2 [16] |  | UHT 240 | arch | GROUND |  |
| UHT 250 |  | Handing over & comissioning | 3d | 2012-03-14 | 2012-03-17 | UHT 240 | 2d | 0d |  | CASH-2 [24] |  | UHT 250 | arch | GROUND |  |
|  | 2 | **Pet Filling Line** |  | 2011-09-25 | 2012-04-01 |  |  |  |  |  |  |  |  |  |  |
|  | 2 | **zone-1 (b314 to b325) processing area** |  | 2011-09-25 | 2012-04-01 |  |  |  |  |  |  |  |  |  |  |
|  | 2 | **Civil works** |  | 2011-09-25 | 2012-03-31 |  |  |  |  |  |  |  |  |  |  |
| PET-Z1-CC-100 |  | Demolishing and/or chamfering the existed Concrete parts | 3d | 2011-09-25 | 2011-09-27 | Ms 110 | 13d | 0d |  | CASH [42000] | 42,000 | PET-C100 | civil | FOOTING | PET-Z 1 |
| PET-Z1-CC-110 |  | Excavation | 12d | 2011-09-28 | 2011-10-11 | PET-Z1-CC-100 | 13d | 0d |  | CASH [50000] | 50,000 | PET-C110 | civil | FOOTING | PET-Z 1 |
| PET-Z1-CC-120 |  | Detect underground Utilities | 12d | 2011-09-28 | 2011-10-11 | PET-Z1-CC-110 SS, PET-Z1-CC-110 FF | 15d | 0d |  | CASH [29070] | 29,070 | PET-C120 | civil | FOOTING | PET-Z 1 |
| PET-Z1-CC-130 |  | Replacement Under Footings | 12d | 2011-10-12 | 2011-10-25 | PET-Z1-CC-110 | 13d | 0d |  | CASH [40000] | 40,000 | PET-C160 | civil | FOOTING | PET-Z 1 |
| PET-Z1-CC-140 |  | Utilities diversion | 18d | 2011-10-12 | 2011-11-01 | PET-Z1-CC-120 | 15d | 2d |  | CASH-2 [144] |  | PET-C170 | civil | FOOTING | PET-Z 1 |
| PET-Z1-CC-150 |  | Plain Concrete footings | 15d | 2011-10-26 | 2011-11-19 | PET-Z1-CC-130, PET-Z1-CC-140 FF+7d, PET-Z1-CC-140 SS+10d, SD 150 | 13d | 0d |  | CARPENTER [12 h]; P.C. CONCRETE [300]; CASH [18300] | 18,300 | PET-C200 | civil | FOOTING | PET-Z 1 |
| PET-Z1-CC-160 |  | R.C. footings & tie beams & planting tie beams | 15d | 2011-11-03 | 2011-11-28 | SD 180, PET-Z1-CC-150 SS+7d, Ms 190, PET-Z1-CC-150 FF+7d | 13d | 0d |  | STEEL LABOUR [110 h]; CARPENTER [75 h]; R.C. CONCRETE [145]; CASH [232800] | 232,800 | PET-C220 | civil | FOOTING | PET-Z 1 |
| PET-Z1-CC-170 |  | Bituminous waterproofing for foundations | 12d | 2011-11-19 | 2011-12-03 | PET-Z1-CC-160 SS+7d, PET-Z1-CC-160 FF+4d | 13d | 0d |  | CASH [19300] | 19,300 | PET-C240 | civil | FOOTING | PET-Z 1 |
| PET-Z1-CC-180 |  | RC for pedestals | 10d | 2011-11-29 | 2011-12-10 | PET-Z1-CC-160 | 17d | 0d |  | R.C. CONCRETE [8]; CASH [23000] | 23,000 | PET-C260 | civil | FOOTING | PET-Z 1 |
| PET-Z1-CC-190 |  | Anchors for steel structure | 10d | 2011-11-29 | 2011-12-10 | PET-Z1-CC-180 FF | 17d | 4d |  | CASH-2 [80] |  | PET-C270 | civil | GROUND | PET-Z 1 |
| PET-Z1-CC-200 |  | Backfilling under plain concrete | 13d | 2011-12-04 | 2011-12-18 | PET-Z1-CC-170 | 13d | 0d |  | CASH [70000] | 70,000 | PET-C280 | civil | GROUND | PET-Z 1 |
| PET-Z1-CC-210 |  | Concrete beams & columns for masonry | 30d | 2011-12-08 | 2012-01-11 | PET-Z1-AR-100 SS+6d, PET-Z1-AR-100 FF+6d | 21d | 0d |  | CASH [28984] | 28,984 | PET-C510 | civil | GROUND | PET-Z 1 |
| PET-Z1-CC-220 |  | Steel structure erection(columns & rafters) | 20d | 2011-12-15 | 2012-01-07 | DD110 SS, PET-Z1-CC-190, PET-Z1-CC-180, DD110 FF | 13d | 0d |  | STEEL STRUCTURE [100 ton]; STEEL STRUCTURE LABOUR [100 h]; CASH [786035] | 786,035 | PET-C330 | civil | GROUND | PET-Z 1 |
| PET-Z1-CC-225 |  | Steel structure erection(purlins & portal frames) | 20d | 2011-12-27 | 2012-01-18 | PET-Z1-CC-190, DD110 SS, PET-Z1-CC-220 FF+10d, DD110 FF, PET-Z1-CC-220 SS+10d, PET-Z1-CC-180 | 13d | 0d |  | STEEL STRUCTURE LABOUR [70 h]; CASH [358300] | 358,300 | PET-C330 | civil | GROUND | PET-Z 1 |
| PET-Z1-CC-230 |  | Plain concrete 50mm thick | 10d | 2012-01-05 | 2012-01-16 | PET-Z1-CC-200 FS+15d | 13d | 0d |  | P.C. CONCRETE [1985]; CASH [60000] | 60,000 | PET-C360 | civil | GROUND | PET-Z 1 |
| PET-Z1-CC-240 |  | Membrane sheet 400 micron | 10d | 2012-01-05 | 2012-01-16 | PET-Z1-CC-230 SS, PET-Z1-CC-230 FF, MT-1270 FS+10d | 13d | 0d |  | POLYETHELENE SHEET 400M [2000 m2]; CASH [33745] | 33,745 | PET-C370 | civil | GROUND | PET-Z 1 |
| PET-Z1-CC-350 |  | Steel structure erection(bracings & tie rods) | 15d | 2012-01-14 | 2012-01-30 | PET-Z1-CC-225 SS+10d, PET-Z1-CC-225 FF+10d | 27d | 0d |  | STEEL STRUCTURE LABOUR [30 h]; CASH-2 [120] |  |  | civil | GROUND | PET-Z 1 |
| PET-Z1-CC-260 |  | Slab On Grade | 15d | 2012-01-17 | 2012-02-02 | PET-Z1-CC-225 FF+13d, PET-Z1-CC-220 SS+10d, PET-Z1-CC-225 SS+10d, PET-Z1-CC-220 FF+13d, PET-Z1-CC-240, PET-Z1-CC-230 | 13d | 0d |  | P.C. CONCRETE [1985]; CASH [413850] | 413,850 | PET-C390 | civil | GROUND | PET-Z 1 |
| PET-Z1-CC-370 |  | Columns & rafters (@level 21.85&22.75) | 5d | 2012-01-19 | 2012-01-24 | PET-Z1-CC-225 | 18d | 0d |  | CASH-2 [40] |  |  |  |  |  |
| PET-Z1-CC-250 |  | corrugated sheet (@level 16) area-2 | 15d | 2012-01-25 | 2012-02-11 | PET-Z1-CC-220 FF+10d, PET-Z1-CC-225 SS+25d, PET-Z1-CC-225 FF+10d, PET-Z1-CC-220 SS+25d, MT-1200 | 26d | 0d |  | CASH-2 [120] |  | PET-C400 | civil | MEZZ | PET-Z 1 |
| PET-Z1-CC-360 |  | Galvanized steel gutters | 14d | 2012-01-31 | 2012-02-15 | MT-1210, PET-Z1-CC-350 | 27d | 0d |  | CASH-2 [112] |  |  | civil | ROOF | PET-Z 1 |
| PET-Z1-CC-300 |  | Concrete Screed | 14d | 2012-02-04 | 2012-02-19 | PET-Z1-CC-260 | 13d | 0d |  | CASH [189000] | 189,000 | PET-C420 | civil | GROUND | PET-Z 1 |
| PET-Z1-CC-310 |  | corrugated sheet (@level 17) area-1 | 10d | 2012-02-06 | 2012-02-16 | MT-1200, PET-Z1-CC-220 FS+15d, PET-Z1-CC-225 FS+15d, PET-Z1-CC-350 | 22d | 0d |  | CASH-2 [80] |  | PET-C460 | civil | MEZZ | PET-Z 1 |
| PET-Z1-CC-270 |  | RC casting for deck floors (area-2) | 7d | 2012-02-12 | 2012-02-19 | PET-Z1-AR-320, PET-Z1-CC-250 | 26d | 0d |  | CASH [92000] | 92,000 | PET-C450 | civil | MEZZ | PET-Z 1 |
| PET-Z1-CC-330 |  | Expansion joint | 7d | 2012-02-12 | 2012-02-19 | PET-Z1-CC-300 FF, PET-Z1-CC-300 SS | 20d | 6d |  | CASH-2 [56] |  |  | civil | GROUND | PET-Z 1 |
| PET-Z1-CC-340 |  | Stainless steel pane fixation | 7d | 2012-02-12 | 2012-02-19 | PET-Z1-CC-300 SS, PET-Z1-CC-300 FF | 20d | 6d |  | CASH-2 [56] |  |  | civil | GROUND | PET-Z 1 |
| PET-Z1-CC-280 |  | walk on ceiling installation ( @level 15) area-1 | 37d | 2012-02-18 | 2012-03-31 | PET-Z1-CC-225, PET-Z1-AR-190 FF, PET-Z1-CC-220, DD120 | 0.88d |  | walkable calendar | CASH [900000] | 900,000 | PET-C430 | civil | MEZZ | PET-Z 1 |
| PET-Z1-CC-290 |  | walk on ceiling installation ( @level 17.2) area-2 | 37d | 2012-02-18 | 2012-03-31 | PET-Z1-CC-220, DD120, PET-Z1-AR-190 FF, PET-Z1-CC-225 | 0.88d |  | walkable calendar | CASH [900000] | 900,000 | PET-C440 | civil | MEZZ | PET-Z 1 |
| PET-Z1-CC-320 |  | RC casting for deck floor (area-1) | 7d | 2012-02-18 | 2012-02-25 | PET-Z1-CC-310 | 22d | 0d |  | CASH [92930] | 92,930 | PET-C480 | civil | MEZZ | PET-Z 1 |

| ID | WBS | Activity | Duration | Start | Finish | Predecessors | Total float | Free float | Resources | Cost | user_text1 | TYPE OF WORK | FLOOR LEVEL | PET FILLING BUILDING |
| --- | --- | --- | --- | --- | --- | --- | --- | --- | --- | --- | --- | --- | --- | --- |
|  | 3 | **Arch works** |  | 2011-12-01 | 2012-04-01 |  |  |  |  |  |  |  |  |  |
| PET-Z1-AR-100 |  | Masonry | 30d | 2011-12-01 | 2012-01-04 | PET-Z1-CC-170 FF+28d, PET-Z1-CC-170 SS+10d, SD 250, MT-1230 FS+7d | 21d | 0d | Brickwork Labor [120 h]; BRICKS [1020 m2]; CASH [115936] | 115,936 | PET-A100 | arch | GROUND | PET-Z 1 |
| PET-Z1-AR-110 |  | Internal Cement Plaster | 25d | 2012-01-12 | 2012-02-09 | PET-Z1-CC-210, PET-Z1-AR-100 | 21d | 8d | plastering worker [120 h]; CASH [33000] | 33,000 | PET-A120 | arch | GROUND | PET-Z 1 |
| PET-Z1-AR-160 |  | External Cement Plaster | 10d | 2012-01-12 | 2012-01-23 | PET-Z1-CC-210, PET-Z1-AR-100 | 52d | 32d | plastering worker [20 h]; CASH [9000] | 9,000 | PET-A130 | arch | GROUND | PET-Z 1 |
| PET-Z1-AR-120 |  | Steel structure paintings | 30d | 2012-01-25 | 2012-02-28 | PET-Z1-CC-225 FS+5d, PET-Z1-CC-220 FS+5d, MT-1140 | 28d |  | CASH [50000] | 50,000 | PET-A180 | arch | GROUND | PET-Z 1 |
| PET-Z1-AR-130 |  | Erection of Roof Sandwich Panel(@level 19.5&20.40 | 17d | 2012-01-25 | 2012-02-13 | PET-Z1-CC-370, PET-Z1-CC-220 FS+5d, PET-Z1-CC-225 FS+5d | 18d | 0d | SANDWICH PANEL FOR ROOF 150MM THK [1700 m2]; CASH [827000] | 827,000 | PET-A200 | arch | GROUND | PET-Z 1 |
| PET-Z1-AR-320 |  | Corrugated sheet paintings(area2) | 10d | 2012-01-31 | 2012-02-11 | PET-Z1-CC-250 FF, PET-Z1-CC-250 SS+5d | 26d | 0d | CASH-2 [80] |  |  | arch | MEZZ | PET-Z 1 |
| PET-Z1-AR-210 |  | Guard bollard erection | 7d | 2012-02-08 | 2012-02-15 | DD170 | 35d | 30d | CASH [54250] | 54,250 | PET-A430 | arch | GROUND | PET-Z 1 |
| PET-Z1-AR-150 |  | Fair face conc. guard base(kerb) | 15d | 2012-02-09 | 2012-02-26 | PET-Z1-CC-300 SS+5d, PET-Z1-CC-330 FF, PET-Z1-CC-340 FF, PET-Z1-CC-300 FF+6d | 14d | 0d | CASH [24000] | 24,000 | PET-A210 | arch | GROUND | PET-Z 1 |
| PET-Z1-AR-310 |  | Corrugated sheet paintings(area1) | 10d | 2012-02-12 | 2012-02-22 | PET-Z1-CC-310 SS+5d, PET-Z1-CC-310 FF | 24d | 2d | CASH-2 [80] |  |  | arch | MEZZ | PET-Z 1 |
| PET-Z1-AR-270 |  | Erection of Steel ladder & handrail & cheker plates& painting | 10d | 2012-02-13 | 2012-02-23 | DD150, PET-Z1-CC-310 SS, PET-Z1-CC-250 SS | 32d |  | CASH [64340] | 64,340 | PET-A310 | metal | GROUND | PET-Z 1 |
| PET-Z1-AR-140 |  | Epoxy Paint (@level 15) area-2 | 10d | 2012-02-20 | 2012-03-01 | MT-1370 FS+7d, PET-Z1-CC-270 | 26d |  | EPOXY PAINTER [4 h]; CASH [37350] | 37,350 | PET-C470 | arch | MEZZ | PET-Z 1 |
| PET-Z1-AR-170 |  | Epoxy Paint | 10d | 2012-02-20 | 2012-03-01 | PET-Z1-AR-130, PET-Z1-CC-300, PET-Z1-AR-110, MT-1370 FS+7d | 13d | 0d | EPOXY PAINTER [16 h]; CASH [50000] | 50,000 | PET-A240 | arch | GROUND | PET-Z 1 |
| PET-Z1-AR-330 |  | Erection of Roof Sandwich Panel(@level 21.85&22.75) | 7d | 2012-02-20 | 2012-02-27 | PET-Z1-AR-130 FS+5d, PET-Z1-CC-370 FS+10d | 29d |  | SANDWICH PANEL FOR ROOF 150MM THK [50 m2]; CASH-2 [56] |  |  | arch | ROOF | PET-Z 1 |
| PET-Z1-AR-340 |  | Folded steel sheets in pet corners | 7d | 2012-02-22 | 2012-02-29 | PET-Z1-CC-360 FS+5d | 27d |  | CASH-2 [56] |  |  | arch | GROUND | PET-Z 1 |
| PET-Z1-AR-180 |  | Epoxy Paint (@level 17.8) area-1 | 9d | 2012-02-26 | 2012-03-06 | PET-Z1-AR-310, PET-Z1-CC-320, MT-1370 FS+7d | 22d |  | EPOXY PAINTER [20 h]; CASH [28000] | 28,000 | PET-C490 | arch | MEZZ | PET-Z 1 |
| PET-Z1-AR-190 |  | Sandwich Panel For Walls | 14d | 2012-02-27 | 2012-03-13 | DD100, PET-Z1-AR-150 | 14d | 0d | SANDWICH PANEL FOR WALLS 120MM(FIRE RATED) [140 m2]; SANDWICH PANEL FOR WALLS 120MM THK [90 m2]; CASH [480000] | 480,000 | PET-A230 | arch | GROUND | PET-Z 1 |
| PET-Z1-AR-220 |  | Acrylic paint for external plaster | 7d | 2012-03-01 | 2012-03-08 | MT-1350 FS+10d, PET-Z1-CC-360, PET-Z1-AR-160, PET-Z1-AR-170 SS+9d | 20d |  | Painter [12 h]; CASH [8000] | 8,000 | PET-A340 | arch | GROUND | PET-Z 1 |
| PET-Z1-AR-230 |  | Dismantle Works (doors & windows) | 3d | 2012-03-01 | 2012-03-04 | PET-Z1-AR-190 SS+3d | 15d | 2d | CASH [8117] | 8,117 | PET-A270 | arch | GROUND | PET-Z 1 |
| PET-Z1-AR-250 |  | Louvers erection | 10d | 2012-03-03 | 2012-03-13 | PET-Z1-AR-190 SS, PET-Z1-AR-190 FF, MT-1330 FS+10d | 16d |  | CASH [14518] | 14,518 | PET-A290 | metal | GROUND | PET-Z 1 |
| PET-Z1-AR-240 |  | Steel Doors erection | 10d | 2012-03-04 | 2012-03-14 | PET-Z1-AR-230 SS, PET-Z1-AR-170 SS+5d, PET-Z1-AR-170 FF+11d, DD210, PET-Z1-AR-190 SS+2d, PET-Z1-AR-190 FF | 13d | 0d | CASH [121788] | 121,788 | PET-A280 | arch | GROUND | PET-Z 1 |
| PET-Z1-AR-350 |  | Stainless steel doors erection | 10d | 2012-03-04 | 2012-03-14 | PET-Z1-AR-230 SS, PET-Z1-AR-170 SS+5d, DD210, PET-Z1-AR-170 FF+11d, PET-Z1-AR-190 SS+2d, PET-Z1-AR-190 FF | 15d |  | CASH [221046] | 221,046 |  | metal | GROUND | PET-Z 1 |
| PET-Z1-AR-260 |  | Windows erection | 10d | 2012-03-10 | 2012-03-20 | PET-Z1-AR-190 FF, DD200, PET-Z1-AR-190 SS | 10d |  | CASH [5701] | 5,701 | PET-A300 | metal | GROUND | PET-Z 1 |
| PET-Z1-AR-280 |  | Final touch up | 3d | 2012-03-12 | 2012-03-14 | PET-Z1-AR-240 FF, PET-Z1-AR-240 SS+3d | 13d | 8d | CASH-2 [24] |  | PET-A380 | arch | GROUND | PET-Z 1 |
| PET-Z1-AR-200 |  | Polyurethane Flooring | 15d | 2012-03-15 | 2012-04-01 | PET-Z1-CC-340 FF, PET-Z1-CC-300, DD140 | 0d |  | POLYURETHANE [1800 m2]; CASH [1362600] | 1,362,600 | PET-A260 | arch | GROUND | PET-Z 1 |
| PET-Z1-AR-300 |  | Roll up shutter doors erection | 10d | 2012-03-15 | 2012-03-26 | DD160 FS+7d | 5d | 0d | CASH [218147] | 218,147 |  | metal | GROUND | PET-Z 1 |
| PET-Z1-AR-290 |  | Handing over & comissioning | 4d | 2012-03-22 | 2012-03-26 | PET-Z1-AR-280 FF+2d, PET-Z1-AR-300 FF, PET-Z1-AR-280 SS, PET-Z1-AR-300 SS, PET-Z1-AR-210 | 5d | 1d | CASH-2 [32] |  | PET-A410 | arch | GROUND | PET-Z 1 |

| ID | WBS | Activity | Duration | Start | Finish | Predecessors | Total float | Free float | Resources | Cost | user_text1 | TYPE OF WORK | FLOOR LEVEL | PET FILLING BUILDING |
| --- | --- | --- | --- | --- | --- | --- | --- | --- | --- | --- | --- | --- | --- | --- |
|  | 1 | **zone-2 (b30 to b313)-stroage area** |  | 2011-10-01 | 2012-03-27 |  |  |  |  |  |  |  |  |  |
|  | 1 | **Civil works** |  | 2011-10-01 | 2012-02-25 |  |  |  |  |  |  |  |  |  |
| PET-Z2-CC-100 |  | Demolishing Of Existing Concrete | 3d | 2011-10-01 | 2011-10-03 | Ms 110 FS+5d | 14d | 0d | CASH [44443] | 44,443 | PET-C130 | civil | FOOTING | PET-Z 2 |
| PET-Z2-CC-110 |  | Excavation | 12d | 2011-10-04 | 2011-10-17 | PET-Z2-CC-100 | 14d | 0d | CASH [50000] | 50,000 | PET-C140 | civil | FOOTING | PET-Z 2 |
| PET-Z2-CC-120 |  | Detect underground Utilities | 12d | 2011-10-04 | 2011-10-17 | PET-Z2-CC-110 SS, PET-Z2-CC-110 FF | 14d | 0d | CASH [29070] | 29,070 | PET-C150 | civil | FOOTING | PET-Z 2 |
| PET-Z2-CC-130 |  | Replacement Under Footings | 12d | 2011-10-18 | 2011-10-31 | PET-Z2-CC-110 | 14d | 0d | CASH [40000] | 40,000 | PET-C180 | civil | FOOTING | PET-Z 2 |
| PET-Z2-CC-140 |  | Utilities diversion | 18d | 2011-10-18 | 2011-11-14 | PET-Z2-CC-120 | 14d | 0d | CASH-2 [144] |  | PET-C190 | civil | FOOTING | PET-Z 2 |
| PET-Z2-CC-150 |  | Plain Concrete footings | 10d | 2011-11-01 | 2011-11-19 | PET-Z2-CC-130, SD 150, PET-Z2-CC-140 FF+4d, PET-Z2-CC-140 SS+5d | 14d | 0d | CARPENTER [12 h]; P.C. CONCRETE [305]; CASH [18000] | 18,000 | PET-C210 | civil | FOOTING | PET-Z 2 |
| PET-Z2-CC-160 |  | R.C. footings & tie beams &planting tie beams | 15d | 2011-11-16 | 2011-12-04 | Ms 190, SD 180, PET-Z2-CC-150 FF+12d, PET-Z2-CC-150 SS+7d | 14d | 0d | CARPENTER [75 h]; STEEL LABOUR [110 h]; R.C. CONCRETE [145]; CASH [225000] | 225,000 | PET-C230 | civil | FOOTING | PET-Z 2 |
| PET-Z2-CC-170 |  | Bituminous waterproofing for foundations | 10d | 2011-11-24 | 2011-12-06 | PET-Z2-CC-160 FF+2d, PET-Z2-CC-160 SS+7d | 14d | 0d | CASH [18500] | 18,500 | PET-C250 | civil | FOOTING | PET-Z 2 |
| PET-Z2-CC-180 |  | RC for pedestals | 10d | 2011-12-05 | 2011-12-15 | PET-Z2-CC-160 | 14d | 0d | R.C. CONCRETE [8]; CASH [23448] | 23,448 | PET-C290 | civil | FOOTING | PET-Z 2 |
| PET-Z2-CC-190 |  | Backfilling under plain concrete | 10d | 2011-12-07 | 2011-12-18 | PET-Z2-CC-170 | 14d | 0d | CASH [72920] | 72,920 | PET-C300 | civil | GROUND | PET-Z 2 |
| PET-Z2-CC-200 |  | Anchors for steel structure | 8d | 2011-12-07 | 2011-12-15 | PET-Z2-CC-180 FF | 14d | 0d | CASH-2 [64] |  | PET-C310 | civil | GROUND | PET-Z 2 |
| PET-Z2-CC-210 |  | Concrete beams & columns for masonry | 30d | 2011-12-14 | 2012-01-17 | PET-Z2-AR-100 SS+6d, PET-Z2-AR-100 FF+6d | 16d | 0d | CASH [29000] | 29,000 | PET-C500 | civil | GROUND | PET-Z 2 |
| PET-Z2-CC-220 |  | Steel structure erection(columns & rafters) | 20d | 2011-12-17 | 2012-01-08 | DD110 SS, PET-Z2-CC-200, PET-Z2-CC-180, DD110 FF | 14d | 1d | STEEL STRUCTURE LABOUR [100 h]; STEEL STRUCTURE [110 ton]; CASH [786035] | 786,035 | PET-C320 | civil | GROUND | PET-Z 2 |
| PET-Z2-CC-225 |  | Steel structure erection(purlins & portal frames) | 20d | 2011-12-29 | 2012-01-21 | DD110, PET-Z2-CC-220 SS+10d, PET-Z2-CC-220 FF+10d, PET-Z2-CC-200, PET-Z2-CC-180 | 13d | 0d | STEEL STRUCTURE LABOUR [70 h]; CASH [358300] | 358,300 | PET-C320 | civil | GROUND | PET-Z 2 |
| PET-Z2-CC-230 |  | Plain concrete 50mm thick | 10d | 2012-01-09 | 2012-01-19 | PET-Z2-CC-190 FS+18d | 14d | 0d | P.C. CONCRETE [1985]; CASH [59100] | 59,100 | PET-C340 | civil | GROUND | PET-Z 2 |
| PET-Z2-CC-240 |  | Membrane sheet 400 micron | 10d | 2012-01-09 | 2012-01-19 | PET-Z2-CC-230 FF, PET-Z2-CC-230 SS, MT-1270 FS+10d | 14d | 1d | POLYETHELENE SHEET 400M [1970 m2]; CASH [33745] | 33,745 | PET-C350 | civil | GROUND | PET-Z 2 |
| PET-Z2-CC-235 |  | Columns & rafters (@level 21.85&22.75) | 7d | 2012-01-22 | 2012-01-29 | PET-Z2-CC-225 | 14d | 0d | CASH-2 [56] |  |  |  |  |  |
| PET-Z2-CC-250 |  | Slab On Grade | 15d | 2012-01-22 | 2012-02-07 | PET-Z2-CC-220 SS+10d, PET-Z2-CC-230, PET-Z2-CC-225 SS+10d, PET-Z2-CC-220 FF+15d, PET-Z2-CC-225 FF+15d, PET-Z2-CC-240 | 13d | 0d | P.C. CONCRETE [1985]; CASH [400000] | 400,000 | PET-C380 | civil | GROUND | PET-Z 2 |
| PET-Z2-CC-290 |  | Steel structure erection(bracings & tie rods) | 15d | 2012-01-22 | 2012-02-07 | PET-Z2-CC-225 FF+15d, PET-Z2-CC-225 SS+15d | 28d | 15d | STEEL STRUCTURE LABOUR [30 h]; CASH-2 [120] |  |  | civil | ROOF | PET-Z 2 |
| PET-Z2-CC-260 |  | Plain Concrete Screed | 25d | 2012-01-28 | 2012-02-25 | PET-Z2-CC-250 SS+5d, PET-Z2-CC-250 FF+15d | 13d | 0d | P.C. CONCRETE [1600]; CASH [171200] | 171,200 | PET-C410 | civil | GROUND | PET-Z 2 |
| PET-Z2-CC-270 |  | Stainless steel pane fixation | 7d | 2012-02-18 | 2012-02-25 | PET-Z2-AR-300, PET-Z2-CC-260 SS, PET-Z2-CC-260 FF | 13d | 0d | CASH-2 [56] |  |  | civil | GROUND | PET-Z 2 |
| PET-Z2-CC-280 |  | Expansion joint | 7d | 2012-02-18 | 2012-02-25 | PET-Z2-CC-260 FF, PET-Z2-CC-260 SS | 13d | 0d | CASH-2 [56] |  |  | civil | GROUND | PET-Z 2 |

| ID | WBS | Activity | Duration | Start | Finish | Predecessors | Total float | Free float | Resources | Cost | user_text1 | TYPE OF WORK | FLOOR LEVEL | PET FILLING BUILDING |
| --- | --- | --- | --- | --- | --- | --- | --- | --- | --- | --- | --- | --- | --- | --- |
|  | 2 | **Arch works** |  | 2011-12-07 | 2012-03-27 |  |  |  |  |  |  |  |  |  |
| PET-Z2-AR-100 |  | Masonry | 30d | 2011-12-07 | 2012-01-10 | MT-1230 FS+7d, PET-Z2-CC-170 SS+10d, SD 250 | 16d | 0d | Brickwork Labor [120 h]; BRICKS [900 m2]; CASH [116000] | 116,000 | PET-A110 | arch | GROUND | PET-Z 2 |
| PET-Z2-AR-110 |  | Internal Cement Plaster | 30d | 2012-01-18 | 2012-02-21 | PET-Z2-CC-210, PET-Z2-AR-100 | 16d | 3d | plastering worker [120 h]; CASH [34510] | 34,510 | PET-A140 | arch | GROUND | PET-Z 2 |
| PET-Z2-AR-170 |  | External Cement Plaster | 10d | 2012-01-18 | 2012-01-29 | PET-Z2-AR-100, PET-Z2-CC-210 | 49d | 33d | plastering worker [20 h]; CASH [9550] | 9,550 | PET-A150 | arch | GROUND | PET-Z 2 |
| PET-Z2-AR-290 |  | Piping for drainage system(between old&new pet building) | 10d | 2012-01-21 | 2012-01-31 | PET-Z2-CC-230 | 22d | 0d | CASH [33595] | 33,595 |  | arch | GROUND | PET-Z 2 |
| PET-Z2-AR-130 |  | Steel structure paintings | 30d | 2012-01-28 | 2012-03-01 | PET-Z2-CC-220 FS+5d, PET-Z2-CC-225 FS+5d, MT-1140 | 19d | 0d | CASH [50000] | 50,000 | PET-A170 | arch | GROUND | PET-Z 2 |
| PET-Z2-AR-120 |  | Erection of Roof Sandwich Panel(@level 19.5&20.40) | 30d | 2012-01-30 | 2012-03-04 | PET-Z2-CC-225, PET-Z2-CC-235, PET-Z2-CC-220 | 14d | 0d | SANDWICH PANEL FOR ROOF 150MM THK [1700 m2]; CASH [825000] | 825,000 | PET-A160 | arch | GROUND | PET-Z 2 |
| PET-Z2-AR-300 |  | Floor clean-outs | 5d | 2012-02-01 | 2012-02-06 | PET-Z2-AR-290 | 22d | 9d | CASH [17688] | 17,688 |  | arch | GROUND | PET-Z 2 |
| PET-Z2-AR-140 |  | Fair face conc. guard base(kerb) | 15d | 2012-02-08 | 2012-02-25 | PET-Z2-CC-270 FF, PET-Z2-CC-260 SS+5d, PET-Z2-CC-280 FF | 13d | 0d | CASH [24000] | 24,000 | PET-A190 | arch | GROUND | PET-Z 2 |
| PET-Z2-AR-180 |  | Guard bollard erection | 7d | 2012-02-08 | 2012-02-15 | DD170 | 34d | 30d | CASH [54250] | 54,250 | PET-A440 | arch | GROUND | PET-Z 2 |
| PET-Z2-AR-150 |  | Sandwich Panel For Walls | 15d | 2012-02-26 | 2012-03-13 | DD100, PET-Z2-AR-140, PET-Z2-CC-290 | 13d | 0d | SANDWICH PANEL FOR WALLS 120MM(FIRE RATED) [145 m2]; SANDWICH PANEL FOR WALLS 120MM THK [90 m2]; CASH [498675] | 498,675 | PET-A220 | arch | GROUND | PET-Z 2 |
| PET-Z2-AR-160 |  | Epoxy Paint | 10d | 2012-02-26 | 2012-03-07 | PET-Z2-AR-110, MT-1370 FS+7d, PET-Z2-CC-260 | 13d | 0d | EPOXY PAINTER [16 h]; CASH [50650] | 50,650 | PET-A250 | arch | GROUND | PET-Z 2 |
| PET-Z2-AR-310 |  | Stainless steel doors erection | 10d | 2012-02-26 | 2012-03-07 | PET-Z2-AR-150 SS, SD 260, SD 260 FF, DD210, PET-Z2-AR-160 SS | 19d | 6d | CASH [221046] | 221,046 |  | arch | GROUND | PET-Z 2 |
| PET-Z2-AR-280 |  | Erection of Roof Sandwich Panel(@level 21.85&22.75) | 7d | 2012-03-03 | 2012-03-10 | PET-Z2-AR-130 | 19d |  | SANDWICH PANEL FOR ROOF 150MM THK [50 m2]; CASH-2 [56] |  |  | arch | ROOF | PET-Z 2 |
| PET-Z2-AR-190 |  | Dismantle Works (doors & windows) | 3d | 2012-03-04 | 2012-03-06 | PET-Z2-AR-200 SS, PET-Z2-AR-310 SS | 14d | 0d | CASH [2881] | 2,881 | PET-A320 | arch | GROUND | PET-Z 2 |
| PET-Z2-AR-200 |  | Steel Doors erection | 10d | 2012-03-04 | 2012-03-14 | DD210, SD 260, PET-Z2-AR-150 SS+6d, PET-Z2-AR-160 SS+6d | 13d | 0d | CASH [67700] | 67,700 | PET-A330 | arch | GROUND | PET-Z 2 |
| PET-Z2-AR-210 |  | Louvers erection | 10d | 2012-03-04 | 2012-03-14 | PET-Z2-AR-150 SS+1d, PET-Z2-AR-150 FF+1d | 15d |  | CASH [14518] | 14,518 | PET-A350 | arch | GROUND | PET-Z 2 |
| PET-Z2-AR-330 |  | Galvanized steel flashing&pur foam | 10d | 2012-03-05 | 2012-03-15 | PET-Z2-AR-120, MT-1190 | 14d | 12d | CASH-2 [80] |  |  | arch | ROOF | PET-Z 2 |
| PET-Z2-AR-270 |  | Dismantle sandwich panels& rain gutter | 3d | 2012-03-07 | 2012-03-10 | PET-Z2-AR-190 | 14d | 10d | CASH [5236] | 5,236 |  | arch | GROUND | PET-Z 2 |
| PET-Z2-AR-320 |  | Roll up shutter doors erection | 10d | 2012-03-07 | 2012-03-18 | DD160 | 4d | 0d | CASH [218146] | 218,146 |  | arch | GROUND | PET-Z 2 |
| PET-Z2-AR-240 |  | Acrylic paint for external plaster | 5d | 2012-03-08 | 2012-03-13 | PET-Z2-AR-160, MT-1350 FS+10d, PET-Z2-AR-170 | 16d |  | Painter [16 h]; CASH [8450] | 8,450 | PET-A390 | arch | GROUND | PET-Z 2 |
| PET-Z2-AR-220 |  | Windows erection | 10d | 2012-03-10 | 2012-03-20 | PET-Z2-AR-150 SS+1d, PET-Z2-AR-150 FF+1d, DD200 | 10d |  | CASH [5000] | 5,000 | PET-A360 | arch | GROUND | PET-Z 2 |
| PET-Z2-AR-250 |  | Final touch up | 3d | 2012-03-19 | 2012-03-21 | PET-Z2-AR-310 SS+4d, PET-Z2-AR-330 SS, PET-Z2-AR-200 SS+4d, PET-Z2-AR-320 | 4d | 0d | CASH-2 [24] |  | PET-A400 | arch | GROUND | PET-Z 2 |
| PET-Z2-AR-260 |  | Handing over & comissioning | 5d | 2012-03-22 | 2012-03-27 | PET-Z2-AR-180, PET-Z2-AR-250 SS+3d, PET-Z2-AR-270 | 4d | 0d | CASH-2 [40] |  | PET-A420 | arch | GROUND | PET-Z 2 |

## Activity codes

| Code | Value | Meaning |
| --- | --- | --- |
| FLOOR LEVEL | FOOTING | FOOTING LEVEL |
| FLOOR LEVEL | GROUND | GROUND LEVEL |
| FLOOR LEVEL | MEZZ | MEZZANINE LEVEL |
| FLOOR LEVEL | ROOF | ROOF LEVEL |
| PET FILLING BUILDING | PET-Z 1 | ZONE 1 |
| PET FILLING BUILDING | PET-Z 2 | ZONE 2 |
| TYPE OF WORK | arch | arch works |
| TYPE OF WORK | civil | civil works |
| TYPE OF WORK | metal | metal works |

## Issues

| Issue | Status | Raised |
| --- | --- | --- |
| (New Issue) | IS_Open | 2011-10-10 |
