# JW Marriott - Baseline Programme

Schedule from Primavera P6, 2014-08-31 to 2017-07-02, data date 2014-08-31, costs in QAR.
Must finish by 2017-07-03

| ID | WBS | Activity | Duration | Start | Finish | Predecessors | Total float | Free float |
| --- | --- | --- | --- | --- | --- | --- | --- | --- |
|  | 9 | **Level 21 - Utilities Connections & Pre-testing** |  | 2016-03-08 | 2016-11-16 |  |  |  |
| A2830 |  | Electrical Connection & Pre-testing - Floor Services to Risers at Level 21 | 16d | 2016-03-08 | 2016-03-26 | C-MEP-E-1286, C-E-SR-B3G-103, C-E-SR-B3G-113, A2270 | 52d | 0d |
| A2850 |  | Plumbing & Drainage Connection & Pre-testing - Floor Services to Risers at Level 21 | 16d | 2016-07-09 | 2016-07-26 | C-PD-SR-B3G-1421, C-PD-SR-B3G-1431, A2500, C-MEP-PD-1085, C-MEP-PD-1075 | 82d | 7d |
| A2840 |  | HVAC Connection & Pre-testing - Floor Services to Risers at Level 21 | 16d | 2016-07-17 | 2016-08-03 | C-HVAC-SR-B3G-224, C-HVAC-SR-B3G-244, C-MEP-AC-1718, C-MEP-AC-1698, C-MEP-AC-1748, A2280 | 100d | 7d |
| A2870 |  | Fire Fighting Connection & Pre-testing - Floor Services to Risers at Level 21 | 16d | 2016-08-13 | 2016-08-30 | C-MEP-FF-874, C-FF-SR-B3G-1381, C-FF-SR-B3G-1371, A2310 | 107d | 9d |
| A2860 |  | BMS Connection & Pre-testing - Floor Services to Risers at Level 21 | 16d | 2016-10-18 | 2016-11-05 | C-MEP-BMS-1085, A2300 SS+8d, C-ELV-SR-B3G-1772 | 93d | 0d |
| A2880 |  | ELV connection & Pre-testing - FLoor services to Risers at Level 21 | 16d | 2016-10-30 | 2016-11-16 | C-ELV-SMATV-1085, C-ELV-CCTV-1085, C-ELV-FA-1085, C-ELV-MSPA-1085, C-ELV-RMS-1085, C-ELV-CS-1085, C-ELV-SR-B3G-1572, A2320 | 105d | 0d |
|  | 8 | **Level 22- Utilities Connections & Pre-testing** |  | 2016-05-12 | 2016-11-14 |  |  |  |
| A3040 |  | Electrical Connection & Pre-testing - Floor Services to Risers at Level 22 | 16d | 2016-05-12 | 2016-05-30 | C-MEP-E-1466, C-E-SR-B3G-103, C-E-SR-B3G-113, A2480 | 12d | 0d |
| A3060 |  | Plumbing & Drainage Connection & Pre-testing - Floor Services to Risers at Level 22 | 16d | 2016-07-09 | 2016-07-26 | C-PD-SR-B3G-1421, C-PD-SR-B3G-1431, A2920, C-MEP-PD-1235, C-MEP-PD-1225 | 82d | 7d |
| A3050 |  | HVAC Connection & Pre-testing - Floor Services to Risers at Level 22 | 16d | 2016-08-31 | 2016-09-21 | C-HVAC-SR-B3G-224, C-HVAC-SR-B3G-244, C-MEP-AC-1958, C-MEP-AC-1988, C-MEP-AC-1938, A2490 | 61d | 0d |
| A3090 |  | ELV connection & Pre-testing - FLoor services to Risers at Level 22 | 16d | 2016-09-21 | 2016-10-10 | C-ELV-SMATV-1235, C-ELV-CCTV-1235, C-ELV-FA-1235, C-ELV-MSPA-1235, C-ELV-RMS-1235, C-ELV-CS-1235, C-ELV-SR-B3G-1572, A2530 SS | 105d | 7d |
| A3080 |  | Fire Fighting Connection & Pre-testing - Floor Services to Risers at Level 22 | 16d | 2016-10-24 | 2016-11-10 | C-MEP-FF-994, C-FF-SR-B3G-1381, C-FF-SR-B3G-1371, A2520 | 65d | 0d |
| A3070 |  | BMS Connection & Pre-testing - Floor Services to Risers at Level 22 | 16d | 2016-10-27 | 2016-11-14 | C-MEP-BMS-1235, A2510 SS+8d, C-ELV-SR-B3G-1772 | 93d | 0d |
|  | 7 | **Level 23- Utilities Connections & Pre-testing** |  | 2016-03-27 | 2016-11-14 |  |  |  |
| A3460 |  | Electrical Connection & Pre-testing - Floor Services to Risers at Level 23 | 16d | 2016-03-27 | 2016-04-13 | C-MEP-E-1826, C-E-SR-B3G-103, C-E-SR-B3G-113, A2900 | 36d | 0d |
| A3480 |  | Plumbing & Drainage Connection & Pre-testing - Floor Services to Risers at Level 23 | 16d | 2016-07-09 | 2016-07-26 | C-PD-SR-B3G-1421, C-PD-SR-B3G-1431, A2640, C-MEP-PD-1535, C-MEP-PD-1525 | 82d | 30d |
| A3470 |  | HVAC Connection & Pre-testing - Floor Services to Risers at Level 23 | 16d | 2016-07-17 | 2016-08-03 | C-HVAC-SR-B3G-224, C-HVAC-SR-B3G-244, C-MEP-AC-2438, C-MEP-AC-2418, C-MEP-AC-2468, A2910 | 100d | 30d |
| A3500 |  | Fire Fighting Connection & Pre-testing - Floor Services to Risers at Level 23 | 16d | 2016-08-24 | 2016-09-14 | C-MEP-FF-1234, C-FF-SR-B3G-1381, C-FF-SR-B3G-1371, A2940 | 100d | 24d |
| A3510 |  | ELV connection & Pre-testing - FLoor services to Risers at Level 23 | 16d | 2016-10-11 | 2016-10-29 | C-ELV-SMATV-1535, C-ELV-CCTV-1535, C-ELV-FA-1535, C-ELV-MSPA-1535, C-ELV-RMS-1535, C-ELV-CS-1535, C-ELV-SR-B3G-1572, A2950 SS | 121d | 0d |
| A3490 |  | BMS Connection & Pre-testing - Floor Services to Risers at Level 23 | 16d | 2016-10-27 | 2016-11-14 | C-MEP-BMS-1535, A2930 SS+8d, C-ELV-SR-B3G-1772 | 93d | 0d |
|  | 6 | **Level 24 - Utilities Connections & Pre-testing** |  | 2016-03-06 | 2016-11-14 |  |  |  |
| A3110 |  | Electrical Connection & Pre-testing - Floor Services to Risers at Level 24 | 16d | 2016-03-06 | 2016-03-23 | C-MEP-E-1526, C-E-SR-B3G-133, C-E-SR-B3G-143, A2620 SS | 102d | 22d |
| A3130 |  | Plumbing & Drainage Connection & Pre-testing - Floor Services to Risers at Level 24 | 16d | 2016-08-04 | 2016-08-22 | C-PD-SR-B3G-1461, C-PD-SR-B3G-1471, A2570, C-MEP-PD-1285, C-MEP-PD-1275 | 75d | 7d |
| A3120 |  | HVAC Connection & Pre-testing - Floor Services to Risers at Level 24 | 16d | 2016-08-13 | 2016-08-30 | C-HVAC-SR-B3G-284, C-HVAC-SR-B3G-304, C-MEP-AC-2038, C-MEP-AC-2018, C-MEP-AC-2068, A2630 | 77d | 7d |
| A3150 |  | Fire Fighting Connection & Pre-testing - Floor Services to Risers at Level 24 | 16d | 2016-09-14 | 2016-10-03 | C-MEP-FF-1034, C-FF-SR-B3G-1411, C-FF-SR-B3G-1401, A2660 | 85d | 9d |
| A3160 |  | ELV connection & Pre-testing - FLoor services to Risers at Level 24 | 16d | 2016-10-11 | 2016-10-29 | C-ELV-SMATV-1285, C-ELV-CCTV-1285, C-ELV-FA-1285, C-ELV-MSPA-1285, C-ELV-RMS-1285, C-ELV-CS-1285, C-ELV-SR-B3G-1592, A2670 SS | 105d | 0d |
| A3140 |  | BMS Connection & Pre-testing - Floor Services to Risers at Level 24 | 16d | 2016-10-27 | 2016-11-14 | C-MEP-BMS-1285, A2650 SS+8d, C-ELV-SR-B3G-1792 | 93d | 0d |

| ID | WBS | Activity | Duration | Start | Finish | Predecessors | Total float | Free float |
| --- | --- | --- | --- | --- | --- | --- | --- | --- |
|  | 5 | **Level 25 - Utilities Connections & Pre-testing** |  | 2016-03-27 | 2016-11-14 |  |  |  |
| A3180 |  | Electrical Connection & Pre-testing - Floor Services to Risers at Level 25 | 16d | 2016-03-27 | 2016-04-13 | C-MEP-E-1586, C-E-SR-B3G-133, C-E-SR-B3G-143, A2550 | 38d | 0d |
| A3200 |  | Plumbing & Drainage Connection & Pre-testing - Floor Services to Risers at Level 25 | 16d | 2016-08-04 | 2016-08-22 | C-PD-SR-B3G-1461, C-PD-SR-B3G-1471, A2780, C-MEP-PD-1335, C-MEP-PD-1325 | 75d | 7d |
| A3190 |  | HVAC Connection & Pre-testing - Floor Services to Risers at Level 25 | 16d | 2016-08-13 | 2016-08-30 | C-HVAC-SR-B3G-284, C-HVAC-SR-B3G-304, C-MEP-AC-2118, C-MEP-AC-2098, C-MEP-AC-2148, A2560 | 77d | 7d |
| A3220 |  | Fire Fighting Connection & Pre-testing - Floor Services to Risers at Level 25 | 16d | 2016-09-14 | 2016-10-03 | C-MEP-FF-1074, C-FF-SR-B3G-1411, C-FF-SR-B3G-1401, A2590 | 85d | 9d |
| A3230 |  | ELV connection & Pre-testing - FLoor services to Risers at Level 25 | 16d | 2016-10-11 | 2016-10-29 | C-ELV-SMATV-1335, C-ELV-CCTV-1335, C-ELV-FA-1335, C-ELV-MSPA-1335, C-ELV-RMS-1335, C-ELV-CS-1335, C-ELV-SR-B3G-1592, A2600 SS | 105d | 0d |
| A3210 |  | BMS Connection & Pre-testing - Floor Services to Risers at Level 25 | 16d | 2016-10-27 | 2016-11-14 | C-MEP-BMS-1335, A2580 SS+8d, C-ELV-SR-B3G-1792 | 93d | 0d |
|  | 4 | **Level 26 - Utilities Connections & Pre-testing** |  | 2016-03-06 | 2016-11-14 |  |  |  |
| A3320 |  | Electrical Connection & Pre-testing - Floor Services to Risers at Level 26 | 16d | 2016-03-06 | 2016-03-23 | C-MEP-E-1706, C-E-SR-B3G-133, C-E-SR-B3G-143, A2760 SS | 102d | 22d |
| A3340 |  | Plumbing & Drainage Connection & Pre-testing - Floor Services to Risers at Level 26 | 16d | 2016-08-04 | 2016-08-22 | C-PD-SR-B3G-1461, C-PD-SR-B3G-1471, A2430, C-MEP-PD-1435, C-MEP-PD-1425 | 75d | 7d |
| A3330 |  | HVAC Connection & Pre-testing - Floor Services to Risers at Level 26 | 16d | 2016-08-13 | 2016-08-30 | C-HVAC-SR-B3G-284, C-HVAC-SR-B3G-304, C-MEP-AC-2278, C-MEP-AC-2258, C-MEP-AC-2308, A2770 | 77d | 7d |
| A3360 |  | Fire Fighting Connection & Pre-testing - Floor Services to Risers at Level 26 | 16d | 2016-09-14 | 2016-10-03 | C-MEP-FF-1154, C-FF-SR-B3G-1411, C-FF-SR-B3G-1401, A2800 | 85d | 9d |
| A3370 |  | ELV connection & Pre-testing - FLoor services to Risers at Level 26 | 16d | 2016-09-21 | 2016-10-10 | C-ELV-SMATV-1435, C-ELV-CCTV-1435, C-ELV-FA-1435, C-ELV-MSPA-1435, C-ELV-RMS-1435, C-ELV-CS-1435, C-ELV-SR-B3G-1592, A2810 SS | 89d | 0d |
| A3350 |  | BMS Connection & Pre-testing - Floor Services to Risers at Level 26 | 16d | 2016-10-27 | 2016-11-14 | C-MEP-BMS-1435, A2790 SS+8d, C-ELV-SR-B3G-1792 | 93d | 0d |
|  | 3 | **Level 27 - Utilities Connections & Pre-testing** |  | 2016-03-06 | 2016-11-16 |  |  |  |
| A2970 |  | Electrical Connection & Pre-testing - Floor Services to Risers at Level 27 | 16d | 2016-03-06 | 2016-03-23 | C-MEP-E-1406, C-E-SR-B3G-133, C-E-SR-B3G-143, A2410 SS | 88d | 26d |
| A2990 |  | Plumbing & Drainage Connection & Pre-testing - Floor Services to Risers at Level 27 | 16d | 2016-08-04 | 2016-08-22 | C-PD-SR-B3G-1461, C-PD-SR-B3G-1471, A2710, C-MEP-PD-1185, C-MEP-PD-1175 | 75d | 7d |
| A2980 |  | HVAC Connection & Pre-testing - Floor Services to Risers at Level 27 | 16d | 2016-08-13 | 2016-08-30 | C-HVAC-SR-B3G-284, C-HVAC-SR-B3G-304, C-MEP-AC-1878, C-MEP-AC-1858, C-MEP-AC-1908, A2420 | 77d | 7d |
| A3010 |  | Fire Fighting Connection & Pre-testing - Floor Services to Risers at Level 27 | 16d | 2016-09-14 | 2016-10-03 | C-MEP-FF-954, C-FF-SR-B3G-1411, C-FF-SR-B3G-1401, A2450 | 85d | 9d |
| A3000 |  | BMS Connection & Pre-testing - Floor Services to Risers at Level 27 | 16d | 2016-10-27 | 2016-11-14 | C-MEP-BMS-1185, A2440 SS+8d, C-ELV-SR-B3G-1792 | 93d | 0d |
| A3020 |  | ELV connection & Pre-testing - FLoor services to Risers at Level 27 | 16d | 2016-10-30 | 2016-11-16 | C-ELV-SMATV-1185, C-ELV-CCTV-1185, C-ELV-FA-1185, C-ELV-MSPA-1185, C-ELV-RMS-1185, C-ELV-CS-1185, C-ELV-SR-B3G-1592, A2460 SS | 89d | 0d |
|  | 1 | **Level 28 - Utilities Connections & Pre-testing** |  | 2016-03-27 | 2016-11-14 |  |  |  |
| A3250 |  | Electrical Connection & Pre-testing - Floor Services to Risers at Level 28 | 16d | 2016-03-27 | 2016-04-13 | C-MEP-E-1646, C-E-SR-B3G-133, C-E-SR-B3G-143, A2690 | 52d | 10d |
| A3270 |  | Plumbing & Drainage Connection & Pre-testing - Floor Services to Risers at Level 28 | 16d | 2016-08-04 | 2016-08-22 | C-PD-SR-B3G-1471, A2850, C-MEP-PD-1385, C-MEP-PD-1375 | 75d | 7d |
| A3260 |  | HVAC Connection & Pre-testing - Floor Services to Risers at Level 28 | 16d | 2016-08-13 | 2016-08-30 | C-HVAC-SR-B3G-284, C-HVAC-SR-B3G-304, C-MEP-AC-2198, C-MEP-AC-2178, C-MEP-AC-2228, A2700 | 93d | 30d |
| A3290 |  | Fire Fighting Connection & Pre-testing - Floor Services to Risers at Level 28 | 16d | 2016-09-14 | 2016-10-03 | C-MEP-FF-1114, C-FF-SR-B3G-1411, C-FF-SR-B3G-1401, A2730 | 98d | 33d |
| A3300 |  | ELV connection & Pre-testing - FLoor services to Risers at Level 28 | 16d | 2016-10-11 | 2016-10-29 | C-ELV-SMATV-1385, C-ELV-CCTV-1385, C-ELV-FA-1385, C-ELV-MSPA-1385, C-ELV-RMS-1385, C-ELV-CS-1385, C-ELV-SR-B3G-1592, A2740 SS | 105d | 0d |
| A3280 |  | BMS Connection & Pre-testing - Floor Services to Risers at Level 28 | 16d | 2016-10-27 | 2016-11-14 | C-MEP-BMS-1385, A2720 SS+8d, C-ELV-SR-B3G-1792 | 93d | 0d |

| ID | WBS | Activity | Duration | Start | Finish | Predecessors | Total float | Free float |
| --- | --- | --- | --- | --- | --- | --- | --- | --- |
|  | 2 | **Level 29 - Utilities Connections & Pre-testing** |  | 2016-03-27 | 2016-11-16 |  |  |  |
| A3390 |  | Electrical Connection & Pre-testing - Floor Services to Risers at Level 29 | 16d | 2016-03-27 | 2016-04-13 | C-MEP-E-1766, C-E-SR-B3G-133, C-E-SR-B3G-143, A2830 | 52d | 10d |
| A3410 |  | Plumbing & Drainage Connection & Pre-testing - Floor Services to Risers at Level 29 | 16d | 2016-08-04 | 2016-08-22 | C-PD-SR-B3G-1461, C-PD-SR-B3G-1471, A3060, C-MEP-PD-1485, C-MEP-PD-1475 | 75d | 30d |
| A3400 |  | HVAC Connection & Pre-testing - Floor Services to Risers at Level 29 | 16d | 2016-08-13 | 2016-08-30 | C-HVAC-SR-B3G-284, C-HVAC-SR-B3G-304, C-MEP-AC-2358, C-MEP-AC-2338, C-MEP-AC-2388, A2840 | 93d | 30d |
| A3430 |  | Fire Fighting Connection & Pre-testing - Floor Services to Risers at Level 29 | 16d | 2016-09-14 | 2016-10-03 | C-MEP-FF-1194, C-FF-SR-B3G-1411, C-FF-SR-B3G-1401, A2870 | 98d | 33d |
| A3420 |  | BMS Connection & Pre-testing - Floor Services to Risers at Level 29 | 16d | 2016-10-27 | 2016-11-14 | C-MEP-BMS-1485, A2860 SS+8d, C-ELV-SR-B3G-1792 | 93d | 0d |
| A3440 |  | ELV connection & Pre-testing - FLoor services to Risers at Level 29 | 16d | 2016-10-30 | 2016-11-16 | C-ELV-SMATV-1485, C-ELV-CCTV-1485, C-ELV-FA-1485, C-ELV-MSPA-1485, C-ELV-RMS-1485, C-ELV-CS-1485, C-ELV-SR-B3G-1592, A2880 SS | 105d | 0d |
|  | 49 | **Level 30 - Utilities Connections & Pre-testing** |  | 2016-05-31 | 2016-11-29 |  |  |  |
| A3670 |  | Electrical Connection & Pre-testing - Floor Services to Risers at Level 30 | 16d | 2016-05-31 | 2016-06-18 | C-MEP-E-2006, C-E-SR-B3G-163, C-E-SR-B3G-173, A3040 | 12d | 0d |
| A3690 |  | Plumbing & Drainage Connection & Pre-testing - Floor Services to Risers at Level 30 | 16d | 2016-08-31 | 2016-09-21 | C-PD-SR-B3G-1501, C-PD-SR-B3G-1511, A3480, C-MEP-PD-1675, C-MEP-PD-1685 | 52d | 7d |
| A3680 |  | HVAC Connection & Pre-testing - Floor Services to Risers at Level 30 | 16d | 2016-09-22 | 2016-10-11 | C-HVAC-SR-B3G-344, C-HVAC-SR-B3G-364, C-MEP-AC-2678, C-MEP-AC-2658, C-MEP-AC-2708, A3050 | 61d | 0d |
| A3720 |  | ELV connection & Pre-testing - FLoor services to Risers at Level 30 | 16d | 2016-10-01 | 2016-10-18 | C-ELV-SMATV-1685, C-ELV-CCTV-1685, C-ELV-FA-1685, C-ELV-MSPA-1685, C-ELV-RMS-1685, C-ELV-CS-1685, C-ELV-SR-B3G-1612, A3090 SS | 98d | 0d |
| A3700 |  | BMS Connection & Pre-testing - Floor Services to Risers at Level 30 | 16d | 2016-11-06 | 2016-11-23 | C-MEP-BMS-1685, A3070 SS+8d, C-ELV-SR-B3G-1812 | 93d | 0d |
| A3710 |  | Fire Fighting Connection & Pre-testing - Floor Services to Risers at Level 30 | 16d | 2016-11-12 | 2016-11-29 | C-MEP-FF-1354, C-FF-SR-B3G-1411, C-FF-SR-B3G-1401, C-FF-SR-B3G-1441, C-FF-SR-B3G-1431, A3080 | 65d | 0d |
|  | 48 | **Level 31 - Utilities Connections & Pre-testing** |  | 2016-04-14 | 2016-11-23 |  |  |  |
| A3530 |  | Electrical Connection & Pre-testing - Floor Services to Risers at Level 31 | 16d | 2016-04-14 | 2016-05-02 | C-MEP-E-1886, C-E-SR-B3G-163, C-E-SR-B3G-173, A3460 | 36d | 0d |
| A3550 |  | Plumbing & Drainage Connection & Pre-testing - Floor Services to Risers at Level 31 | 16d | 2016-08-31 | 2016-09-21 | C-PD-SR-B3G-1501, C-PD-SR-B3G-1511, A3130, C-MEP-PD-1585, C-MEP-PD-1575 | 68d | 7d |
| A3540 |  | HVAC Connection & Pre-testing - Floor Services to Risers at Level 31 | 16d | 2016-09-08 | 2016-10-01 | C-HVAC-SR-B3G-344, C-HVAC-SR-B3G-364, C-MEP-AC-2518, C-MEP-AC-2498, C-MEP-AC-2548, A3470 | 70d | 7d |
| A3580 |  | ELV connection & Pre-testing - FLoor services to Risers at Level 31 | 16d | 2016-10-11 | 2016-10-29 | C-ELV-SMATV-1585, C-ELV-CCTV-1585, C-ELV-FA-1585, C-ELV-MSPA-1585, C-ELV-RMS-1585, C-ELV-CS-1585, C-ELV-SR-B3G-1612, A3510 SS | 121d | 0d |
| A3570 |  | Fire Fighting Connection & Pre-testing - Floor Services to Risers at Level 31 | 16d | 2016-10-15 | 2016-11-01 | C-MEP-FF-1274, C-FF-SR-B3G-1441, C-FF-SR-B3G-1431, A3500 | 76d | 9d |
| A3560 |  | BMS Connection & Pre-testing - Floor Services to Risers at Level 31 | 16d | 2016-11-06 | 2016-11-23 | C-MEP-BMS-1585, A3490 SS+8d, C-ELV-SR-B3G-1812 | 93d | 0d |
|  | 47 | **Level 32 - Utilities Connections & Pre-testing** |  | 2016-03-31 | 2016-11-23 |  |  |  |
| A3600 |  | Electrical Connection & Pre-testing - Floor Services to Risers at Level 32 | 16d | 2016-03-31 | 2016-04-18 | C-MEP-E-1946, C-E-SR-B3G-163, C-E-SR-B3G-173, A3110 SS | 80d | 28d |
| A3620 |  | Plumbing & Drainage Connection & Pre-testing - Floor Services to Risers at Level 32 | 16d | 2016-08-31 | 2016-09-21 | C-PD-SR-B3G-1501, C-PD-SR-B3G-1511, A3200, C-MEP-PD-1625, C-MEP-PD-1635, C-CS-S-T-471, C-MEP-PD-2905, C-MEP-PD-2955 | 68d | 7d |
| A3610 |  | HVAC Connection & Pre-testing - Floor Services to Risers at Level 32 | 16d | 2016-09-08 | 2016-10-01 | C-HVAC-SR-B3G-344, C-HVAC-SR-B3G-364, C-MEP-AC-2628, C-MEP-AC-2578, C-MEP-AC-2598, A3120 | 70d | 7d |
| A3650 |  | ELV connection & Pre-testing - FLoor services to Risers at Level 32 | 16d | 2016-10-11 | 2016-10-29 | C-ELV-SMATV-1635, C-ELV-CCTV-1635, C-ELV-FA-1635, C-ELV-MSPA-1635, C-ELV-RMS-1635, C-ELV-CS-1635, C-ELV-SR-B3G-1612, A3160 SS | 105d | 0d |
| A3640 |  | Fire Fighting Connection & Pre-testing - Floor Services to Risers at Level 32 | 16d | 2016-10-15 | 2016-11-01 | C-MEP-FF-1314, C-FF-SR-B3G-1441, C-FF-SR-B3G-1431, A3150 | 76d | 9d |
| A3630 |  | BMS Connection & Pre-testing - Floor Services to Risers at Level 32 | 16d | 2016-11-06 | 2016-11-23 | C-MEP-BMS-1635, A3140 SS+8d, C-ELV-SR-B3G-1812 | 93d | 0d |

| ID | WBS | Activity | Duration | Start | Finish | Predecessors | Total float | Free float |
| --- | --- | --- | --- | --- | --- | --- | --- | --- |
|  | 46 | **Level 33- Utilities Connections & Pre-testing** |  | 2016-04-14 | 2016-12-15 |  |  |  |
| A3740 |  | Electrical Connection & Pre-testing - Floor Services to Risers at Level 33 | 16d | 2016-04-14 | 2016-05-02 | C-MEP-E-2066, C-E-SR-B3G-163, C-E-SR-B3G-173, A3180 | 38d | 4d |
| A3760 |  | Plumbing & Drainage Connection & Pre-testing - Floor Services to Risers at Level 33 | 16d | 2016-08-31 | 2016-09-21 | C-PD-SR-B3G-1501, C-PD-SR-B3G-1511, A3340, C-MEP-PD-1735, C-MEP-PD-1725 | 68d | 7d |
| A3750 |  | HVAC Connection & Pre-testing - Floor Services to Risers at Level 33 | 16d | 2016-09-08 | 2016-10-01 | C-HVAC-SR-B3G-344, C-HVAC-SR-B3G-364, C-MEP-AC-2758, C-MEP-AC-2738, C-MEP-AC-2788, A3190 | 70d | 7d |
| A3790 |  | ELV connection & Pre-testing - FLoor services to Risers at Level 33 | 16d | 2016-10-11 | 2016-10-29 | C-ELV-SMATV-1735, C-ELV-CCTV-1735, C-ELV-FA-1735, C-ELV-MSPA-1735, C-ELV-RMS-1735, C-ELV-CS-1735, C-ELV-SR-B3G-1612, A3230 SS | 105d | 0d |
| A3780 |  | Fire Fighting Connection & Pre-testing - Floor Services to Risers at Level 33 | 16d | 2016-10-15 | 2016-11-01 | C-MEP-FF-1394, C-FF-SR-B3G-1441, C-FF-SR-B3G-1431, A3220 | 76d | 9d |
| A3770 |  | BMS Connection & Pre-testing - Floor Services to Risers at Level 33 | 16d | 2016-11-06 | 2016-11-23 | C-MEP-BMS-1735, A3210 SS+8d, C-ELV-SR-B3G-1812 | 93d | 0d |
| A10430 |  | Gas Connection & Pre-testing - Floor Services to Risers at Level 33 | 16d | 2016-11-28 | 2016-12-15 | C-MEP-Gas-2012, C-MEP-Gas-1992, C-MEP-Gas-1972, C-MEP-Gas-1952, C-MEP-Gas-1932, C-MEP-Gas-2945, A10420 | 38d | 0d |
|  | 45 | **Level 34 - Utilities Connections & Pre-testing** |  | 2016-03-31 | 2017-02-01 |  |  |  |
| A3880 |  | Electrical Connection & Pre-testing - Floor Services to Risers at Level 34 | 16d | 2016-03-31 | 2016-04-18 | C-MEP-E-2186, C-E-SR-B3G-163, C-E-SR-B3G-173, A3320 SS | 80d | 46d |
| A3900 |  | Plumbing & Drainage Connection & Pre-testing - Floor Services to Risers at Level 34 | 16d | 2016-08-31 | 2016-09-21 | C-PD-SR-B3G-1501, C-PD-SR-B3G-1511, A2990, C-MEP-PD-1835, C-MEP-PD-1825 | 68d | 7d |
| A3890 |  | HVAC Connection & Pre-testing - Floor Services to Risers at Level 34 | 16d | 2016-09-08 | 2016-10-01 | C-HVAC-SR-B3G-344, C-HVAC-SR-B3G-364, C-MEP-AC-2918, C-MEP-AC-2898, C-MEP-AC-2948, A3330 | 70d | 30d |
| A3930 |  | ELV connection & Pre-testing - FLoor services to Risers at Level 34 | 16d | 2016-10-11 | 2016-10-29 | C-ELV-SMATV-1835, C-ELV-CCTV-1835, C-ELV-FA-1835, C-ELV-MSPA-1835, C-ELV-RMS-1835, C-ELV-CS-1835, C-ELV-SR-B3G-1612, A3370 | 89d | 25d |
| A3920 |  | Fire Fighting Connection & Pre-testing - Floor Services to Risers at Level 34 | 16d | 2016-10-15 | 2016-11-01 | C-MEP-FF-1474, C-FF-SR-B3G-1441, C-FF-SR-B3G-1431, A3360 | 76d | 34d |
| A3910 |  | BMS Connection & Pre-testing - Floor Services to Risers at Level 34 | 16d | 2016-11-06 | 2016-11-23 | C-MEP-BMS-1835, A3350 SS+8d, C-ELV-SR-B3G-1812 | 93d | 11d |
| A10440 |  | Gas Connection & Pre-testing - Floor Services to Risers at Level 34 | 16d | 2017-01-15 | 2017-02-01 | C-MEP-Gas-2012, C-MEP-Gas-2965, A10430 | 14d | 0d |
|  | 44 | **Level 35 - Utilities Connections & Pre-testing** |  | 2016-04-05 | 2016-11-23 |  |  |  |
| A4300 |  | Electrical Connection & Pre-testing - Floor Services to Risers at Level 35 | 16d | 2016-04-05 | 2016-04-23 | C-MEP-E-2546, C-E-SR-B3G-163, C-E-SR-B3G-173, A2970 SS | 62d | 42d |
| A4320 |  | Plumbing & Drainage Connection & Pre-testing - Floor Services to Risers at Level 35 | 16d | 2016-08-31 | 2016-09-21 | C-PD-SR-B3G-1501, C-PD-SR-B3G-1511, A3270, C-MEP-PD-2135, C-MEP-PD-2125 | 68d | 30d |
| A4310 |  | HVAC Connection & Pre-testing - Floor Services to Risers at Level 35 | 16d | 2016-09-08 | 2016-10-01 | C-HVAC-SR-B3G-344, C-HVAC-SR-B3G-364, C-MEP-AC-3398, C-MEP-AC-3378, C-MEP-AC-3428, A2980 | 70d | 30d |
| A4340 |  | Fire Fighting Connection & Pre-testing - Floor Services to Risers at Level 35 | 16d | 2016-10-15 | 2016-11-01 | C-MEP-FF-1714, C-FF-SR-B3G-1441, C-FF-SR-B3G-1431, A3010 | 76d | 34d |
| A4350 |  | ELV connection & Pre-testing - FLoor services to Risers at Level 35 | 16d | 2016-10-30 | 2016-11-16 | C-ELV-SMATV-2135, C-ELV-CCTV-2135, C-ELV-FA-2135, C-ELV-MSPA-2135, C-ELV-RMS-2135, C-ELV-CS-2135, C-ELV-SR-B3G-1612, A3020 SS | 89d | 25d |
| A4330 |  | BMS Connection & Pre-testing - Floor Services to Risers at Level 35 | 16d | 2016-11-06 | 2016-11-23 | C-MEP-BMS-2135, A3000 SS+8d, C-ELV-SR-B3G-1812 | 93d | 11d |
|  | 43 | **Level 36- Utilities Connections & Pre-testing** |  | 2016-04-26 | 2016-11-30 |  |  |  |
| A3950 |  | Electrical Connection & Pre-testing - Floor Services to Risers at Level 36 | 16d | 2016-04-26 | 2016-05-14 | C-MEP-E-2246, C-E-SR-B3G-193, C-E-SR-B3G-203, A3250 | 42d | 12d |
| A3970 |  | Plumbing & Drainage Connection & Pre-testing - Floor Services to Risers at Level 36 | 16d | 2016-10-02 | 2016-10-19 | C-PD-SR-B3G-1541, C-PD-SR-B3G-1551, A3410, C-MEP-PD-1885, C-MEP-PD-1875 | 45d | 7d |
| A3960 |  | HVAC Connection & Pre-testing - Floor Services to Risers at Level 36 | 16d | 2016-10-10 | 2016-10-27 | C-HVAC-SR-B3G-404, C-HVAC-SR-B3G-424, C-MEP-AC-2998, C-MEP-AC-2978, C-MEP-AC-3028, A3260 | 63d | 7d |
| A4000 |  | ELV connection & Pre-testing - FLoor services to Risers at Level 36 | 16d | 2016-10-11 | 2016-10-29 | C-ELV-SMATV-1885, C-ELV-CCTV-1885, C-ELV-FA-1885, C-ELV-MSPA-1885, C-ELV-RMS-1885, C-ELV-CS-1885, C-ELV-SR-B3G-1622, A3300 SS | 105d | 25d |
| A3980 |  | BMS Connection & Pre-testing - Floor Services to Risers at Level 36 | 16d | 2016-11-06 | 2016-11-23 | C-MEP-BMS-1885, A3280 SS+8d, C-ELV-SR-B3G-1832 | 93d | 11d |
| A3990 |  | Fire Fighting Connection & Pre-testing - Floor Services to Risers at Level 36 | 16d | 2016-11-13 | 2016-11-30 | C-MEP-FF-1514, C-FF-SR-B3G-1471, C-FF-SR-B3G-1461, A3290 | 64d | 9d |

| ID | WBS | Activity | Duration | Start | Finish | Predecessors | Total float | Free float |
| --- | --- | --- | --- | --- | --- | --- | --- | --- |
|  | 42 | **Level 37 - Utilities Connections & Pre-testing** |  | 2016-04-26 | 2016-11-30 |  |  |  |
| A4020 |  | Electrical Connection & Pre-testing - Floor Services to Risers at Level 37 | 16d | 2016-04-26 | 2016-05-14 | C-MEP-E-2306, C-E-SR-B3G-193, C-E-SR-B3G-203, A3390 | 42d | 25d |
| A4040 |  | Plumbing & Drainage Connection & Pre-testing - Floor Services to Risers at Level 37 | 16d | 2016-10-02 | 2016-10-19 | C-PD-SR-B3G-1541, C-PD-SR-B3G-1551, A3690, C-MEP-PD-1935, C-MEP-PD-1925 | 45d | 7d |
| A4030 |  | HVAC Connection & Pre-testing - Floor Services to Risers at Level 37 | 16d | 2016-10-10 | 2016-10-27 | C-HVAC-SR-B3G-404, C-HVAC-SR-B3G-424, C-MEP-AC-3078, C-MEP-AC-3058, C-MEP-AC-3108, A3400 | 63d | 7d |
| A4070 |  | ELV connection & Pre-testing - FLoor services to Risers at Level 37 | 16d | 2016-10-30 | 2016-11-16 | C-ELV-SMATV-1935, C-ELV-CCTV-1935, C-ELV-FA-1935, C-ELV-MSPA-1935, C-ELV-RMS-1935, C-ELV-CS-1935, C-ELV-SR-B3G-1622, A3440 SS | 105d | 25d |
| A4050 |  | BMS Connection & Pre-testing - Floor Services to Risers at Level 37 | 16d | 2016-11-06 | 2016-11-23 | C-MEP-BMS-1935, A3420 SS+8d, C-ELV-SR-B3G-1832 | 93d | 11d |
| A4060 |  | Fire Fighting Connection & Pre-testing - Floor Services to Risers at Level 37 | 16d | 2016-11-13 | 2016-11-30 | C-MEP-FF-1554, C-FF-SR-B3G-1471, C-FF-SR-B3G-1461, A3430 | 64d | 9d |
|  | 41 | **Level 38- Utilities Connections & Pre-testing** |  | 2016-06-19 | 2016-12-19 |  |  |  |
| A4160 |  | Electrical Connection & Pre-testing - Floor Services to Risers at Level 38 | 16d | 2016-06-19 | 2016-07-10 | C-MEP-E-2426, C-E-SR-B3G-193, C-E-SR-B3G-203, A3670 | 12d | 0d |
| A4180 |  | Plumbing & Drainage Connection & Pre-testing - Floor Services to Risers at Level 38 | 16d | 2016-10-02 | 2016-10-19 | C-PD-SR-B3G-1541, C-PD-SR-B3G-1551, A3550, C-MEP-PD-2035, C-MEP-PD-2025 | 61d | 7d |
| A4170 |  | HVAC Connection & Pre-testing - Floor Services to Risers at Level 38 | 16d | 2016-10-12 | 2016-10-30 | C-HVAC-SR-B3G-404, C-HVAC-SR-B3G-424, C-MEP-AC-3238, C-MEP-AC-3218, C-MEP-AC-3268, A3680 | 61d | 5d |
| A4210 |  | ELV connection & Pre-testing - FLoor services to Risers at Level 38 | 16d | 2016-10-19 | 2016-11-06 | C-ELV-SMATV-2035, C-ELV-CCTV-2035, C-ELV-FA-2035, C-ELV-MSPA-2035, C-ELV-RMS-2035, C-ELV-CS-2035, C-ELV-SR-B3G-1622, A3720 | 98d | 18d |
| A4190 |  | BMS Connection & Pre-testing - Floor Services to Risers at Level 38 | 16d | 2016-11-15 | 2016-12-03 | C-MEP-BMS-2035, A3700 SS+8d, C-ELV-SR-B3G-1832 | 93d | 3d |
| A4200 |  | Fire Fighting Connection & Pre-testing - Floor Services to Risers at Level 38 | 16d | 2016-11-30 | 2016-12-19 | C-MEP-FF-1634, C-FF-SR-B3G-1471, C-FF-SR-B3G-1461, A3710 | 65d | 0d |
|  | 40 | **Level 39- Utilities Connections & Pre-testing** |  | 2016-05-03 | 2016-12-03 |  |  |  |
| A3810 |  | Electrical Connection & Pre-testing - Floor Services to Risers at Level 39 | 16d | 2016-05-03 | 2016-05-21 | C-MEP-E-2126, C-E-SR-B3G-193, C-E-SR-B3G-203, A3530 | 36d | 24d |
| A3830 |  | Plumbing & Drainage Connection & Pre-testing - Floor Services to Risers at Level 39 | 16d | 2016-10-02 | 2016-10-19 | C-PD-SR-B3G-1541, C-PD-SR-B3G-1551, A3620, C-MEP-PD-1785, C-MEP-PD-1775 | 61d | 7d |
| A3820 |  | HVAC Connection & Pre-testing - Floor Services to Risers at Level 39 | 16d | 2016-10-10 | 2016-10-27 | C-HVAC-SR-B3G-404, C-HVAC-SR-B3G-424, C-MEP-AC-2838, C-MEP-AC-2818, C-MEP-AC-2868, A3540 | 63d | 7d |
| A3860 |  | ELV connection & Pre-testing - FLoor services to Risers at Level 39 | 16d | 2016-10-11 | 2016-10-29 | C-ELV-SMATV-1785, C-ELV-CCTV-1785, C-ELV-FA-1785, C-ELV-MSPA-1785, C-ELV-RMS-1785, C-ELV-CS-1785, C-ELV-SR-B3G-1622, A3580 SS | 121d | 41d |
| A3850 |  | Fire Fighting Connection & Pre-testing - Floor Services to Risers at Level 39 | 16d | 2016-11-13 | 2016-11-30 | C-MEP-FF-1434, C-FF-SR-B3G-1471, C-FF-SR-B3G-1461, A3570 | 67d | 9d |
| A3840 |  | BMS Connection & Pre-testing - Floor Services to Risers at Level 39 | 16d | 2016-11-15 | 2016-12-03 | C-MEP-BMS-1785, A3560 SS+8d, C-ELV-SR-B3G-1832 | 93d | 3d |
|  | 39 | **Level 40 - Utilities Connections & Pre-testing** |  | 2016-05-03 | 2016-12-03 |  |  |  |
| A4090 |  | Electrical Connection & Pre-testing - Floor Services to Risers at Level 40 | 16d | 2016-05-03 | 2016-05-21 | C-MEP-E-2366, C-E-SR-B3G-193, C-E-SR-B3G-203, A3600 SS | 52d | 41d |
| A4110 |  | Plumbing & Drainage Connection & Pre-testing - Floor Services to Risers at Level 40 | 16d | 2016-10-02 | 2016-10-19 | C-PD-SR-B3G-1541, C-PD-SR-B3G-1551, A3760, C-MEP-PD-1985, C-MEP-PD-1975 | 61d | 7d |
| A4100 |  | HVAC Connection & Pre-testing - Floor Services to Risers at Level 40 | 16d | 2016-10-10 | 2016-10-27 | C-HVAC-SR-B3G-404, C-HVAC-SR-B3G-424, C-MEP-AC-3158, C-MEP-AC-3138, C-MEP-AC-3188, A3610 | 63d | 41d |
| A4140 |  | ELV connection & Pre-testing - FLoor services to Risers at Level 40 | 16d | 2016-10-11 | 2016-10-29 | C-ELV-SMATV-1985, C-ELV-CCTV-1985, C-ELV-FA-1985, C-ELV-MSPA-1985, C-ELV-RMS-1985, C-ELV-CS-1985, C-ELV-SR-B3G-1622, A3650 SS | 105d | 50d |
| A4130 |  | Fire Fighting Connection & Pre-testing - Floor Services to Risers at Level 40 | 16d | 2016-11-13 | 2016-11-30 | C-MEP-FF-1594, C-FF-SR-B3G-1471, C-FF-SR-B3G-1461, A3640 | 67d | 34d |
| A4120 |  | BMS Connection & Pre-testing - Floor Services to Risers at Level 40 | 16d | 2016-11-15 | 2016-12-03 | C-MEP-BMS-1985, A3630 SS+8d, C-ELV-SR-B3G-1832 | 93d | 28d |

| ID | WBS | Activity | Duration | Start | Finish | Predecessors | Total float | Free float |
| --- | --- | --- | --- | --- | --- | --- | --- | --- |
|  | 38 | **Level 41- Utilities Connections & Pre-testing** |  | 2016-05-08 | 2016-12-03 |  |  |  |
| A4230 |  | Electrical Connection & Pre-testing - Floor Services to Risers at Level 41 | 16d | 2016-05-08 | 2016-05-25 | C-MEP-E-2486, C-E-SR-B3G-193, C-E-SR-B3G-203, A3740 | 34d | 31d |
| A4250 |  | Plumbing & Drainage Connection & Pre-testing - Floor Services to Risers at Level 41 | 16d | 2016-10-02 | 2016-10-19 | C-PD-SR-B3G-1541, C-PD-SR-B3G-1551, A3900, C-MEP-PD-2085, C-MEP-PD-2075 | 61d | 30d |
| A4240 |  | HVAC Connection & Pre-testing - Floor Services to Risers at Level 41 | 16d | 2016-10-10 | 2016-10-27 | C-HVAC-SR-B3G-404, C-HVAC-SR-B3G-424, C-MEP-AC-3318, C-MEP-AC-3348, C-MEP-AC-3298, A3750 | 63d | 30d |
| A4280 |  | ELV connection & Pre-testing - FLoor services to Risers at Level 41 | 16d | 2016-10-11 | 2016-10-29 | C-ELV-SMATV-2085, C-ELV-CCTV-2085, C-ELV-FA-2085, C-ELV-MSPA-2085, C-ELV-RMS-2085, C-ELV-CS-2085, C-ELV-SR-B3G-1622, A3790 SS | 105d | 50d |
| A4270 |  | Fire Fighting Connection & Pre-testing - Floor Services to Risers at Level 41 | 16d | 2016-11-13 | 2016-11-30 | C-MEP-FF-1674, C-FF-SR-B3G-1471, C-FF-SR-B3G-1461, A3780 | 67d | 34d |
| A4260 |  | BMS Connection & Pre-testing - Floor Services to Risers at Level 41 | 16d | 2016-11-15 | 2016-12-03 | C-MEP-BMS-2085, A3770 SS+8d, C-ELV-SR-B3G-1832 | 93d | 28d |
|  | 37 | **Level 42 - Utilities Connections & Pre-testing** |  | 2016-05-24 | 2016-12-31 |  |  |  |
| A4440 |  | Electrical Connection & Pre-testing - Floor Services to Risers at Level 42 | 16d | 2016-05-24 | 2016-06-11 | C-MEP-E-2666, C-E-SR-B3G-223, C-E-SR-B3G-233, A3880 SS | 34d | 32d |
| A4460 |  | Plumbing & Drainage Connection & Pre-testing - Floor Services to Risers at Level 42 | 16d | 2016-10-29 | 2016-11-15 | C-PD-SR-B3G-1581, C-PD-SR-B3G-1591, A4320, C-MEP-PD-2235, C-MEP-PD-2225 | 38d | 7d |
| A4450 |  | HVAC Connection & Pre-testing - Floor Services to Risers at Level 42 | 16d | 2016-11-06 | 2016-11-23 | C-HVAC-SR-B3G-464, C-HVAC-SR-B3G-484, C-MEP-AC-3558, C-MEP-AC-3538, C-MEP-AC-3588, A3890 | 40d | 7d |
| A4470 |  | BMS Connection & Pre-testing - Floor Services to Risers at Level 42 | 16d | 2016-11-28 | 2016-12-15 | C-MEP-BMS-2235, A3910 SS+8d, C-ELV-SR-B3G-1852 | 82d | 17d |
| A4490 |  | ELV connection & Pre-testing - FLoor services to Risers at Level 42 | 16d | 2016-11-28 | 2016-12-15 | C-ELV-SMATV-2235, C-ELV-CCTV-2235, C-ELV-FA-2235, C-ELV-MSPA-2235, C-ELV-RMS-2235, C-ELV-CS-2235, C-ELV-SR-B3G-1652, A3930 | 64d | 9d |
| A4480 |  | Fire Fighting Connection & Pre-testing - Floor Services to Risers at Level 42 | 16d | 2016-12-12 | 2016-12-31 | C-MEP-FF-1794, C-FF-SR-B3G-1501, C-FF-SR-B3G-1491, A3920 | 42d | 9d |
|  | 36 | **Level 43 - Utilities Connections & Pre-testing** |  | 2016-05-24 | 2016-12-31 |  |  |  |
| A4860 |  | Electrical Connection & Pre-testing - Floor Services to Risers at Level 43 | 16d | 2016-05-24 | 2016-06-11 | C-MEP-E-3026, C-E-SR-B3G-223, C-E-SR-B3G-233, A4300 SS | 20d | 15d |
| A4880 |  | Plumbing & Drainage Connection & Pre-testing - Floor Services to Risers at Level 43 | 16d | 2016-10-29 | 2016-11-15 | C-PD-SR-B3G-1581, C-PD-SR-B3G-1591, A3970, C-MEP-PD-2535, C-MEP-PD-2525 | 38d | 7d |
| A4870 |  | HVAC Connection & Pre-testing - Floor Services to Risers at Level 43 | 16d | 2016-11-06 | 2016-11-23 | C-HVAC-SR-B3G-464, C-HVAC-SR-B3G-484, C-MEP-AC-4038, C-MEP-AC-4018, C-MEP-AC-4068, A4310 | 40d | 7d |
| A4890 |  | BMS Connection & Pre-testing - Floor Services to Risers at Level 43 | 16d | 2016-11-28 | 2016-12-15 | C-MEP-BMS-2535, A4330 SS+8d, C-ELV-SR-B3G-1852 | 82d | 17d |
| A4910 |  | ELV connection & Pre-testing - FLoor services to Risers at Level 43 | 16d | 2016-11-28 | 2016-12-15 | C-ELV-SMATV-2535, C-ELV-CCTV-2535, C-ELV-FA-2535, C-ELV-MSPA-2535, C-ELV-RMS-2535, C-ELV-CS-2535, C-ELV-SR-B3G-1652, A4350 SS | 64d | 9d |
| A4900 |  | Fire Fighting Connection & Pre-testing - Floor Services to Risers at Level 43 | 16d | 2016-12-12 | 2016-12-31 | C-MEP-FF-2034, C-FF-SR-B3G-1501, C-FF-SR-B3G-1491, A4340 | 42d | 9d |
|  | 35 | **Level 44 - Utilities Connections & Pre-testing** |  | 2016-05-29 | 2016-12-31 |  |  |  |
| A4580 |  | Electrical Connection & Pre-testing - Floor Services to Risers at Level 44 | 16d | 2016-05-29 | 2016-06-15 | C-MEP-E-2786, C-E-SR-B3G-223, C-E-SR-B3G-233, A3950 | 30d |  |
| A4600 |  | Plumbing & Drainage Connection & Pre-testing - Floor Services to Risers at Level 44 | 16d | 2016-10-29 | 2016-11-15 | C-PD-SR-B3G-1581, C-PD-SR-B3G-1591, A4040, C-MEP-PD-2335, C-MEP-PD-2325 | 38d | 7d |
| A4590 |  | HVAC Connection & Pre-testing - Floor Services to Risers at Level 44 | 16d | 2016-11-06 | 2016-11-23 | C-HVAC-SR-B3G-464, C-HVAC-SR-B3G-484, C-MEP-AC-3718, C-MEP-AC-3698, C-MEP-AC-3748, A3960 | 56d | 34d |
| A4610 |  | BMS Connection & Pre-testing - Floor Services to Risers at Level 44 | 16d | 2016-11-28 | 2016-12-15 | C-MEP-BMS-2335, A3980 SS+8d, C-ELV-SR-B3G-1852 | 82d | 67d |
| A4630 |  | ELV connection & Pre-testing - FLoor services to Risers at Level 44 | 16d | 2016-11-28 | 2016-12-15 | C-ELV-SMATV-2335, C-ELV-CCTV-2335, C-ELV-FA-2335, C-ELV-MSPA-2335, C-ELV-RMS-2335, C-ELV-CS-2335, C-ELV-SR-B3G-1652, A4000 | 80d | 25d |
| A4620 |  | Fire Fighting Connection & Pre-testing - Floor Services to Risers at Level 44 | 16d | 2016-12-12 | 2016-12-31 | C-MEP-FF-1874, C-FF-SR-B3G-1501, C-FF-SR-B3G-1491, A3990 | 55d | 28d |

| ID | WBS | Activity | Duration | Start | Finish | Predecessors | Total float | Free float |
| --- | --- | --- | --- | --- | --- | --- | --- | --- |
|  | 34 | **Level 45 - Utilities Connections & Pre-testing** |  | 2016-06-13 | 2016-12-31 |  |  |  |
| A4510 |  | Electrical Connection & Pre-testing - Floor Services to Risers at Level 45 | 16d | 2016-06-13 | 2016-06-30 | C-MEP-E-2726, C-E-SR-B3G-223, C-E-SR-B3G-233, A4020 | 17d |  |
| A4530 |  | Plumbing & Drainage Connection & Pre-testing - Floor Services to Risers at Level 45 | 16d | 2016-10-29 | 2016-11-15 | C-PD-SR-B3G-1581, C-PD-SR-B3G-1591, A4180, C-MEP-PD-2285, C-MEP-PD-2275 | 54d | 23d |
| A4520 |  | HVAC Connection & Pre-testing - Floor Services to Risers at Level 45 | 16d | 2016-11-06 | 2016-11-23 | C-HVAC-SR-B3G-464, C-HVAC-SR-B3G-484, C-MEP-AC-3638, C-MEP-AC-3618, C-MEP-AC-3668, A4030 | 56d | 34d |
| A4540 |  | BMS Connection & Pre-testing - Floor Services to Risers at Level 45 | 16d | 2016-11-28 | 2016-12-15 | C-MEP-BMS-2285, A4050 SS+8d, C-ELV-SR-B3G-1652 | 82d | 67d |
| A4560 |  | ELV connection & Pre-testing - FLoor services to Risers at Level 45 | 16d | 2016-11-28 | 2016-12-15 | C-ELV-SMATV-2285, C-ELV-CCTV-2285, C-ELV-FA-2285, C-ELV-MSPA-2285, C-ELV-RMS-2285, C-ELV-CS-2285, C-ELV-SR-B3G-1652, A4070 SS | 80d | 25d |
| A4550 |  | Fire Fighting Connection & Pre-testing - Floor Services to Risers at Level 45 | 16d | 2016-12-12 | 2016-12-31 | C-MEP-FF-1834, C-FF-SR-B3G-1501, C-FF-SR-B3G-1491, A4060 | 55d | 28d |
|  | 33 | **Level 46- Utilities Connections & Pre-testing** |  | 2016-07-11 | 2017-01-07 |  |  |  |
| A4720 |  | Electrical Connection & Pre-testing - Floor Services to Risers at Level 46 | 16d | 2016-07-11 | 2016-07-28 | C-MEP-E-2906, C-E-SR-B3G-223, C-E-SR-B3G-233, A4160 | 169d | 151d |
| A4740 |  | Plumbing & Drainage Connection & Pre-testing - Floor Services to Risers at Level 46 | 16d | 2016-10-29 | 2016-11-15 | C-PD-SR-B3G-1581, C-PD-SR-B3G-1591, C-MEP-PD-2435, C-MEP-PD-2425, A3830 | 54d | 23d |
| A4730 |  | HVAC Connection & Pre-testing - Floor Services to Risers at Level 46 | 16d | 2016-11-06 | 2016-11-23 | C-HVAC-SR-B3G-464, C-HVAC-SR-B3G-484, C-MEP-AC-3878, C-MEP-AC-3858, C-MEP-AC-3908, A4170 | 56d | 34d |
| A4750 |  | BMS Connection & Pre-testing - Floor Services to Risers at Level 46 | 16d | 2016-11-28 | 2016-12-15 | C-MEP-BMS-2435, A4190 SS+8d, C-ELV-SR-B3G-1852 | 90d | 75d |
| A4770 |  | ELV connection & Pre-testing - FLoor services to Risers at Level 46 | 16d | 2016-11-28 | 2016-12-15 | C-ELV-SMATV-2435, C-ELV-CCTV-2435, C-ELV-FA-2435, C-ELV-MSPA-2435, C-ELV-RMS-2435, C-ELV-CS-2435, C-ELV-SR-B3G-1652, A4210 | 80d | 25d |
| A4760 |  | Fire Fighting Connection & Pre-testing - Floor Services to Risers at Level 46 | 16d | 2016-12-20 | 2017-01-07 | C-MEP-FF-1954, C-FF-SR-B3G-1501, C-FF-SR-B3G-1491, A4200 | 68d | 38d |
|  | 32 | **Level 47 - Utilities Connections & Pre-testing** |  | 2016-06-19 | 2016-12-31 |  |  |  |
| A4370 |  | Electrical Connection & Pre-testing - Floor Services to Risers at Level 47 | 16d | 2016-06-19 | 2016-07-10 | C-MEP-E-2606, C-E-SR-B3G-223, C-E-SR-B3G-233, A3810 | 12d |  |
| A4390 |  | Plumbing & Drainage Connection & Pre-testing - Floor Services to Risers at Level 47 | 16d | 2016-10-29 | 2016-11-15 | C-PD-SR-B3G-1581, C-PD-SR-B3G-1591, A4110, C-MEP-PD-2185, C-MEP-PD-2175 | 54d | 23d |
| A4380 |  | HVAC Connection & Pre-testing - Floor Services to Risers at Level 47 | 16d | 2016-11-06 | 2016-11-23 | C-HVAC-SR-B3G-464, C-HVAC-SR-B3G-484, C-MEP-AC-3478, C-MEP-AC-3458, C-MEP-AC-3508, A3820 | 56d | 34d |
| A4400 |  | BMS Connection & Pre-testing - Floor Services to Risers at Level 47 | 16d | 2016-11-28 | 2016-12-15 | C-MEP-BMS-2185, A3840 SS+8d, C-ELV-SR-B3G-1852 | 90d | 75d |
| A4420 |  | ELV connection & Pre-testing - FLoor services to Risers at Level 47 | 16d | 2016-11-28 | 2016-12-15 | C-ELV-SMATV-2185, C-ELV-CCTV-2185, C-ELV-FA-2185, C-ELV-MSPA-2185, C-ELV-RMS-2185, C-ELV-CS-2185, C-ELV-SR-B3G-1652, A3860 SS | 80d | 25d |
| A4410 |  | Fire Fighting Connection & Pre-testing - Floor Services to Risers at Level 47 | 16d | 2016-12-12 | 2016-12-31 | C-MEP-FF-1754, C-FF-SR-B3G-1501, C-FF-SR-B3G-1491, A3850 | 58d | 28d |
|  | 31 | **Level 48 - Utilities Connections & Pre-testing** |  | 2016-06-20 | 2017-01-29 |  |  |  |
| A4650 |  | Electrical Connection & Pre-testing - Floor Services to Risers at Level 48 | 16d | 2016-06-20 | 2016-07-11 | C-MEP-E-2846, C-E-SR-B3G-253, C-E-SR-B3G-263, A4090 SS | 11d |  |
| A4670 |  | Plumbing & Drainage Connection & Pre-testing - Floor Services to Risers at Level 48 | 16d | 2016-11-24 | 2016-12-12 | C-PD-SR-B3G-1621, C-PD-SR-B3G-1631, A4250, C-MEP-PD-2385, C-MEP-PD-2375 | 31d | 0d |
| A4660 |  | HVAC Connection & Pre-testing - Floor Services to Risers at Level 48 | 16d | 2016-12-15 | 2017-01-03 | C-MEP-AC-3838, C-HVAC-SR-B3G-524, C-HVAC-SR-B3G-544, C-MEP-AC-3798, C-MEP-AC-3778, C-MEP-AC-3828, A4100 | 22d | 0d |
| A4680 |  | BMS Connection & Pre-testing - Floor Services to Risers at Level 48 | 16d | 2016-12-28 | 2017-01-15 | C-MEP-BMS-2385, A4120 SS+8d, C-ELV-SR-B3G-1872 | 65d | 50d |
| A4700 |  | ELV connection & Pre-testing - FLoor services to Risers at Level 48 | 16d | 2016-12-28 | 2017-01-15 | C-ELV-SMATV-2385, C-ELV-CCTV-2385, C-ELV-FA-2385, C-ELV-MSPA-2385, C-ELV-RMS-2385, C-ELV-CS-2385, C-ELV-SR-B3G-1672, A4140 | 55d | 0d |
| A4690 |  | Fire Fighting Connection & Pre-testing - Floor Services to Risers at Level 48 | 16d | 2017-01-11 | 2017-01-29 | C-MEP-FF-1914, C-FF-SR-B3G-1531, C-FF-SR-B3G-1521, A4130 | 33d | 3d |

| ID | WBS | Activity | Duration | Start | Finish | Predecessors | Total float | Free float |
| --- | --- | --- | --- | --- | --- | --- | --- | --- |
|  | 30 | **Level 49 - Utilities Connections & Pre-testing** |  | 2016-07-02 | 2017-01-29 |  |  |  |
| A4790 |  | Electrical Connection & Pre-testing - Floor Services to Risers at Level 49 | 16d | 2016-07-02 | 2016-07-23 | C-MEP-E-2966, C-E-SR-B3G-253, C-E-SR-B3G-263, A4230 | 3d |  |
| A4810 |  | Plumbing & Drainage Connection & Pre-testing - Floor Services to Risers at Level 49 | 16d | 2016-11-24 | 2016-12-12 | C-PD-SR-B3G-1621, C-PD-SR-B3G-1631, A4460, C-MEP-PD-2485, C-MEP-PD-2475, C-CS-S-T-471 | 31d | 0d |
| A4800 |  | HVAC Connection & Pre-testing - Floor Services to Risers at Level 49 | 16d | 2016-12-03 | 2016-12-21 | C-HVAC-SR-B3G-524, C-HVAC-SR-B3G-544, C-MEP-AC-3958, C-MEP-AC-3938, C-MEP-AC-3988, A4240 | 33d | 11d |
| A4820 |  | BMS Connection & Pre-testing - Floor Services to Risers at Level 49 | 16d | 2016-12-28 | 2017-01-15 | C-MEP-BMS-2485, C-ELV-SR-B3G-1672, A4260 SS+8d, C-ELV-SR-B3G-1872 | 65d | 50d |
| A4840 |  | ELV connection & Pre-testing - FLoor services to Risers at Level 49 | 16d | 2016-12-28 | 2017-01-15 | C-ELV-SMATV-2485, C-ELV-CCTV-2485, C-ELV-FA-2485, C-ELV-MSPA-2485, C-ELV-RMS-2485, C-ELV-CS-2485, C-ELV-SR-B3G-1672, A4280 | 55d | 0d |
| A4830 |  | Fire Fighting Connection & Pre-testing - Floor Services to Risers at Level 49 | 16d | 2017-01-11 | 2017-01-29 | C-MEP-FF-1994, C-FF-SR-B3G-1531, C-FF-SR-B3G-1521, A4270 | 33d | 3d |
|  | 29 | **Level 50- Utilities Connections & Pre-testing** |  | 2016-07-23 | 2017-02-26 |  |  |  |
| A4930 |  | Electrical Connection & Pre-testing - Floor Services to Risers at Level 50 | 16d | 2016-07-23 | 2016-08-09 | C-MEP-E-3086, C-E-SR-B3G-253, C-E-SR-B3G-263, A4440 | 159d | 141d |
| A4950 |  | Plumbing & Drainage Connection & Pre-testing - Floor Services to Risers at Level 50 | 16d | 2016-11-24 | 2016-12-12 | C-PD-SR-B3G-1621, C-PD-SR-B3G-1631, A4880, C-MEP-PD-2585, C-MEP-PD-2575 | 31d | 0d |
| A4940 |  | HVAC Connection & Pre-testing - Floor Services to Risers at Level 50 | 16d | 2016-12-03 | 2016-12-21 | C-HVAC-SR-B3G-524, C-HVAC-SR-B3G-544, C-MEP-AC-4118, C-MEP-AC-4098, C-MEP-AC-4148, A4450 | 33d | 11d |
| A4960 |  | BMS Connection & Pre-testing - Floor Services to Risers at Level 50 | 16d | 2016-12-28 | 2017-01-15 | C-MEP-BMS-2585, A4470 SS+8d, C-ELV-SR-B3G-1872 | 65d | 50d |
| A4980 |  | ELV connection & Pre-testing - FLoor services to Risers at Level 50 | 16d | 2016-12-28 | 2017-01-15 | C-ELV-SMATV-2585, C-ELV-CCTV-2585, C-ELV-FA-2585, C-ELV-MSPA-2585, C-ELV-RMS-2585, C-ELV-CS-2585, C-ELV-SR-B3G-1672, A4490 | 55d | 0d |
| A4970 |  | Fire Fighting Connection & Pre-testing - Floor Services to Risers at Level 50 | 16d | 2017-01-11 | 2017-01-29 | C-MEP-FF-2074, C-FF-SR-B3G-1531, C-FF-SR-B3G-1521, A4480 | 33d | 23d |
| A10450 |  | Gas Connection & Pre-testing - Floor Services to Risers at Level 50 | 16d | 2017-02-07 | 2017-02-26 | C-MEP-Gas-2072, C-MEP-Gas-2052, C-MEP-Gas-2032, C-MEP-Gas-3005, A10440 | 10d | 0d |
|  | 53 | **Level 51 - Utilities Connections & Pre-testing** |  | 2016-06-29 | 2017-03-21 |  |  |  |
| A5000 |  | Electrical Connection & Pre-testing - Floor Services to Risers at Level 51 | 16d | 2016-06-29 | 2016-07-20 | C-MEP-E-3146, C-E-SR-B3G-253, C-E-SR-B3G-263, A4860 | 5d |  |
| A5020 |  | Plumbing & Drainage Connection & Pre-testing - Floor Services to Risers at Level 51 | 16d | 2016-11-24 | 2016-12-12 | C-PD-SR-B3G-1621, C-PD-SR-B3G-1631, A4600, C-MEP-PD-2635, C-MEP-PD-2625 | 31d | 0d |
| A5010 |  | HVAC Connection & Pre-testing - Floor Services to Risers at Level 51 | 16d | 2016-12-03 | 2016-12-21 | C-HVAC-SR-B3G-524, C-HVAC-SR-B3G-544, C-MEP-AC-4198, C-MEP-AC-4178, C-MEP-AC-4228, A4870 | 33d | 11d |
| A5030 |  | BMS Connection & Pre-testing - Floor Services to Risers at Level 51 | 16d | 2016-12-28 | 2017-01-15 | C-MEP-BMS-2635, A4890 SS+8d, C-ELV-SR-B3G-1872 | 65d | 50d |
| A5050 |  | ELV connection & Pre-testing - FLoor services to Risers at Level 51 | 16d | 2016-12-28 | 2017-01-15 | C-ELV-SMATV-2635, C-ELV-CCTV-2635, C-ELV-FA-2635, C-ELV-MSPA-2635, C-ELV-RMS-2635, C-ELV-CS-2635, C-ELV-SR-B3G-1672, A4910 | 55d | 0d |
| A5040 |  | Fire Fighting Connection & Pre-testing - Floor Services to Risers at Level 51 | 16d | 2017-01-11 | 2017-01-29 | C-MEP-FF-2114, C-FF-SR-B3G-1531, C-FF-SR-B3G-1521, A4900 | 33d | 23d |
| A10460 |  | Gas Connection & Pre-testing - Floor Services to Risers at Level 51 | 16d | 2017-03-04 | 2017-03-21 | C-MEP-Gas-2072, C-MEP-Gas-2985, A10450 | 6d | 0d |
|  | 55 | **Lower Roof Level - Utilities Connections & Pre-testing** |  | 2016-06-25 | 2017-01-15 |  |  |  |
| A11210 |  | Electrical Connection & Pre-testing - Floor Services to Risers at LR level | 16d | 2016-06-25 | 2016-07-16 | C-E-SR-B3G-253, C-E-SR-B3G-263, C-MEP-E-3386 | 7d |  |
| A11230 |  | Plumbing & Drainage Connection & Pre-testing - Floor Services to Risers at LR level | 16d | 2016-11-24 | 2016-12-12 | C-PD-SR-B3G-1631, C-MEP-PD-2825, C-MEP-PD-2835 | 78d | 63d |
| A11220 |  | HVAC Connection & Pre-testing - Floor Services to Risers at LR level | 16d | 2016-12-03 | 2016-12-21 | C-HVAC-SR-B3G-524, C-HVAC-SR-B3G-544, C-MEP-AC-4548, C-MEP-AC-4538, C-MEP-AC-4498, C-MEP-AC-4528, C-MEP-AC-4518 | 71d | 56d |
| A11250 |  | Fire Fighting Connection & Pre-testing - Floor Services to Risers at LR level | 16d | 2016-12-19 | 2017-01-05 | C-FF-SR-B3G-1531, C-MEP-FF-2264, C-MEP-FF-2254, C-MEP-FF-2274 | 58d | 43d |
| A11240 |  | BMS Connection & Pre-testing - Floor Services to Risers at LR level | 16d | 2016-12-28 | 2017-01-15 | C-ELV-SR-B3G-1872, C-MEP-BMS-3035, C-MEP-BMS-3045 | 15d | 0d |
| A11260 |  | ELV connection & Pre-testing - FLoor services to Risers at LR level | 16d | 2016-12-28 | 2017-01-15 | C-ELV-SR-B3G-1672, C-ELV-CS-2825, C-ELV-RMS-3305, C-ELV-MSPA-2825, C-ELV-MSPA-2835, C-ELV-RMS-3295, C-ELV-FA-2835, C-ELV-FA-2825, C-ELV-CCTV-2825, C-ELV-CCTV-2835, C-ELV-SMATV-2835, C-ELV-SMATV-2825 | 50d | 32d |

| ID | WBS | Activity | Duration | Start | Finish | Predecessors | Total float | Free float | Cost |
| --- | --- | --- | --- | --- | --- | --- | --- | --- | --- |
|  | 56 | **Top Roof Level - Utilities Connections & Pre-testing** |  | 2016-07-03 | 2017-01-15 |  |  |  |  |
| A11280 |  | Electrical Connection & Pre-testing - Floor Services to Risers at TR level | 16d | 2016-07-03 | 2016-07-24 | C-E-SR-B3G-253, C-E-SR-B3G-263, C-MEP-E-3446, C-MEP-E-3436 | 0d |  |  |
| A11300 |  | Plumbing & Drainage Connection & Pre-testing - Floor Services to Risers at TR level | 16d | 2016-11-24 | 2016-12-12 | C-PD-SR-B3G-1631, C-PD-SR-B3G-1621, C-MEP-PD-2875, C-MEP-PD-2885 | 78d | 63d |  |
| A11290 |  | HVAC Connection & Pre-testing - Floor Services to Risers at TR level | 16d | 2016-12-03 | 2016-12-21 | C-HVAC-SR-B3G-524, C-HVAC-SR-B3G-544, C-MEP-AC-4608, C-MEP-AC-4618, C-MEP-AC-4578, C-MEP-AC-4628 | 71d | 56d |  |
| A11320 |  | Fire Fighting Connection & Pre-testing - Floor Services to Risers at TR level | 16d | 2016-12-19 | 2017-01-05 | C-FF-SR-B3G-1531, C-MEP-FF-2294, C-MEP-FF-2304, C-MEP-FF-2314 | 58d | 43d |  |
| A11310 |  | BMS Connection & Pre-testing - Floor Services to Risers at TR level | 16d | 2016-12-28 | 2017-01-15 | C-ELV-SR-B3G-1872, C-MEP-BMS-3115, C-MEP-BMS-3105 | 85d | 70d |  |
| A11330 |  | ELV connection & Pre-testing - FLoor services to Risers at TR level | 16d | 2016-12-28 | 2017-01-15 | C-ELV-SR-B3G-1672, C-ELV-CS-2885, C-ELV-RMS-3355, C-ELV-RMS-3345, C-ELV-MSPA-2885, C-ELV-MSPA-2875, C-ELV-FA-2885, C-ELV-FA-2875, C-ELV-CCTV-2875, C-ELV-CCTV-2885, C-ELV-SMATV-2885, C-ELV-SMATV-2875 | 50d | 32d |  |
|  | 7 | **Kitchens - MEP** |  | 2016-05-21 | 2016-10-29 |  |  |  |  |
|  | 7 | **Kitchens Finishes - Basement 2** |  | 2016-05-21 | 2016-06-05 |  |  |  |  |
| C-AF-KF-156 |  | Installation of Gratings & Grease Interceptor - Basement 2 | 14d | 2016-05-21 | 2016-06-05 | P-MEP-P-2643, C-AF-KF-66 SS | 99d | 0d | 14,820.77 |
| C-AF-KF-216 |  | Installation of FIre Supression system - Basement 2 | 14d | 2016-05-21 | 2016-06-05 | C-AF-KF-156 SS, P-MEP-FF-3683 | 99d | 6d | 35,972.33 |
|  | 8 | **Kitchens Finishes - Basement 1** |  | 2016-06-13 | 2016-06-28 |  |  |  |  |
| C-AF-KF-166 |  | Installation of Gratings & Grease Interceptor - Basement 1 | 14d | 2016-06-13 | 2016-06-28 | C-AF-KF-156, C-AF-KF-76 SS | 104d | 0d | 14,820.77 |
| C-AF-KF-226 |  | Installation of FIre Supression system - Basement 1 | 14d | 2016-06-13 | 2016-06-28 | C-AF-KF-166 SS, C-AF-KF-216 | 104d | 0d | 71,944.65 |
|  | 1 | **Kitchens Finishes - Ground Floor** |  | 2016-06-29 | 2016-07-18 |  |  |  |  |
| C-AF-KF-176 |  | Installation of Gratings & Grease Interceptor - Ground floor level | 14d | 2016-06-29 | 2016-07-18 | C-AF-KF-166, C-AF-KF-6 SS | 115d | 0d | 14,820.77 |
| C-AF-KF-236 |  | Installation of FIre Supression system - Ground floor level | 14d | 2016-06-29 | 2016-07-18 | C-AF-KF-176 SS, C-AF-KF-226 | 115d | 0d | 143,889.31 |
|  | 2 | **Kitchens Finishes - 1st Floor** |  | 2016-07-19 | 2016-08-03 |  |  |  |  |
| C-AF-KF-186 |  | Installation of Gratings & Grease Interceptor - - level 1 | 14d | 2016-07-19 | 2016-08-03 | C-AF-KF-176, C-AF-KF-16 SS | 116d | 0d | 14,820.77 |
| C-AF-KF-246 |  | Installation of FIre Supression system - - level 1 | 14d | 2016-07-19 | 2016-08-03 | C-AF-KF-186 SS, C-AF-KF-236 | 126d | 0d | 71,944.65 |
|  | 4 | **Kitchens Finishes - 3rd Floor** |  | 2016-08-04 | 2016-08-20 |  |  |  |  |
| C-AF-KF-126 |  | Installation of Gratings & Grease Interceptor - level 3 | 14d | 2016-08-04 | 2016-08-20 | C-AF-KF-186, C-AF-KF-26 SS | 116d | 0d | 14,820.77 |
| C-AF-KF-256 |  | Installation of FIre Supression system - - level 3 | 14d | 2016-08-04 | 2016-08-20 | C-AF-KF-126 SS, C-AF-KF-246 | 130d | 0d | 107,916.98 |
|  | 6 | **Kitchens Finishes - 33rd Floor** |  | 2016-08-21 | 2016-09-05 |  |  |  |  |
| C-AF-KF-136 |  | Installation of Gratings & Grease Interceptor - level 33 | 14d | 2016-08-21 | 2016-09-05 | C-AF-KF-126, C-AF-KF-36 SS | 116d | 0d | 14,820.77 |
| C-AF-KF-266 |  | Installation of FIre Supression system - level 33 | 14d | 2016-08-21 | 2016-09-05 | C-AF-KF-136 SS, C-AF-KF-256 | 148d | 133d | 71,944.65 |

Notes:
- C-AF-KF-156: Expenses: 1 14820.8
- C-AF-KF-216: Expenses: 1 35972.3
- C-AF-KF-166: Expenses: 1 14820.8
- C-AF-KF-226: Expenses: 1 71944.6
- C-AF-KF-176: Expenses: 1 14820.8
- C-AF-KF-236: Expenses: 1 143889
- C-AF-KF-186: Expenses: 1 14820.8
- C-AF-KF-246: Expenses: 1 71944.6
- C-AF-KF-126: Expenses: 1 14820.8
- C-AF-KF-256: Expenses: 1 107917
- C-AF-KF-136: Expenses: 1 14820.8
- C-AF-KF-266: Expenses: 1 71944.6

| ID | WBS | Activity | Duration | Start | Finish | Predecessors | Total float | Free float | Cost |
| --- | --- | --- | --- | --- | --- | --- | --- | --- | --- |
|  | 3 | **Kitchens Finishes - 34th Floor** |  | 2016-09-06 | 2016-09-26 |  |  |  |  |
| C-AF-KF-146 |  | Installation of Gratings & Grease Interceptor - level 34 | 14d | 2016-09-06 | 2016-09-26 | C-AF-KF-136, C-AF-KF-46 SS | 116d | 0d | 14,820.77 |
| C-AF-KF-276 |  | Installation of FIre Supression system - level 34 | 14d | 2016-09-06 | 2016-09-26 | C-AF-KF-146 SS, C-AF-KF-256 | 116d | 0d | 35,972.33 |
|  | 5 | **Kitchens Finishes - 50th Floor** |  | 2016-09-27 | 2016-10-12 |  |  |  |  |
| C-AF-KF-286 |  | Installation of FIre Supression system - Level 50 | 14d | 2016-09-27 | 2016-10-12 | C-AF-KF-276 | 116d | 0d | 71,944.65 |
|  | 9 | **Kitchens Finishes - 51st Floor** |  | 2016-10-13 | 2016-10-29 |  |  |  |  |
| C-AF-KF-296 |  | Installation of FIre Supression system - level 51 | 14d | 2016-10-13 | 2016-10-29 | C-AF-KF-286 | 116d | 101d | 71,944.65 |
|  | 2 | **Connections - Utilities Rooms to the Risers** |  | 2015-12-02 | 2016-07-20 |  |  |  |  |
| C-E-CT-001 |  | Electrical Installation, Connection & Testing of Bus Bar/Cabling & Wiring from MV panels to the riser | 25d | 2015-12-02 | 2015-12-31 | C-UR-PR-2401 FF, C-E-SR-B3G-03 FF, C-E-SR-B3G-02 FF | 60d | 20d |  |
| C-D-CT-001 |  | Drainage Installation, Connection & Testing of Piping from Pump Room to the riser | 20d | 2016-03-06 | 2016-03-28 | C-PD-SR-B3G-21 FF, C-UR-PR-2771 | 113d | 0d |  |
| C-PW-CT-001 |  | Potable Water Installation, Connection & Testing of Piping from Pump Room & Boiler Room to the riser | 20d | 2016-03-06 | 2016-03-28 | C-PD-SR-B3G-11 FF, C-UR-PR-2691, C-UR-PR-2731 | 113d | 0d |  |
| C-HVAC-CT-001 |  | HVAC Installation, Connection & Testing of Ducting & CWP from Chilled water Room & AHU Room to the riser | 25d | 2016-04-09 | 2016-05-07 | C-UR-PR-2461, C-HVAC-SR-B3G-4, C-HVAC-SR-B3G-02, C-UR-PR-2501, C-UR-PR-2511 | 61d | 0d |  |
| C-FF-CT-001 |  | Fire Fighting Installation, Connection & Testing of Piping from Fire Pump Room to the riser | 25d | 2016-04-24 | 2016-05-22 | C-FF-SR-B3G-11, C-FF-SR-B3G-02, C-UR-PR-2991 | 85d | 29d |  |
| C-G-CT-001 |  | Gas Installation, Connection & Testing of Piping from Gas Tank Room to the riser | 25d | 2016-05-17 | 2016-06-14 | C-UR-PR-3221, C-UR-PR-3271, C-MEP-R-Gas-1892, C-MEP-Gas-2845, C-MEP-Gas-2865 | 79d | 0d |  |
| C-BMS-CT-001 |  | BMS Installation, Connection & Testing of Piping from BMS Room to the riser | 25d | 2016-05-31 | 2016-06-28 | C-UR-PR-2951, C-ELV-SR-B3G-1692 | 165d | 72d |  |
| C-ELV-CT-001 |  | ELV Installation, Connection & Testing of ELV Rooms to the riser | 25d | 2016-06-19 | 2016-07-20 | C-ELV-SR-B3G-02, C-UR-PR-2811, C-UR-PR-2851, C-UR-PR-2901, C-UR-PR-3071 | 139d | 50d |  |
|  | 10 | **Utilities Room - MEP & Finishes** |  | 2015-03-22 | 2016-09-28 |  |  |  |  |
|  | 9 | **Basement 3** |  | 2015-03-22 | 2016-04-20 |  |  |  |  |
|  | 2 | **MCC Room** |  | 2015-04-19 | 2015-10-26 |  |  |  |  |
| C-UR-PR-321 |  | Fire Proofing & Block works at MCC Room - Basment 3 | 6d | 2015-04-19 | 2015-04-25 | C-UR-PR-241 | 56d | 0d | 164,184.15 |
| C-UR-PR-311 |  | FRC Pedestales at MCC Room - Basment 3 | 5d | 2015-04-26 | 2015-04-30 | C-UR-PR-321 | 106d | 0d | 22,011.57 |
| C-UR-PR-331 |  | Installation of MEP first fix at MCC Room - Basment 3 | 12d | 2015-04-26 | 2015-05-09 | C-UR-PR-321 | 56d | 0d | 33,017.39 |
| C-UR-PR-341 |  | Plaster Works & Painting first coat at MCC Room - Basment 3 | 12d | 2015-05-10 | 2015-05-23 | C-UR-PR-331 | 56d | 0d | 14,882.92 |
| C-UR-PR-351 |  | Screed Works at MCC Room - Basment 3 | 4d | 2015-05-24 | 2015-05-27 | C-UR-PR-341, C-UR-PR-311 | 87d | 0d | 25,133.95 |
| C-UR-PR-361 |  | Installation of MEP second Fix (Cabling, wirring etc..) at MCC Room - Basment 3 | 25d | 2015-05-28 | 2015-06-25 | C-UR-PR-351 | 87d | 0d | 33,017.39 |
| C-UR-PR-381 |  | Installation of Doors, Ramps & Stairs & E-poxy Paint at MCC Room - Basment 3 | 25d | 2015-05-28 | 2015-06-25 | C-UR-PR-351 | 114d | 0d | 65,553.77 |
| C-UR-PR-371 |  | Installation of MCC Panels at MCC Room - Basment 3 | 25d | 2015-06-27 | 2015-07-27 | C-UR-PR-361, P-MEP-AC-4283, C-UR-PR-381 FF | 175d | 0d | 935,492.6 |
| C-UR-PR-2601 |  | Connection of MCC Panels to MV Panels at MCC Room - Basment 3 | 25d | 2015-07-28 | 2015-08-25 | C-UR-PR-371 | 175d | 0d | 11,005.8 |
| C-UR-PR-2611 |  | Connection of MCC Panels to Mechanical Equipments at MCC Room - Basment 3 | 25d | 2015-08-26 | 2015-09-27 | C-UR-PR-2601 | 175d | 0d | 11,005.8 |
| C-UR-PR-2621 |  | Testing of MCC Panels at MCC Room - Basment 3 | 25d | 2015-09-28 | 2015-10-26 | C-UR-PR-2611, C-UR-PR-2601 | 200d | 0d | 55,028.98 |

Notes:
- C-AF-KF-146: Expenses: 1 14820.8
- C-AF-KF-276: Expenses: 1 35972.3
- C-AF-KF-286: Expenses: 1 71944.6
- C-AF-KF-296: Expenses: 1 71944.6
- C-UR-PR-321: Expenses: B 115741; F 48443.4
- C-UR-PR-311: Expenses: 1 22011.6
- C-UR-PR-331: Expenses: 1 33017.4
- C-UR-PR-341: Expenses: P 2927.38; WP 11955.5
- C-UR-PR-351: Expenses: S 25134
- C-UR-PR-361: Expenses: 1 33017.4
- C-UR-PR-381: Expenses: RU 1222.79; E 64331
- C-UR-PR-371: Expenses: 1 935493
- C-UR-PR-2601: Expenses: 1 11005.8
- C-UR-PR-2611: Expenses: 1 11005.8
- C-UR-PR-2621: Expenses: 1 55029

| ID | WBS | Activity | Duration | Start | Finish | Predecessors | Total float | Free float | Cost |
| --- | --- | --- | --- | --- | --- | --- | --- | --- | --- |
|  | 1 | **Fresh Air Fan Room** |  | 2015-04-05 | 2015-11-24 |  |  |  |  |
| C-UR-PR-161 |  | Fire Proofing & Block works - Fresh Air Fan Room at Basement 3 | 6d | 2015-04-05 | 2015-04-11 | C-CS-B3-01, C-UR-PR-81 | 56d | 0d | 164,184.15 |
| C-UR-PR-151 |  | FRC Pedestales - Fresh Air Fan Room at Basement 3 | 5d | 2015-05-02 | 2015-05-06 | C-UR-PR-161, C-UR-PR-311 | 116d | 0d |  |
| C-UR-PR-171 |  | Installation of MEP first fix - Fresh Air Fan Room at Basement 3 | 12d | 2015-05-10 | 2015-05-23 | C-UR-PR-161, C-UR-PR-331 | 56d | 0d |  |
| C-UR-PR-181 |  | Plaster Works & Painting first coat - Fresh Air Fan Room at Basement 3 | 12d | 2015-05-24 | 2015-06-06 | C-UR-PR-171, C-UR-PR-341 | 56d | 0d | 14,882.92 |
| C-UR-PR-191 |  | Screed Works - Fresh Air Fan Room at Basement 3 | 4d | 2015-06-07 | 2015-06-10 | C-UR-PR-181, C-UR-PR-151, C-UR-PR-351 | 92d | 8d | 25,133.95 |
| C-UR-PR-201 |  | Installation of MEP second Fix (Piping, Ducting, Valves, etc.) - Fresh Air Fan Room at Basement 3 | 25d | 2015-06-27 | 2015-07-27 | C-UR-PR-191, C-UR-PR-361 | 87d | 0d |  |
| C-UR-PR-221 |  | Installation of Doors, Ramps & Stairs & E-poxy Pain - Fresh Air Fan Room at Basement 3 | 25d | 2015-06-27 | 2015-07-27 | C-UR-PR-191, C-UR-PR-381 | 114d | 0d | 65,553.77 |
| C-UR-PR-211 |  | Installation of Fresh Air Fan - Fresh Air Fan Room at Basement 3 | 25d | 2015-07-28 | 2015-08-25 | C-UR-PR-201, P-MEP-AC-4323, C-UR-PR-221 | 175d | 0d |  |
| C-UR-PR-2631 |  | Connection of Fans to Internal Ducting Network - Fresh Air Fan Room at Basement 3 | 25d | 2015-08-26 | 2015-09-27 | C-UR-PR-211 | 175d | 0d |  |
| C-UR-PR-2641 |  | Connection of Fans to MCC's Panels - Fresh Air Fan Room at Basement 3 | 25d | 2015-09-28 | 2015-10-26 | C-UR-PR-2631, C-UR-PR-2611 | 175d | 0d |  |
| C-UR-PR-2651 |  | Testing of Fresh Air Fans - Fresh Air Fan Room at Basement 3 | 25d | 2015-10-27 | 2015-11-24 | C-UR-PR-2641, C-UR-PR-2621 | 200d | 139d |  |
|  | 7 | **Main Treated Pump Room** |  | 2015-03-22 | 2016-01-23 |  |  |  |  |
| C-UR-PR-021 |  | Fire Proofing & Block works at Main Treated Pump Room at Basement 3 | 6d | 2015-03-22 | 2015-03-28 | C-CS-B3-01, SD-CS-B3-332, P-CS-C-243, P-CS-C-283 | 56d | 0d | 164,184.15 |
| C-UR-PR-001 |  | FRC Pedestales at Main Treated Pump Room at Basement 3 | 5d | 2015-05-07 | 2015-05-12 | C-UR-PR-021, C-UR-PR-151 | 148d | 0d | 83,813.76 |
| C-UR-PR-011 |  | Installation of MEP first fix at Main Treated Pump Room at Basement 3 | 12d | 2015-05-24 | 2015-06-06 | C-UR-PR-021, P-MEP-E-4643, C-UR-PR-171 | 56d | 0d | 83,813.76 |
| C-UR-PR-21 |  | Plaster Works & Painting first coat at Main Treated Pump Room at Basement 3 | 12d | 2015-06-07 | 2015-06-20 | C-UR-PR-011, P-CS-C-283, C-UR-PR-181 | 56d | 0d | 14,882.92 |
| C-UR-PR-31 |  | Waterproofing & Screed Works at Main Treated Pump Room at Basement 3 | 4d | 2015-06-21 | 2015-06-24 | C-UR-PR-21, C-UR-PR-001, C-UR-PR-191 | 115d | 8d | 91,365.94 |
| C-UR-PR-41 |  | Installation of MEP second Fix (Piping, Valves, filters etc.) at Main Treated Pump Room at Basement 3 | 25d | 2015-07-28 | 2015-08-25 | C-UR-PR-31, P-MEP-E-4723, P-MEP-E-4763, P-MEP-E-4803, P-MEP-P-2443, P-MEP-P-2483, P-MEP-P-2523, C-UR-PR-201 | 89d | 0d | 335,255.03 |
| C-UR-PR-61 |  | Installation of Doors, Ramps & Stairs & E-poxy Pain at Main Treated Pump Room at Basement 3 | 25d | 2015-08-08 | 2015-09-05 | P-AF-B-1443, C-UR-PR-31, C-UR-PR-221 | 105d | 16d | 65,553.77 |
| C-UR-PR-51 |  | Installation of Water pumps, Filters etc... at Main Treated Pump Room at Basement 3 | 25d | 2015-08-26 | 2015-09-27 | C-UR-PR-41, P-MEP-P-2683, C-UR-PR-61 FF | 89d | 0d | 1,005,765.08 |
| C-UR-PR-2691 |  | Connection of Pumps to Internal Water Network at Main Treated Pump Room at Basement 3 | 25d | 2015-09-28 | 2015-10-26 | C-UR-PR-51 | 173d | 0d | 50,288.25 |
| C-UR-PR-2721 |  | Connection of Pumps to External Water Network at Main Treated Pump Room at Basement 3 | 25d | 2015-10-27 | 2015-11-24 | C-UR-PR-2691, C-MEP-PD-2915 | 174d | 0d | 33,525.5 |
| C-UR-PR-2701 |  | Connection of Pumps to MCC's Panels at Main Treated Pump Room at Basement 3 | 25d | 2015-11-25 | 2015-12-24 | C-UR-PR-2721, C-UR-PR-2611 | 174d | 0d |  |
| C-UR-PR-2711 |  | Testing of main treated water pumps at Main Treated Pump Room at Basement 3 | 25d | 2015-12-26 | 2016-01-23 | C-UR-PR-2701 | 224d | 131d | 83,813.76 |

Notes:
- C-UR-PR-161: Expenses: B 115741; F 48443.4
- C-UR-PR-181: Expenses: P 2927.38; WP 11955.5
- C-UR-PR-191: Expenses: S 25134
- C-UR-PR-221: Expenses: RU 1222.79; E 64331
- C-UR-PR-021: Expenses: B 115741; F 48443.4
- C-UR-PR-001: Expenses: 1 83813.8
- C-UR-PR-011: Expenses: 1 83813.8
- C-UR-PR-21: Expenses: P 2927.38; WP 11955.5
- C-UR-PR-31: Expenses: W 66232; S 25134
- C-UR-PR-41: Expenses: 1 335255
- C-UR-PR-61: Expenses: RU 1222.79; E 64331
- C-UR-PR-51: Expenses: 1 1005765
- C-UR-PR-2691: Expenses: 1 50288.2
- C-UR-PR-2721: Expenses: 1 33525.5
- C-UR-PR-2711: Expenses: 1 83813.8

| ID | WBS | Activity | Duration | Start | Finish | Predecessors | Total float | Free float | Cost |
| --- | --- | --- | --- | --- | --- | --- | --- | --- | --- |
|  | 8 | **Steam Boiler Room** |  | 2015-03-29 | 2016-02-22 |  |  |  |  |
| C-UR-PR-81 |  | Fire Proofing & Block works at Steam Boiler Room at Basement 3 | 6d | 2015-03-29 | 2015-04-04 | C-CS-B3-01, C-UR-PR-021 | 56d | 0d | 164,184.15 |
| C-UR-PR-71 |  | FRC Pedestales at Steam Boiler Room at Basement 3 | 5d | 2015-05-13 | 2015-05-18 | C-UR-PR-81, C-UR-PR-001 | 168d | 0d | 27,177.96 |
| C-UR-PR-91 |  | Installation of MEP first fix at Steam Boiler Room at Basement 3 | 12d | 2015-06-07 | 2015-06-20 | C-UR-PR-81, C-UR-PR-011 | 56d | 0d | 90,593.21 |
| C-UR-PR-101 |  | Plaster Works & Painting first coat at Steam Boiler Room at Basement 3 | 12d | 2015-06-21 | 2015-07-04 | C-UR-PR-91, C-UR-PR-21 | 56d | 0d | 14,882.92 |
| C-UR-PR-111 |  | Screed Works at Steam Boiler Room at Basement 3 | 4d | 2015-07-05 | 2015-07-08 | C-UR-PR-101, C-UR-PR-71, C-UR-PR-31 | 128d | 8d | 25,133.95 |
| C-UR-PR-121 |  | Installation of MEP second Fix (Piping, Valves, filters etc.) at Steam Boiler Room at Basement 3 | 25d | 2015-08-26 | 2015-09-27 | C-UR-PR-111, C-UR-PR-41 | 89d | 0d | 90,593.21 |
| C-UR-PR-131 |  | Installation of Boilers at Steam Boiler Room at Basement 3 | 25d | 2015-09-28 | 2015-10-26 | C-UR-PR-121, C-UR-PR-141 FF, C-UR-PR-61 | 173d | 0d | 362,372.85 |
| C-UR-PR-141 |  | Installation of Doors, Grating & E-poxy Paint at Steam Boiler Room at Basement 3 | 25d | 2015-09-28 | 2015-10-26 | C-UR-PR-111, C-UR-PR-51 | 89d | 0d | 66,813.76 |
| C-UR-PR-2731 |  | Installation of heat exchangers, Calorifiers. filter and softner at Steam Boiler Room at Basement 3 | 25d | 2015-10-27 | 2015-11-24 | C-UR-PR-131, C-UR-PR-2691, P-MEP-P-2843, P-MEP-P-2803 | 173d | 0d | 271,779.64 |
| C-UR-PR-2741 |  | Connection of Boilers to Water Network at Steam Boiler Room at Basement 3 | 25d | 2015-11-25 | 2015-12-24 | C-UR-PR-2731, C-UR-PR-2721 | 174d | 0d | 18,118.64 |
| C-UR-PR-2751 |  | Connection of Boilers to MCC's Panels at Steam Boiler Room at Basement 3 | 25d | 2015-12-26 | 2016-01-23 | C-UR-PR-2741, C-UR-PR-2611, C-UR-PR-2701 | 174d | 0d |  |
| C-UR-PR-2761 |  | Testing of Steam Boiller at Steam Boiler Room at Basement 3 | 25d | 2016-01-24 | 2016-02-22 | C-UR-PR-2751, C-UR-PR-2621 | 199d | 106d | 45,296.61 |
|  | 4 | **Drainage Pump Room** |  | 2015-04-12 | 2016-04-20 |  |  |  |  |
| C-UR-PR-241 |  | Fire Proofing & Block works at Drainage Pump Room at Basement 3 | 6d | 2015-04-12 | 2015-04-18 | C-CS-B3-01, C-UR-PR-161 | 56d | 0d | 164,184.15 |
| C-UR-PR-231 |  | FRC Pedestales at Drainage Pump Room at Basement 3 | 5d | 2015-05-19 | 2015-05-24 | C-UR-PR-241, C-UR-PR-71 | 188d | 47d | 174,249.95 |
| C-UR-PR-251 |  | Installation of MEP first fix at Drainage Pump Room at Basement 3 | 12d | 2015-06-21 | 2015-07-04 | C-UR-PR-241, C-UR-PR-91 | 56d | 0d | 8,175.48 |
| C-UR-PR-261 |  | Plaster Works & Painting first coat at Drainage Pump Room at Basement 3 | 12d | 2015-07-05 | 2015-07-20 | C-UR-PR-251, C-UR-PR-101 | 56d | 0d | 14,882.92 |
| C-UR-PR-271 |  | Waterproofing & Screed Works at Drainage Pump Room at Basement 3 | 4d | 2015-07-21 | 2015-07-25 | C-UR-PR-261, C-UR-PR-231, C-UR-PR-111 | 141d | 52d | 91,365.94 |
| C-UR-PR-281 |  | Installation of MEP second Fix (Piping, Filters, Valves, etc.) at Drainage Pump Room at Basement 3 | 25d | 2015-09-28 | 2015-10-26 | C-UR-PR-271, C-UR-PR-121 | 89d | 0d | 16,350.96 |
| C-UR-PR-301 |  | Installation of Doors & E-poxy Paint at Drainage Pump Room at Basement 3 | 25d | 2015-10-27 | 2015-11-24 | C-UR-PR-271, C-UR-PR-141 | 89d | 0d | 64,330.98 |
| C-UR-PR-291 |  | Installation of Pumps at Drainage Pump Room at Basement 3 | 25d | 2015-11-25 | 2015-12-24 | C-UR-PR-281, P-MEP-P-2883, P-MEP-P-2923, C-UR-PR-301, C-UR-PR-131 | 148d | 0d | 98,105.77 |
| C-UR-PR-2771 |  | Connection of Pumps to Internal Drainage Network at Drainage Pump Room at Basement 3 | 25d | 2015-12-26 | 2016-01-23 | C-UR-PR-291, C-UR-PR-2731 | 148d | 0d | 16,350.96 |
| C-UR-PR-2781 |  | Connection of Pumps to External Drainage Network at Drainage Pump Room at Basement 3 | 25d | 2016-01-24 | 2016-02-22 | C-UR-PR-2771, C-UR-PR-2741, C-MEP-MSP-41 | 149d | 0d | 16,350.96 |
| C-UR-PR-2791 |  | Connection of Pumps to MCC's Panels at Drainage Pump Room at Basement 3 | 25d | 2016-02-23 | 2016-03-22 | C-UR-PR-2781, C-UR-PR-2751 | 149d | 0d |  |
| C-UR-PR-2801 |  | Testing of Drainage pumps at Drainage Pump Room at Basement 3 | 25d | 2016-03-23 | 2016-04-20 | C-UR-PR-2791 | 149d | 56d | 8,175.48 |

Notes:
- C-UR-PR-81: Expenses: B 115741; F 48443.4
- C-UR-PR-71: Expenses: 1 27178
- C-UR-PR-91: Expenses: 1 90593.2
- C-UR-PR-101: Expenses: P 2927.38; WP 11955.5
- C-UR-PR-111: Expenses: S 25134
- C-UR-PR-121: Expenses: 1 90593.2
- C-UR-PR-131: Expenses: 1 362373
- C-UR-PR-141: Expenses: G 2482.78; E 64331
- C-UR-PR-2731: Expenses: 1 271780
- C-UR-PR-2741: Expenses: 1 18118.6
- C-UR-PR-2761: Expenses: 1 45296.6
- C-UR-PR-241: Expenses: B 115741; F 48443.4
- C-UR-PR-231: Expenses: 1 174250
- C-UR-PR-251: Expenses: 1 8175.48
- C-UR-PR-261: Expenses: P 2927.38; WP 11955.5
- C-UR-PR-271: Expenses: W 66232; S 25134
- C-UR-PR-281: Expenses: 1 16351
- C-UR-PR-301: Expenses: E 64331
- C-UR-PR-291: Expenses: 1 98105.8
- C-UR-PR-2771: Expenses: 1 16351
- C-UR-PR-2781: Expenses: 1 16351
- C-UR-PR-2801: Expenses: 1 8175.48

| ID | WBS | Activity | Duration | Start | Finish | Predecessors | Total float | Free float | Cost |
| --- | --- | --- | --- | --- | --- | --- | --- | --- | --- |
|  | 3 | **IDF Room** |  | 2015-04-26 | 2016-04-20 |  |  |  |  |
| C-UR-PR-401 |  | Fire Proofing & Block works at IDF Room at Basement 3 | 6d | 2015-04-26 | 2015-05-02 | C-CS-B3-01, C-UR-PR-321 | 58d | 0d | 164,184.15 |
| C-UR-PR-411 |  | Installation of MEP first fix at IDF Room at Basement 3 | 12d | 2015-06-21 | 2015-07-04 | C-UR-PR-401, C-UR-PR-251 SS | 56d | 0d |  |
| C-UR-PR-421 |  | Plaster Works & Painting first coat at IDF Room at Basement 3 | 12d | 2015-07-05 | 2015-07-20 | C-UR-PR-411, C-UR-PR-261 SS | 56d | 0d | 14,882.92 |
| C-UR-PR-431 |  | Raised FLooring at IDF Room at Basement 3 | 12d | 2015-07-21 | 2015-08-03 | C-UR-PR-421 | 56d | 0d | 1,818.18 |
| C-UR-PR-441 |  | Installation of MEP second Fix (Cabling, Wirring, etc..) at IDF Room at Basement 3 | 25d | 2015-10-27 | 2015-11-24 | C-UR-PR-431, C-UR-PR-281 | 89d | 0d |  |
| C-UR-PR-451 |  | Installation of IDF Racks & Panels at IDF Room at Basement 3 | 25d | 2015-11-25 | 2015-12-24 | C-UR-PR-441, C-UR-PR-461 FF | 89d | 0d |  |
| C-UR-PR-461 |  | Installation of Doors & E-poxy Paint at IDF Room at Basement 3 | 25d | 2015-11-25 | 2015-12-24 | C-UR-PR-431, C-UR-PR-301 | 89d | 0d | 64,330.98 |
| C-UR-PR-2811 |  | Connection of IDF racks & Panels to Internal Network at IDF Room at Basement 3 | 25d | 2015-12-26 | 2016-01-23 | C-UR-PR-451 | 89d | 0d |  |
| C-UR-PR-2821 |  | Connection of IDF racks & Panels to External Network at IDF Room at Basement 3 | 25d | 2016-01-24 | 2016-02-22 | C-UR-PR-2811 | 124d | 0d |  |
| C-UR-PR-2831 |  | Connection of IDF racks & Panels to power (Central Battery System / Emergency power ) at IDF Room at Basement 3 | 25d | 2016-02-23 | 2016-03-22 | C-UR-PR-2821 | 124d | 0d |  |
| C-UR-PR-2841 |  | Testing of IDF racks & Panels at IDF Room at Basement 3 | 25d | 2016-03-23 | 2016-04-20 | C-UR-PR-2831 | 124d | 0d |  |
|  | 7 | **Basement 2** |  | 2015-05-03 | 2016-05-19 |  |  |  |  |
|  | 1 | **Fresh Air Fan Room** |  | 2015-05-10 | 2015-12-24 |  |  |  |  |
| C-UR-PR-561 |  | Fire Proofing & Block works at Fresh Air Fan Room at Basement 2 | 6d | 2015-05-10 | 2015-05-16 | C-CS-B2-1, C-UR-PR-481 | 58d | 0d | 164,184.15 |
| C-UR-PR-551 |  | FRC Pedestales at Fresh Air Fan Room at Basement 2 | 5d | 2015-05-17 | 2015-05-21 | C-UR-PR-561, C-UR-PR-151 | 108d | 0d |  |
| C-UR-PR-571 |  | Installation of MEP first fix at Fresh Air Fan Room at Basement 2 | 6d | 2015-05-24 | 2015-05-30 | C-UR-PR-561, C-UR-PR-171 | 62d | 0d |  |
| C-UR-PR-581 |  | Plaster Works & Painting first coat at Fresh Air Fan Room at Basement 2 | 12d | 2015-06-07 | 2015-06-20 | C-UR-PR-571, C-UR-PR-181 | 56d | 0d | 14,882.92 |
| C-UR-PR-591 |  | Screed Works at Fresh Air Fan Room at Basement 2 | 4d | 2015-06-21 | 2015-06-24 | C-UR-PR-581, C-UR-PR-551, C-UR-PR-191 | 84d | 0d | 25,133.95 |
| C-UR-PR-601 |  | Installation of MEP second Fix at Fresh Air Fan Room at Basement 2 | 25d | 2015-06-27 | 2015-07-27 | C-UR-PR-591, C-UR-PR-201 SS | 87d | 3d |  |
| C-UR-PR-621 |  | Installation of Doors & E-poxy Painting at Fresh Air Fan Room at Basement 2 | 25d | 2015-07-28 | 2015-08-25 | C-UR-PR-591, C-UR-PR-221 | 139d | 0d | 64,330.98 |
| C-UR-PR-611 |  | Installation of Fresh Air Fan at Fresh Air Fan Room at Basement 2 | 25d | 2015-08-26 | 2015-09-27 | C-UR-PR-601, P-MEP-AC-4363, C-UR-PR-621 FF, C-UR-PR-211 | 175d | 0d |  |
| C-UR-PR-2661 |  | Connection of Fans to Internal Ducting Network at Fresh Air Fan Room at Basement 2 | 25d | 2015-09-28 | 2015-10-26 | C-UR-PR-611, C-UR-PR-2631 | 175d | 0d |  |
| C-UR-PR-2671 |  | Connection of Fans to MCC's Panels at Fresh Air Fan Room at Basement 2 | 25d | 2015-10-27 | 2015-11-24 | C-UR-PR-2661, C-UR-PR-2611, C-UR-PR-2641 | 175d | 0d |  |
| C-UR-PR-2681 |  | Testing of Fresh Air Fans at Fresh Air Fan Room at Basement 2 | 25d | 2015-11-25 | 2015-12-24 | C-UR-PR-2671, C-UR-PR-2621 | 175d | 114d |  |

Notes:
- C-UR-PR-401: Expenses: B 115741; F 48443.4
- C-UR-PR-421: Expenses: P 2927.38; WP 11955.5
- C-UR-PR-431: Expenses: F 1818.18
- C-UR-PR-461: Expenses: E 64331
- C-UR-PR-561: Expenses: B 115741; F 48443.4
- C-UR-PR-581: Expenses: P 2927.38; WP 11955.5
- C-UR-PR-591: Expenses: S 25134
- C-UR-PR-621: Expenses: E 64331

| ID | WBS | Activity | Duration | Start | Finish | Predecessors | Total float | Free float | Cost |
| --- | --- | --- | --- | --- | --- | --- | --- | --- | --- |
|  | 2 | **Gas Tank Room** |  | 2015-05-03 | 2016-01-23 |  |  |  |  |
| C-UR-PR-481 |  | Fire Proofing & Block works at Gas Tankk Room at Basment 2 | 6d | 2015-05-03 | 2015-05-09 | C-CS-B2-1, C-UR-PR-401 | 58d | 0d | 164,184.15 |
| C-UR-PR-471 |  | FRC Pedestales at Gas Tankk Room at Basment 2 | 5d | 2015-05-23 | 2015-05-27 | C-UR-PR-481, C-UR-PR-551 | 108d | 24d |  |
| C-UR-PR-491 |  | Installation of MEP first fix at Gas Tankk Room at Basment 2 | 6d | 2015-05-24 | 2015-05-30 | C-UR-PR-481, SD-CS-B3-1252, C-UR-PR-571 SS | 62d | 0d |  |
| C-UR-PR-501 |  | Plaster Works & Painting first coat at Gas Tankk Room at Basment 2 | 12d | 2015-06-07 | 2015-06-20 | C-UR-PR-491, C-UR-PR-581 SS | 56d | 0d | 14,882.92 |
| C-UR-PR-511 |  | Screed Works at Gas Tankk Room at Basment 2 | 4d | 2015-06-25 | 2015-06-29 | C-UR-PR-501, C-UR-PR-471, C-UR-PR-591 | 84d | 0d | 25,133.95 |
| C-UR-PR-521 |  | Installation of MEP second Fix at Gas Tankk Room at Basment 2 | 25d | 2015-06-30 | 2015-07-30 | C-UR-PR-511, C-UR-PR-601 SS | 84d | 28d |  |
| C-UR-PR-541 |  | Installation of Doors & E-poxy Painting at Gas Tankk Room at Basment 2 | 25d | 2015-08-26 | 2015-09-27 | C-UR-PR-511, C-UR-PR-621 | 139d | 0d | 64,330.98 |
| C-UR-PR-531 |  | Installation of Gas Tank at Gas Tankk Room at Basment 2 | 25d | 2015-09-28 | 2015-10-26 | C-UR-PR-521, P-MEP-AC-4603, C-UR-PR-541 | 151d | 0d |  |
| C-UR-PR-3221 |  | Connection of Gas Tank to External Network at Gas Tankk Room at Basment 2 | 25d | 2015-10-27 | 2015-11-24 | C-UR-PR-531 | 151d | 0d |  |
| C-UR-PR-3231 |  | Connection of Gas Tank to Gas Equipments at Gas Tankk Room at Basment 2 | 25d | 2015-11-25 | 2015-12-24 | C-UR-PR-3221 | 151d | 0d |  |
| C-UR-PR-3241 |  | Testing of Gas Tank at Gas Tankk Room at Basment 2 | 25d | 2015-12-26 | 2016-01-23 | C-UR-PR-3231 | 151d | 34d |  |
|  | 3 | **IDF Room** |  | 2015-05-10 | 2016-05-19 |  |  |  |  |
| C-UR-PR-641 |  | Fire Proofing & Block works at IDF Room at Basment 2 | 6d | 2015-05-10 | 2015-05-16 | C-CS-B2-1, C-UR-PR-561 SS | 58d | 0d | 164,184.15 |
| C-UR-PR-651 |  | Installation of MEP first fix at IDF Room at Basment 2 | 6d | 2015-05-24 | 2015-05-30 | C-UR-PR-641, C-UR-PR-491 SS | 62d | 4d |  |
| C-UR-PR-661 |  | Plaster Works & Painting first coat at IDF Room at Basment 2 | 12d | 2015-06-07 | 2015-06-20 | C-UR-PR-651, C-UR-PR-501 SS | 56d | 0d | 14,882.92 |
| C-UR-PR-671 |  | Raised Flooring at IDF Room at Basment 2 | 12d | 2015-07-21 | 2015-08-03 | C-UR-PR-661, C-UR-PR-431 SS | 56d | 0d | 1,818.18 |
| C-UR-PR-681 |  | Installation of MEP second Fix at IDF Room at Basment 2 | 25d | 2015-08-04 | 2015-09-01 | C-UR-PR-671, C-UR-PR-521 SS | 56d | 0d |  |
| C-UR-PR-701 |  | Installation of Doors & E-poxy Painting at IDF Room at Basment 2 | 25d | 2015-09-28 | 2015-10-26 | C-UR-PR-671, C-UR-PR-541 | 139d | 50d | 64,330.98 |
| C-UR-PR-691 |  | Installation of IDF Racks & Panels at IDF Room at Basment 2 | 25d | 2015-12-26 | 2016-01-23 | C-UR-PR-681, C-UR-PR-701, C-UR-PR-451 | 89d | 0d |  |
| C-UR-PR-2851 |  | Connection of IDF racks & Panels to Internal Network at IDF Room at Basment 2 | 25d | 2016-01-24 | 2016-02-22 | C-UR-PR-691, C-UR-PR-2811 | 89d | 0d |  |
| C-UR-PR-2861 |  | Connection of IDF racks & Panels to External Network at IDF Room at Basment 2 | 25d | 2016-02-23 | 2016-03-22 | C-UR-PR-2851, C-UR-PR-2821 | 124d | 0d |  |
| C-UR-PR-2871 |  | Connection of IDF racks & Panels to power (Central Battery System / Emergency power ) at IDF Room at Basment 2 | 25d | 2016-03-23 | 2016-04-20 | C-UR-PR-2861, C-UR-PR-2831 | 124d | 0d |  |
| C-UR-PR-2881 |  | Testing of IDF racks & Panels at IDF Room at Basment 2 | 25d | 2016-04-21 | 2016-05-19 | C-UR-PR-2871, C-UR-PR-2841 | 124d | 31d |  |

Notes:
- C-UR-PR-481: Expenses: B 115741; F 48443.4
- C-UR-PR-501: Expenses: P 2927.38; WP 11955.5
- C-UR-PR-511: Expenses: S 25134
- C-UR-PR-541: Expenses: E 64331
- C-UR-PR-641: Expenses: B 115741; F 48443.4
- C-UR-PR-661: Expenses: P 2927.38; WP 11955.5
- C-UR-PR-671: Expenses: F 1818.18
- C-UR-PR-701: Expenses: E 64331

| ID | WBS | Activity | Duration | Start | Finish | Predecessors | Total float | Free float | Cost |
| --- | --- | --- | --- | --- | --- | --- | --- | --- | --- |
|  | 8 | **Basement 1** |  | 2015-05-10 | 2016-09-28 |  |  |  |  |
|  | 18 | **Electrical Rooms /Substation** |  | 2015-05-10 | 2016-05-26 |  |  |  |  |
|  | 10 | **Transformer Room** |  | 2015-05-10 | 2015-12-31 |  |  |  |  |
| C-UR-PR-721 |  | FRC Pedestales & Trenches at Transformer Room at Basement 1 | 8d | 2015-05-10 | 2015-05-18 | C-CS-B1-11, C-UR-PR-641 SS | 58d | 0d | 41,999.74 |
| C-UR-PR-711 |  | Fire Proofing & Block Work at Transformer Room at Basement 1 | 8d | 2015-05-19 | 2015-05-27 | C-UR-PR-721 | 58d | 0d | 164,184.15 |
| C-UR-PR-731 |  | Installation of Embeded Items within Block Work at Transformer Room at Basement 1 | 6d | 2015-05-28 | 2015-06-03 | C-UR-PR-721, C-UR-PR-711, C-UR-PR-651 SS | 58d | 0d | 31,499.82 |
| C-UR-PR-741 |  | Plaster Works & Painting 1st Cost at Transformer Room at Basement 1 | 12d | 2015-06-07 | 2015-06-20 | C-UR-PR-731, C-UR-PR-661 SS | 56d | 0d | 14,882.92 |
| C-UR-PR-751 |  | Screed Works at Transformer Room at Basement 1 | 6d | 2015-06-21 | 2015-06-27 | C-UR-PR-741 | 56d | 0d | 25,133.95 |
| C-UR-PR-2071 |  | Kahramaa Civil Inspection for Transformer Room at Transformer Room at Basement 1 | 5d | 2015-06-28 | 2015-07-02 | C-UR-PR-751, C-UR-PR-711 | 56d | 0d | 31,499.82 |
| C-UR-PR-781 |  | Installation of Doors, Ramps & Stairs & E-poxy Pain at Transformer Room at Basement 1 | 25d | 2015-06-28 | 2015-07-28 | C-UR-PR-751 | 111d | 0d | 94,084.75 |
| C-UR-PR-2081 |  | Installation Of Cable Trays at Transformer Room at Basement 1 | 25d | 2015-07-04 | 2015-08-03 | C-UR-PR-2071 | 56d | 0d | 78,749.54 |
| C-UR-PR-2091 |  | Installation of Cabling at Transformer Room at Basement 1 | 25d | 2015-08-04 | 2015-09-01 | C-UR-PR-2081 | 56d | 0d | 78,749.54 |
| C-UR-PR-761 |  | Installation of MEP second Fix (FM 200, Sockets, Etc....) at Transformer Room at Basement 1 | 25d | 2015-08-04 | 2015-09-01 | C-UR-PR-751, C-UR-PR-2071, P-MEP-FF-3643, P-MEP-FF-3683, C-UR-PR-681 SS | 56d | 0d | 627,132.48 |
| C-UR-PR-771 |  | Installation of Transformers at Transformer Room at Basement 1 | 25d | 2015-09-02 | 2015-10-04 | C-UR-PR-761, C-UR-PR-2091, P-MEP-E-5083, C-UR-PR-781 FF | 172d | 0d | 1,181,243.09 |
| C-UR-PR-2381 |  | Conncetion of Transformers Internal Cabling at Transformer Room at Basement 1 | 25d | 2015-10-05 | 2015-11-02 | C-UR-PR-771 | 172d | 0d | 47,249.72 |
| C-UR-PR-2391 |  | Connection of Transformers to External Cabling at Transformer Room at Basement 1 | 25d | 2015-11-03 | 2015-12-01 | C-UR-PR-2381, C-UR-PR-771 | 172d | 0d | 31,499.82 |
| C-UR-PR-2421 |  | Testing of all connections of trasformers installation at Transformer Room at Basement 1 | 25d | 2015-12-02 | 2015-12-31 | C-UR-PR-2391, C-UR-PR-2381 | 172d | 150d | 78,749.54 |
|  | 1 | **HV Room** |  | 2015-05-19 | 2016-01-30 |  |  |  |  |
| C-UR-PR-2111 |  | FRC Pedestales & Trenches at HV Room at Basement 1 | 6d | 2015-05-19 | 2015-05-25 | C-CS-B1-11, C-UR-PR-721 | 85d | 0d | 3,281.23 |
| C-UR-PR-2121 |  | Fire Proofing & Block Work at HV Room at Basement 1 | 8d | 2015-05-28 | 2015-06-06 | C-UR-PR-2111, C-UR-PR-711 | 99d | 0d | 164,184.15 |
| C-UR-PR-2131 |  | Installation of Embeded Items within Block Work at HV Room at Basement 1 | 6d | 2015-06-04 | 2015-06-10 | C-UR-PR-2111, C-UR-PR-731 | 77d | 0d | 1,541.56 |
| C-UR-PR-2141 |  | Plaster Works & Painting 1st Cost at HV Room at Basement 1 | 12d | 2015-06-21 | 2015-07-04 | C-UR-PR-2131, C-UR-PR-741 | 69d | 0d | 14,882.92 |
| C-UR-PR-2151 |  | Screed Works at HV Room at Basement 1 | 6d | 2015-07-05 | 2015-07-11 | C-UR-PR-2141, C-UR-PR-751 | 69d | 0d | 25,133.95 |
| C-UR-PR-2161 |  | Kahramaa Civil Inspection for Transformer Room at HV Room at Basement 1 | 5d | 2015-07-12 | 2015-07-19 | C-UR-PR-2151, C-UR-PR-2121 | 69d | 13d | 87,499.49 |
| C-UR-PR-2211 |  | Installation of Doors, Ramps & Stairs & E-poxy Pain at HV Room at Basement 1 | 25d | 2015-07-29 | 2015-08-26 | C-UR-PR-2151, C-UR-PR-781 | 111d | 0d | 77,757.29 |
| C-UR-PR-2181 |  | Installation Of Cable Trays at HV Room at Basement 1 | 25d | 2015-08-04 | 2015-09-01 | C-UR-PR-2161, P-MEP-E-4723, C-UR-PR-2081 | 56d | 0d | 30,831.14 |
| C-UR-PR-2171 |  | Installation of MEP second Fix (FM 200, Sockets, Etc....) at HV Room at Basement 1 | 25d | 2015-09-02 | 2015-10-04 | C-UR-PR-2151, C-UR-PR-2161, P-MEP-FF-3643, P-MEP-FF-3683, C-UR-PR-761 | 56d | 0d | 568,599.53 |
| C-UR-PR-2191 |  | Installation of Cabling at HV Room at Basement 1 | 25d | 2015-09-02 | 2015-10-04 | C-UR-PR-2181, P-MEP-E-5003, C-UR-PR-2091 | 56d | 0d | 90,951.88 |
| C-UR-PR-2201 |  | Installation of HV Panels at HV Room at Basement 1 | 25d | 2015-10-05 | 2015-11-02 | C-UR-PR-2171, C-UR-PR-2191, P-MEP-E-4963, C-UR-PR-2211 FF | 147d | 0d | 1,118,282.69 |
| C-UR-PR-2351 |  | Conncetion of HV Panel Internal Cabling at HV Room at Basement 1 | 25d | 2015-11-03 | 2015-12-01 | C-UR-PR-2201 | 147d | 0d | 30,831.14 |
| C-UR-PR-2371 |  | Connection of HV Panel to External Cabling at HV Room at Basement 1 | 25d | 2015-12-02 | 2015-12-31 | C-UR-PR-2351 | 147d | 0d | 131,249.23 |
| C-UR-PR-2431 |  | Testing of all connections of HV Panels at HV Room at Basement 1 | 25d | 2016-01-02 | 2016-01-30 | C-UR-PR-2371, C-UR-PR-2351, C-UR-PR-2201 | 147d | 125d | 58,856.98 |

Notes:
- C-UR-PR-721: Expenses: 1 15749.9; 2 26249.8
- C-UR-PR-711: Expenses: B 115741; F 48443.4
- C-UR-PR-731: Expenses: 1 31499.8
- C-UR-PR-741: Expenses: P 2927.38; WP 11955.5
- C-UR-PR-751: Expenses: S 25134
- C-UR-PR-2071: Expenses: 1 31499.8
- C-UR-PR-781: Expenses: G 28531; RU 1222.79; E 64331
- C-UR-PR-2081: Expenses: 1 78749.5
- C-UR-PR-2091: Expenses: 1 78749.5
- C-UR-PR-761: Expenses: 1 627132
- C-UR-PR-771: Expenses: 1 1181243
- C-UR-PR-2381: Expenses: 1 47249.7
- C-UR-PR-2391: Expenses: 1 31499.8
- C-UR-PR-2421: Expenses: 1 78749.5
- C-UR-PR-2111: Expenses: 1 3281.23
- C-UR-PR-2121: Expenses: B 115741; F 48443.4
- C-UR-PR-2131: Expenses: 1 1541.56
- C-UR-PR-2141: Expenses: P 2927.38; WP 11955.5
- C-UR-PR-2151: Expenses: S 25134
- C-UR-PR-2161: Expenses: 1 87499.5
- C-UR-PR-2211: Expenses: G 12203.5; RU 1222.79; E 64331
- C-UR-PR-2181: Expenses: 1 30831.1
- C-UR-PR-2171: Expenses: 1 568600
- C-UR-PR-2191: Expenses: 1 90951.9
- C-UR-PR-2201: Expenses: 1 1118283
- C-UR-PR-2351: Expenses: 1 30831.1
- C-UR-PR-2371: Expenses: 1 131249
- C-UR-PR-2431: Expenses: 1 58857

| ID | WBS | Activity | Duration | Start | Finish | Predecessors | Total float | Free float | Cost |
| --- | --- | --- | --- | --- | --- | --- | --- | --- | --- |
|  | 13 | **MV Room** |  | 2015-05-26 | 2016-02-29 |  |  |  |  |
| C-UR-PR-2231 |  | FRC Pedestales & Trenches at MV Room at Basement 1 | 6d | 2015-05-26 | 2015-06-01 | C-CS-B1-11, C-UR-PR-2111 | 93d | 0d | 22,640.49 |
| C-UR-PR-2241 |  | Fire Proofing & Block Work at MV Room at Basement 1 | 8d | 2015-06-07 | 2015-06-15 | C-UR-PR-2231, C-UR-PR-2121 | 116d | 0d | 164,184.15 |
| C-UR-PR-2251 |  | Installation of Embeded Items within Block Work at MV Room at Basement 1 | 15d | 2015-06-11 | 2015-06-28 | C-UR-PR-2231, C-UR-PR-2131 | 85d | 0d | 45,280.99 |
| C-UR-PR-2261 |  | Plaster Works & Painting 1st Cost at MV Room at Basement 1 | 12d | 2015-07-05 | 2015-07-20 | C-UR-PR-2251, C-UR-PR-2141 | 80d | 0d | 14,882.92 |
| C-UR-PR-2271 |  | Screed Works at MV Room at Basement 1 | 8d | 2015-07-21 | 2015-07-29 | C-UR-PR-2261, C-UR-PR-2151 | 80d | 0d | 25,133.95 |
| C-UR-PR-2281 |  | Kahramaa Civil Inspection for MV Room at MV Room at Basement 1 | 5d | 2015-07-30 | 2015-08-04 | C-UR-PR-2271, C-UR-PR-2241 | 80d | 24d | 45,280.99 |
| C-UR-PR-2331 |  | Installation of Doors, Ramps & Stairs & E-poxy Painat MV Room at Basement 1 | 25d | 2015-08-27 | 2015-09-28 | C-UR-PR-2271, C-UR-PR-2211 | 111d | 0d | 65,553.77 |
| C-UR-PR-2301 |  | Installation Of Cable Trays at MV Room at Basement 1 | 25d | 2015-09-02 | 2015-10-04 | C-UR-PR-2281, C-UR-PR-2181 | 56d | 0d | 113,202.46 |
| C-UR-PR-2291 |  | Installation of MEP second Fix (FM 200, Sockets, Etc....) at MV Room at Basement 1 | 25d | 2015-10-05 | 2015-11-02 | C-UR-PR-2271, C-UR-PR-2281, P-MEP-FF-3643, P-MEP-FF-3683, C-UR-PR-2261, C-UR-PR-2171 | 56d | 0d | 459,253.47 |
| C-UR-PR-2311 |  | Installation of Cabling at MV Room at Basement 1 | 25d | 2015-10-05 | 2015-11-02 | C-UR-PR-2301, C-UR-PR-2191 | 56d | 0d | 113,202.46 |
| C-UR-PR-2321 |  | Installation & Connection of MV Panels at MV Room at Basement 1 | 25d | 2015-11-03 | 2015-12-01 | C-UR-PR-2291, C-UR-PR-2311, P-MEP-E-5123, C-UR-PR-2331 FF | 56d | 0d | 1,698,036.95 |
| C-UR-PR-2401 |  | Installation & Conncetion of UPS & Central Battery to MV Panel Internal Cabling at MV Room at Basement 1 | 25d | 2015-12-02 | 2015-12-31 | C-UR-PR-2321, P-MEP-E-5443, P-MEP-E-5483 | 56d | 0d | 566,961.4 |
| C-UR-PR-2411 |  | Connection of MV Panel to External Cabling at MV Room at Basement 1 | 25d | 2016-01-02 | 2016-01-30 | C-UR-PR-2401 | 56d | 0d | 45,280.99 |
| C-UR-PR-2441 |  | Testing all connections OF MV Panels at MV Room at Basement 1 | 25d | 2016-01-31 | 2016-02-29 | C-UR-PR-2411 | 56d | 0d | 113,202.46 |
|  | 4 | **Generator Room** |  | 2015-06-02 | 2016-04-27 |  |  |  |  |
| C-UR-PR-1351 |  | FRC Pedestales & Trenches at Generator Room at Basement 1 | 5d | 2015-06-02 | 2015-06-07 | C-CS-B1-11, C-UR-PR-2231 | 158d | 7d | 76,153.82 |
| C-UR-PR-1361 |  | Fire Proofing & Block works at Generator Room at Basement 1 | 6d | 2015-06-16 | 2015-06-22 | C-CS-B1-11, C-UR-PR-1351, C-UR-PR-2241 | 151d | 0d | 164,184.15 |
| C-UR-PR-1371 |  | Installation of MEP first fix at Generator Room at Basement 1 | 6d | 2015-06-29 | 2015-07-05 | C-UR-PR-1361, C-UR-PR-2251 | 163d | 0d | 99,807.98 |
| C-UR-PR-1381 |  | Plaster Works & Painting 1st Cost at Generator Room at Basement 1 | 12d | 2015-07-21 | 2015-08-03 | C-UR-PR-1371, C-UR-PR-2261 | 152d | 0d | 14,882.92 |
| C-UR-PR-1391 |  | Screed Works at Generator Room at Basement 1 | 4d | 2015-08-04 | 2015-08-08 | C-UR-PR-1381, C-UR-PR-2271 | 152d | 8d | 25,133.95 |
| C-UR-PR-1421 |  | Installation of Doors, Ramps & Stairs & E-poxy Pain at Generator Room at Basement 1 | 25d | 2015-09-29 | 2015-10-27 | C-UR-PR-1391, C-UR-PR-2331 | 136d | 0d | 65,553.77 |
| C-UR-PR-1401 |  | Installation of MEP second Fix at Generator Room at Basement 1 | 25d | 2015-11-03 | 2015-12-01 | C-UR-PR-1391, C-UR-PR-2291 | 81d | 0d | 99,807.98 |
| C-UR-PR-1411 |  | Installation of Generators at Generator Room at Basement 1 | 25d | 2015-12-02 | 2015-12-31 | C-UR-PR-1401, P-MEP-E-5323, C-UR-PR-1421 FF | 143d | 0d | 3,243,759.48 |
| C-UR-PR-3111 |  | Connection of Generators at Generator Room at Basement 1 | 25d | 2016-01-02 | 2016-01-30 | C-UR-PR-1411 | 143d | 0d | 499,039.92 |
| C-UR-PR-3121 |  | Conncetion of Generator to ATS Panels (Emergency Panels) at Generator Room at Basement 1 | 25d | 2016-01-31 | 2016-02-29 | C-UR-PR-3111 | 143d | 0d | 49,903.99 |
| C-UR-PR-3151 |  | Installation & Connection of the Fuel Tank to the Extetrnal Network at Generator Room at Basement 1 | 25d | 2016-01-31 | 2016-02-29 | P-MEP-E-5363, C-UR-PR-3111 | 143d | 0d | 49,903.99 |
| C-UR-PR-3161 |  | Installation & Connection of the Exhaust Fan & Duct to the generator at Generator Room at Basement 1 | 25d | 2016-01-31 | 2016-02-29 | C-UR-PR-3111 | 168d | 25d | 49,903.99 |
| C-UR-PR-3131 |  | Connection of Generator to MV panel at Generator Room at Basement 1 | 25d | 2016-03-01 | 2016-03-29 | C-UR-PR-3121 | 143d | 0d | 49,903.99 |
| C-UR-PR-3171 |  | Installation & Connection of the Fuel Pumps to the Generator & to the Tank at Generator Room at Basement 1 | 25d | 2016-03-01 | 2016-03-29 | P-MEP-E-5403, C-UR-PR-3151 | 143d | 0d | 49,903.99 |
| C-UR-PR-3141 |  | Testing all connections OF Generator at Generator Room at Basement 1 | 25d | 2016-03-30 | 2016-04-27 | C-UR-PR-3131, C-UR-PR-3151, C-UR-PR-3161, C-UR-PR-3171 | 143d | 50d | 249,519.96 |

Notes:
- C-UR-PR-2231: Expenses: 1 22640.5
- C-UR-PR-2241: Expenses: B 115741; F 48443.4
- C-UR-PR-2251: Expenses: 1 45281
- C-UR-PR-2261: Expenses: P 2927.38; WP 11955.5
- C-UR-PR-2271: Expenses: S 25134
- C-UR-PR-2281: Expenses: 1 45281
- C-UR-PR-2331: Expenses: RU 1222.79; E 64331
- C-UR-PR-2301: Expenses: 1 113202
- C-UR-PR-2291: Expenses: 1 459253
- C-UR-PR-2311: Expenses: 1 113202
- C-UR-PR-2321: Expenses: 1 1698037
- C-UR-PR-2401: Expenses: 1 67921.5; 2 499040
- C-UR-PR-2411: Expenses: 1 45281
- C-UR-PR-2441: Expenses: 1 113202
- C-UR-PR-1351: Expenses: 1 49904; 2 26249.8
- C-UR-PR-1361: Expenses: B 115741; F 48443.4
- C-UR-PR-1371: Expenses: 1 99808
- C-UR-PR-1381: Expenses: P 2927.38; WP 11955.5
- C-UR-PR-1391: Expenses: S 25134
- C-UR-PR-1421: Expenses: RU 1222.79; E 64331
- C-UR-PR-1401: Expenses: 1 99808
- C-UR-PR-1411: Expenses: 1 3243759
- C-UR-PR-3111: Expenses: 1 499040
- C-UR-PR-3121: Expenses: 1 49904
- C-UR-PR-3151: Expenses: 1 49904
- C-UR-PR-3161: Expenses: 1 49904
- C-UR-PR-3131: Expenses: 1 49904
- C-UR-PR-3171: Expenses: 1 49904
- C-UR-PR-3141: Expenses: 1 249520

| ID | WBS | Activity | Duration | Start | Finish | Predecessors | Total float | Free float | Cost |
| --- | --- | --- | --- | --- | --- | --- | --- | --- | --- |
|  | 6 | **MCC Room** |  | 2015-06-23 | 2016-05-26 |  |  |  |  |
| C-UR-PR-1591 |  | FRC Pedestales at MCC Room at Basement 1 | 5d | 2015-06-23 | 2015-06-28 | C-UR-PR-1601 SS, C-UR-PR-1351 | 206d | 41d | 24,652.98 |
| C-UR-PR-1601 |  | Fire Proofing & Block works at MCC Room at Basement 1 | 6d | 2015-06-23 | 2015-06-29 | C-CS-B1-11, C-UR-PR-1361 | 151d | 0d | 164,184.15 |
| C-UR-PR-1611 |  | Installation of MEP first fix at MCC Room at Basement 1 | 6d | 2015-07-06 | 2015-07-12 | C-UR-PR-1601, C-UR-PR-1371 | 182d | 17d | 36,979.47 |
| C-UR-PR-1621 |  | Plaster Works & Painting 1st Cost at MCC Room at Basement 1 | 12d | 2015-08-04 | 2015-08-17 | C-UR-PR-1611, C-UR-PR-1381 | 165d | 0d | 14,882.92 |
| C-UR-PR-1631 |  | Screed Works at MCC Room at Basement 1 | 4d | 2015-08-18 | 2015-08-22 | C-UR-PR-1621, C-UR-PR-1591, C-UR-PR-1391 | 165d | 84d | 25,133.95 |
| C-UR-PR-1661 |  | Installation of Doors, Ramps & Stairs & E-poxy Pain at MCC Room at Basement 1 | 25d | 2015-10-28 | 2015-11-25 | C-UR-PR-2031, C-UR-PR-1421 | 136d | 55d | 65,553.77 |
| C-UR-PR-1641 |  | Installation of MEP second Fix at MCC Room at Basement 1 | 25d | 2015-12-02 | 2015-12-31 | C-UR-PR-1631, C-UR-PR-1401 | 81d | 0d | 36,979.47 |
| C-UR-PR-1651 |  | Installation of MCC Panels at MCC Room at Basement 1 | 25d | 2016-01-02 | 2016-01-30 | C-UR-PR-1641, P-MEP-E-5243, C-UR-PR-1661 FF | 81d | 0d | 1,047,751.71 |
| C-UR-PR-2581 |  | Connection of MCC Panels to MV Panels at MCC Room at Basement 1 | 25d | 2016-03-01 | 2016-03-29 | C-UR-PR-2441, C-UR-PR-1651 | 56d | 0d | 12,326.49 |
| C-UR-PR-2571 |  | Connection of MCC Panels to Mechanical Equipments at MCC Room at Basement 1 | 25d | 2016-03-30 | 2016-04-27 | C-UR-PR-2581 | 56d | 0d | 12,326.49 |
| C-UR-PR-2591 |  | Testing of MCC Panels at MCC Room at Basement 1 | 25d | 2016-04-28 | 2016-05-26 | C-UR-PR-2571, C-UR-PR-2581 | 56d | 0d | 61,632.45 |
|  | 1 | **HVAC Rooms** |  | 2015-06-30 | 2016-06-25 |  |  |  |  |
|  | 17 | **Chilled Water Pump Room** |  | 2015-06-30 | 2016-06-25 |  |  |  |  |
| C-UR-PR-1991 |  | FRC Pedestales at CWP Room at Basement 1 | 5d | 2015-06-30 | 2015-07-05 | C-UR-PR-2001 SS | 188d | 11d | 50,188.16 |
| C-UR-PR-2001 |  | Fire Proofing & Block works at CWP Room at Basement 1 | 6d | 2015-06-30 | 2015-07-06 | C-CS-B1-11, C-UR-PR-1601 | 151d | 0d | 164,184.15 |
| C-UR-PR-2011 |  | Installation of MEP first fix at CWP Room at Basement 1 | 6d | 2015-07-07 | 2015-07-13 | C-UR-PR-2001 | 177d | 0d | 50,188.16 |
| C-UR-PR-2021 |  | Plaster Works & Painting 1st Cost at CWP Room at Basement 1 | 4d | 2015-07-14 | 2015-07-20 | C-UR-PR-2011 | 177d | 0d | 14,882.92 |
| C-UR-PR-2031 |  | Screed Works at CWP Room at Basement 1 | 4d | 2015-07-21 | 2015-07-25 | C-UR-PR-2021, C-UR-PR-1991 | 177d | 0d | 25,133.95 |
| C-UR-PR-2041 |  | Installation of MEP second Fix at CWP Room at Basement 1 | 25d | 2015-07-26 | 2015-08-23 | C-UR-PR-2031 | 177d | 29d | 150,564.47 |
| C-UR-PR-2061 |  | Installation of Doors & E-poxy Painting Works at CWP Room at Basement 1 | 20d | 2015-07-26 | 2015-08-17 | C-UR-PR-2031 | 207d | 59d | 64,330.98 |
| C-UR-PR-2051 |  | Installation of Chilled Water Pumps at CWP Room at Basement 1 | 25d | 2015-09-30 | 2015-10-28 | C-UR-PR-2041, P-MEP-AC-3923, C-UR-PR-2061 FF | 148d | 0d | 501,881.58 |
| C-UR-PR-2221 |  | Installation of Heat Exchangers at CWP Room at Basement 1 | 25d | 2015-09-30 | 2015-10-28 | P-MEP-AC-3963, C-UR-PR-2041, C-UR-PR-2061 FF | 197d | 0d | 50,188.16 |
| C-UR-PR-2101 |  | Connection of Chilled Water to Heat Exchanger at CWP Room at Basement 1 | 25d | 2015-10-29 | 2015-11-26 | C-UR-PR-2221, C-UR-PR-2051 | 197d | 0d | 50,188.16 |
| C-UR-PR-2461 |  | Connection of Chilled Water pump to Internal Network and to AHU's at CWP Room at Basement 1 | 25d | 2015-10-29 | 2015-11-26 | C-UR-PR-2051 | 148d | 0d | 50,188.16 |
| C-UR-PR-2471 |  | Connection of Heat Exhanger to the External Network at CWP Room at Basement 1 | 25d | 2015-11-28 | 2015-12-27 | C-UR-PR-2101 | 197d | 104d | 50,188.16 |
| C-UR-PR-2481 |  | Connection of Heat Exhanger & Chilled Water Pumps to MCC Panels at CWP Room at Basement 1 | 25d | 2016-04-28 | 2016-05-26 | C-UR-PR-2471, C-UR-PR-2461, C-UR-PR-2571 | 93d | 0d |  |
| C-UR-PR-2491 |  | Testing the Heat Exchangers & CHilled Water Pumps at CWP Room at Basement 1 | 25d | 2016-05-28 | 2016-06-25 | C-UR-PR-2481, C-UR-PR-2591 | 93d | 0d | 50,188.16 |

Notes:
- C-UR-PR-1591: Expenses: 1 24653
- C-UR-PR-1601: Expenses: B 115741; F 48443.4
- C-UR-PR-1611: Expenses: 1 36979.5
- C-UR-PR-1621: Expenses: P 2927.38; WP 11955.5
- C-UR-PR-1631: Expenses: S 25134
- C-UR-PR-1661: Expenses: RU 1222.79; E 64331
- C-UR-PR-1641: Expenses: 1 36979.5
- C-UR-PR-1651: Expenses: 1 1047752
- C-UR-PR-2581: Expenses: 1 12326.5
- C-UR-PR-2571: Expenses: 1 12326.5
- C-UR-PR-2591: Expenses: 1 61632.4
- C-UR-PR-1991: Expenses: 1 50188.2
- C-UR-PR-2001: Expenses: B 115741; F 48443.4
- C-UR-PR-2011: Expenses: 1 50188.2
- C-UR-PR-2021: Expenses: P 2927.38; WP 11955.5
- C-UR-PR-2031: Expenses: S 25134
- C-UR-PR-2041: Expenses: 1 150564
- C-UR-PR-2061: Expenses: E 64331
- C-UR-PR-2051: Expenses: 1 501882
- C-UR-PR-2221: Expenses: 1 50188.2
- C-UR-PR-2101: Expenses: 1 50188.2
- C-UR-PR-2461: Expenses: 1 50188.2
- C-UR-PR-2471: Expenses: 1 50188.2
- C-UR-PR-2491: Expenses: 1 50188.2

| ID | WBS | Activity | Duration | Start | Finish | Predecessors | Total float | Free float | Cost |
| --- | --- | --- | --- | --- | --- | --- | --- | --- | --- |
|  | 2 | **AHU Room** |  | 2015-07-07 | 2016-06-25 |  |  |  |  |
| C-UR-PR-951 |  | FRC Pedestales at AHU Room at Basement 1 | 5d | 2015-07-07 | 2015-07-12 | C-UR-PR-961 SS | 182d | 11d |  |
| C-UR-PR-961 |  | Fire Proofing & Block works at AHU Room at Basement 1 | 6d | 2015-07-07 | 2015-07-13 | C-CS-B1-11, C-UR-PR-2001 | 151d | 0d | 164,184.15 |
| C-UR-PR-971 |  | Installation of MEP first fix at AHU Room at Basement 1 | 6d | 2015-07-14 | 2015-07-22 | C-UR-PR-961 | 171d | 0d |  |
| C-UR-PR-981 |  | Plaster Works & Painting 1st Cost at AHU Room at Basement 1 | 4d | 2015-07-23 | 2015-07-27 | C-UR-PR-971 | 171d | 0d | 14,882.92 |
| C-UR-PR-991 |  | Screed Works at AHU Room at Basement 1 | 4d | 2015-07-28 | 2015-08-01 | C-UR-PR-981, C-UR-PR-951 | 171d | 0d | 25,133.95 |
| C-UR-PR-1001 |  | Installation of MEP second Fix at AHU Room at Basement 1 | 25d | 2015-08-02 | 2015-08-30 | C-UR-PR-991 | 171d | 0d |  |
| C-UR-PR-1021 |  | Installation of Doors & Painting Works at AHU Room at Basement 1 | 5d | 2015-08-02 | 2015-08-06 | C-UR-PR-991 | 216d | 45d | 11,955.54 |
| C-UR-PR-1011 |  | Installation of AHU'sat AHU Room at Basement 1 | 25d | 2015-08-31 | 2015-10-01 | C-UR-PR-1001, C-UR-PR-1021 FF | 171d | 0d |  |
| C-UR-PR-2501 |  | Connection of AHU's to Internal Ducting Network at AHU Room at Basement 1 | 25d | 2015-10-03 | 2015-10-31 | C-UR-PR-1011 | 171d | 23d |  |
| C-UR-PR-2511 |  | Connection of AHU's Chilled Water Network at AHU Room at Basement 1 | 25d | 2015-11-28 | 2015-12-27 | C-UR-PR-2501, C-UR-PR-2461 | 148d | 87d |  |
| C-UR-PR-2521 |  | Connection of AHU's to MCC's Panels at AHU Room at Basement 1 | 25d | 2016-04-28 | 2016-05-26 | C-UR-PR-2511, C-UR-PR-2571 | 93d | 0d |  |
| C-UR-PR-2531 |  | Testing the AHU's at AHU Room at Basement 1 | 25d | 2016-05-28 | 2016-06-25 | C-UR-PR-2521, C-UR-PR-2511, C-UR-PR-2501, C-UR-PR-2591 | 93d | 0d |  |
|  | 9 | **Fresh Air Fan Room** |  | 2015-07-14 | 2016-06-25 |  |  |  |  |
| C-UR-PR-1431 |  | FRC Pedestales at Fresh AIr Fan Room at Basement 1 | 5d | 2015-07-14 | 2015-07-21 | C-UR-PR-1441 SS | 300d | 11d |  |
| C-UR-PR-1441 |  | Fire Proofing & Block works at Fresh AIr Fan Room at Basement 1 | 6d | 2015-07-14 | 2015-07-22 | C-CS-B1-11, C-UR-PR-961 | 151d | 0d | 164,184.15 |
| C-UR-PR-1451 |  | Installation of MEP first fix at Fresh AIr Fan Room at Basement 1 | 6d | 2015-07-23 | 2015-07-29 | C-UR-PR-1441 | 151d | 0d |  |
| C-UR-PR-1461 |  | Plaster Works & Painting 1st Cost at Fresh AIr Fan Room at Basement 1 | 4d | 2015-07-30 | 2015-08-03 | C-UR-PR-1451 | 153d | 0d | 14,882.92 |
| C-UR-PR-1471 |  | Screed Works at Fresh AIr Fan Room at Basement 1 | 4d | 2015-08-04 | 2015-08-08 | C-UR-PR-1461, C-UR-PR-1431 | 289d | 0d | 25,133.95 |
| C-UR-PR-1481 |  | Installation of MEP second Fix at Fresh AIr Fan Room at Basement 1 | 25d | 2015-08-09 | 2015-09-06 | C-UR-PR-1471 | 289d | 0d |  |
| C-UR-PR-1501 |  | Installation of Doors & Painting Works at Fresh AIr Fan Room at Basement 1 | 5d | 2015-08-09 | 2015-08-13 | C-UR-PR-1471 | 334d | 45d | 11,955.54 |
| C-UR-PR-1491 |  | Installation of Fans at Fresh AIr Fan Room at Basement 1 | 25d | 2015-09-07 | 2015-10-08 | C-UR-PR-1481, C-UR-PR-1501 FF | 289d | 0d |  |
| C-UR-PR-2541 |  | Connection of Fans to Internal Ducting Network at Fresh AIr Fan Room at Basement 1 | 25d | 2015-10-10 | 2015-11-07 | C-UR-PR-1491 | 289d | 146d |  |
| C-UR-PR-2551 |  | Connection of Fans to MCC's Panels at Fresh AIr Fan Room at Basement 1 | 25d | 2016-04-28 | 2016-05-26 | C-UR-PR-2541, C-UR-PR-2571 | 179d | 0d |  |
| C-UR-PR-2561 |  | Testing of Fresh Air Fans at Fresh AIr Fan Room at Basement 1 | 25d | 2016-05-28 | 2016-06-25 | C-UR-PR-2551, C-UR-PR-1491, C-UR-PR-2591 | 179d | 157d |  |

Notes:
- C-UR-PR-961: Expenses: B 115741; F 48443.4
- C-UR-PR-981: Expenses: P 2927.38; WP 11955.5
- C-UR-PR-991: Expenses: S 25134
- C-UR-PR-1021: Expenses: WP 11955.5
- C-UR-PR-1441: Expenses: B 115741; F 48443.4
- C-UR-PR-1461: Expenses: P 2927.38; WP 11955.5
- C-UR-PR-1471: Expenses: S 25134
- C-UR-PR-1501: Expenses: WP 11955.5

| ID | WBS | Activity | Duration | Start | Finish | Predecessors | Total float | Free float | Cost |
| --- | --- | --- | --- | --- | --- | --- | --- | --- | --- |
|  | 2 | **Fire Fignting Rooms** |  | 2015-07-23 | 2016-06-25 |  |  |  |  |
|  | 11 | **Fire Fighting Pumps Room** |  | 2015-07-23 | 2016-06-25 |  |  |  |  |
| C-UR-PR-1191 |  | FRC Pedestales at Fire fighting Pump Room at Basement 1 | 5d | 2015-07-23 | 2015-07-28 | C-UR-PR-1201 SS | 178d | 19d | 105,728.3 |
| C-UR-PR-1201 |  | Fire Proofing & Block Work at Fire fighting Pump Room at Basement 1 | 6d | 2015-07-23 | 2015-07-29 | C-CS-B1-11, C-UR-PR-1441 | 151d | 0d | 164,184.15 |
| C-UR-PR-1211 |  | Installation of MEP first fix at Fire fighting Pump Room at Basement 1 | 6d | 2015-07-30 | 2015-08-05 | C-UR-PR-1201, C-UR-PR-1451 | 151d | 0d | 211,456.6 |
| C-UR-PR-1221 |  | Plaster Works & Painting 1st Cost at Fire fighting Pump Room at Basement 1 | 12d | 2015-08-06 | 2015-08-19 | C-UR-PR-1211, C-UR-PR-1461 | 151d | 0d | 14,882.92 |
| C-UR-PR-1231 |  | Screed Works at Fire fighting Pump Room at Basement 1 | 4d | 2015-08-20 | 2015-08-24 | C-UR-PR-1221, C-UR-PR-1191 | 159d | 0d | 25,133.95 |
| C-UR-PR-1241 |  | Installation of MEP second Fix at Fire fighting Pump Room at Basement 1 | 25d | 2015-08-25 | 2015-09-26 | C-UR-PR-1231 | 188d | 0d | 422,913.19 |
| C-UR-PR-1261 |  | Installation of Doors & Painting Works at Fire fighting Pump Room at Basement 1 | 25d | 2015-08-25 | 2015-09-26 | C-UR-PR-1231 | 188d | 0d | 11,955.54 |
| C-UR-PR-1251 |  | Installation of Fire fighting pumps at Fire fighting Pump Room at Basement 1 | 25d | 2015-09-27 | 2015-10-25 | C-UR-PR-1241, P-MEP-FF-3483, C-UR-PR-1261 | 188d | 0d | 1,163,011.28 |
| C-UR-PR-2991 |  | Connection of Fire fighting pumps to Internal Network at Fire fighting Pump Room at Basement 1 | 25d | 2015-10-26 | 2015-11-23 | C-UR-PR-1251 | 188d | 128d | 63,436.98 |
| C-UR-PR-3011 |  | Connection of Fire fighting pumps to MCC Panels at Fire fighting Pump Room at Basement 1 | 25d | 2016-04-28 | 2016-05-26 | C-UR-PR-2991, C-UR-PR-2571 | 56d | 0d | 42,291.32 |
| C-UR-PR-3021 |  | Testing of Fire fighting pumps at Fire fighting Pump Room at Basement 1 | 25d | 2016-05-28 | 2016-06-25 | C-UR-PR-3011, C-UR-PR-2591, C-UR-PR-3051 | 56d | 0d | 105,728.3 |
|  | 3 | **Fuel Tank Room for fire pumps** |  | 2015-08-06 | 2016-03-03 |  |  |  |  |
| C-UR-PR-1031 |  | FRC Pedestales at Fuel Tank Room at Basement 1 | 5d | 2015-08-06 | 2015-08-11 | C-UR-PR-1041 SS | 170d | 19d | 6,779.46 |
| C-UR-PR-1041 |  | Fire Proofing & Block works at Fuel Tank Room at Basement 1 | 6d | 2015-08-06 | 2015-08-12 | C-CS-B1-11, C-UR-PR-1121 | 151d | 0d | 164,184.15 |
| C-UR-PR-1051 |  | Installation of MEP first fix at Fuel Tank Room at Basement 1 | 6d | 2015-08-13 | 2015-08-19 | C-UR-PR-1041, C-UR-PR-1211 | 151d | 0d | 13,558.91 |
| C-UR-PR-1061 |  | Plaster Works & Painting 1st Cost at Fuel Tank Room at Basement 1 | 12d | 2015-08-20 | 2015-09-02 | C-UR-PR-1051, C-UR-PR-1221 | 151d | 0d | 14,882.92 |
| C-UR-PR-1071 |  | Screed Works at Fuel Tank Room at Basement 1 | 4d | 2015-09-03 | 2015-09-07 | C-UR-PR-1061, C-UR-PR-1031, C-UR-PR-1231 | 151d | 0d | 25,133.95 |
| C-UR-PR-1081 |  | Installation of MEP second Fix at Fuel Tank Room at Basement 1 | 25d | 2015-09-08 | 2015-10-10 | C-UR-PR-1071 | 151d | 23d | 27,117.82 |
| C-UR-PR-1101 |  | Installation of Doors & Painting Works at Fuel Tank Room at Basement 1 | 25d | 2015-09-08 | 2015-10-10 | C-UR-PR-1071 | 176d | 48d | 11,955.54 |
| C-UR-PR-1091 |  | Installation of Fuel Tank at Fuel Tank Room at Basement 1 | 25d | 2015-11-07 | 2015-12-05 | C-UR-PR-1081, C-UR-PR-1101 FF, P-MEP-FF-3523 | 128d | 0d | 74,574.01 |
| C-UR-PR-3031 |  | Connection of Fuel Tank to fire fighting pumps at Fuel Tank Room at Basement 1 | 25d | 2015-12-06 | 2016-01-04 | C-UR-PR-1091 | 128d | 0d | 4,067.67 |
| C-UR-PR-3041 |  | Connection of Fuel Tank to the External network at Fuel Tank Room at Basement 1 | 25d | 2016-01-05 | 2016-02-02 | C-UR-PR-3031 | 128d | 0d | 2,711.78 |
| C-UR-PR-3051 |  | Testing of Fuel Tank at Fuel Tank Room at Basement 1 | 25d | 2016-02-03 | 2016-03-03 | C-UR-PR-3041 | 128d | 1d | 6,779.46 |

Notes:
- C-UR-PR-1191: Expenses: 1 105728
- C-UR-PR-1201: Expenses: B 115741; F 48443.4
- C-UR-PR-1211: Expenses: 1 211457
- C-UR-PR-1221: Expenses: P 2927.38; WP 11955.5
- C-UR-PR-1231: Expenses: S 25134
- C-UR-PR-1241: Expenses: 1 422913
- C-UR-PR-1261: Expenses: WP 11955.5
- C-UR-PR-1251: Expenses: 1 1163011
- C-UR-PR-2991: Expenses: 1 63437
- C-UR-PR-3011: Expenses: 1 42291.3
- C-UR-PR-3021: Expenses: 1 105728
- C-UR-PR-1031: Expenses: 1 6779.46
- C-UR-PR-1041: Expenses: B 115741; F 48443.4
- C-UR-PR-1051: Expenses: 1 13558.9
- C-UR-PR-1061: Expenses: P 2927.38; WP 11955.5
- C-UR-PR-1071: Expenses: S 25134
- C-UR-PR-1081: Expenses: 1 27117.8
- C-UR-PR-1101: Expenses: WP 11955.5
- C-UR-PR-1091: Expenses: 1 74574
- C-UR-PR-3031: Expenses: 1 4067.67
- C-UR-PR-3041: Expenses: 1 2711.78
- C-UR-PR-3051: Expenses: 1 6779.46

| ID | WBS | Activity | Duration | Start | Finish | Predecessors | Total float | Free float | Cost |
| --- | --- | --- | --- | --- | --- | --- | --- | --- | --- |
|  | 8 | **Gas Equipment Room** |  | 2015-07-30 | 2016-04-02 |  |  |  |  |
| C-UR-PR-1111 |  | FRC Pedestales at Gas Equipments Room at Basement 1 | 5d | 2015-07-30 | 2015-08-04 | C-UR-PR-1121 SS | 188d | 37d | 43,349.14 |
| C-UR-PR-1121 |  | Fire Proofing & Block works at Gas Equipments Room at Basement 1 | 6d | 2015-07-30 | 2015-08-05 | C-CS-B1-11, C-UR-PR-1201 | 151d | 0d | 164,184.15 |
| C-UR-PR-1131 |  | Installation of MEP first fix at Gas Equipments Room at Basement 1 | 6d | 2015-08-06 | 2015-08-12 | C-UR-PR-1121, P-MEP-P-5083, PQ-CS-C-1332, C-UR-PR-1211 | 169d | 6d | 21,674.57 |
| C-UR-PR-1141 |  | Plaster Works & Painting 1st Cost at Gas Equipments Room at Basement 1 | 12d | 2015-09-03 | 2015-09-16 | C-UR-PR-1131, C-UR-PR-1061 | 151d | 0d | 14,882.92 |
| C-UR-PR-1151 |  | Screed Works at Gas Equipments Room at Basement 1 | 4d | 2015-09-17 | 2015-09-24 | C-UR-PR-1141, C-UR-PR-1111, C-UR-PR-1071 | 151d | 0d | 25,133.95 |
| C-UR-PR-1181 |  | Installation of Doors & Painting Works at Gas Equipments Room at Basement 1 | 25d | 2015-09-26 | 2015-10-24 | C-UR-PR-1151 | 153d | 0d | 11,955.54 |
| C-UR-PR-1161 |  | Installation of MEP second Fix at Gas Equipments Room at Basement 1 | 25d | 2015-11-07 | 2015-12-05 | C-UR-PR-1151, P-MEP-P-5123, P-MEP-P-5163 | 115d | 0d | 43,349.14 |
| C-UR-PR-1171 |  | Installation of Gas Equipments at Gas Equipments Room at Basement 1 | 25d | 2015-12-06 | 2016-01-04 | C-UR-PR-1161, P-MEP-P-5203, P-MEP-P-5243, C-UR-PR-1181 | 117d | 0d | 260,094.84 |
| C-UR-PR-3251 |  | Connection of Gas Equipments to Internal Network at Gas Equipments Room at Basement 1 | 25d | 2016-01-05 | 2016-02-02 | C-UR-PR-1171 | 117d | 0d | 21,674.57 |
| C-UR-PR-3261 |  | Connection of Gas Equipments to Gas Tank at Gas Equipments Room at Basement 1 | 25d | 2016-02-03 | 2016-03-03 | C-UR-PR-3251 | 117d | 0d | 21,674.57 |
| C-UR-PR-3271 |  | Testing of Gas Equipments at Gas Equipments Room at Basement 1 | 25d | 2016-03-05 | 2016-04-02 | C-UR-PR-3261, C-UR-PR-3241 | 117d | 38d | 21,674.57 |
|  | 3 | **ELV Rooms** |  | 2015-08-13 | 2016-09-20 |  |  |  |  |
|  | 16 | **Communication Room** |  | 2015-08-13 | 2016-08-18 |  |  |  |  |
| C-UR-PR-1921 |  | Fire Proofing & Block works at Communication Room at Basement 1 | 6d | 2015-08-13 | 2015-08-19 | C-CS-B1-11, C-UR-PR-1041 | 174d | 0d | 164,184.15 |
| C-UR-PR-1931 |  | Installation of MEP first fix at Communication Room at Basement 1 | 6d | 2015-08-20 | 2015-08-26 | C-UR-PR-1921, C-UR-PR-1131 | 174d | 0d |  |
| C-UR-PR-1941 |  | Plaster Works & Painting 1st Cost at Communication Room at Basement 1 | 12d | 2015-09-17 | 2015-10-04 | C-UR-PR-1931, C-UR-PR-1141, C-UR-PR-1061 | 156d | 0d | 14,882.92 |
| C-UR-PR-1951 |  | Raised Flooring at Communication Room at Basement 1 | 12d | 2015-10-05 | 2015-10-18 | C-UR-PR-1941, C-UR-PR-671 | 156d | 0d | 1,818.18 |
| C-UR-PR-1981 |  | Installation of Doors, Ramps & Stairs & E-poxy Pain at Communication Room at Basement 1 | 25d | 2015-10-25 | 2015-11-22 | C-UR-PR-1951, C-UR-PR-1181 | 176d | 0d | 65,553.77 |
| C-UR-PR-1961 |  | Installation of MEP second Fix at Communication Room (FM 200 etc..)at Basement 1 | 25d | 2015-12-06 | 2016-01-04 | C-UR-PR-1951, C-UR-PR-1161 | 115d | 0d | 103,878.76 |
| C-UR-PR-1971 |  | Installation of Communication Equipments at Communication Room at Basement 1 | 25d | 2016-02-23 | 2016-03-22 | C-UR-PR-1961, C-UR-PR-1981 FF, C-UR-PR-2851 | 89d | 0d |  |
| C-UR-PR-3061 |  | Connection of Communication Equipments at Communication Room at Basement 1 | 25d | 2016-03-23 | 2016-04-20 | C-UR-PR-1971 | 89d | 0d |  |
| C-UR-PR-3071 |  | Connection of Communication Equipments to Internal Network at Communication Room at Basement 1 | 25d | 2016-04-21 | 2016-05-19 | C-UR-PR-3061, C-UR-PR-2851 | 89d | 0d |  |
| C-UR-PR-3081 |  | Connection of Communication Equipments to External Network at Communication Room at Basement 1 | 25d | 2016-05-21 | 2016-06-18 | C-UR-PR-3071, C-UR-PR-2861 | 89d | 0d |  |
| C-UR-PR-3091 |  | Connection of Communication Equipments to power (Central Battery System / Emergency power ) | 25d | 2016-06-19 | 2016-07-20 | C-UR-PR-3081, C-UR-PR-2871 | 89d | 0d |  |
| C-UR-PR-3101 |  | Testing of Communication Equipments at Communication Room at Basement 1 | 25d | 2016-07-21 | 2016-08-18 | C-UR-PR-3091, C-UR-PR-2881 | 89d | 0d |  |

Notes:
- C-UR-PR-1111: Expenses: 1 43349.1
- C-UR-PR-1121: Expenses: B 115741; F 48443.4
- C-UR-PR-1131: Expenses: 1 21674.6
- C-UR-PR-1141: Expenses: P 2927.38; WP 11955.5
- C-UR-PR-1151: Expenses: S 25134
- C-UR-PR-1181: Expenses: WP 11955.5
- C-UR-PR-1161: Expenses: 1 43349.1
- C-UR-PR-1171: Expenses: 1 260095
- C-UR-PR-3251: Expenses: 1 21674.6
- C-UR-PR-3261: Expenses: 1 21674.6
- C-UR-PR-3271: Expenses: 1 21674.6
- C-UR-PR-1921: Expenses: B 115741; F 48443.4
- C-UR-PR-1941: Expenses: P 2927.38; WP 11955.5
- C-UR-PR-1951: Expenses: F 1818.18
- C-UR-PR-1981: Expenses: RU 1222.79; E 64331
- C-UR-PR-1961: Expenses: 1 103879

| ID | WBS | Activity | Duration | Start | Finish | Predecessors | Total float | Free float | Cost |
| --- | --- | --- | --- | --- | --- | --- | --- | --- | --- |
|  | 7 | **IDF Room** |  | 2015-08-20 | 2016-09-20 |  |  |  |  |
| C-UR-PR-1681 |  | Fire Proofing & Block works at IDF Room at Basement 1 | 6d | 2015-08-20 | 2015-08-26 | C-CS-B1-11, C-UR-PR-1921 | 198d | 0d | 164,184.15 |
| C-UR-PR-1691 |  | Installation of MEP first fix at IDF Room at Basement 1 | 6d | 2015-08-27 | 2015-09-02 | C-UR-PR-1681, C-UR-PR-1931 | 201d | 0d |  |
| C-UR-PR-1701 |  | Plaster Works & Painting 1st Cost at IDF Room at Basement 1 | 12d | 2015-10-05 | 2015-10-18 | C-UR-PR-1691, C-UR-PR-1941 | 177d | 0d | 14,882.92 |
| C-UR-PR-1711 |  | Raised Flooring at IDF Room at Basement 1 | 4d | 2015-10-19 | 2015-10-22 | C-UR-PR-1701, C-UR-PR-1951 | 177d | 8d | 1,818.18 |
| C-UR-PR-1741 |  | Installation of Doors & E-poxy Painting Works at IDF Room at Basement 1 | 25d | 2015-11-23 | 2015-12-22 | C-UR-PR-1711, C-UR-PR-1981 | 176d | 0d | 76,286.52 |
| C-UR-PR-1721 |  | Installation of MEP second Fix (FM 200 Etc..)at IDF Room at Basement 1 | 25d | 2016-01-05 | 2016-02-02 | C-UR-PR-1711, C-UR-PR-1961 | 115d | 0d | 262,430.55 |
| C-UR-PR-1731 |  | Installation of IDF Racks & Panels at IDF Room at Basement 1 | 25d | 2016-03-23 | 2016-04-20 | C-UR-PR-1721, C-UR-PR-1741 FF, C-UR-PR-1971 | 89d | 0d |  |
| C-UR-PR-2891 |  | Connection of IDF Racks & Panels at IDF Room at Basement 1 | 25d | 2016-04-21 | 2016-05-19 | C-UR-PR-1731, C-UR-PR-3061 | 89d | 0d |  |
| C-UR-PR-2901 |  | Connection of IDF racks & Panels to Internal Network at IDF Room at Basement 1 | 25d | 2016-05-21 | 2016-06-18 | C-UR-PR-2891, C-UR-PR-3071 | 89d | 0d |  |
| C-UR-PR-2911 |  | Connection of IDF racks & Panels to External Network at IDF Room at Basement 1 | 25d | 2016-06-19 | 2016-07-20 | C-UR-PR-2901, C-UR-PR-3081 | 89d | 0d |  |
| C-UR-PR-2921 |  | Connection of IDF racks & Panels to power (Central Battery System / Emergency power ) at IDF Room at Basement 1 | 25d | 2016-07-21 | 2016-08-18 | C-UR-PR-2911, C-UR-PR-3091 | 89d | 0d |  |
| C-UR-PR-2931 |  | Testing of IDF racks & Panels at IDF Room at Basement 1 | 25d | 2016-08-20 | 2016-09-20 | C-UR-PR-2921, C-UR-PR-3101 | 89d | 0d |  |
|  | 14 | **BMS - Control Room** |  | 2015-08-27 | 2016-09-28 |  |  |  |  |
| C-UR-PR-1761 |  | Fire Proofing & Block works at BMS Room at Basement 1 | 6d | 2015-08-27 | 2015-09-02 | C-CS-B1-11, C-UR-PR-1681 | 198d | 0d | 164,184.15 |
| C-UR-PR-1771 |  | Installation of MEP first fix at BMS Room at Basement 1 | 6d | 2015-09-03 | 2015-09-09 | C-UR-PR-1761, C-UR-PR-1691 | 220d | 30d | 34,154.61 |
| C-UR-PR-1781 |  | Plaster Works & Painting 1st Cost at BMS Room at Basement 1 | 12d | 2015-10-19 | 2015-11-01 | C-UR-PR-1771, C-UR-PR-1701 | 190d | 0d | 14,882.92 |
| C-UR-PR-1791 |  | Raised Flooring at BMS Room at Basement 1 | 4d | 2015-11-02 | 2015-11-05 | C-UR-PR-1781, C-UR-PR-1711 | 190d | 75d | 1,818.18 |
| C-UR-PR-1821 |  | Installation of Doors & E-poxy Painting Works at BMS Room at Basement 1 | 25d | 2015-12-23 | 2016-01-20 | C-UR-PR-1551, C-UR-PR-1741 | 176d | 61d | 76,286.52 |
| C-UR-PR-1801 |  | Installation of MEP second Fix at BMS Room at Basement 1 | 25d | 2016-02-03 | 2016-03-03 | C-UR-PR-1791, C-UR-PR-1721 | 115d | 0d | 102,463.83 |
| C-UR-PR-1811 |  | Installation of Control Equipments (BMS) at BMS Room at Basement 1 | 25d | 2016-03-05 | 2016-04-02 | C-UR-PR-1801, P-MEP-E-5283, C-UR-PR-1821 FF | 115d | 0d | 444,009.91 |
| C-UR-PR-2941 |  | Connection of Control Equipments (BMS) at BMS Room at Basement 1 | 25d | 2016-04-03 | 2016-05-01 | C-UR-PR-1811 | 115d | 0d | 34,154.61 |
| C-UR-PR-2951 |  | Connection of Control Equipments (BMS) to Internal Network at BMS Room at Basement 1 | 25d | 2016-05-02 | 2016-05-30 | C-UR-PR-2941 | 115d | 0d | 34,154.61 |
| C-UR-PR-2961 |  | Installation of maintenance programme and emergency | 25d | 2016-06-26 | 2016-07-27 | C-UR-PR-2951, C-UR-PR-3041, C-UR-PR-3021, C-UR-PR-2541, C-UR-PR-2531, C-UR-PR-2491, C-UR-PR-2591, C-UR-PR-3141, C-UR-PR-2441, C-UR-PR-2431, C-UR-PR-2421, C-UR-PR-2881, C-UR-PR-2681, C-UR-PR-2841, C-UR-PR-2801, C-UR-PR-2761, C-UR-PR-2711, C-UR-PR-2651, C-UR-PR-2621, C-UR-PR-3241, C-UR-PR-3271 | 93d | 0d | 832,931.75 |
| C-UR-PR-2971 |  | Connection of IDF racks & Panels to power (Central Battery System / Emergency power ) at BMS Room at Basement 1 | 25d | 2016-07-28 | 2016-08-25 | C-UR-PR-2961 | 93d | 0d | 34,154.61 |
| C-UR-PR-2981 |  | Testing of Control Equipments (BMS) at BMS Room at Basement 1 | 25d | 2016-08-27 | 2016-09-28 | C-UR-PR-2971 | 93d | 0d | 40,428.6 |

Notes:
- C-UR-PR-1681: Expenses: B 115741; F 48443.4
- C-UR-PR-1701: Expenses: P 2927.38; WP 11955.5
- C-UR-PR-1711: Expenses: F 1818.18
- C-UR-PR-1741: Expenses: E 64331; WP 11955.5
- C-UR-PR-1721: Expenses: 1 262431
- C-UR-PR-1761: Expenses: B 115741; F 48443.4
- C-UR-PR-1771: Expenses: 1 34154.6
- C-UR-PR-1781: Expenses: P 2927.38; WP 11955.5
- C-UR-PR-1791: Expenses: F 1818.18
- C-UR-PR-1821: Expenses: E 64331; WP 11955.5
- C-UR-PR-1801: Expenses: 1 102464
- C-UR-PR-1811: Expenses: 1 444010
- C-UR-PR-2941: Expenses: 1 34154.6
- C-UR-PR-2951: Expenses: 1 34154.6
- C-UR-PR-2961: Expenses: 1 832932
- C-UR-PR-2971: Expenses: 1 34154.6
- C-UR-PR-2981: Expenses: 1 40428.6

| ID | WBS | Activity | Duration | Start | Finish | Predecessors | Total float | Free float | Calendar | Cost |
| --- | --- | --- | --- | --- | --- | --- | --- | --- | --- | --- |
|  | 4 | **Plumbing & Garbage Rooms** |  | 2015-09-03 | 2016-03-24 |  |  |  |  |  |
|  | 5 | **Boiler Room** |  | 2015-09-03 | 2016-03-24 |  |  |  |  |  |
| C-UR-PR-1511 |  | FRC Pedestales at Boiler Room at Basement 1 | 5d | 2015-09-03 | 2015-09-08 | C-UR-PR-1521 SS | 258d | 11d |  | 27,177.96 |
| C-UR-PR-1521 |  | Fire Proofing & Block works at Boiler Room at Basement 1 | 6d | 2015-09-03 | 2015-09-09 | C-CS-B1-11, C-UR-PR-1761 | 198d | 0d |  | 164,184.15 |
| C-UR-PR-1531 |  | Installation of MEP first fix at Boiler Room at Basement 1 | 6d | 2015-09-10 | 2015-09-16 | C-UR-PR-1521 | 247d | 0d |  | 90,593.21 |
| C-UR-PR-1541 |  | Plaster Works & Painting 1st Cost at Boiler Room at Basement 1 | 4d | 2015-09-17 | 2015-09-24 | C-UR-PR-1531 | 247d | 0d |  | 14,882.92 |
| C-UR-PR-1551 |  | Screed Works at Boiler Room at Basement 1 | 4d | 2015-09-26 | 2015-09-29 | C-UR-PR-1541, C-UR-PR-1511 | 247d | 0d |  | 25,133.95 |
| C-UR-PR-1561 |  | Installation of MEP second Fix at Boiler Room at Basement 1 | 25d | 2015-09-30 | 2015-10-28 | C-UR-PR-1551, P-MEP-P-2403, P-MEP-P-2723 | 249d | 0d |  | 90,593.21 |
| C-UR-PR-1581 |  | Installation of Doors, Grating & E-poxy Painting Works at Boiler Room at Basement 1 | 5d | 2015-09-30 | 2015-10-05 | C-UR-PR-1551 | 294d | 45d |  | 81,420.41 |
| C-UR-PR-1571 |  | Installation of Boilers at Boiler Room at Basement 1 | 25d | 2015-10-29 | 2015-11-26 | C-UR-PR-1561, P-MEP-P-2763, P-MEP-P-2803, P-MEP-P-2843, C-UR-PR-1581 FF | 249d | 0d |  | 362,372.85 |
| C-UR-PR-3181 |  | Installation of heat exchangers, Calorifiers, filter and softner at Boiler Room at Basement 1 | 25d | 2015-11-28 | 2015-12-27 | C-UR-PR-1571 | 249d | 0d |  | 271,779.64 |
| C-UR-PR-3191 |  | Connection of Boilers to Water Network at Boiler Room at Basement 1 | 25d | 2015-12-28 | 2016-01-25 | C-UR-PR-3181 | 249d | 0d |  | 18,118.64 |
| C-UR-PR-3201 |  | Connection of Boilers to MCC's Panels at Boiler Room at Basement 1 | 25d | 2016-01-26 | 2016-02-24 | C-UR-PR-3191 | 249d | 0d |  |  |
| C-UR-PR-3211 |  | Testing of Steam Boiller at Boiler Room at Basement 1 | 25d | 2016-02-25 | 2016-03-24 | C-UR-PR-3201 | 249d | 218d |  | 45,296.61 |
|  | 15 | **Garbage Room** |  | 2015-09-10 | 2015-12-03 |  |  |  |  |  |
| C-UR-PR-1831 |  | FRC Pedestales at Garbage Room at Basement 1 | 5d | 2015-09-10 | 2015-09-15 | C-UR-PR-1841 SS | 209d | 11d |  | 412.23 |
| C-UR-PR-1841 |  | Fire Proofing & Block works at Garbage Room at Basement 1 | 6d | 2015-09-10 | 2015-09-16 | C-CS-B1-11, C-UR-PR-1521 | 198d | 0d |  | 164,184.15 |
| C-UR-PR-1851 |  | Installation of MEP first fix at Garbage Room at Basement 1 | 6d | 2015-09-17 | 2015-09-27 | C-UR-PR-1841 | 198d | 0d |  | 824.47 |
| C-UR-PR-1861 |  | Plaster Works & Painting 1st Cost at Garbage Room at Basement 1 | 4d | 2015-09-28 | 2015-10-01 | C-UR-PR-1851 | 198d | 0d |  | 14,882.92 |
| C-UR-PR-1871 |  | Screed Works at Garbage Room at Basement 1 | 4d | 2015-10-03 | 2015-10-06 | C-UR-PR-1861, C-UR-PR-1831 | 198d | 0d |  | 25,133.95 |
| C-UR-PR-1881 |  | Installation of MEP second Fix at Garbage Room at Basement 1 | 25d | 2015-10-07 | 2015-11-04 | C-UR-PR-1871 | 198d | 0d |  | 824.47 |
| C-UR-PR-1901 |  | Installation of Doors & E-poxy Painting Works at Garbage Room at Basement 1 | 5d | 2015-10-07 | 2015-10-12 | C-UR-PR-1871 | 243d | 45d |  | 76,286.52 |
| C-UR-PR-1891 |  | Installation & Connection of MEP final Fix & Equipments at Garbage Room at Basement 1 | 25d | 2015-11-05 | 2015-12-03 | C-UR-PR-1881, C-UR-PR-1901 FF | 198d | 178d |  | 6,183.52 |
|  | 3 | **Architectural / Finishes** |  | 2015-02-19 | 2017-03-26 |  |  |  |  |  |
|  | 2 | **Finishes Works - Basement** |  | 2015-11-07 | 2017-03-21 |  |  |  |  |  |
|  | 2 | **Parking Areas, Roads & Ramps** |  | 2015-11-12 | 2017-03-21 |  |  |  |  |  |
|  | 1 | **Basement 3** |  | 2015-11-12 | 2017-02-13 |  |  |  |  |  |
| C-F-RR-81 |  | Fire Proofing & Block works at Basement 3 Parking Area | 7d | 2015-11-12 | 2015-11-19 | SD-CS-B3-332, C-CS-B3-1, C-CS-Su-R-001, M-TF-003 | 6d | 0d | *APB - 6 D week + Qatar Holiday | 164,184.15 |
| C-F-B3-RR-71 |  | Waterproofing works | 20d | 2015-11-21 | 2015-12-14 | P-CS-C-83, P-CS-C-643, C-F-RR-81 | 76d | 0d | *APB - 6 D week + Qatar Holiday | 86,284.27 |
| C-F-B3-RR-11 |  | Ceiling Paint | 15d | 2015-12-15 | 2015-12-31 | C-F-RR-81, C-F-B3-RR-71 | 76d | 0d | *APB - 6 D week + Qatar Holiday | 85,561.48 |
| C-F-B3-RR-61 |  | Screed Works | 25d | 2015-12-15 | 2016-01-13 | C-F-B3-RR-71, C-CS-Su-A-PR-001 | 94d | 0d |  | 56,937.2 |
| C-F-B3-RR-91 |  | Installation of MEP first & Second fix | 25d | 2016-01-02 | 2016-01-30 | C-F-RR-81, C-F-B3-RR-11 | 76d | 0d | *APB - 6 D week + Qatar Holiday |  |
| C-F-B3-RR-101 |  | Fire Proofing & Plaster Works | 12d | 2016-01-31 | 2016-02-13 | C-F-B3-RR-91 | 89d | 0d | *APB - 6 D week + Qatar Holiday | 15,437.36 |
| C-F-B3-RR-20 |  | Installation of Bollards, Kerbs & Pavings | 25d | 2016-10-08 | 2016-11-05 | C-F-B3-RR-61, M-TF-001, C-F-FF-254 SS, C-E-SR-B3G-243, C-E-SR-B3G-253, C-F-P-1583, G-MM-003 | 0d |  |  | 112,200.4 |
| C-F-B3-RR-21 |  | Wall Paint | 15d | 2016-10-08 | 2016-10-24 | C-F-B3-RR-61, C-F-B3-RR-101, M-TF-001, C-F-FF-254 SS, C-E-SR-B3G-243, C-E-SR-B3G-253, C-F-P-1583, G-MM-003 | 51d | 0d | *APB - 6 D week + Qatar Holiday | 95,099.98 |
| C-F-B3-RR-30 |  | Floor FInishes - E-poxy paint & Grating | 20d | 2016-11-06 | 2016-11-28 | C-F-B3-RR-20, C-MEP-MSP-61, C-MEP-MSP-121 | 10d | 0d |  | 79,280.99 |
| C-F-B3-RR-40 |  | MEP Final Fix | 20d | 2016-11-29 | 2016-12-22 | C-F-B3-RR-30 | 10d | 0d |  |  |
| C-F-B3-RR-50 |  | Installation of Speed Bumps & Wheel Guards | 20d | 2016-12-24 | 2017-01-15 | C-F-B3-RR-30, C-F-B3-RR-40 | 40d | 0d |  | 21,505.57 |
| C-F-B3-RR-60 |  | Wall & Corner Guard & Gate Barriers & Traffic Coating & Signage | 25d | 2017-01-16 | 2017-02-13 | C-F-B3-RR-40, C-F-B3-RR-50 | 40d | 5d |  | 470,201.73 |

Notes:
- C-UR-PR-1511: Expenses: 1 27178
- C-UR-PR-1521: Expenses: B 115741; F 48443.4
- C-UR-PR-1531: Expenses: 1 90593.2
- C-UR-PR-1541: Expenses: P 2927.38; WP 11955.5
- C-UR-PR-1551: Expenses: S 25134
- C-UR-PR-1561: Expenses: 1 90593.2
- C-UR-PR-1581: Expenses: G 5133.89; E 64331; WP 11955.5
- C-UR-PR-1571: Expenses: 1 362373
- C-UR-PR-3181: Expenses: 1 271780
- C-UR-PR-3191: Expenses: 1 18118.6
- C-UR-PR-3211: Expenses: 1 45296.6
- C-UR-PR-1831: Expenses: 1 412.23
- C-UR-PR-1841: Expenses: B 115741; F 48443.4
- C-UR-PR-1851: Expenses: 1 824.47
- C-UR-PR-1861: Expenses: P 2927.38; WP 11955.5
- C-UR-PR-1871: Expenses: S 25134
- C-UR-PR-1881: Expenses: 1 824.47
- C-UR-PR-1901: Expenses: E 64331; WP 11955.5
- C-UR-PR-1891: Expenses: 1 6183.52
- C-F-RR-81: Expenses: B 115741; F 48443.4
- C-F-B3-RR-71: Expenses: W 86284.3
- C-F-B3-RR-11: Expenses: CP 85561.5
- C-F-B3-RR-61: Expenses: S 25134; S1 31803.2
- C-F-B3-RR-101: Expenses: F 12510; P 2927.38
- C-F-B3-RR-20: Expenses: BO 15502.9; K 96697.5
- C-F-B3-RR-21: Expenses: WP 95100
- C-F-B3-RR-30: Expenses: G 14950; E 64331
- C-F-B3-RR-50: Expenses: W 21505.6
- C-F-B3-RR-60: Expenses: G 372180; B 41623.7; M 56398.1

| ID | WBS | Activity | Duration | Start | Finish | Predecessors | Total float | Free float | Calendar | Cost |
| --- | --- | --- | --- | --- | --- | --- | --- | --- | --- | --- |
|  | 3 | **Basement 2** |  | 2015-11-12 | 2017-02-20 |  |  |  |  |  |
| C-F-RR-221 |  | Fire Proofing & Block works at Basement 3 Parking Area | 15d | 2015-11-12 | 2015-11-29 | C-F-RR-81 SS | 10d | 0d | *APB - 6 D week + Qatar Holiday | 164,184.15 |
| C-F-B2-RR-211 |  | Waterproofing works | 20d | 2015-12-15 | 2016-01-06 | C-F-RR-221, C-F-B3-RR-71 | 81d | 0d | *APB - 6 D week + Qatar Holiday | 86,284.27 |
| C-F-B2-RR-51 |  | Ceiling Paint | 15d | 2016-01-07 | 2016-01-24 | C-F-RR-221 SS, C-F-B3-RR-11, C-F-B2-RR-211 | 81d | 5d | *APB - 6 D week + Qatar Holiday | 85,561.48 |
| C-F-B2-RR-01 |  | Screed Works | 25d | 2016-01-14 | 2016-02-13 | C-F-B2-RR-211, C-F-B3-RR-61, C-CS-Su-A-PR-002 | 94d | 0d |  | 56,937.2 |
| C-F-B2-RR-31 |  | Installation of MEP first & Second fix | 25d | 2016-01-31 | 2016-02-28 | C-F-RR-221, C-F-B2-RR-51, C-F-B3-RR-91 | 76d | 0d | *APB - 6 D week + Qatar Holiday |  |
| C-F-B2-RR-41 |  | Fire Proofing & Plaster Works | 12d | 2016-02-29 | 2016-03-13 | C-F-B2-RR-31, C-F-B3-RR-101 | 76d | 0d | *APB - 6 D week + Qatar Holiday | 15,437.36 |
| C-F-B2-RR-61 |  | Wall Paint | 15d | 2016-10-25 | 2016-11-10 | C-F-B2-RR-01, C-F-B3-RR-21, C-F-B2-RR-41, M-TF-001, C-F-FF-254 SS, C-E-SR-B3G-243, C-E-SR-B3G-253, C-F-P-1583, G-MM-003 | 51d | 0d | *APB - 6 D week + Qatar Holiday | 95,099.98 |
| C-F-B2-RR-30 |  | Installation of Bollards, Kerbs & Pavings | 25d | 2016-11-06 | 2016-12-04 | C-F-B2-RR-01, C-F-B3-RR-20, M-TF-001, C-F-FF-254 SS, C-E-SR-B3G-243, C-E-SR-B3G-253, C-F-P-1583, G-MM-003 | 0d |  |  | 112,200.4 |
| C-F-B2-RR-20 |  | Floor FInishes - E-poxy paint & Grating | 20d | 2016-12-05 | 2016-12-28 | C-F-B2-RR-30, C-F-B3-RR-30 | 5d | 0d |  | 79,280.99 |
| C-F-B2-RR-40 |  | MEP Final Fix | 20d | 2016-12-29 | 2017-01-21 | C-F-B2-RR-20, C-F-B3-RR-40 | 5d | 0d |  |  |
| C-F-B2-RR-50 |  | Wall & Corner Guard & Gate Barriers & Traffic Coating & Signage | 25d | 2017-01-22 | 2017-02-20 | C-F-B2-RR-40, C-F-B2-RR-60 SS, C-F-B3-RR-60 SS | 35d | 25d |  | 470,201.73 |
| C-F-B2-RR-60 |  | Installation of Speed Bumps & Wheel Guards | 20d | 2017-01-22 | 2017-02-13 | C-F-B2-RR-20 SS, C-F-B2-RR-40, C-F-B3-RR-50 SS | 25d | 0d |  | 21,505.57 |
|  | 2 | **Basement 1** |  | 2015-11-12 | 2017-03-21 |  |  |  |  |  |
| C-F-RR-151 |  | Fire Proofing & Block works at Basement 3 Parking Area | 15d | 2015-11-12 | 2015-11-29 | C-F-RR-221 SS | 52d | 28d | *APB - 6 D week + Qatar Holiday | 164,184.15 |
| C-F-B1-RR-41 |  | Waterproofing works | 20d | 2016-01-07 | 2016-01-30 | C-F-RR-151, C-F-B2-RR-211 | 89d | 0d | *APB - 6 D week + Qatar Holiday | 86,284.27 |
| C-F-B1-RR-81 |  | Ceiling Paint | 15d | 2016-01-31 | 2016-02-16 | C-F-RR-151, C-F-B2-RR-51, C-F-B1-RR-41 | 89d | 10d | *APB - 6 D week + Qatar Holiday | 85,561.48 |
| C-F-B1-RR-31 |  | Screed Works | 25d | 2016-02-14 | 2016-03-13 | C-F-B1-RR-41, C-F-B2-RR-01, C-CS-Su-A-PR-003 | 94d | 0d |  | 56,937.2 |
| C-F-B1-RR-61 |  | Installation of MEP first & Second fix | 25d | 2016-02-29 | 2016-03-28 | C-F-RR-151, C-F-B1-RR-81, C-F-B2-RR-31 | 79d | 0d | *APB - 6 D week + Qatar Holiday |  |
| C-F-B1-RR-71 |  | Fire Proofing & Plaster Works | 12d | 2016-03-29 | 2016-04-11 | C-F-B1-RR-61, C-F-B2-RR-41 | 79d | 0d | *APB - 6 D week + Qatar Holiday | 15,437.36 |
| C-F-B1-RR-91 |  | Installation of Roller Shutter Doors & Wall Paint | 15d | 2016-11-12 | 2016-11-28 | C-F-B1-RR-31, C-F-B2-RR-61, C-F-B1-RR-71, M-TF-001, C-F-FF-254 SS, C-E-SR-B3G-243, C-E-SR-B3G-253, C-F-P-1583, G-MM-003 | 51d | 0d | *APB - 6 D week + Qatar Holiday | 249,244.86 |
| C-F-B1-RR-80 |  | Installation of Bollards, Kerbs & Pavings | 25d | 2016-12-05 | 2017-01-03 | C-F-B1-RR-31, C-F-B2-RR-30 | 0d |  |  | 112,200.4 |
| C-F-B1-RR-70 |  | Floor FInishes - E-poxy paint & Grating | 20d | 2017-01-04 | 2017-01-26 | C-F-B1-RR-80, C-F-B2-RR-20 | 0d |  |  | 79,280.99 |
| C-F-B1-RR-90 |  | MEP Final Fix | 20d | 2017-01-28 | 2017-02-20 | C-F-B1-RR-70, C-F-B2-RR-40 | 0d |  |  |  |
| C-F-B1-RR-00 |  | Wall & Corner Guard & Gate Barriers & Traffic Coating & Signage | 25d | 2017-02-21 | 2017-03-21 | C-F-B1-RR-90, C-F-B1-RR-10 SS, C-F-B2-RR-50 SS | 10d |  |  | 470,201.73 |
| C-F-B1-RR-10 |  | Installation of Edge Protection & Speed Bumps & wheel Guards | 20d | 2017-02-21 | 2017-03-15 | C-F-B1-RR-70, C-F-B1-RR-90, C-F-B2-RR-60 SS | 0d |  |  | 38,191.91 |

Notes:
- C-F-RR-221: Expenses: B 115741; F 48443.4
- C-F-B2-RR-211: Expenses: W 86284.3
- C-F-B2-RR-51: Expenses: CP 85561.5
- C-F-B2-RR-01: Expenses: S 25134; S1 31803.2
- C-F-B2-RR-41: Expenses: F 12510; P 2927.38
- C-F-B2-RR-61: Expenses: WP 95100
- C-F-B2-RR-30: Expenses: BO 15502.9; k 96697.5
- C-F-B2-RR-20: Expenses: G 14950; E 64331
- C-F-B2-RR-50: Expenses: G 372180; B 41623.7; M 56398.1
- C-F-B2-RR-60: Expenses: W 21505.6
- C-F-RR-151: Expenses: B 115741; F 48443.4
- C-F-B1-RR-41: Expenses: W 86284.3
- C-F-B1-RR-81: Expenses: CP 85561.5
- C-F-B1-RR-31: Expenses: S 25134; S1 31803.2
- C-F-B1-RR-71: Expenses: F 12510; P 2927.38
- C-F-B1-RR-91: Expenses: RD 154145; WP 95100
- C-F-B1-RR-80: Expenses: BO 15502.9; K 96697.5
- C-F-B1-RR-70: Expenses: G 14950; E 64331
- C-F-B1-RR-00: Expenses: G 372180; B 41623.7; M 56398.1
- C-F-B1-RR-10: Expenses: EP 16686.3; W 21505.6

| ID | WBS | Activity | Duration | Start | Finish | Predecessors | Total float | Free float | Calendar | Cost |
| --- | --- | --- | --- | --- | --- | --- | --- | --- | --- | --- |
|  | 12 | **Finishes Works - Core & Lobbies** |  | 2015-11-07 | 2016-10-12 |  |  |  |  |  |
|  | 2 | **Finishes - Basement 3** |  | 2015-11-07 | 2016-08-10 |  |  |  |  |  |
|  | 1 | **Partitions** |  | 2015-11-12 | 2016-02-02 |  |  |  |  |  |
| C-F-P-1593 |  | Fire Proofing & Block works at Basement 3 - Core & Lobbies | 14d | 2015-11-12 | 2015-11-28 | C-CS-B3-01, SD-CS-B3-332, C-F-RR-81 SS, M-TF-003 | 6d | 0d |  | 164,184.15 |
| C-F-P-1603 |  | Installation of the Studs for Gypsum Board Partition at Basement 3 | 20d | 2015-11-18 | 2015-12-10 | C-F-P-1593 SS+5d, SD-CS-B3-372, P-AF-GB-2323 | 6d | 0d |  | 72,846.03 |
| C-F-P-1613 |  | Installation of Gypsum Board Partition & Insulation within the walls at Basement 3 | 25d | 2016-01-05 | 2016-02-02 | C-MEP-BMS-2655, C-ELV-SMATV-2655, C-ELV-CCTV-2655, C-ELV-FA-2655, C-ELV-MSPA-2655, C-ELV-RMS-2655, C-ELV-CS-2655, C-MEP-E-3186, C-MEP-PD-2655 | 134d | 0d |  | 50,393.64 |
|  | 2 | **Ceiling Finishes** |  | 2015-11-07 | 2016-05-01 |  |  |  |  |  |
| C-F-CF-3717 |  | Installation of Ceiling Support & Brackets at Basement 3 | 15d | 2015-11-07 | 2015-11-23 | C-F-CF-3777 FF | 209d | 106d |  | 4,778.34 |
| C-F-CF-3777 |  | Installation of Ceiling thermal/accoustic insulation at Basement 3 | 5d | 2015-11-18 | 2015-11-23 | C-F-P-1593 SS+5d | 209d | 0d |  | 58,401.24 |
| C-F-CF-3727 |  | Installation of Gypsum & FIber Ceiling at Basement 3 | 15d | 2016-03-29 | 2016-04-14 | C-F-CF-3717, C-MEP-BMS-2675, C-ELV-SMATV-2675, C-ELV-CCTV-2675, C-ELV-FA-2675, C-ELV-MSPA-2675, C-ELV-RMS-2675, C-ELV-CS-2675, C-MEP-PD-2675, C-MEP-PD-2685, C-MEP-FF-2134, C-MEP-FF-2144, C-MEP-AC-4278, C-MEP-AC-4308, C-MEP-AC-4258, C-MEP-E-3196, SD-CS-B3-492 | 103d | 0d |  | 14,335.02 |
| C-F-CF-3737 |  | Istallation of Metal Ceiling at Basement 3 | 14d | 2016-03-29 | 2016-04-13 | C-F-CF-3717, C-MEP-BMS-2675, C-ELV-SMATV-2675, C-ELV-CCTV-2675, C-ELV-FA-2675, C-ELV-MSPA-2675, C-ELV-RMS-2675, C-ELV-CS-2675, C-MEP-PD-2675, C-MEP-PD-2685, C-MEP-FF-2134, C-MEP-FF-2144, C-MEP-AC-4278, C-MEP-AC-4308, C-MEP-AC-4258, C-MEP-E-3196, P-AF-B-1363 | 104d | 1d |  | 127,499.62 |
| C-F-CF-3747 |  | Ceiling Painting works at Basement 3 | 12d | 2016-04-18 | 2016-05-01 | C-F-CF-3727, C-MEP-FF-2154 FF | 170d | 64d |  | 64,171.11 |
|  | 3 | **Floor Finishes** |  | 2016-01-14 | 2016-06-15 |  |  |  |  |  |
| C-F-FF-2124 |  | Waterproofing & Screed works at Basement 3 | 20d | 2016-01-14 | 2016-02-06 | C-F-P-1593, C-F-B3-RR-61 | 180d | 74d |  | 53,493.56 |
| C-F-FF-2154 |  | Installation of Raised FLooring at Basement 3 | 16d | 2016-04-16 | 2016-05-03 | C-F-CF-3737, C-F-CF-3727, P-AF-B-1403 | 106d | 0d |  | 10,514.94 |
| C-F-FF-2134 |  | Installation of Porcelain/Ceramic tiles at Basement 3 | 25d | 2016-05-04 | 2016-06-01 | C-F-CF-3737, C-F-CF-3727, C-F-FF-2124, C-F-FF-2154, SD-CS-B3-412, P-AF-B-1243, P-AF-B-1563, P-AF-B-1283, C-F-WF-2124, P-AF-B-1123 | 106d | 0d |  | 9,513.99 |
| C-F-FF-2144 |  | Installation of Carpet Tiles at Basement 3 | 12d | 2016-06-02 | 2016-06-15 | C-F-CF-3737, C-F-CF-3727, C-F-FF-2124, C-F-FF-2134, P-AF-B-1323 | 106d | 0d |  | 45,786.06 |
|  | 4 | **Wall Finishes** |  | 2016-02-14 | 2016-08-10 |  |  |  |  |  |
| C-F-WF-2124 |  | Fire Proofing & Plaster Works at Basement 3 | 18d | 2016-02-14 | 2016-03-05 | C-F-P-1593, P-AF-B-1203, C-F-B3-RR-101 | 157d | 51d |  | 15,437.36 |
| C-F-WF-2134 |  | Installation of Wall Cladding (Cement Board) & Access Panels at Basement 3 | 20d | 2016-06-02 | 2016-06-25 | C-F-P-1613, SD-CS-B3-452, P-AF-B-1043, C-F-FF-2134 | 143d | 12d |  | 261,935.91 |
| C-F-WF-2144 |  | Wall Paint works at Basement 3 | 20d | 2016-07-19 | 2016-08-10 | C-F-P-1603, C-F-WF-2124, C-F-CF-3747, C-F-P-1613, C-F-FF-2134 FF+5d, C-MEP-FF-2154 FF, C-F-DW-2124 FF+5d, C-F-DW-2134 FS+5d, P-AF-B-1443 | 106d | 0d |  | 71,324.99 |
|  | 5 | **Doors & Windows** |  | 2015-11-19 | 2016-07-12 |  |  |  |  |  |
| C-F-DW-2144 |  | Installation of Steel Door Sub-frame at Basement 3 | 8d | 2015-11-19 | 2015-11-28 | C-F-P-1593 FF, SD-CS-B3-532, PQ-CS-C-1872, PQ-CS-C-1892 | 296d | 0d |  | 107,401.55 |
| C-F-L-2244 |  | Installation of Ladders | 5d | 2015-11-19 | 2015-11-24 | C-F-DW-2144 SS | 327d | 182d | *APB - 6 D week + Qatar Holiday | 288,471.4 |
| C-F-DW-2154 |  | Installation of Wood Door Sub-frame at Basement 3 | 8d | 2016-01-25 | 2016-02-02 | C-F-P-1613 FF | 220d | 114d |  | 19,362.67 |
| C-F-DW-2124 |  | Installation of Steel Doors at Basement 3 | 20d | 2016-06-02 | 2016-06-25 | C-F-DW-2144, C-F-FF-2154, C-F-FF-2134, C-F-FF-2154 FF, P-AF-B-1083, P-AF-B-883, P-AF-B-723, P-AF-B-1003, P-AF-B-843, PQ-CS-C-1912, C-F-L-2244 FF | 138d | 32d |  | 322,204.66 |
| C-F-DW-2134 |  | Installation of Wood Doors at Basement 3 | 20d | 2016-06-16 | 2016-07-12 | C-F-DW-2154, C-F-P-1613, C-F-FF-2134 SS, C-F-FF-2134 FF, C-F-FF-2144, P-AF-B-963, P-AF-B-923 | 106d | 0d |  | 58,088.01 |

Notes:
- C-F-P-1593: Expenses: B 115741; F 48443.4
- C-F-P-1603: Expenses: ps 71309.2; WF 1536.87
- C-F-P-1613: Expenses: ps 47539.4; WF 2854.2
- C-F-CF-3717: Expenses: GC 4778.34
- C-F-CF-3777: Expenses: w 58401.2
- C-F-CF-3727: Expenses: GC 14335
- C-F-CF-3737: Expenses: MC 127500
- C-F-CF-3747: Expenses: CP 64171.1
- C-F-FF-2124: Expenses: W 28359.6; S 25134
- C-F-FF-2154: Expenses: F 1818.18; R 8696.76
- C-F-FF-2134: Expenses: C 9513.99
- C-F-FF-2144: Expenses: C 45786.1
- C-F-WF-2124: Expenses: F 12510; P 2927.38
- C-F-WF-2134: Expenses: G 9601.81; CB 97335.4; T 154999
- C-F-WF-2144: Expenses: WP 71325
- C-F-DW-2144: Expenses: S 107402
- C-F-L-2244: Expenses: L 288471
- C-F-DW-2154: Expenses: W 19362.7
- C-F-DW-2124: Expenses: D 322205
- C-F-DW-2134: Expenses: W 58088

| ID | WBS | Activity | Duration | Start | Finish | Predecessors | Total float | Free float | Calendar | Cost |
| --- | --- | --- | --- | --- | --- | --- | --- | --- | --- | --- |
|  | 1 | **Finishes - Basement 2** |  | 2015-11-24 | 2016-09-18 |  |  |  |  |  |
|  | 1 | **Partitions** |  | 2015-11-30 | 2016-03-03 |  |  |  |  |  |
| C-F-P-1623 |  | Fire Proofing & Block works at Basement 2 - Core & Lobbies | 14d | 2015-11-30 | 2015-12-15 | C-CS-B2-1, C-F-P-1593, C-F-P-1593 FF, SD-CS-B3-312, C-F-RR-221 | 11d | 0d |  | 164,184.15 |
| C-F-P-1633 |  | Installation of the Studs for Gypsum Board Partition at Basement 2 | 20d | 2015-12-12 | 2016-01-04 | C-F-P-1623 SS+5d, C-F-P-1603, SD-CS-B3-352 | 6d | 0d |  | 72,846.03 |
| C-F-P-1863 |  | Installation of Glass Partition at Basement 2 | 25d | 2016-01-05 | 2016-02-02 | C-F-P-1633 | 163d | 26d | *APB - 6 D week + Qatar Holiday | 15,436.44 |
| C-F-P-1643 |  | Installation of Gypsum Board Partition & Insulation within the walls at Basement 2 | 25d | 2016-02-03 | 2016-03-03 | C-MEP-BMS-2705, C-ELV-SMATV-2705, C-ELV-CCTV-2705, C-ELV-FA-2705, C-ELV-MSPA-2705, C-ELV-RMS-2705, C-ELV-CS-2705, C-MEP-E-3246, C-MEP-PD-2705, C-F-P-1613, C-F-P-1863 FF | 134d | 0d |  | 50,393.64 |
|  | 2 | **Ceiling Finishes** |  | 2015-11-24 | 2016-06-05 |  |  |  |  |  |
| C-F-CF-3787 |  | Installation of Ceiling Support & Brackets at Basement 2 | 15d | 2015-11-24 | 2015-12-10 | C-F-CF-3847 FF | 126d | 111d |  | 4,778.34 |
| C-F-CF-3847 |  | Installation of Ceiling thermal/accoustic insulation at Basement 2 | 5d | 2015-12-06 | 2015-12-10 | C-F-P-1623 SS+5d | 126d | 0d |  | 58,401.24 |
| C-F-CF-3797 |  | Installation of Gypsum & FIber Ceiling at Basement 2 | 25d | 2016-04-21 | 2016-05-19 | C-F-CF-3787, C-MEP-BMS-2725, C-ELV-SMATV-2725, C-ELV-CCTV-2725, C-ELV-FA-2725, C-ELV-MSPA-2725, C-ELV-RMS-2725, C-ELV-CS-2725, C-MEP-PD-2725, C-MEP-PD-2735, C-MEP-FF-2174, C-MEP-FF-2184, C-MEP-AC-4358, C-MEP-AC-4388, C-MEP-AC-4338, C-MEP-E-3256, SD-CS-B3-472 | 15d | 0d |  | 14,335.02 |
| C-F-CF-3807 |  | Istallation of Metal Ceiling at Basement 2 | 25d | 2016-04-21 | 2016-05-19 | C-F-CF-3787, C-MEP-BMS-2725, C-ELV-SMATV-2725, C-ELV-CCTV-2725, C-ELV-FA-2725, C-ELV-MSPA-2725, C-ELV-RMS-2725, C-ELV-CS-2725, C-MEP-PD-2725, C-MEP-PD-2735, C-MEP-FF-2174, C-MEP-FF-2184, C-MEP-AC-4358, C-MEP-AC-4388, C-MEP-AC-4338, C-MEP-E-3256 | 15d | 0d |  | 127,499.62 |
| C-F-CF-3817 |  | Ceiling Painting works at Basement 2 | 12d | 2016-05-23 | 2016-06-05 | C-F-CF-3797, C-MEP-FF-2194 FF | 79d | 64d |  | 64,171.11 |
|  | 3 | **Floor Finishes** |  | 2016-02-14 | 2016-07-24 |  |  |  |  |  |
| C-F-FF-2164 |  | Waterproofing & Screed works at Basement 2 | 20d | 2016-02-14 | 2016-03-07 | C-F-P-1623, C-F-B2-RR-01 | 94d | 79d |  | 53,493.56 |
| C-F-FF-2194 |  | Installation of Raised FLooring at Basement 2 | 16d | 2016-05-21 | 2016-06-07 | C-F-CF-3807, C-F-CF-3797 | 15d | 0d |  | 10,514.94 |
| C-F-FF-2174 |  | Installation of Porcelain/Ceramic tiles at Basement 2 | 25d | 2016-06-08 | 2016-07-10 | C-F-CF-3807, C-F-CF-3797, C-F-FF-2164, C-F-WF-2194 FF, C-F-FF-2194, SD-CS-B3-392 | 15d | 0d |  | 9,513.99 |
| C-F-FF-2184 |  | Installation of Carpet Tiles at Basement 2 | 12d | 2016-07-11 | 2016-07-24 | C-F-CF-3807, C-F-CF-3797, C-F-FF-2164, C-F-FF-2174 | 15d | 0d |  | 45,786.06 |
|  | 4 | **Wall Finishes** |  | 2016-03-14 | 2016-09-18 |  |  |  |  |  |
| C-F-WF-2164 |  | Fire Proofing & Plaster Works at Basement 2 | 18d | 2016-03-14 | 2016-04-03 | C-F-P-1623, C-F-B2-RR-41 | 76d | 0d |  | 15,437.36 |
| C-F-WF-2194 |  | Installation of Toilet Cubicals at Basement 2 | 20d | 2016-04-04 | 2016-04-26 | C-F-WF-2164 | 76d | 61d |  | 141,677.9 |
| C-F-WF-2174 |  | Installation of Wall Cladding (Cement Board) & Access Panels at Basement 2 | 20d | 2016-07-11 | 2016-08-02 | C-F-P-1643, SD-CS-B3-432, C-F-FF-2174 | 52d | 12d |  | 261,935.91 |
| C-F-WF-2184 |  | Wall Paint works at Basement 2 | 20d | 2016-08-23 | 2016-09-18 | C-F-P-1633, C-F-WF-2164, C-F-CF-3817, C-F-P-1643, C-F-FF-2174 FF+5d, C-MEP-FF-2194 FF, C-F-DW-2164 FF+5d, C-F-DW-2174 FS+5d, C-AF-KF-66 | 15d | 0d |  | 71,324.99 |
|  | 5 | **Doors & Windows** |  | 2015-12-07 | 2016-08-16 |  |  |  |  |  |
| C-F-DW-2184 |  | Installation of Steel Door Sub-frame at Basement 2 | 8d | 2015-12-07 | 2015-12-15 | C-F-P-1623 FF, SD-CS-B3-512 | 220d | 173d |  | 107,401.55 |
| C-F-DW-2194 |  | Installation of Wood Door Sub-frame at Basement 2 | 8d | 2016-02-24 | 2016-03-03 | C-F-P-1643 FF | 134d | 0d |  | 19,362.67 |
| C-F-DW-2254 |  | Insallation of Glass Door & wIndows at Basement 2 | 20d | 2016-02-24 | 2016-03-17 | C-F-DW-2194 SS | 145d | 130d | *APB - 6 D week + Qatar Holiday | 56,503.94 |
| C-F-DW-2164 |  | Installation of Steel Doors at Basement 2 | 20d | 2016-07-11 | 2016-08-02 | C-F-DW-2184, C-F-FF-2194, C-F-FF-2174, C-F-FF-2194 FF | 47d | 32d |  | 322,204.66 |
| C-F-DW-2174 |  | Installation of Wood Doors at Basement 2 | 20d | 2016-07-25 | 2016-08-16 | C-F-DW-2194, C-F-P-1643, C-F-FF-2174 SS, C-F-FF-2174 FF, C-F-FF-2184, C-F-DW-2254 FF | 15d | 0d |  | 58,088.01 |

Notes:
- C-F-P-1623: Expenses: B 115741; F 48443.4
- C-F-P-1633: Expenses: PS 71309.2; WF 1536.87
- C-F-P-1863: Expenses: G 15436.4
- C-F-P-1643: Expenses: PS 47539.4; WF 2854.2
- C-F-CF-3787: Expenses: GC 4778.34
- C-F-CF-3847: Expenses: W 58401.2
- C-F-CF-3797: Expenses: GC 14335
- C-F-CF-3807: Expenses: MC 127500
- C-F-CF-3817: Expenses: CP 64171.1
- C-F-FF-2164: Expenses: W 28359.6; S 25134
- C-F-FF-2194: Expenses: F 1818.18; R 8696.76
- C-F-FF-2174: Expenses: C 9513.99
- C-F-FF-2184: Expenses: C 45786.1
- C-F-WF-2164: Expenses: F 12510; P 2927.38
- C-F-WF-2194: Expenses: C 141678
- C-F-WF-2174: Expenses: C 9601.81; CB 97335.4; T 154999
- C-F-WF-2184: Expenses: WP 71325
- C-F-DW-2184: Expenses: W 107402
- C-F-DW-2194: Expenses: W 19362.7
- C-F-DW-2254: Expenses: G 31258.9; w 25245
- C-F-DW-2164: Expenses: S 322205
- C-F-DW-2174: Expenses: W 58088

| ID | WBS | Activity | Duration | Start | Finish | Predecessors | Total float | Free float | Calendar | Cost |
| --- | --- | --- | --- | --- | --- | --- | --- | --- | --- | --- |
|  | 51 | **Finishes - Basement 1** |  | 2015-12-10 | 2016-10-12 |  |  |  |  |  |
|  | 1 | **Partitions** |  | 2015-12-16 | 2016-04-02 |  |  |  |  |  |
| C-F-P-1653 |  | Fire Proofing & Block works at Basement 1 - - Core & Lobbies | 14d | 2015-12-16 | 2016-01-02 | C-CS-B1-11, C-F-P-1623, C-F-P-1623 FF, SD-CS-B2-252, C-F-RR-151 SS | 23d | 0d |  | 164,184.15 |
| C-F-P-1663 |  | Installation of the Studs for Gypsum Board Partition at Basement 1 | 20d | 2016-01-05 | 2016-01-27 | C-F-P-1653 SS+5d, C-F-P-1633, SD-CS-B2-272 | 12d | 0d |  | 72,846.03 |
| C-F-P-1673 |  | Installation of Gypsum Board Partition & Insulation within the walls at Basement 1 | 25d | 2016-03-05 | 2016-04-02 | C-MEP-BMS-2755, C-ELV-SMATV-2755, C-ELV-CCTV-2755, C-ELV-FA-2755, C-ELV-MSPA-2755, C-ELV-RMS-2755, C-ELV-CS-2755, C-MEP-E-3306, C-MEP-PD-2755, C-F-P-1643 | 134d | 0d |  | 50,393.64 |
|  | 2 | **Ceiling Finishes** |  | 2015-12-10 | 2016-06-28 |  |  |  |  |  |
| C-F-CF-3857 |  | Installation of Ceiling Support & Brackets at Basement 1 | 15d | 2015-12-10 | 2015-12-28 | C-F-CF-3917 FF | 137d | 117d |  | 4,778.34 |
| C-F-CF-3917 |  | Installation of Ceiling thermal/accoustic insulation at Basement 1 | 5d | 2015-12-23 | 2015-12-28 | C-F-P-1653 SS+5d | 137d | 0d |  | 58,401.24 |
| C-F-CF-3867 |  | Installation of Gypsum & Fiber Ceiling at Basement 1 | 25d | 2016-05-15 | 2016-06-12 | C-F-CF-3857, C-MEP-BMS-2775, C-ELV-SMATV-2775, C-ELV-CCTV-2775, C-ELV-FA-2775, C-ELV-MSPA-2775, C-ELV-RMS-2775, C-ELV-CS-2775, C-MEP-PD-2775, C-MEP-PD-2785, C-MEP-FF-2214, C-MEP-FF-2224, C-MEP-AC-4438, C-MEP-AC-4468, C-MEP-AC-4418, C-MEP-E-3316, SD-CS-B2-332 | 20d | 0d |  | 14,335.02 |
| C-F-CF-3877 |  | Istallation of Metal Ceiling at Basement 1 | 25d | 2016-05-15 | 2016-06-12 | C-F-CF-3857, C-MEP-BMS-2775, C-ELV-SMATV-2775, C-ELV-CCTV-2775, C-ELV-FA-2775, C-ELV-MSPA-2775, C-ELV-RMS-2775, C-ELV-CS-2775, C-MEP-PD-2775, C-MEP-PD-2785, C-MEP-FF-2214, C-MEP-FF-2224, C-MEP-AC-4438, C-MEP-AC-4468, C-MEP-AC-4418, C-MEP-E-3316 | 20d | 0d |  | 127,499.62 |
| C-F-CF-3887 |  | Ceiling Painting works at Basement 1 | 12d | 2016-06-15 | 2016-06-28 | C-F-CF-3867, C-MEP-FF-2234 FF | 84d | 64d |  | 64,171.11 |
|  | 3 | **Floor Finishes** |  | 2016-03-14 | 2016-08-16 |  |  |  |  |  |
| C-F-FF-2204 |  | Waterproofing & Screed works at Basement 1 | 20d | 2016-03-14 | 2016-04-05 | C-F-P-1653, C-F-B1-RR-31 | 94d | 74d |  | 53,493.56 |
| C-F-FF-2234 |  | Installation of Raised FLooring at Basement 1 | 16d | 2016-06-13 | 2016-06-30 | C-F-CF-3877, C-F-CF-3867 | 20d | 0d |  | 10,514.94 |
| C-F-FF-2214 |  | Installation of Porcelain/Ceramic tiles at Basement 1 | 25d | 2016-07-02 | 2016-08-02 | C-F-CF-3877, C-F-CF-3867, C-F-FF-2204, C-F-WF-2234 FF, C-F-FF-2234, SD-CS-B2-292, C-UR-PR-1891 | 20d | 0d |  | 9,513.99 |
| C-F-FF-2224 |  | Installation of Carpet Tiles at Basement 1 | 12d | 2016-08-03 | 2016-08-16 | C-F-CF-3877, C-F-CF-3867, C-F-FF-2204, C-F-FF-2214 | 20d | 0d |  | 45,786.06 |
|  | 4 | **Wall Finishes** |  | 2016-04-12 | 2016-10-12 |  |  |  |  |  |
| C-F-WF-2204 |  | Fire Proofing & Plaster Works at Basement 1 | 18d | 2016-04-12 | 2016-05-02 | C-F-P-1653, C-F-B1-RR-71 | 76d | 0d |  | 15,437.36 |
| C-F-WF-2234 |  | Installation of Toilet Cubicals at Basement 1 | 20d | 2016-05-03 | 2016-05-25 | C-F-WF-2204 | 76d | 56d |  | 141,677.9 |
| C-F-WF-2214 |  | Installation of Wall Cladding (Cement Board) & Access Panels at Basement 1 | 20d | 2016-08-03 | 2016-08-25 | C-F-P-1673, SD-CS-B2-312, C-F-FF-2214 | 57d | 12d |  | 261,935.91 |
| C-F-WF-2224 |  | Wall Paint works at Basement 1 | 20d | 2016-09-19 | 2016-10-12 | C-F-P-1663, C-F-WF-2204, C-F-CF-3887, C-F-P-1673, C-F-FF-2214 FF+5d, C-MEP-FF-2234 FF, C-F-DW-2204 FF+5d, C-F-DW-2214 FS+5d, C-AF-KF-76 | 20d | 0d |  | 71,324.99 |
|  | 5 | **Doors & Windows** |  | 2015-12-24 | 2016-09-08 |  |  |  |  |  |
| C-F-DW-2224 |  | Installation of Steel Door Sub-frame at Basement 1 | 8d | 2015-12-24 | 2016-01-02 | C-F-P-1653 FF, SD-CS-B2-352 | 231d | 179d |  | 107,401.55 |
| C-F-DW-2234 |  | Installation of Wood Door Sub-frame at Basement 1 | 8d | 2016-03-24 | 2016-04-02 | C-F-P-1673 FF | 134d | 0d |  | 19,362.67 |
| C-F-DW-2244 |  | Insallation of Glass Door & Window at Basement 1 | 20d | 2016-03-24 | 2016-04-16 | C-F-DW-2234 SS | 149d | 125d | *APB - 6 D week + Qatar Holiday | 56,503.94 |
| C-F-DW-2204 |  | Installation of Steel Doors at Basement 1 | 20d | 2016-08-03 | 2016-08-25 | C-F-DW-2224, C-F-FF-2234, C-F-FF-2214, C-F-FF-2234 FF | 52d | 32d |  | 322,204.66 |
| C-F-DW-2214 |  | Installation of Wood Doors at Basement 1 | 20d | 2016-08-17 | 2016-09-08 | C-F-DW-2234, C-F-P-1673, C-F-FF-2214 SS, C-F-FF-2214 FF, C-F-FF-2224, C-F-DW-2244 FF | 20d | 0d |  | 58,088.01 |

Notes:
- C-F-P-1653: Expenses: B 115741; F 48443.4
- C-F-P-1663: Expenses: PS 71309.2; WF 1536.87
- C-F-P-1673: Expenses: PS 47539.4; WF 2854.2
- C-F-CF-3857: Expenses: GC 4778.34
- C-F-CF-3917: Expenses: W 58401.2
- C-F-CF-3867: Expenses: GC 14335
- C-F-CF-3877: Expenses: MC 127500
- C-F-CF-3887: Expenses: CP 64171.1
- C-F-FF-2204: Expenses: W 28359.6; S 25134
- C-F-FF-2234: Expenses: F 1818.18; R 8696.76
- C-F-FF-2214: Expenses: C 9513.99
- C-F-FF-2224: Expenses: C 45786.1
- C-F-WF-2204: Expenses: F 12510; P 2927.38
- C-F-WF-2234: Expenses: C 141678
- C-F-WF-2214: Expenses: A 9601.81; CB 97335.4; T 154999
- C-F-WF-2224: Expenses: WP 71325
- C-F-DW-2224: Expenses: S 107402
- C-F-DW-2234: Expenses: W 19362.7
- C-F-DW-2244: Expenses: G 31258.9; W 25245
- C-F-DW-2204: Expenses: S 322205
- C-F-DW-2214: Expenses: W 58088

| ID | WBS | Activity | Duration | Start | Finish | Predecessors | Total float | Free float | Cost |
| --- | --- | --- | --- | --- | --- | --- | --- | --- | --- |
|  | 11 | **Finishes - Ground to Roof** |  | 2015-02-19 | 2017-01-18 |  |  |  |  |
|  | 2 | **Finishes - Ground Level** |  | 2015-02-19 | 2016-03-09 |  |  |  |  |
|  | 1 | **Partitions** |  | 2015-02-25 | 2015-07-27 |  |  |  |  |
| C-F-P-3 |  | Block Works & Fireproofing at Ground level | 14d | 2015-02-25 | 2015-03-12 | C-CS-GF-21, SD-CS-B1-252 | 62d | 0d | 322,442.35 |
| C-F-P-13 |  | Installation of the Studs for Gypsum Board Partition at Level at Ground level | 20d | 2015-03-03 | 2015-03-25 | C-F-P-3 SS+5d, SD-CS-B1-272 | 62d | 0d | 390,835.84 |
| C-F-P-23 |  | Installation of Gypsum Board Partition & Insulation within the walls at Ground level | 25d | 2015-06-27 | 2015-07-27 | C-MEP-BMS-5, C-ELV-SMATV-5, C-ELV-CCTV-5, C-ELV-FA-5, C-ELV-MSPA-5, C-ELV-RMS-5, C-ELV-CS-5, C-MEP-E-6, C-MEP-PD-5, C-P-SG-B-001 | 133d | 0d | 586,253.77 |
|  | 2 | **Ceiling Finishes** |  | 2015-02-19 | 2015-11-30 |  |  |  |  |
| C-F-CF-7 |  | Installation of Ceiling Support & Brackets at Levelat Ground level | 15d | 2015-02-19 | 2015-03-08 | C-F-CF-67 FF | 74d | 0d | 6,023.18 |
| C-F-CF-67 |  | Installation of Ceiling thermal/accoustic insulation at Ground level | 5d | 2015-03-03 | 2015-03-08 | C-F-P-3 SS+5d | 74d | 0d | 12,350.08 |
| C-F-CF-47 |  | Installation of Smoke Curtains support & Equipments at Ground level | 8d | 2015-08-15 | 2015-08-23 | C-F-CF-7 SS, P-AF-B-1523 | 116d | 0d | 88,617.15 |
| C-F-CF-57 |  | Installation of Smoke Curtains at Ground level | 8d | 2015-08-24 | 2015-09-01 | P-AF-B-1523, PQ-CS-C-1932, C-F-CF-47 | 127d | 35d | 265,851.44 |
| C-F-CF-17 |  | Installation of Gypsum Ceiling at Ground level | 25d | 2015-10-17 | 2015-11-14 | C-F-CF-7, C-F-CF-47, C-MEP-BMS-25, C-ELV-SMATV-25, C-ELV-CCTV-25, C-ELV-FA-25, C-ELV-MSPA-25, C-ELV-RMS-25, C-ELV-CS-25, C-MEP-PD-25, C-MEP-PD-35, C-MEP-FF-14, C-MEP-FF-24, C-MEP-AC-38, C-MEP-AC-68, C-MEP-AC-18, C-MEP-E-16, SD-CS-B1-332, C-F-CF-57, C-P-SG-B-001 | 92d | 0d |  |
| C-F-CF-27 |  | Istallation of Metal Ceiling at level at Ground level | 25d | 2015-10-17 | 2015-11-14 | C-F-CF-7, C-F-CF-47, C-MEP-BMS-25, C-ELV-SMATV-25, C-ELV-CCTV-25, C-ELV-FA-25, C-ELV-MSPA-25, C-ELV-RMS-25, C-ELV-CS-25, C-MEP-PD-25, C-MEP-PD-35, C-MEP-FF-14, C-MEP-FF-24, C-MEP-AC-38, C-MEP-AC-68, C-MEP-AC-18, C-MEP-E-16, P-AF-B-1363, C-F-CF-57, C-P-SG-B-001 | 116d | 0d | 18,069.54 |
| C-F-CF-37 |  | Ceiling Painting works at Ground level | 12d | 2015-11-17 | 2015-11-30 | C-F-CF-17, C-MEP-FF-34 FF | 215d | 64d | 4,840.03 |
|  | 3 | **Floor Finishes** |  | 2015-03-14 | 2016-01-16 |  |  |  |  |
| C-F-FF-4 |  | Screed & Waterproofing works at Ground level | 20d | 2015-03-14 | 2015-04-05 | C-F-P-3, C-S-PR-001 | 121d | 0d | 262,248.47 |
| C-F-FF-34 |  | Installation of Raised FLooring at Ground level | 16d | 2015-11-15 | 2015-12-02 | C-F-CF-27, C-F-CF-17, P-AF-B-1403 | 151d | 0d |  |
| C-F-FF-14 |  | Implementation of E-poxy Resin at Ground Level | 25d | 2015-12-03 | 2016-01-02 | C-F-CF-27, C-F-CF-17, C-F-FF-4, C-F-WF-34, C-F-FF-34, SD-CS-B1-292, P-AF-B-1243, P-AF-B-1563, P-AF-B-1283, C-F-P-1723 FF | 151d | 0d | 24,632.5 |
| C-F-FF-24 |  | Installation of Carpet Tiles at Ground level | 12d | 2016-01-03 | 2016-01-16 | C-F-CF-27, C-F-CF-17, C-F-FF-4, C-F-FF-14, P-AF-B-1323, C-F-P-1723 FF | 151d | 0d |  |
|  | 4 | **Wall Finishes** |  | 2015-06-10 | 2016-03-09 |  |  |  |  |
| C-F-WF-4 |  | Plaster Works & Cement Boards (Internal & External) Walls at Ground level | 18d | 2015-06-10 | 2015-06-30 | C-F-P-3, P-AF-B-1203 | 130d | 0d | 163,737.87 |
| C-F-WF-34 |  | Installation of Toilet Cubicals at Ground level | 5d | 2015-09-07 | 2015-09-12 | C-F-WF-4, P-AF-B-1123 | 176d | 0d |  |
| C-F-WF-14 |  | Installation of Wall Cladding at Ground level | 20d | 2016-01-03 | 2016-01-25 | C-F-P-23, SD-CS-B1-312, P-AF-B-1283, P-AF-B-1043, C-F-FF-14, C-F-P-1733 FF | 188d | 12d | 542.11 |
| C-F-WF-24 |  | Wall Paint works at Ground level | 20d | 2016-02-16 | 2016-03-09 | C-F-P-13, C-F-WF-4, C-F-CF-37, C-F-P-23, C-F-FF-14 FF+5d, C-MEP-FF-34 FF, C-F-DW-4 FF+5d, C-F-DW-14 FS+5d, P-AF-B-1443, C-F-P-1733 FF, C-AF-TF-001, C-PF-001, C-OF-001, C-AF-KF-86, C-AF-KF-6 | 151d | 0d | 32,482.8 |

Notes:
- C-F-P-3: Expenses: B 34760.6; F 287682
- C-F-P-13: Expenses: S 390836
- C-F-P-23: Expenses: G 586254
- C-F-CF-7: Expenses: 1 6023.18
- C-F-CF-67: Expenses: W 12350.1
- C-F-CF-47: Expenses: CS 88617.1
- C-F-CF-57: Expenses: S 265851
- C-F-CF-27: Expenses: 1 18069.5
- C-F-CF-37: Expenses: 1 4840.03
- C-F-FF-4: Expenses: SW 90835.9; 2 171413
- C-F-FF-14: Expenses: 1 24632.5
- C-F-WF-4: Expenses: 1 59088.6; 2 104649
- C-F-WF-14: Expenses: 1 542.11
- C-F-WF-24: Expenses: 1 32482.8

| ID | WBS | Activity | Duration | Start | Finish | Predecessors | Total float | Free float | Cost |
| --- | --- | --- | --- | --- | --- | --- | --- | --- | --- |
|  | 5 | **Doors & Windows** |  | 2015-08-27 | 2016-02-08 |  |  |  |  |
| C-F-DW-24 |  | Installation of Steel Door Sub-frame at Ground level | 8d | 2015-08-27 | 2015-09-05 | C-F-P-3 FF, SD-CS-B1-352 | 111d | 6d | 18,370.45 |
| C-F-DW-4 |  | Installation of Steel Doors& Handrails at Ground level | 20d | 2016-01-03 | 2016-01-25 | C-F-DW-24, C-F-FF-34, C-F-FF-14, C-F-FF-34 FF, P-AF-B-1083, P-AF-B-923, P-AF-B-883, P-AF-B-1003, P-AF-B-723 | 183d | 32d | 97,421.31 |
| C-F-DW-14 |  | Installation of Wall & Corner Guard at Ground level | 20d | 2016-01-17 | 2016-02-08 | C-F-P-23, C-F-FF-14, C-F-FF-24, P-AF-B-963, P-AF-B-3843 | 151d | 0d | 6,907.2 |
|  | 105 | **Finishes - Ground Mezzanine Level** |  | 2015-03-05 | 2016-05-24 |  |  |  |  |
|  | 1 | **Partitions** |  | 2015-03-05 | 2015-08-25 |  |  |  |  |
| C-F-P-183 |  | Block Works & Fireproofing at Ground Mezz. level | 14d | 2015-03-05 | 2015-03-21 | C-CS-MZ-31, C-F-P-3 SS, SD-CS-GF-252 | 75d | 0d | 40,035.2 |
| C-F-P-193 |  | Installation of the Studs for Gypsum Board Partition at Level at Ground Mezz. level | 20d | 2015-03-11 | 2015-04-02 | C-F-P-183 SS+5d, SD-CS-GF-272, MS-A-GB-1572 | 75d | 1d | 48,527.1 |
| C-F-P-203 |  | Installation of Gypsum Board Partition & Insulation within the walls at Ground Mezz. level | 25d | 2015-07-28 | 2015-08-25 | C-MEP-BMS-305, C-ELV-SMATV-305, C-ELV-CCTV-305, C-ELV-FA-305, C-ELV-MSPA-305, C-ELV-RMS-305, C-ELV-CS-305, C-MEP-E-366, C-MEP-PD-305, C-F-P-23, C-P-SG-B-002 | 133d | 0d | 72,790.64 |
|  | 2 | **Ceiling Finishes** |  | 2015-03-09 | 2015-12-16 |  |  |  |  |
| C-F-CF-427 |  | Installation of Ceiling Support & Brackets at Levelat Ground Mezz. level | 15d | 2015-03-09 | 2015-03-25 | C-F-CF-487 FF, C-F-CF-7 | 74d | 0d | 747.85 |
| C-F-CF-487 |  | Installation of Ceiling thermal/accoustic insulation at Ground Mezz. level | 5d | 2015-03-11 | 2015-03-16 | C-F-P-183 SS+5d | 82d | 8d | 1,533.41 |
| C-F-CF-467 |  | Installation of Smoke Curtains support & Equipments at Ground Mezz. level | 8d | 2015-08-15 | 2015-08-23 | C-F-CF-427 SS, C-F-CF-47 SS | 116d | 0d | 88,617.15 |
| C-F-CF-477 |  | Installation of Smoke Curtains at Ground Mezz. level | 8d | 2015-08-24 | 2015-09-01 | C-F-CF-467 | 165d | 35d | 265,851.44 |
| C-F-CF-437 |  | Installation of Gypsum Ceiling at Ground Mezz. level | 25d | 2015-10-17 | 2015-11-14 | C-F-CF-427, C-F-CF-467, C-MEP-BMS-325, C-ELV-SMATV-325, C-ELV-CCTV-325, C-ELV-FA-325, C-ELV-MSPA-325, C-ELV-RMS-325, C-ELV-CS-325, C-MEP-PD-325, C-MEP-PD-335, C-MEP-FF-254, C-MEP-FF-264, C-MEP-AC-518, C-MEP-AC-548, C-MEP-AC-498, C-MEP-E-376, SD-CS-GF-332, C-F-CF-477, C-P-SG-B-002 | 130d | 0d |  |
| C-F-CF-447 |  | Istallation of Metal Ceiling at Ground Mezz. level | 25d | 2015-10-17 | 2015-11-14 | C-F-CF-427, C-F-CF-467, C-MEP-BMS-325, C-ELV-SMATV-325, C-ELV-CCTV-325, C-ELV-FA-325, C-ELV-MSPA-325, C-ELV-RMS-325, C-ELV-CS-325, C-MEP-PD-325, C-MEP-PD-335, C-MEP-FF-254, C-MEP-FF-264, C-MEP-AC-518, C-MEP-AC-548, C-MEP-AC-498, C-MEP-E-376, PQ-CS-C-1712, C-F-CF-477, C-P-SG-B-002 | 130d | 0d | 2,243.56 |
| C-F-CF-457 |  | Ceiling Painting works at Ground Mezz. level | 12d | 2015-12-03 | 2015-12-16 | C-F-CF-437, C-MEP-FF-274 FF | 201d | 115d | 600.95 |
|  | 3 | **Floor Finishes** |  | 2015-04-06 | 2016-04-02 |  |  |  |  |
| C-F-FF-244 |  | Screed & Waterproofing works at Ground Mezz. level | 20d | 2015-04-06 | 2015-04-28 | C-F-P-183, C-F-FF-4 | 121d | 0d | 32,561.38 |
| C-F-FF-274 |  | Installation of Raised FLooring at Ground Mezz. level | 16d | 2015-11-15 | 2015-12-02 | C-F-CF-447, C-F-CF-437, PQ-CS-C-1612 | 151d | 65d |  |
| C-F-FF-254 |  | Implementation of E-poxy Resin at Ground Mezz. level | 25d | 2016-02-20 | 2016-03-19 | C-F-CF-447, C-F-CF-437, C-F-FF-244, C-F-WF-274, C-F-FF-274, SD-CS-GF-292, C-SS-CW-003, PQ-CS-C-1632, PQ-CS-C-1672, C-F-P-1903 FF | 86d | 0d | 3,058.43 |
| C-F-FF-264 |  | Installation of Carpet Tiles at Ground Mezz. level | 12d | 2016-03-20 | 2016-04-02 | C-F-CF-447, C-F-CF-437, C-F-FF-244, C-F-FF-254, PQ-CS-C-1652, C-F-P-1903 FF | 86d | 0d |  |
|  | 4 | **Wall Finishes** |  | 2015-07-01 | 2016-05-24 |  |  |  |  |
| C-F-WF-244 |  | Plaster Works at Ground Mezz. level | 18d | 2015-07-01 | 2015-07-23 | C-F-P-183, PQ-CS-C-1592, C-F-WF-4 | 130d | 0d | 12,993.5 |
| C-F-WF-274 |  | Installation of Toilet Cubicals at Ground Mezz. level | 5d | 2015-09-13 | 2015-09-17 | C-F-WF-244, PQ-CS-C-1692, C-F-WF-34 | 176d | 0d |  |
| C-F-WF-254 |  | Installation of Wall Cladding at Ground Mezz. level | 20d | 2016-03-20 | 2016-04-11 | C-F-P-203, SD-CS-GF-312, PQ-CS-C-1792, C-F-FF-254, C-F-P-1913 FF | 123d | 12d | 542.11 |
| C-F-WF-264 |  | Wall Paint works at Ground Mezz. level | 20d | 2016-05-02 | 2016-05-24 | C-F-P-193, C-F-WF-244, C-F-CF-457, C-F-P-203, C-F-FF-254 FF+5d, C-MEP-FF-274 FF, C-F-DW-244 FF+5d, C-F-DW-254 FS+5d, PQ-CS-C-1732, PQ-CS-C-1752, C-F-P-1913 FF, C-OF-1 | 86d | 0d | 4,033.14 |

Notes:
- C-F-DW-24: Expenses: 1 7959.27; 2 10411.2
- C-F-DW-4: Expenses: 1 42310; 2 23877.8; 3 31233.5
- C-F-DW-14: Expenses: 1 6907.2
- C-F-P-183: Expenses: B 4315.96; F 35719.2
- C-F-P-193: Expenses: S 48527.1
- C-F-P-203: Expenses: G 72790.6
- C-F-CF-427: Expenses: 1 747.85
- C-F-CF-487: Expenses: W 1533.41
- C-F-CF-467: Expenses: CS 88617.1
- C-F-CF-477: Expenses: S 265851
- C-F-CF-447: Expenses: 1 2243.56
- C-F-CF-457: Expenses: 1 600.95
- C-F-FF-244: Expenses: SW 11278.4; 2 21283
- C-F-FF-254: Expenses: 1 3058.43
- C-F-WF-244: Expenses: 2 12993.5
- C-F-WF-254: Expenses: 1 542.11
- C-F-WF-264: Expenses: 1 4033.14

| ID | WBS | Activity | Duration | Start | Finish | Predecessors | Total float | Free float | Cost |
| --- | --- | --- | --- | --- | --- | --- | --- | --- | --- |
|  | 5 | **Doors & Windows** |  | 2015-09-03 | 2016-04-25 |  |  |  |  |
| C-F-DW-264 |  | Installation of Steel Door Sub-frame at Ground Mezz. level | 8d | 2015-09-03 | 2015-09-12 | C-F-P-183 FF, SD-CS-GF-352, PQ-CS-C-1772, PQ-CS-C-1832, PQ-CS-C-1852, C-F-DW-24 SS | 105d | 6d | 10,411.18 |
| C-F-DW-244 |  | Installation of Steel Doors& Handrails at Ground Mezz. level | 20d | 2016-03-20 | 2016-04-11 | C-F-DW-264, C-F-FF-274, C-F-FF-254, C-F-FF-274 FF | 118d | 32d | 73,543.49 |
| C-F-DW-254 |  | Installation of Wall & Corner Guard at Ground Mezz. level | 20d | 2016-04-03 | 2016-04-25 | C-F-P-203, C-F-FF-254 SS, C-F-FF-254 FF, C-F-FF-264, PQ-CS-C-1812, C-F-P-23, P-AF-B-963 | 86d | 0d | 6,907.2 |
|  | 104 | **Finishes - Level 1** |  | 2015-03-14 | 2016-03-09 |  |  |  |  |
|  | 1 | **Partitions** |  | 2015-03-14 | 2015-09-27 |  |  |  |  |
| C-F-P-33 |  | Block Works & Fireproofing at level 1 | 14d | 2015-03-14 | 2015-03-29 | C-CS-L1-41, C-F-P-183 SS, SD-CS-L1-272 | 88d | 0d | 273,265.4 |
| C-F-P-43 |  | Installation of the Studs for Gypsum Board Partition at Level at level 1 | 20d | 2015-03-19 | 2015-04-11 | C-F-P-33 SS+5d, SD-CS-L1-292 | 88d | 0d | 331,227.93 |
| C-F-P-53 |  | Installation of Gypsum Board Partition & Insulation within the walls at level 1 | 25d | 2015-08-26 | 2015-09-27 | C-MEP-BMS-55, C-ELV-SMATV-55, C-ELV-CCTV-55, C-ELV-FA-55, C-ELV-MSPA-55, C-ELV-RMS-55, C-ELV-CS-55, C-MEP-E-66, C-MEP-PD-55, C-F-P-203, C-P-AV-BR-001, C-P-SG-B-082 | 133d | 0d | 496,841.9 |
|  | 2 | **Ceiling Finishes** |  | 2015-03-19 | 2016-01-03 |  |  |  |  |
| C-F-CF-137 |  | Installation of Ceiling thermal/accoustic insulation at level 1 | 5d | 2015-03-19 | 2015-03-24 | C-F-P-33 SS+5d | 90d | 16d | 10,466.52 |
| C-F-CF-77 |  | Installation of Ceiling Support & Brackets at Levelat level 1 | 15d | 2015-03-26 | 2015-04-12 | C-F-CF-137 FF, C-F-CF-427 | 74d | 0d | 5,104.56 |
| C-F-CF-117 |  | Installation of Smoke Curtains support & Equipments at level 1 | 8d | 2015-08-15 | 2015-08-23 | C-F-CF-77 SS, C-F-CF-467 SS | 116d | 0d | 88,617.15 |
| C-F-CF-127 |  | Installation of Smoke Curtains at level 1 | 8d | 2015-08-24 | 2015-09-01 | C-F-CF-117 | 130d | 35d | 265,851.44 |
| C-F-CF-87 |  | Installation of Gypsum Ceiling at level 1 | 25d | 2015-10-17 | 2015-11-14 | C-F-CF-77, C-F-CF-117, C-MEP-BMS-75, C-ELV-SMATV-75, C-ELV-CCTV-75, C-ELV-FA-75, C-ELV-MSPA-75, C-ELV-RMS-75, C-ELV-CS-75, C-MEP-PD-75, C-MEP-PD-85, C-MEP-FF-54, C-MEP-FF-64, C-MEP-AC-118, C-MEP-AC-148, C-MEP-AC-98, C-MEP-E-76, SD-CS-L1-352, C-F-CF-127, C-P-AV-BR-004 FF, C-P-SG-B-082 | 95d | 0d |  |
| C-F-CF-97 |  | Istallation of Metal Ceiling at level 1 | 25d | 2015-10-17 | 2015-11-14 | C-F-CF-77, C-F-CF-117, C-MEP-BMS-75, C-ELV-SMATV-75, C-ELV-CCTV-75, C-ELV-FA-75, C-ELV-MSPA-75, C-ELV-RMS-75, C-ELV-CS-75, C-MEP-PD-75, C-MEP-PD-85, C-MEP-FF-54, C-MEP-FF-64, C-MEP-AC-118, C-MEP-AC-148, C-MEP-AC-98, C-MEP-E-76, C-F-CF-127, C-P-AV-BR-004 FF, C-P-SG-B-082 | 144d | 0d | 15,313.68 |
| C-F-CF-107 |  | Ceiling Painting works at level 1 | 12d | 2015-12-21 | 2016-01-03 | C-F-CF-87, C-MEP-FF-74 FF | 201d | 36d | 4,101.86 |
|  | 3 | **Floor Finishes** |  | 2015-04-29 | 2016-01-16 |  |  |  |  |
| C-F-FF-44 |  | Screed & Waterproofing works at level 1 | 20d | 2015-04-29 | 2015-05-21 | C-F-P-33, C-F-FF-244 | 121d | 0d | 222,251.92 |
| C-F-FF-74 |  | Installation of Raised FLooring at level 1 | 16d | 2015-11-15 | 2015-12-02 | C-F-CF-97, C-F-CF-87 | 165d | 0d |  |
| C-F-FF-54 |  | Implementation of E-poxy Resin at level 1 | 25d | 2015-12-03 | 2016-01-02 | C-F-CF-97, C-F-CF-87, C-F-FF-44, C-F-WF-74, C-F-FF-74, SD-CS-L1-312, C-F-P-1753 FF | 165d | 0d | 20,875.7 |
| C-F-FF-64 |  | Installation of Carpet Tiles at level 1 | 12d | 2016-01-03 | 2016-01-16 | C-F-CF-97, C-F-CF-87, C-F-FF-44, C-F-FF-54, C-F-P-1753 FF | 165d | 0d |  |
|  | 4 | **Wall Finishes** |  | 2015-07-25 | 2016-03-09 |  |  |  |  |
| C-F-WF-44 |  | Plaster Works at level 1 | 18d | 2015-07-25 | 2015-08-13 | C-F-P-33, C-F-WF-244 | 130d | 30d | 88,688.79 |
| C-F-WF-74 |  | Installation of Toilet Cubicals at level 1 | 5d | 2015-09-19 | 2015-09-27 | C-F-WF-44, C-F-WF-274 | 176d | 14d |  |
| C-F-WF-54 |  | Installation of Wall Cladding at level 1 | 20d | 2016-01-03 | 2016-01-25 | C-F-P-53, SD-CS-L1-332, C-F-FF-54, C-F-P-1763 FF | 202d | 12d | 542.11 |
| C-F-WF-64 |  | Wall Paint works at level 1 | 20d | 2016-02-16 | 2016-03-09 | C-F-P-43, C-F-WF-44, C-F-CF-107, C-F-P-53, C-F-FF-54 FF+5d, C-MEP-FF-74 FF, C-F-DW-44 FF+5d, C-F-DW-54 FS+5d, C-F-P-1763 FF, C-AF-TF-002, C-AF-KF-96, C-AF-KF-16 | 165d | 0d | 27,528.72 |

Notes:
- C-F-DW-264: Expenses: 1 10411.2
- C-F-DW-244: Expenses: 1 42310; 2 31233.5
- C-F-DW-254: Expenses: 1 6907.2
- C-F-P-33: Expenses: B 29459.1; F 243806
- C-F-P-43: Expenses: S 331228
- C-F-P-53: Expenses: G 496842
- C-F-CF-137: Expenses: W 10466.5
- C-F-CF-77: Expenses: 1 5104.56
- C-F-CF-117: Expenses: CS 88617.1
- C-F-CF-127: Expenses: S 265851
- C-F-CF-97: Expenses: 1 15313.7
- C-F-CF-107: Expenses: 1 4101.86
- C-F-FF-44: Expenses: SW 76982.2; 2 145270
- C-F-FF-54: Expenses: 1 20875.7
- C-F-WF-44: Expenses: 2 88688.8
- C-F-WF-54: Expenses: 1 542.11
- C-F-WF-64: Expenses: 1 27528.7

| ID | WBS | Activity | Duration | Start | Finish | Predecessors | Total float | Free float | Cost |
| --- | --- | --- | --- | --- | --- | --- | --- | --- | --- |
|  | 5 | **Doors & Windows** |  | 2015-09-10 | 2016-02-08 |  |  |  |  |
| C-F-DW-64 |  | Installation of Steel Door Sub-frame at level 1 | 8d | 2015-09-10 | 2015-09-19 | C-F-P-33 FF, SD-CS-L1-372, C-F-DW-264 SS | 99d | 0d | 10,411.18 |
| C-F-DW-44 |  | Installation of Steel Doors & Handrails at level 1 | 20d | 2016-01-03 | 2016-01-25 | C-F-DW-64, C-F-FF-74, C-F-FF-54, C-F-FF-74 FF | 197d | 32d | 73,543.49 |
| C-F-DW-54 |  | Installation of Wall & Corner Guard at level 1 | 20d | 2016-01-17 | 2016-02-08 | C-F-P-53, C-F-FF-54 SS, C-F-FF-54 FF, C-F-FF-64, C-F-P-203, PQ-CS-C-1812, C-F-P-23, P-AF-B-963 | 165d | 0d | 6,907.2 |
|  | 103 | **Finishes - Mezzanine Level 1** |  | 2015-03-22 | 2016-03-31 |  |  |  |  |
|  | 1 | **Partitions** |  | 2015-03-22 | 2015-10-26 |  |  |  |  |
| C-F-P-63 |  | Block Works & Fireproofing at Mezz. level 1 | 14d | 2015-03-22 | 2015-04-06 | C-CS-L1-51, C-F-P-33 SS | 86d | 0d | 131,977.75 |
| C-F-P-73 |  | Installation of the Studs for Gypsum Board Partition at Level at Mezz. level 1 | 20d | 2015-03-28 | 2015-04-19 | C-F-P-63 SS+5d | 101d | 0d | 159,971.65 |
| C-F-P-83 |  | Installation of Gypsum Board Partition & Insulation within the walls at Mezz. level 1 | 25d | 2015-09-28 | 2015-10-26 | C-MEP-BMS-105, C-ELV-SMATV-105, C-ELV-CCTV-105, C-ELV-FA-105, C-ELV-MSPA-105, C-ELV-RMS-105, C-ELV-CS-105, C-MEP-E-126, C-MEP-PD-105, C-F-P-53, C-P-AV-MR-001, C-P-SG-B-092 | 133d | 0d | 239,957.48 |
|  | 2 | **Ceiling Finishes** |  | 2015-03-28 | 2016-01-19 |  |  |  |  |
| C-F-CF-207 |  | Installation of Ceiling thermal/accoustic insulation at Mezz. level 1 | 5d | 2015-03-28 | 2015-04-01 | C-F-P-63 SS+5d | 98d | 24d | 5,054.97 |
| C-F-CF-147 |  | Installation of Ceiling Support & Brackets at Levelat Mezz. level 1 | 15d | 2015-04-13 | 2015-04-29 | C-F-CF-207 FF, C-F-CF-77 | 74d | 0d | 2,857.61 |
| C-F-CF-187 |  | Installation of Smoke Curtains support & Equipments at Mezz. level 1 | 8d | 2015-08-15 | 2015-08-23 | C-F-CF-147 SS, C-F-CF-117 SS | 116d | 0d | 88,617.15 |
| C-F-CF-197 |  | Installation of Smoke Curtains at Mezz. level 1 | 8d | 2015-08-24 | 2015-09-01 | C-F-CF-187 | 131d | 54d | 265,851.44 |
| C-F-CF-157 |  | Installation of Gypsum Ceiling at Mezz. level 1 | 25d | 2015-11-08 | 2015-12-06 | C-F-CF-147, C-F-CF-187, C-MEP-BMS-125, C-ELV-SMATV-125, C-ELV-CCTV-125, C-ELV-FA-125, C-ELV-MSPA-125, C-ELV-RMS-125, C-ELV-CS-125, C-MEP-PD-125, C-MEP-PD-135, C-MEP-FF-94, C-MEP-FF-104, C-MEP-AC-198, C-MEP-AC-228, C-MEP-AC-178, C-MEP-E-136, C-F-CF-197, C-P-AV-MR-004, C-P-SG-B-092 | 77d | 0d |  |
| C-F-CF-167 |  | Istallation of Metal Ceiling at Mezz. level 1 | 25d | 2015-11-08 | 2015-12-06 | C-F-CF-147, C-F-CF-187, C-MEP-BMS-125, C-ELV-SMATV-125, C-ELV-CCTV-125, C-ELV-FA-125, C-ELV-MSPA-125, C-ELV-RMS-125, C-ELV-CS-125, C-MEP-PD-125, C-MEP-PD-135, C-MEP-FF-94, C-MEP-FF-104, C-MEP-AC-198, C-MEP-AC-228, C-MEP-AC-178, C-MEP-E-136, C-F-CF-197, C-P-AV-MR-004, C-P-SG-B-092 | 120d | 0d | 8,572.84 |
| C-F-CF-177 |  | Ceiling Painting works at Mezz. level 1 | 12d | 2016-01-06 | 2016-01-19 | C-F-CF-157, C-MEP-FF-114 FF | 161d | 41d | 1,981.06 |
|  | 3 | **Floor Finishes** |  | 2015-05-23 | 2016-02-07 |  |  |  |  |
| C-F-FF-84 |  | Screed & Waterproofing works at Mezz. level 1 | 20d | 2015-05-23 | 2015-06-14 | C-F-P-63, C-F-FF-44 | 121d | 0d | 107,340 |
| C-F-FF-114 |  | Installation of Raised FLooring at Mezz. level 1 | 16d | 2015-12-07 | 2015-12-26 | C-F-CF-167, C-F-CF-157 | 120d | 0d |  |
| C-F-FF-94 |  | Implementation of E-poxy Resin at Mezz. level 1 | 25d | 2015-12-27 | 2016-01-24 | C-F-CF-167, C-F-CF-157, C-F-FF-84, C-F-WF-114, C-F-FF-114, C-F-P-1783 FF | 120d | 0d | 10,082.24 |
| C-F-FF-104 |  | Installation of Carpet Tiles at Mezz. level 1 | 12d | 2016-01-25 | 2016-02-07 | C-F-CF-167, C-F-CF-157, C-F-FF-84, C-F-FF-94, C-F-P-1783 FF | 120d | 0d |  |
|  | 4 | **Wall Finishes** |  | 2015-09-23 | 2016-03-31 |  |  |  |  |
| C-F-WF-84 |  | Plaster Works at Mezz. level 1 | 18d | 2015-09-23 | 2015-10-13 | C-F-P-63, C-F-DW-104, C-F-WF-44 | 99d | 0d | 42,833.62 |
| C-F-WF-114 |  | Installation of Toilet Cubicals at Mezz. level 1 | 5d | 2015-10-14 | 2015-10-19 | C-F-WF-84, C-F-WF-74 | 162d | 13d |  |
| C-F-WF-94 |  | Installation of Wall Cladding at Mezz. level 1 | 20d | 2016-02-01 | 2016-02-24 | C-F-P-83, C-F-FF-94, C-F-P-1793 | 191d | 6d | 542.11 |
| C-F-WF-104 |  | Wall Paint works at Mezz. level 1 | 20d | 2016-03-09 | 2016-03-31 | C-F-P-73, C-F-WF-84, C-F-CF-177, C-F-P-83, C-F-FF-94 FF+5d, C-MEP-FF-114 FF, C-F-DW-84 FF+5d, C-F-DW-94 FS+5d, C-F-P-1793 FF, C-AF-TF-003, C-PF-1 | 120d | 0d | 13,295.42 |

Notes:
- C-F-DW-64: Expenses: 1 10411.2
- C-F-DW-44: Expenses: 1 42310; 2 31233.5
- C-F-DW-54: Expenses: 1 6907.2
- C-F-P-63: Expenses: B 14227.7; F 117750
- C-F-P-73: Expenses: S 159972
- C-F-P-83: Expenses: G 239957
- C-F-CF-207: Expenses: W 5054.97
- C-F-CF-147: Expenses: 1 2857.61
- C-F-CF-187: Expenses: CS 88617.1
- C-F-CF-197: Expenses: S 265851
- C-F-CF-167: Expenses: 1 8572.84
- C-F-CF-177: Expenses: 1 1981.06
- C-F-FF-84: Expenses: SW 37179.7; 2 70160.3
- C-F-FF-94: Expenses: 1 10082.2
- C-F-WF-84: Expenses: 2 42833.6
- C-F-WF-94: Expenses: 1 542.11
- C-F-WF-104: Expenses: 1 13295.4

| ID | WBS | Activity | Duration | Start | Finish | Predecessors | Total float | Free float | Calendar | Cost |
| --- | --- | --- | --- | --- | --- | --- | --- | --- | --- | --- |
|  | 5 | **Doors & Windows** |  | 2015-09-10 | 2016-03-02 |  |  |  |  |  |
| C-F-DW-104 |  | Installation of Steel Door Sub-frame at Mezz. level 1 | 8d | 2015-09-10 | 2015-09-19 | C-F-P-63 FF, C-F-DW-64 SS | 99d | 0d |  | 10,411.18 |
| C-F-DW-84 |  | Installation of Steel Doors & Handrails at Mezz. level 1 | 20d | 2016-01-25 | 2016-02-17 | C-F-DW-104, C-F-FF-114, C-F-FF-94, C-F-FF-114 FF | 152d | 32d |  | 73,543.49 |
| C-F-DW-94 |  | Installation of Wall & Corner Guard at Mezz. level 1 | 20d | 2016-02-08 | 2016-03-02 | C-F-P-83, C-F-FF-94 SS, C-F-FF-94 FF, C-F-FF-104, C-F-P-53, C-F-P-203, PQ-CS-C-1812, C-F-P-23, P-AF-B-963 | 120d | 0d |  | 6,907.2 |
|  | 77 | **Finishes - Level 2** |  | 2015-03-30 | 2016-03-17 |  |  |  |  |  |
|  | 1 | **Partitions** |  | 2015-03-30 | 2015-12-24 |  |  |  |  |  |
| C-F-P-123 |  | Block Works & Fireproofing at level 2 | 14d | 2015-03-30 | 2015-04-14 | C-CS-L2-51, C-F-P-63 SS, SD-CS-L2-292 | 79d | 0d |  | 247,272.26 |
| C-F-P-133 |  | Installation of the Studs for Gypsum Board Partition at Level at level 2 | 20d | 2015-04-05 | 2015-04-27 | C-F-P-123 SS+5d, SD-CS-L2-312 | 114d | 3d |  | 299,721.37 |
| C-F-P-143 |  | Installation of Gypsum Board Partition & Insulation within the walls at level 2 | 25d | 2015-10-27 | 2015-11-24 | C-MEP-BMS-205, C-ELV-SMATV-205, C-ELV-CCTV-205, C-ELV-FA-205, C-ELV-MSPA-205, C-ELV-RMS-205, C-ELV-CS-205, C-MEP-E-246, C-MEP-PD-205, C-F-P-83, C-ELV-MSPA-205 FF, C-P-SG-B-0402 | 133d | 0d |  | 449,582.05 |
| C-F-P-1873 |  | Installation of Glass Partitions & Screens | 25d | 2015-11-25 | 2015-12-24 | C-F-P-143 | 220d | 27d | *APB - 6 D week + Qatar Holiday | 401,595.95 |
|  | 2 | **Ceiling Finishes** |  | 2015-04-05 | 2016-02-04 |  |  |  |  |  |
| C-F-CF-347 |  | Installation of Ceiling thermal/accoustic insulation at level 2 | 5d | 2015-04-05 | 2015-04-09 | C-F-P-123 SS+5d | 106d | 32d |  | 9,470.94 |
| C-F-CF-287 |  | Installation of Ceiling Support & Brackets at Level at level 2 | 15d | 2015-04-30 | 2015-05-17 | C-F-CF-347 FF, C-F-CF-147 | 74d | 0d |  | 6,328.55 |
| C-F-CF-327 |  | Installation of Smoke Curtains support & Equipments at level 2 | 8d | 2015-08-15 | 2015-08-23 | C-F-CF-287 SS, C-F-CF-187 SS | 116d | 0d |  | 88,617.15 |
| C-F-CF-337 |  | Installation of Smoke Curtains at level 2 | 8d | 2015-08-24 | 2015-09-01 | C-F-CF-327 | 139d | 35d |  | 265,851.44 |
| C-F-CF-297 |  | Installation of Gypsum Ceiling at level 2 | 25d | 2015-10-17 | 2015-11-14 | C-F-CF-287, C-F-CF-327, C-MEP-BMS-225, C-ELV-SMATV-225, C-ELV-CCTV-225, C-ELV-FA-225, C-ELV-MSPA-225, C-ELV-RMS-225, C-ELV-CS-225, C-MEP-PD-225, C-MEP-PD-235, C-MEP-FF-174, C-MEP-FF-184, C-MEP-AC-358, C-MEP-AC-388, C-MEP-AC-338, C-MEP-E-256, SD-CS-L2-372, C-F-CF-337, C-P-AV-CR-004, C-P-SG-B-0402 | 104d | 0d |  | 5,128.63 |
| C-F-CF-307 |  | Istallation of Metal Ceiling at level 2 | 25d | 2015-10-17 | 2015-11-14 | C-F-CF-287, C-F-CF-327, C-MEP-BMS-225, C-ELV-SMATV-225, C-ELV-CCTV-225, C-ELV-FA-225, C-ELV-MSPA-225, C-ELV-RMS-225, C-ELV-CS-225, C-MEP-PD-225, C-MEP-PD-235, C-MEP-FF-174, C-MEP-FF-184, C-MEP-AC-358, C-MEP-AC-388, C-MEP-AC-338, C-MEP-E-256, C-F-CF-337, C-P-AV-CR-004, C-P-SG-B-0402 | 172d | 0d |  | 13,857.04 |
| C-F-CF-317 |  | Ceiling Painting works at level 2 | 12d | 2016-01-23 | 2016-02-04 | C-F-CF-297, C-MEP-FF-194 FF | 201d | 15d |  | 3,711.69 |
|  | 3 | **Floor Finishes** |  | 2015-06-15 | 2016-01-16 |  |  |  |  |  |
| C-F-FF-164 |  | Screed & Waterproofing works at level 2 | 20d | 2015-06-15 | 2015-07-07 | C-F-P-123, C-F-FF-84 | 121d | 0d |  | 201,111.22 |
| C-F-FF-194 |  | Installation of Raised FLooring at level 2 | 16d | 2015-11-15 | 2015-12-02 | C-F-CF-307, C-F-CF-297 | 189d | 0d |  |  |
| C-F-FF-174 |  | Implementation of E-poxy Resin at level 2 | 25d | 2015-12-03 | 2016-01-02 | C-F-CF-307, C-F-CF-297, C-F-FF-164, C-F-WF-194, C-F-FF-194, SD-CS-L2-332, C-F-P-1843 FF | 189d | 0d |  | 18,889.99 |
| C-F-FF-2324 |  | Installation of Stainless Steel Handrails at Level 2 | 5d | 2015-12-28 | 2016-01-02 | C-F-FF-174 SS, C-F-FF-174 FF | 197d | 0d | *APB - 6 D week + Qatar Holiday | 4,499.27 |
| C-F-FF-184 |  | Installation of Carpet Tiles at level 2 | 12d | 2016-01-03 | 2016-01-16 | C-F-CF-307, C-F-CF-297, C-F-FF-164, C-F-FF-174, C-F-P-1843 FF, C-F-FF-2324 | 193d | 7d |  |  |

Notes:
- C-F-DW-104: Expenses: 1 10411.2
- C-F-DW-84: Expenses: 1 42310; 2 31233.5
- C-F-DW-94: Expenses: 1 6907.2
- C-F-P-123: Expenses: B 26657; F 220615
- C-F-P-133: Expenses: S 299721
- C-F-P-143: Expenses: G 449582
- C-F-P-1873: Expenses: 1 401596
- C-F-CF-347: Expenses: W 9470.94
- C-F-CF-287: Expenses: 1 1709.54; 2 4619.01
- C-F-CF-327: Expenses: CS 88617.1
- C-F-CF-337: Expenses: S 265851
- C-F-CF-297: Expenses: 1 5128.63
- C-F-CF-307: Expenses: 1 13857
- C-F-CF-317: Expenses: 1 3711.69
- C-F-FF-164: Expenses: SW 69659.6; 2 131452
- C-F-FF-174: Expenses: 1 18890
- C-F-FF-2324: Expenses: B 4499.27

| ID | WBS | Activity | Duration | Start | Finish | Predecessors | Total float | Free float | Calendar | Cost |
| --- | --- | --- | --- | --- | --- | --- | --- | --- | --- | --- |
|  | 4 | **Wall Finishes** |  | 2015-10-14 | 2016-03-17 |  |  |  |  |  |
| C-F-WF-164 |  | Plaster Works at level 2 | 18d | 2015-10-14 | 2015-11-03 | C-F-P-123, C-F-WF-84 | 99d | 0d |  | 80,252.67 |
| C-F-WF-194 |  | Installation of Toilet Cubicals at level 2 | 5d | 2015-11-04 | 2015-11-09 | C-F-WF-164, C-F-WF-114 | 149d | 13d |  |  |
| C-F-WF-174 |  | Installation of Wall Cladding at level 2 | 20d | 2016-01-03 | 2016-01-25 | C-F-P-143, SD-CS-L2-352, C-F-FF-174, C-F-P-1853 FF | 226d | 19d |  | 542.11 |
| C-F-WF-184 |  | Wall Paint works at level 2 | 20d | 2016-02-24 | 2016-03-17 | C-F-P-133, C-F-WF-164, C-F-CF-317, C-F-P-143, C-F-FF-174 FF+5d, C-MEP-FF-194 FF, C-F-DW-164 FF+5d, C-F-DW-174 FS+5d, C-F-P-1853 FF, C-F-DW-2354 FF, C-AF-TF-004, C-PF-11, C-OF-11 | 186d | 0d |  | 24,910.18 |
|  | 5 | **Doors & Windows** |  | 2015-09-23 | 2016-02-23 |  |  |  |  |  |
| C-F-DW-184 |  | Installation of Steel Door Sub-frame at level 2 | 8d | 2015-09-23 | 2015-10-01 | C-F-P-123 FF, SD-CS-L2-392, C-F-DW-104 | 102d | 0d |  | 10,411.18 |
| C-F-DW-194 |  | Installation of Wood Door Sub/Frame at level 2 | 8d | 2015-11-16 | 2015-11-24 | C-F-P-143 FF, C-F-P-83, C-F-P-53, C-F-P-203, PQ-CS-C-1812, C-F-P-23, P-AF-B-963 | 183d | 51d |  | 7,577.11 |
| C-F-DW-164 |  | Installation of Steel Doors & Handrails at level 2 | 20d | 2016-01-03 | 2016-01-25 | C-F-DW-184, C-F-FF-194, C-F-FF-174, C-F-FF-194 FF | 189d | 0d |  | 73,543.49 |
| C-F-DW-174 |  | Installation of Wood Doors at level 2 | 20d | 2016-01-25 | 2016-02-17 | C-F-DW-194, C-F-P-143, C-F-FF-174 SS, C-F-FF-174 FF, C-F-FF-184, C-F-DW-2344 FF | 186d | 0d |  | 22,731.34 |
| C-F-DW-2344 |  | Installation of Glass Doors | 20d | 2016-01-26 | 2016-02-17 | C-F-P-1873, C-F-DW-164 | 193d | 0d | *APB - 6 D week + Qatar Holiday | 172,112.55 |
| C-F-DW-2354 |  | Installation of Wall & Corner Guard at level 2 | 5d | 2016-02-18 | 2016-02-23 | C-F-DW-2344 | 206d | 20d |  | 6,907.2 |
|  | 76 | **Finishes - Level 3** |  | 2015-04-07 | 2016-04-11 |  |  |  |  |  |
|  | 1 | **Partitions** |  | 2015-04-07 | 2016-01-23 |  |  |  |  |  |
| C-F-P-001 |  | Block Works & Fireproofing at level 3 | 14d | 2015-04-07 | 2015-04-22 | C-CS-L3-61, C-F-P-123 SS, SD-CS-L3-312 | 72d | 0d |  | 238,930.07 |
| C-F-P-002 |  | Installation of the Studs for Gypsum Board Partition at Level at level 3 | 20d | 2015-04-13 | 2015-05-05 | C-F-P-001 SS+5d, SD-CS-L3-332 | 121d | 0d |  | 289,609.71 |
| C-F-P-003 |  | Installation of Gypsum Board Partition & Insulation within the walls at level 3 | 25d | 2015-11-25 | 2015-12-24 | C-MEP-BMS-001, C-ELV-SMATV-001, C-ELV-CCTV-001, C-ELV-FA-001, C-ELV-MSPA-001, C-ELV-RMS-001, C-ELV-CS-001, C-MEP-E-001, C-MEP-PD-001, C-F-P-143, C-P-SG-B-012 | 133d | 0d |  | 434,414.56 |
| C-F-P-1883 |  | Installation of Glass Partiton & Screens | 25d | 2015-12-26 | 2016-01-23 | C-F-P-003 | 134d | 23d | *APB - 6 D week + Qatar Holiday | 401,595.95 |
|  | 2 | **Ceiling Finishes** |  | 2015-04-13 | 2016-02-22 |  |  |  |  |  |
| C-F-CF-003 |  | Installation of Ceiling thermal/accoustic insulation at level 3 | 5d | 2015-04-13 | 2015-04-18 | C-F-P-001 SS+5d | 114d | 40d |  | 9,151.42 |
| C-F-CF-001 |  | Installation of Ceiling Supports & Brackets at level 3 | 15d | 2015-05-18 | 2015-06-03 | C-F-CF-003 FF, C-F-CF-287 | 74d | 0d |  | 4,463.18 |
| C-F-CF-005 |  | Istallation of Metal Ceiling at level 3 | 25d | 2015-10-20 | 2015-11-17 | C-F-CF-001, C-MEP-BMS-004, C-ELV-SMATV-004, C-ELV-CCTV-004, C-ELV-FA-004, C-ELV-MSPA-004, C-ELV-RMS-004, C-ELV-CS-004 FF, C-MEP-PD-003, C-MEP-PD-004, C-MEP-FF-003, C-MEP-FF-002, C-MEP-AC-007, C-MEP-AC-003, C-MEP-AC-005, C-MEP-E-003, C-F-CF-001 SS, C-P-SG-B-012 | 110d | 0d |  | 13,389.54 |
| C-F-CF-004 |  | Installation of Gypsum Ceiling at level 3 | 25d | 2015-11-18 | 2015-12-16 | C-F-CF-001, C-MEP-BMS-004, C-ELV-SMATV-004, C-ELV-CCTV-004, C-ELV-FA-004, C-ELV-MSPA-004, C-ELV-RMS-004, C-ELV-CS-004, C-MEP-PD-003, C-MEP-PD-004, C-MEP-FF-003, C-MEP-FF-002, C-MEP-AC-007, C-MEP-AC-003, C-MEP-AC-005, C-MEP-E-003, SD-CS-L3-392, C-F-CF-005 SS, C-F-CF-005, C-F-CF-001 SS, C-P-SG-B-012 | 111d | 0d |  |  |
| C-F-CF-007 |  | Ceiling Painting works at level 3 | 12d | 2016-02-08 | 2016-02-22 | C-F-CF-004, C-MEP-FF-004 FF | 133d | 22d |  | 3,586.47 |

Notes:
- C-F-WF-164: Expenses: 2 80252.7
- C-F-WF-174: Expenses: 1 542.11
- C-F-WF-184: Expenses: 1 24910.2
- C-F-DW-184: Expenses: 1 10411.2
- C-F-DW-194: Expenses: 1 7577.11
- C-F-DW-164: Expenses: 1 42310; 2 31233.5
- C-F-DW-174: Expenses: 1 22731.3
- C-F-DW-2344: Expenses: 2 172113
- C-F-DW-2354: Expenses: 1 6907.2
- C-F-P-001: Expenses: B 25757.6; F 213172
- C-F-P-002: Expenses: S 289610
- C-F-P-003: Expenses: G 434415
- C-F-P-1883: Expenses: 1 401596
- C-F-CF-003: Expenses: W 9151.42
- C-F-CF-001: Expenses: 1 4463.18
- C-F-CF-005: Expenses: 1 13389.5
- C-F-CF-007: Expenses: 1 3586.47

| ID | WBS | Activity | Duration | Start | Finish | Predecessors | Total float | Free float | Calendar | Cost |
| --- | --- | --- | --- | --- | --- | --- | --- | --- | --- | --- |
|  | 3 | **Floor Finishes** |  | 2015-07-08 | 2016-02-18 |  |  |  |  |  |
| C-F-FF-001 |  | Screed & Waterproofing works at level 3 | 20d | 2015-07-08 | 2015-08-02 | C-F-P-001, C-F-FF-164 | 121d | 0d |  | 194,326.35 |
| C-F-FF-002 |  | Installation of Raised FLooring at level 3 | 16d | 2015-12-17 | 2016-01-05 | C-F-CF-005, C-F-CF-004 | 111d | 0d |  |  |
| C-F-FF-003 |  | Implementation of E-poxy Resin at level 3 | 25d | 2016-01-06 | 2016-02-03 | C-F-CF-005, C-F-CF-004, C-F-FF-001, C-F-WF-002, C-F-FF-002, SD-CS-L3-352, C-F-P-1693 FF | 111d | 0d |  | 18,252.71 |
| C-F-FF-013 |  | Installation of Glass Ballustrade at open terrace at level 3 | 15d | 2016-01-18 | 2016-02-03 | C-F-FF-003 SS, C-F-FF-003 FF | 112d | 0d | *APB - 6 D week + Qatar Holiday | 249,219.74 |
| C-F-FF-004 |  | Installation of Carpet Tiles at level 3 | 12d | 2016-02-04 | 2016-02-18 | C-F-CF-005, C-F-CF-004, C-F-FF-001, C-F-FF-003, C-F-P-1693 FF, C-F-FF-013 | 111d | 0d |  |  |
|  | 4 | **Wall Finishes** |  | 2015-11-04 | 2016-04-11 |  |  |  |  |  |
| C-F-WF-001 |  | Plaster Works at level 3 | 18d | 2015-11-04 | 2015-11-24 | C-F-P-001, C-F-WF-164 | 99d | 0d |  | 77,545.19 |
| C-F-WF-002 |  | Installation of Toilet Cubicals at level 3 | 5d | 2015-11-25 | 2015-11-30 | C-F-WF-001, C-F-WF-194 | 136d | 13d |  |  |
| C-F-WF-003 |  | Installation of Wall Cladding at level 3 | 20d | 2016-02-04 | 2016-02-28 | C-F-P-003, SD-CS-L3-372, C-F-FF-003, C-F-P-1703 FF | 208d | 12d |  | 542.11 |
| C-F-WF-004 |  | Wall Paint works at level 3 | 20d | 2016-03-20 | 2016-04-11 | C-F-P-002, C-F-WF-001, C-F-CF-007, C-F-P-003, C-F-FF-003 FF+5d, C-MEP-FF-004 FF, C-F-DW-003 FF+5d, C-F-DW-004 FS+5d, C-F-P-1703 FF, C-F-DW-034 FF, C-AF-TF-005, C-AF-KF-26 | 111d | 0d |  | 24,069.79 |
|  | 5 | **Doors & Windows** |  | 2015-10-03 | 2016-03-19 |  |  |  |  |  |
| C-F-DW-001 |  | Installation of Steel Door Sub-frame at level 3 | 8d | 2015-10-03 | 2015-10-11 | C-F-P-001 FF, SD-CS-L3-412, C-F-DW-184 | 102d | 0d |  | 10,411.18 |
| C-F-DW-003 |  | Installation of Steel Doors & Handrails at level 3 | 20d | 2016-02-04 | 2016-02-28 | C-F-DW-001, C-F-FF-002, C-F-FF-003, C-F-FF-002 FF | 143d | 32d |  | 73,543.49 |
| C-F-DW-004 |  | Installation of Glass Door at level 3 | 20d | 2016-02-20 | 2016-03-13 | C-F-P-003, C-F-FF-003, C-F-FF-003 FF, C-F-FF-004, C-F-P-1883, C-F-DW-194 | 111d | 0d |  | 188,304.62 |
| C-F-DW-034 |  | Installation of Wall & Corner Guard at level 3 | 5d | 2016-03-14 | 2016-03-19 | C-F-DW-004 | 131d | 20d |  | 6,907.2 |
|  | 75 | **Finishes - Level 4** |  | 2015-04-23 | 2016-05-01 |  |  |  |  |  |
|  | 1 | **Partitions** |  | 2015-04-23 | 2016-01-23 |  |  |  |  |  |
| C-F-P-93 |  | Block Works & Fireproofing at level 4 | 14d | 2015-04-23 | 2015-05-09 | C-CS-L4-71, C-F-P-001, SD-CS-L4-1332 | 72d | 0d |  | 238,930.07 |
| C-F-P-103 |  | Installation of the Studs for Gypsum Board Partition at level 4 | 20d | 2015-04-29 | 2015-05-21 | C-F-P-93 SS+5d, C-F-P-13, SD-CS-L4-1352 | 125d | 5d |  | 289,609.71 |
| C-F-P-113 |  | Installation of Gypsum Board Partition & Insulation within the walls at level 4 | 25d | 2015-12-26 | 2016-01-23 | C-MEP-BMS-155, C-ELV-SMATV-155, C-ELV-CCTV-155, C-ELV-FA-155, C-ELV-MSPA-155, C-ELV-RMS-155, C-ELV-CS-155, C-MEP-E-186, C-MEP-PD-155, C-F-P-003, C-P-AV-SPA-002, C-P-SG-B-022 | 133d | 0d |  | 434,414.56 |
|  | 2 | **Ceiling Finishes** |  | 2015-04-29 | 2016-03-09 |  |  |  |  |  |
| C-F-CF-277 |  | Installation of Ceiling thermal/accoustic insulation at level 4 | 5d | 2015-04-29 | 2015-05-04 | C-F-P-93 SS+5d | 115d | 41d |  | 9,151.42 |
| C-F-CF-217 |  | Installation of Ceiling Support & Brackets at level 4 | 15d | 2015-06-04 | 2015-06-21 | C-F-CF-277 FF, C-F-CF-001 | 74d | 0d |  | 4,463.18 |
| C-F-CF-237 |  | Istallation of Metal Ceiling at level 4 | 25d | 2015-11-09 | 2015-12-07 | C-F-CF-217, C-MEP-BMS-175, C-ELV-SMATV-175, C-ELV-CCTV-175, C-ELV-FA-175, C-ELV-MSPA-175, C-ELV-RMS-175, C-ELV-CS-175, C-MEP-PD-175, C-MEP-PD-185, C-MEP-FF-134, C-MEP-FF-144, C-MEP-AC-278, C-MEP-AC-308, C-MEP-AC-258, C-MEP-E-196, C-F-CF-217 SS, C-P-AV-SPA-004, C-P-SG-B-022 | 90d | 0d |  | 13,389.54 |
| C-F-CF-227 |  | Installation of Gypsum Ceiling at level 4 | 25d | 2015-12-08 | 2016-01-06 | C-F-CF-217, C-MEP-BMS-175, C-ELV-SMATV-175, C-ELV-CCTV-175, C-ELV-FA-175, C-ELV-MSPA-175, C-ELV-RMS-175, C-ELV-CS-175, C-MEP-PD-175, C-MEP-PD-185, C-MEP-FF-134, C-MEP-FF-144, C-MEP-AC-278, C-MEP-AC-308, C-MEP-AC-258, C-MEP-E-196, SD-CS-L4-1412, C-F-CF-237 SS, C-F-CF-237, C-F-CF-217 SS, C-P-AV-SPA-004, C-P-SG-B-022 | 90d | 0d |  |  |
| C-F-CF-247 |  | Ceiling Painting works at level 4 | 12d | 2016-02-25 | 2016-03-09 | C-F-CF-227, C-MEP-FF-154 FF | 201d | 25d |  | 3,586.47 |

Notes:
- C-F-FF-001: Expenses: SW 67309.5; 2 127017
- C-F-FF-003: Expenses: 1 18252.7
- C-F-FF-013: Expenses: (New Expense Item) 249220
- C-F-WF-001: Expenses: 2 77545.2
- C-F-WF-003: Expenses: 1 542.11
- C-F-WF-004: Expenses: 1 24069.8
- C-F-DW-001: Expenses: 1 10411.2
- C-F-DW-003: Expenses: 1 42310; 2 31233.5
- C-F-DW-004: Expenses: 1 16192.1; 2 172113
- C-F-DW-034: Expenses: 1 6907.2
- C-F-P-93: Expenses: B 25757.6; F 213172
- C-F-P-103: Expenses: S 289610
- C-F-P-113: Expenses: G 434415
- C-F-CF-277: Expenses: W 9151.42
- C-F-CF-217: Expenses: 1 4463.18
- C-F-CF-237: Expenses: 1 13389.5
- C-F-CF-247: Expenses: 1 3586.47

| ID | WBS | Activity | Duration | Start | Finish | Predecessors | Total float | Free float | Cost |
| --- | --- | --- | --- | --- | --- | --- | --- | --- | --- |
|  | 3 | **Floor Finishes** |  | 2015-08-03 | 2016-03-09 |  |  |  |  |
| C-F-FF-124 |  | Screed & Waterproofing works at level 4 | 20d | 2015-08-03 | 2015-08-25 | C-F-P-93, C-F-FF-001 | 121d | 0d | 194,326.35 |
| C-F-FF-154 |  | Installation of Raised Flooring at level 4 | 16d | 2016-01-07 | 2016-01-25 | C-F-CF-237, C-F-CF-227 | 176d | 0d |  |
| C-F-FF-134 |  | Implementation of E-poxy Resin at level 4 | 25d | 2016-01-26 | 2016-02-24 | C-F-CF-237, C-F-CF-227, C-F-FF-124, C-F-WF-154, C-F-FF-154, SD-CS-L4-1372, C-F-P-1813 FF | 176d | 0d | 18,252.71 |
| C-F-FF-144 |  | Installation of Carpet tiles at level 4 | 12d | 2016-02-25 | 2016-03-09 | C-F-CF-237, C-F-CF-227, C-F-FF-124, C-F-FF-134, C-F-P-1813 FF | 176d | 0d |  |
|  | 4 | **Wall Finishes** |  | 2015-11-25 | 2016-05-01 |  |  |  |  |
| C-F-WF-124 |  | Plaster works at level 4 | 18d | 2015-11-25 | 2015-12-15 | C-F-P-93, C-F-WF-001 | 99d | 0d | 77,545.19 |
| C-F-WF-154 |  | Installation of Toilet Cubicals at level 4 | 5d | 2015-12-16 | 2015-12-22 | C-F-WF-124, C-F-WF-002 | 123d | 13d |  |
| C-F-WF-134 |  | Installation of Wall Cladding at level 4 | 20d | 2016-02-25 | 2016-03-19 | C-F-P-113, SD-CS-L4-1392, C-F-FF-134, C-F-P-1823 FF | 191d | 12d | 542.11 |
| C-F-WF-144 |  | Wall Paint works at level 4 | 20d | 2016-04-09 | 2016-05-01 | C-F-P-103, C-F-WF-124, C-F-CF-247, C-F-P-113, C-F-FF-134 FF+5d, C-MEP-FF-154 FF, C-F-DW-124 FF+5d, C-F-DW-134 FS+5d, C-F-P-1823 FF | 176d | 0d | 24,069.79 |
|  | 5 | **Doors & Windows** |  | 2015-10-12 | 2016-04-02 |  |  |  |  |
| C-F-DW-144 |  | Installation of Steel Door Sub-frame at level 4 | 8d | 2015-10-12 | 2015-10-20 | C-F-P-93 FF, SD-CS-L4-1432, C-F-DW-001 | 102d | 0d | 10,411.18 |
| C-F-DW-124 |  | Installation of Steel Doors & Handrails at level 4 | 20d | 2016-02-25 | 2016-03-19 | C-F-DW-144, C-F-FF-154, C-F-FF-134, C-F-FF-154 FF | 208d | 32d | 73,543.49 |
| C-F-DW-134 |  | Installation of Wall & Corner Guard at level 4 | 20d | 2016-03-10 | 2016-04-02 | C-F-P-113, C-F-FF-134 SS, C-F-FF-134 FF, C-F-FF-144, C-F-P-003, C-F-DW-194 | 176d | 0d | 6,907.2 |
|  | 74 | **Finishes - Level 5** |  | 2015-04-23 | 2016-05-02 |  |  |  |  |
|  | 1 | **Partitions** |  | 2015-04-23 | 2016-02-22 |  |  |  |  |
| C-F-P-153 |  | Block Works & Fireproofing at level 5 | 14d | 2015-04-23 | 2015-05-09 | C-CS-L5-81, C-F-P-93 SS, SD-CS-L5-352 | 72d | 0d | 179,149.51 |
| C-F-P-163 |  | Installation of the Studs for Gypsum Board Partition at level 5 | 20d | 2015-04-29 | 2015-05-21 | C-F-P-153 SS+5d, C-F-P-193, SD-CS-L5-372 | 119d | 0d | 217,149.05 |
| C-F-P-173 |  | Installation of Gypsum Board Partition & Insulation within the walls at level 5 | 25d | 2016-01-24 | 2016-02-22 | C-MEP-BMS-255, C-ELV-SMATV-255, C-ELV-CCTV-255, C-ELV-FA-255, C-ELV-MSPA-255, C-ELV-RMS-255, C-ELV-CS-255, C-MEP-E-306, C-MEP-PD-255, C-F-P-113, C-P-SG-B-032 | 133d | 3d | 325,723.57 |
|  | 2 | **Ceiling Finishes** |  | 2015-04-29 | 2016-03-26 |  |  |  |  |
| C-F-CF-417 |  | Installation of Ceiling thermal/accoustic insulation at level 5 | 5d | 2015-04-29 | 2015-05-04 | C-F-P-153 SS+5d | 130d | 56d | 6,861.72 |
| C-F-CF-357 |  | Installation of Ceiling Support & Brackets at level 5 | 15d | 2015-06-22 | 2015-07-08 | C-F-CF-417 FF, C-F-CF-217 | 74d | 0d | 3,542.63 |
| C-F-CF-377 |  | Istallation of Metal Ceiling at level 5 | 25d | 2015-11-10 | 2015-12-08 | C-F-CF-357, C-MEP-BMS-275, C-ELV-SMATV-275, C-ELV-CCTV-275, C-ELV-FA-275, C-ELV-MSPA-275, C-ELV-RMS-275, C-ELV-CS-275, C-MEP-PD-275, C-MEP-PD-285, C-MEP-FF-214, C-MEP-FF-224, C-MEP-AC-438, C-MEP-AC-468, C-MEP-AC-418, C-MEP-E-316, C-F-CF-357 SS, C-P-SG-B-032 | 118d | 0d | 10,627.9 |
| C-F-CF-367 |  | Installation of Gypsum Ceiling at level 5 | 25d | 2015-12-09 | 2016-01-07 | C-F-CF-357, C-MEP-BMS-275, C-ELV-SMATV-275, C-ELV-CCTV-275, C-ELV-FA-275, C-ELV-MSPA-275, C-ELV-RMS-275, C-ELV-CS-275, C-MEP-PD-275, C-MEP-PD-285, C-MEP-FF-214, C-MEP-FF-224, C-MEP-AC-438, C-MEP-AC-468, C-MEP-AC-418, C-MEP-E-316, SD-CS-L5-432, C-F-CF-377 SS, C-F-CF-377, C-F-CF-357 SS, C-P-SG-B-032 | 118d | 0d |  |
| C-F-CF-387 |  | Ceiling Painting works at level 5 | 12d | 2016-03-13 | 2016-03-26 | C-F-CF-367, C-MEP-FF-234 FF | 130d | 12d | 2,689.13 |

Notes:
- C-F-FF-124: Expenses: SW 67309.5; 2 127017
- C-F-FF-134: Expenses: 1 18252.7
- C-F-WF-124: Expenses: 2 77545.2
- C-F-WF-134: Expenses: 1 542.11
- C-F-WF-144: Expenses: 1 24069.8
- C-F-DW-144: Expenses: 1 10411.2
- C-F-DW-124: Expenses: 1 42310; 2 31233.5
- C-F-DW-134: Expenses: 1 6907.2
- C-F-P-153: Expenses: B 19313; F 159836
- C-F-P-163: Expenses: S 217149
- C-F-P-173: Expenses: G 325724
- C-F-CF-417: Expenses: W 6861.72
- C-F-CF-357: Expenses: 1 3542.63
- C-F-CF-377: Expenses: 1 10627.9
- C-F-CF-387: Expenses: 1 2689.13

| ID | WBS | Activity | Duration | Start | Finish | Predecessors | Total float | Free float | Cost |
| --- | --- | --- | --- | --- | --- | --- | --- | --- | --- |
|  | 3 | **Floor Finishes** |  | 2015-08-26 | 2016-03-10 |  |  |  |  |
| C-F-FF-204 |  | Screed & Waterproofing works at level 5 | 20d | 2015-08-26 | 2015-09-17 | C-F-P-153, C-F-FF-124 | 121d | 0d | 145,705.69 |
| C-F-FF-234 |  | Installation of Raised Flooring at level 5 | 16d | 2016-01-09 | 2016-01-26 | C-F-CF-377, C-F-CF-367 | 118d | 0d |  |
| C-F-FF-214 |  | Implementation of E-poxy Resin at level 5 | 25d | 2016-01-27 | 2016-02-25 | C-F-CF-377, C-F-CF-367, C-F-FF-204, C-F-WF-234, C-F-FF-234, SD-CS-L5-392, C-F-P-1933 FF | 118d | 0d | 13,685.86 |
| C-F-FF-224 |  | Installation of Carpet tiles at level 5 | 12d | 2016-02-27 | 2016-03-10 | C-F-CF-377, C-F-CF-367, C-F-FF-204, C-F-FF-214, C-F-P-1933 FF | 118d | 0d |  |
|  | 4 | **Wall Finishes** |  | 2015-12-16 | 2016-05-02 |  |  |  |  |
| C-F-WF-204 |  | Plaster works at level 5 | 18d | 2015-12-16 | 2016-01-06 | C-F-P-153, C-F-WF-124 | 99d | 0d | 58,143.3 |
| C-F-WF-234 |  | Installation of Toilet Cubicals at level 5 | 5d | 2016-01-07 | 2016-01-12 | C-F-WF-204, C-F-WF-154 | 110d | 0d |  |
| C-F-WF-214 |  | Installation of Wall Cladding at level 5 | 20d | 2016-02-27 | 2016-03-20 | C-F-P-173, SD-CS-L5-412, C-F-FF-214, C-F-P-1943 FF | 200d | 12d | 542.11 |
| C-F-WF-224 |  | Wall Paint works at level 5 | 20d | 2016-04-10 | 2016-05-02 | C-F-P-163, C-F-WF-204, C-F-CF-387, C-F-P-173, C-F-FF-214 FF+5d, C-MEP-FF-234 FF, C-F-DW-204 FF+5d, C-F-DW-214 FS+5d, C-F-P-1943 FF | 118d | 7d | 18,047.5 |
|  | 5 | **Doors & Windows** |  | 2015-10-21 | 2016-04-03 |  |  |  |  |
| C-F-DW-224 |  | Installation of Steel Door Sub-frame at level 5 | 8d | 2015-10-21 | 2015-10-29 | C-F-P-153 FF, SD-CS-L5-452, C-F-DW-144 | 102d | 0d | 10,411.18 |
| C-F-DW-204 |  | Installation of Steel Doors & Handrails at level 5 | 20d | 2016-02-27 | 2016-03-20 | C-F-DW-224, C-F-FF-234, C-F-FF-214, C-F-FF-234 FF | 150d | 32d | 73,543.49 |
| C-F-DW-214 |  | Installation of Wall & Corner Guard at level 5 | 20d | 2016-03-12 | 2016-04-03 | C-F-P-173, C-F-FF-214 SS, C-F-FF-214 FF, C-F-FF-224, C-F-P-113, C-F-P-003, C-F-DW-194 | 118d | 0d | 6,907.2 |
|  | 73 | **Finishes - level 6** |  | 2015-05-02 | 2016-04-26 |  |  |  |  |
|  | 1 | **Partitions** |  | 2015-05-02 | 2015-11-02 |  |  |  |  |
| C-F-P-243 |  | Block Works & Fireproofing at level 6 | 14d | 2015-05-02 | 2015-05-17 | C-CS-L6-91, C-F-P-153 SS, SD-CS-L6-372 | 65d | 0d | 180,253.34 |
| C-F-P-253 |  | Installation of the Studs for Gypsum Board Partition at level 6 | 20d | 2015-05-07 | 2015-05-30 | C-F-P-243 SS+5d, C-F-P-43, SD-CS-L6-392 | 134d | 0d | 218,487.01 |
| C-F-P-263 |  | Installation of Gypsum Board Partition & Insulation within the walls at level 6 | 25d | 2015-10-05 | 2015-11-02 | C-MEP-BMS-405, C-ELV-SMATV-405, C-ELV-CCTV-405, C-ELV-FA-405, C-ELV-MSPA-405, C-ELV-RMS-405, C-ELV-CS-405, C-MEP-E-486, C-MEP-PD-405, C-P-SG-B-042 | 227d | 92d | 327,730.52 |
|  | 2 | **Ceiling Finishes** |  | 2015-05-07 | 2016-03-26 |  |  |  |  |
| C-F-CF-627 |  | Installation of Ceiling thermal/accoustic insulation at level 6 | 5d | 2015-05-07 | 2015-05-12 | C-F-P-243 SS+5d | 138d | 64d | 6,904 |
| C-F-CF-567 |  | Installation of Ceiling Support & Brackets at level 6 | 15d | 2015-07-09 | 2015-07-28 | C-F-CF-627 FF, C-F-CF-357 | 74d | 0d | 3,367.11 |
| C-F-CF-607 |  | Installation of Smoke Curtains support & Equipments at level 6 | 8d | 2015-08-15 | 2015-08-23 | C-F-CF-567 SS, C-F-CF-327 SS | 116d | 0d | 88,617.15 |
| C-F-CF-617 |  | Installation of Smoke Curtains at level 6 | 8d | 2015-08-24 | 2015-09-01 | C-F-CF-607 | 173d | 76d | 265,851.44 |
| C-F-CF-577 |  | Installation of Gypsum Ceiling at level 6 | 25d | 2015-12-03 | 2016-01-02 | C-F-CF-567, C-F-CF-607, C-MEP-BMS-425, C-ELV-SMATV-425, C-ELV-CCTV-425, C-ELV-FA-425, C-ELV-MSPA-425, C-ELV-RMS-425, C-ELV-CS-425, C-MEP-PD-425, C-MEP-PD-435, C-MEP-FF-334, C-MEP-FF-344, C-MEP-AC-678, C-MEP-AC-708, C-MEP-AC-658, C-MEP-E-496, SD-CS-L6-452, C-F-CF-617, C-P-SG-B-042 | 97d | 0d |  |
| C-F-CF-587 |  | Istallation of Metal Ceiling at level 6 | 25d | 2015-12-03 | 2016-01-02 | C-F-CF-567, C-F-CF-607, C-MEP-BMS-425, C-ELV-SMATV-425, C-ELV-CCTV-425, C-ELV-FA-425, C-ELV-MSPA-425, C-ELV-RMS-425, C-ELV-CS-425, C-MEP-PD-425, C-MEP-PD-435, C-MEP-FF-334, C-MEP-FF-344, C-MEP-AC-678, C-MEP-AC-708, C-MEP-AC-658, C-MEP-E-496, C-F-CF-617, C-P-SG-B-042 | 97d | 0d | 10,101.32 |
| C-F-CF-597 |  | Ceiling Painting works at level 6 | 12d | 2016-03-13 | 2016-03-26 | C-F-CF-577, C-MEP-FF-354 FF | 197d | 7d | 2,705.7 |

Notes:
- C-F-FF-204: Expenses: SW 50468.6; 2 95237.1
- C-F-FF-214: Expenses: 1 13685.9
- C-F-WF-204: Expenses: 2 58143.3
- C-F-WF-214: Expenses: 1 542.11
- C-F-WF-224: Expenses: 1 18047.5
- C-F-DW-224: Expenses: 1 10411.2
- C-F-DW-204: Expenses: 1 42310; 2 31233.5
- C-F-DW-214: Expenses: 1 6907.2
- C-F-P-243: Expenses: B 19432; F 160821
- C-F-P-253: Expenses: S 218487
- C-F-P-263: Expenses: G 327731
- C-F-CF-627: Expenses: W 6904
- C-F-CF-567: Expenses: 1 3367.11
- C-F-CF-607: Expenses: CS 88617.1
- C-F-CF-617: Expenses: S 265851
- C-F-CF-587: Expenses: 1 10101.3
- C-F-CF-597: Expenses: 1 2705.7

| ID | WBS | Activity | Duration | Start | Finish | Predecessors | Total float | Free float | Cost |
| --- | --- | --- | --- | --- | --- | --- | --- | --- | --- |
|  | 3 | **Floor Finishes** |  | 2015-09-19 | 2016-03-05 |  |  |  |  |
| C-F-FF-324 |  | Screed & Waterproofing works at level 6 | 20d | 2015-09-19 | 2015-10-14 | C-F-P-243, C-F-FF-204 | 121d | 0d | 146,603.45 |
| C-F-FF-354 |  | Installation of Raised Flooring at level 6 | 16d | 2016-01-03 | 2016-01-20 | C-F-CF-587, C-F-CF-577 | 190d | 0d |  |
| C-F-FF-334 |  | Implementation of E-poxy Resin at level 6 | 25d | 2016-01-21 | 2016-02-20 | C-F-CF-587, C-F-CF-577, C-F-FF-324, C-F-WF-354, C-F-FF-354, SD-CS-L6-412, C-F-P-1963 FF | 190d | 0d | 13,770.18 |
| C-F-FF-344 |  | Installation of Carpet tiles at level 6 | 12d | 2016-02-21 | 2016-03-05 | C-F-CF-587, C-F-CF-577, C-F-FF-324, C-F-FF-334, C-F-P-1963 FF | 190d | 0d |  |
|  | 4 | **Wall Finishes** |  | 2015-12-16 | 2016-04-26 |  |  |  |  |
| C-F-WF-324 |  | Plaster Works at level 6 | 18d | 2015-12-16 | 2016-01-06 | C-F-P-243, C-F-WF-204 SS | 99d | 0d | 58,501.55 |
| C-F-WF-354 |  | Installation of Toilet Cubicals at level 6 | 5d | 2016-01-13 | 2016-01-18 | C-F-WF-324, C-F-WF-234 | 110d | 0d |  |
| C-F-WF-334 |  | Installation of Wall Cladding at level 6 | 20d | 2016-02-21 | 2016-03-14 | C-F-P-263, SD-CS-L6-432, C-F-FF-334, C-F-P-1973 FF | 205d | 37d | 542.11 |
| C-F-WF-344 |  | Wall Paint works at level 6 | 20d | 2016-04-04 | 2016-04-26 | C-F-P-253, C-F-WF-324, C-F-CF-597, C-F-P-263, C-F-FF-334 FF+5d, C-MEP-FF-354 FF, C-F-DW-324 FF+5d, C-F-DW-334 FS+5d, C-F-P-1973 FF | 190d | 0d | 18,158.7 |
|  | 5 | **Doors & Windows** |  | 2015-10-31 | 2016-03-28 |  |  |  |  |
| C-F-DW-344 |  | Installation of Steel Door Sub-frame at level 6 | 8d | 2015-10-31 | 2015-11-08 | C-F-P-243 FF, SD-CS-L6-472, C-F-DW-224 | 102d | 0d | 10,411.18 |
| C-F-DW-324 |  | Installation of Steel Doors & Handrails at level 6 | 20d | 2016-02-21 | 2016-03-14 | C-F-DW-344, C-F-FF-354, C-F-FF-334, C-F-FF-354 FF | 222d | 32d | 73,543.49 |
| C-F-DW-334 |  | Installation of Wall & Corner Guard at level 6 | 20d | 2016-03-06 | 2016-03-28 | C-F-P-263, C-F-FF-334 SS, C-F-FF-334 FF, C-F-FF-344, C-F-P-173, C-F-P-113, C-F-P-003, C-F-DW-194 | 190d | 0d | 6,907.2 |
|  | 72 | **Finishes - Level 7** |  | 2015-05-10 | 2016-05-18 |  |  |  |  |
|  | 1 | **Partitions** |  | 2015-05-10 | 2015-11-25 |  |  |  |  |
| C-F-P-423 |  | Block Works & Fireproofing at level 7 | 14d | 2015-05-10 | 2015-05-25 | C-CS-L7-101, C-F-P-243 SS, SD-CS-L7-392 | 58d | 0d | 182,267.68 |
| C-F-P-433 |  | Installation of the Studs for Gypsum Board Partition at level 7 | 20d | 2015-05-16 | 2015-06-07 | C-F-P-423 SS+5d, C-F-P-73, SD-CS-L7-412 | 109d | 0d | 220,928.62 |
| C-F-P-443 |  | Installation of Gypsum Board Partition & Insulation within the walls at level 7 | 25d | 2015-10-28 | 2015-11-25 | C-MEP-BMS-705, C-ELV-SMATV-705, C-ELV-CCTV-705, C-ELV-FA-705, C-ELV-MSPA-705, C-ELV-RMS-705, C-ELV-CS-705, C-MEP-E-846, C-MEP-PD-705, C-P-SG-B-052 | 207d | 91d | 331,392.92 |
|  | 2 | **Ceiling Finishes** |  | 2015-05-16 | 2016-03-26 |  |  |  |  |
| C-F-CF-1047 |  | Installation of Ceiling thermal/accoustic insulation at level 7 | 5d | 2015-05-16 | 2015-05-20 | C-F-P-423 SS+5d | 146d | 72d | 6,981.15 |
| C-F-CF-987 |  | Installation of Ceiling Support & Brackets at level 7 | 15d | 2015-07-29 | 2015-08-15 | C-F-CF-1047 FF, C-F-CF-567 | 74d | 0d | 3,404.74 |
| C-F-CF-1027 |  | Installation of Smoke Curtains support & Equipments at level 7 | 8d | 2015-08-15 | 2015-08-23 | C-F-CF-987 SS, C-F-CF-607 SS | 116d | 0d | 88,617.15 |
| C-F-CF-1037 |  | Installation of Smoke Curtains at level 7 | 8d | 2015-08-24 | 2015-09-01 | C-F-CF-1027 | 174d | 95d | 265,851.44 |
| C-F-CF-1007 |  | Istallation of Metal Ceiling at level 7 | 25d | 2015-12-27 | 2016-01-24 | C-F-CF-987, C-F-CF-1027, C-MEP-BMS-725, C-ELV-SMATV-725, C-ELV-CCTV-725, C-ELV-FA-725, C-ELV-MSPA-725, C-ELV-RMS-725, C-ELV-CS-725, C-MEP-PD-725, C-MEP-PD-735, C-MEP-FF-574, C-MEP-FF-584, C-MEP-AC-1158, C-MEP-AC-1188, C-MEP-AC-1138, C-MEP-E-856, C-F-CF-1037, C-P-SG-B-052 | 79d | 0d | 10,214.21 |
| C-F-CF-997 |  | Installation of Gypsum Ceiling at level 7 | 25d | 2015-12-27 | 2016-01-24 | C-F-CF-987, C-F-CF-1027, C-MEP-BMS-725, C-ELV-SMATV-725, C-ELV-CCTV-725, C-ELV-FA-725, C-ELV-MSPA-725, C-ELV-RMS-725, C-ELV-CS-725, C-MEP-PD-725, C-MEP-PD-735, C-MEP-FF-574, C-MEP-FF-584, C-MEP-AC-1158, C-MEP-AC-1188, C-MEP-AC-1138, C-MEP-E-856, SD-CS-L7-472, C-F-CF-1037, C-P-SG-B-052 | 79d | 0d |  |
| C-F-CF-1017 |  | Ceiling Painting works at level 7 | 12d | 2016-03-13 | 2016-03-26 | C-F-CF-997, C-MEP-FF-594 FF | 191d | 26d | 2,735.94 |

Notes:
- C-F-FF-324: Expenses: SW 50779.6; 2 95823.9
- C-F-FF-334: Expenses: 1 13770.2
- C-F-WF-324: Expenses: 1 58501.6
- C-F-WF-334: Expenses: 1 542.11
- C-F-WF-344: Expenses: 1 18158.7
- C-F-DW-344: Expenses: 1 10411.2
- C-F-DW-324: Expenses: 1 42310; 2 31233.5
- C-F-DW-334: Expenses: 1 6907.2
- C-F-P-423: Expenses: B 19649.2; F 162618
- C-F-P-433: Expenses: S 220929
- C-F-P-443: Expenses: G 331393
- C-F-CF-1047: Expenses: W 6981.15
- C-F-CF-987: Expenses: 1 3404.74
- C-F-CF-1027: Expenses: CS 88617.1
- C-F-CF-1037: Expenses: S 265851
- C-F-CF-1007: Expenses: 1 10214.2
- C-F-CF-1017: Expenses: 1 2735.94

| ID | WBS | Activity | Duration | Start | Finish | Predecessors | Total float | Free float | Cost |
| --- | --- | --- | --- | --- | --- | --- | --- | --- | --- |
|  | 3 | **Floor Finishes** |  | 2015-10-15 | 2016-03-27 |  |  |  |  |
| C-F-FF-564 |  | Screed & Waterproofing works at level 7 | 20d | 2015-10-15 | 2015-11-07 | C-F-P-423, C-F-FF-324 | 121d | 0d | 148,241.76 |
| C-F-FF-594 |  | Installation of Raised Flooring at level 7 | 16d | 2016-01-25 | 2016-02-13 | C-F-CF-1007, C-F-CF-997 | 165d | 0d |  |
| C-F-FF-574 |  | Implementation of E-poxy Resin at level 7 | 25d | 2016-02-14 | 2016-03-13 | C-F-CF-1007, C-F-CF-997, C-F-FF-564, C-F-WF-594, C-F-FF-594, SD-CS-L7-432, C-F-P-1993 FF | 165d | 0d | 13,924.07 |
| C-F-FF-584 |  | Installation of Carpet tiles at level 7 | 12d | 2016-03-14 | 2016-03-27 | C-F-CF-1007, C-F-CF-997, C-F-FF-564, C-F-FF-574, C-F-P-1993 FF | 165d | 0d |  |
|  | 4 | **Wall Finishes** |  | 2015-12-16 | 2016-05-18 |  |  |  |  |
| C-F-WF-564 |  | Plaster works at level 7 | 18d | 2015-12-16 | 2016-01-06 | C-F-P-423, C-F-WF-324 SS | 99d | 0d | 59,155.31 |
| C-F-WF-594 |  | Installation of Toilet Cubicals at level 7 | 5d | 2016-01-19 | 2016-01-24 | C-F-WF-564, C-F-WF-354 | 110d | 0d |  |
| C-F-WF-574 |  | Installation of Wall Cladding at level 7 | 20d | 2016-03-14 | 2016-04-05 | C-F-P-443, SD-CS-L7-452, C-F-FF-574, C-F-P-2003 FF | 186d | 12d | 542.11 |
| C-F-WF-584 |  | Wall Paint works at level 7 | 20d | 2016-04-26 | 2016-05-18 | C-F-P-433, C-F-WF-564, C-F-CF-1017, C-F-P-443, C-F-FF-574 FF+5d, C-MEP-FF-594 FF, C-F-DW-564 FF+5d, C-F-DW-574 FS+5d, C-F-P-2003 FF | 165d | 0d | 18,361.62 |
|  | 5 | **Doors & Windows** |  | 2015-11-09 | 2016-04-19 |  |  |  |  |
| C-F-DW-584 |  | Installation of Steel Door Sub-frame at level 7 | 8d | 2015-11-09 | 2015-11-17 | C-F-P-423 FF, SD-CS-L7-492, C-F-DW-344 | 102d | 0d | 10,411.18 |
| C-F-DW-564 |  | Installation of Steel Doors & Handrails at level 7 | 20d | 2016-03-14 | 2016-04-05 | C-F-DW-584, C-F-FF-594, C-F-FF-574, C-F-FF-594 FF | 197d | 32d | 73,543.49 |
| C-F-DW-574 |  | Installation of Wall & Corner Guard at level 7 | 20d | 2016-03-28 | 2016-04-19 | C-F-P-443, C-F-FF-574 SS, C-F-FF-574 FF, C-F-FF-584, C-F-P-263, C-F-P-173, C-F-P-113, C-F-P-003, C-F-DW-194 | 165d | 0d | 6,907.2 |
|  | 71 | **Finishes - Level 8** |  | 2015-05-18 | 2016-06-11 |  |  |  |  |
|  | 1 | **Partitions** |  | 2015-05-18 | 2015-12-20 |  |  |  |  |
| C-F-P-273 |  | Block Works & Fireproofing at level 8 | 14d | 2015-05-18 | 2015-06-02 | C-CS-L8-111, C-F-P-423 SS, SD-CS-L8-412 | 51d | 0d | 185,774.77 |
| C-F-P-283 |  | Installation of the Studs for Gypsum Board Partition at level 8 | 20d | 2015-05-24 | 2015-06-15 | C-F-P-273 SS+5d, C-F-P-133, SD-CS-L8-432 | 132d | 0d | 225,179.59 |
| C-F-P-293 |  | Installation of Gypsum Board Partition & Insulation within the walls at level 8 | 25d | 2015-11-21 | 2015-12-20 | C-MEP-BMS-455, C-ELV-SMATV-455, C-ELV-CCTV-455, C-ELV-FA-455, C-ELV-MSPA-455, C-ELV-RMS-455, C-ELV-CS-455, C-MEP-E-546, C-MEP-PD-455, C-P-SG-B-062 | 187d | 80d | 337,769.39 |
|  | 2 | **Ceiling Finishes** |  | 2015-05-24 | 2016-03-26 |  |  |  |  |
| C-F-CF-697 |  | Installation of Ceiling thermal/accoustic insulation at level 8 | 5d | 2015-05-24 | 2015-05-28 | C-F-P-273 SS+5d | 154d | 80d | 7,115.48 |
| C-F-CF-637 |  | Installation of Ceiling Support & Brackets at level 8 | 15d | 2015-08-16 | 2015-09-01 | C-F-CF-697 FF, C-F-CF-987 | 74d | 0d | 3,470.25 |
| C-F-CF-677 |  | Installation of Smoke Curtains support & Equipments at level 8 | 8d | 2015-08-24 | 2015-09-01 | C-F-CF-637 SS, C-F-CF-1027 | 116d | 0d | 88,617.15 |
| C-F-CF-687 |  | Installation of Smoke Curtains at level 8 | 8d | 2015-09-02 | 2015-09-10 | C-F-CF-677 | 174d | 107d | 265,851.44 |
| C-F-CF-647 |  | Installation of Gypsum Ceiling at level 8 | 25d | 2016-01-19 | 2016-02-17 | C-F-CF-637, C-F-CF-677, C-MEP-BMS-475, C-ELV-SMATV-475, C-ELV-CCTV-475, C-ELV-FA-475, C-ELV-MSPA-475, C-ELV-RMS-475, C-ELV-CS-475, C-MEP-PD-475, C-MEP-PD-485, C-MEP-FF-374, C-MEP-FF-384, C-MEP-AC-758, C-MEP-AC-788, C-MEP-AC-738, C-MEP-E-556, SD-CS-L8-492, C-F-CF-687, C-P-SG-B-062 | 67d | 0d |  |
| C-F-CF-657 |  | Istallation of Metal Ceiling at level 8 | 25d | 2016-01-19 | 2016-02-17 | C-F-CF-637, C-F-CF-677, C-MEP-BMS-475, C-ELV-SMATV-475, C-ELV-CCTV-475, C-ELV-FA-475, C-ELV-MSPA-475, C-ELV-RMS-475, C-ELV-CS-475, C-MEP-PD-475, C-MEP-PD-485, C-MEP-FF-374, C-MEP-FF-384, C-MEP-AC-758, C-MEP-AC-788, C-MEP-AC-738, C-MEP-E-556, C-F-CF-687, C-P-SG-B-062 | 67d | 0d | 10,410.74 |
| C-F-CF-667 |  | Ceiling Painting works at level 8 | 12d | 2016-03-13 | 2016-03-26 | C-F-CF-647, C-MEP-FF-394 FF | 191d | 46d | 2,788.58 |

Notes:
- C-F-FF-564: Expenses: SW 51347; 2 96894.7
- C-F-FF-574: Expenses: 1 13924.1
- C-F-WF-564: Expenses: 1 59155.3
- C-F-WF-574: Expenses: 1 542.11
- C-F-WF-584: Expenses: 1 18361.6
- C-F-DW-584: Expenses: 1 10411.2
- C-F-DW-564: Expenses: 1 42310; 2 31233.5
- C-F-DW-574: Expenses: 1 6907.2
- C-F-P-273: Expenses: B 20027.3; F 165747
- C-F-P-283: Expenses: S 225180
- C-F-P-293: Expenses: G 337769
- C-F-CF-697: Expenses: W 7115.48
- C-F-CF-637: Expenses: 1 3470.25
- C-F-CF-677: Expenses: CS 88617.1
- C-F-CF-687: Expenses: S 265851
- C-F-CF-657: Expenses: 1 10410.7
- C-F-CF-667: Expenses: 1 2788.58

| ID | WBS | Activity | Duration | Start | Finish | Predecessors | Total float | Free float | Cost |
| --- | --- | --- | --- | --- | --- | --- | --- | --- | --- |
|  | 3 | **Floor Finishes** |  | 2015-11-08 | 2016-04-19 |  |  |  |  |
| C-F-FF-364 |  | Screed & Waterproofing works at level 8 | 20d | 2015-11-08 | 2015-11-30 | C-F-P-273, C-F-FF-564 | 121d | 0d | 151,094.13 |
| C-F-FF-394 |  | Installation of Raised Flooring at level 8 | 16d | 2016-02-18 | 2016-03-07 | C-F-CF-657, C-F-CF-647 | 144d | 0d |  |
| C-F-FF-374 |  | Implementation of E-poxy Resin at level 8 | 25d | 2016-03-08 | 2016-04-05 | C-F-CF-657, C-F-CF-647, C-F-FF-364, C-F-WF-394, C-F-FF-394, SD-CS-L8-452, C-F-P-2023 | 144d | 0d | 14,191.98 |
| C-F-FF-384 |  | Installation of Carpet tiles at level 8 | 12d | 2016-04-06 | 2016-04-19 | C-F-CF-657, C-F-CF-647, C-F-FF-364, C-F-FF-374, C-F-P-2023 | 144d | 0d |  |
|  | 4 | **Wall Finishes** |  | 2015-12-16 | 2016-06-11 |  |  |  |  |
| C-F-WF-364 |  | Plaster works at level 8 | 18d | 2015-12-16 | 2016-01-06 | C-F-P-273, C-F-WF-564 SS | 99d | 0d | 60,293.54 |
| C-F-WF-394 |  | Installation of Toilet Cubicals at level 8 | 5d | 2016-01-25 | 2016-01-30 | C-F-WF-364, C-F-WF-594 | 110d | 0d |  |
| C-F-WF-374 |  | Installation of Wall Cladding at level 8 | 20d | 2016-04-06 | 2016-04-28 | C-F-P-293, SD-CS-L8-472, C-F-FF-374, C-F-P-2033 FF | 156d | 12d | 542.11 |
| C-F-WF-384 |  | Wall Paint works at level 8 | 20d | 2016-05-19 | 2016-06-11 | C-F-P-283, C-F-WF-364, C-F-CF-667, C-F-P-293, C-F-FF-374 FF+5d, C-MEP-FF-394 FF, C-F-DW-364 FF+5d, C-F-DW-374 FS+5d, C-F-P-2033 FF | 145d | 0d | 18,714.93 |
|  | 5 | **Doors & Windows** |  | 2015-11-18 | 2016-05-12 |  |  |  |  |
| C-F-DW-384 |  | Installation of Steel Door Sub-frame at level 8 | 8d | 2015-11-18 | 2015-11-26 | C-F-P-273 FF, SD-CS-L8-512, C-F-DW-584 | 102d | 0d | 10,411.18 |
| C-F-DW-364 |  | Installation of Steel Doors & Handrails at level 8 | 20d | 2016-03-08 | 2016-03-30 | C-F-DW-384, C-F-FF-394, C-F-FF-374 SS, C-F-FF-394 FF | 202d | 57d | 73,543.49 |
| C-F-DW-374 |  | Installation of Wall & Corner Guard at level 8 | 20d | 2016-04-20 | 2016-05-12 | C-F-P-293, C-F-FF-374, C-F-FF-374 FF, C-F-FF-384, C-F-P-443, C-F-P-263, C-F-P-173, C-F-P-113, C-F-P-003, C-F-DW-194 | 144d | 0d | 6,907.2 |
|  | 70 | **Finishes - Level 9** |  | 2015-05-26 | 2016-06-11 |  |  |  |  |
|  | 1 | **Partitions** |  | 2015-05-26 | 2015-12-20 |  |  |  |  |
| C-F-P-303 |  | Block Works & Fireproofing at level 9 | 14d | 2015-05-26 | 2015-06-10 | C-CS-L9-121, C-F-P-273 SS, SD-CS-L9-432 | 44d | 0d | 188,830.02 |
| C-F-P-313 |  | Installation of the Studs for Gypsum Board Partition at level 9 | 20d | 2015-06-01 | 2015-06-23 | C-F-P-303 SS+5d, C-F-P-002, SD-CS-L9-452 | 99d | 0d | 228,882.9 |
| C-F-P-323 |  | Installation of Gypsum Board Partition & Insulation within the walls at level 9 | 25d | 2015-11-21 | 2015-12-20 | C-MEP-BMS-505, C-ELV-SMATV-505, C-ELV-CCTV-505, C-ELV-FA-505, C-ELV-MSPA-505, C-ELV-RMS-505, C-ELV-CS-505, C-MEP-E-606, C-MEP-PD-505, C-P-SG-B-072 | 187d | 80d | 343,324.35 |
|  | 2 | **Ceiling Finishes** |  | 2015-06-01 | 2016-04-11 |  |  |  |  |
| C-F-CF-767 |  | Installation of Ceiling thermal/accoustic insulation at level 9 | 5d | 2015-06-01 | 2015-06-06 | C-F-P-303 SS+5d | 162d | 88d | 7,232.5 |
| C-F-CF-707 |  | Installation of Ceiling Support & Brackets at level 9 | 15d | 2015-09-02 | 2015-09-19 | C-F-CF-767 FF, C-F-CF-637 | 74d | 0d | 3,527.32 |
| C-F-CF-747 |  | Installation of Smoke Curtains support & Equipments at level 9 | 8d | 2015-09-02 | 2015-09-10 | C-F-CF-707 SS, C-F-CF-677 | 116d | 0d | 88,617.15 |
| C-F-CF-757 |  | Installation of Smoke Curtains at level 9 | 8d | 2015-09-12 | 2015-09-23 | C-F-CF-747 | 175d | 99d | 265,851.44 |
| C-F-CF-717 |  | Installation of Gypsum Ceiling at level 9 | 25d | 2016-01-19 | 2016-02-17 | C-F-CF-707, C-F-CF-747, C-MEP-BMS-525, C-ELV-SMATV-525, C-ELV-CCTV-525, C-ELV-FA-525, C-ELV-MSPA-525, C-ELV-RMS-525, C-ELV-CS-525, C-MEP-PD-525, C-MEP-PD-535, C-MEP-FF-414, C-MEP-FF-424, C-MEP-AC-838, C-MEP-AC-868, C-MEP-AC-818, C-MEP-E-616, SD-CS-L9-512, C-F-CF-757, C-P-SG-B-072 | 76d | 0d |  |
| C-F-CF-727 |  | Istallation of Metal Ceiling at level 9 | 25d | 2016-01-19 | 2016-02-17 | C-F-CF-707, C-F-CF-747, C-MEP-BMS-525, C-ELV-SMATV-525, C-ELV-CCTV-525, C-ELV-FA-525, C-ELV-MSPA-525, C-ELV-RMS-525, C-ELV-CS-525, C-MEP-PD-525, C-MEP-PD-535, C-MEP-FF-414, C-MEP-FF-424, C-MEP-AC-838, C-MEP-AC-868, C-MEP-AC-818, C-MEP-E-616, C-F-CF-757, C-P-SG-B-072 | 76d | 0d | 10,581.96 |
| C-F-CF-737 |  | Ceiling Painting works at level 9 | 12d | 2016-03-29 | 2016-04-11 | C-F-CF-717, C-MEP-FF-434 FF | 116d | 32d | 2,834.44 |

Notes:
- C-F-FF-364: Expenses: SW 52335; 2 98759.1
- C-F-FF-374: Expenses: 1 14192
- C-F-WF-364: Expenses: 1 60293.5
- C-F-WF-374: Expenses: 1 542.11
- C-F-WF-384: Expenses: 1 18714.9
- C-F-DW-384: Expenses: 1 10411.2
- C-F-DW-364: Expenses: 1 42310; 2 31233.5
- C-F-DW-374: Expenses: 1 6907.2
- C-F-P-303: Expenses: B 20356.7; F 168473
- C-F-P-313: Expenses: S 228883
- C-F-P-323: Expenses: G 343324
- C-F-CF-767: Expenses: W 7232.5
- C-F-CF-707: Expenses: 1 3527.32
- C-F-CF-747: Expenses: CS 88617.1
- C-F-CF-757: Expenses: S 265851
- C-F-CF-727: Expenses: 1 10582
- C-F-CF-737: Expenses: 1 2834.44

| ID | WBS | Activity | Duration | Start | Finish | Predecessors | Total float | Free float | Cost |
| --- | --- | --- | --- | --- | --- | --- | --- | --- | --- |
|  | 3 | **Floor Finishes** |  | 2015-12-01 | 2016-04-19 |  |  |  |  |
| C-F-FF-404 |  | Screed & Waterproofing works at level 9 | 20d | 2015-12-01 | 2015-12-24 | C-F-P-303, C-F-FF-364 | 121d | 0d | 153,579.03 |
| C-F-FF-434 |  | Installation of Raised Flooring at level 9 | 16d | 2016-02-18 | 2016-03-07 | C-F-CF-727, C-F-CF-717 | 84d | 0d |  |
| C-F-FF-414 |  | Implementation of E-poxy Resin at level 9 | 25d | 2016-03-08 | 2016-04-05 | C-F-CF-727, C-F-CF-717, C-F-FF-404, C-F-WF-434, C-F-FF-434, SD-CS-L9-472, C-F-P-2053 | 84d | 0d | 14,425.39 |
| C-F-FF-424 |  | Installation of Carpet tiles at level 9 | 12d | 2016-04-06 | 2016-04-19 | C-F-CF-727, C-F-CF-717, C-F-FF-404, C-F-FF-414, C-F-P-2053 | 84d | 0d |  |
|  | 4 | **Wall Finishes** |  | 2015-12-16 | 2016-06-11 |  |  |  |  |
| C-F-WF-404 |  | Plaster works at level 9 | 18d | 2015-12-16 | 2016-01-06 | C-F-P-303, C-F-WF-364 SS | 99d | 0d | 61,285.13 |
| C-F-WF-434 |  | Installation of Toilet Cubicals at level 9 | 5d | 2016-01-31 | 2016-02-04 | C-F-WF-404, C-F-WF-394 | 110d | 0d |  |
| C-F-WF-414 |  | Installation of Wall Cladding at level 9 | 20d | 2016-04-06 | 2016-04-28 | C-F-P-323, SD-CS-L9-492, C-F-FF-414, C-F-P-2063 | 166d | 12d | 542.11 |
| C-F-WF-424 |  | Wall Paint works at level 9 | 20d | 2016-05-19 | 2016-06-11 | C-F-P-313, C-F-WF-404, C-F-CF-737, C-F-P-323, C-F-FF-414 FF+5d, C-MEP-FF-434 FF, C-F-DW-404 FF+5d, C-F-DW-414 FS+5d, C-F-P-2063 | 84d | 0d | 19,022.71 |
|  | 5 | **Doors & Windows** |  | 2015-11-28 | 2016-05-12 |  |  |  |  |
| C-F-DW-424 |  | Installation of Steel Door Sub-frame at level 9 | 8d | 2015-11-28 | 2015-12-06 | C-F-P-303 FF, SD-CS-L9-532, C-F-DW-384 | 102d | 0d | 10,411.18 |
| C-F-DW-404 |  | Installation of Steel Doors & Handrails at level 9 | 20d | 2016-04-06 | 2016-04-28 | C-F-DW-424, C-F-FF-434, C-F-FF-414, C-F-FF-434 FF | 116d | 32d | 73,543.49 |
| C-F-DW-414 |  | Installation of Wall & Corner Guard at level 9 | 20d | 2016-04-20 | 2016-05-12 | C-F-P-323, C-F-FF-414 SS, C-F-FF-414 FF, C-F-FF-424, C-F-P-293, C-F-P-443, C-F-P-263, C-F-P-173, C-F-P-113, C-F-P-003, C-F-DW-194 | 84d | 0d | 6,907.2 |
|  | 69 | **Finishes - Level 10** |  | 2015-06-11 | 2016-06-11 |  |  |  |  |
|  | 1 | **Partitions** |  | 2015-06-11 | 2015-12-20 |  |  |  |  |
| C-F-P-363 |  | Block Works & Fireproofing at level 10 | 14d | 2015-06-11 | 2015-06-27 | C-CS-L10-131, C-F-P-303, SD-CS-L10-452 | 44d | 0d | 191,766.65 |
| C-F-P-373 |  | Installation of the Studs for Gypsum Board Partition at level 10 | 20d | 2015-06-17 | 2015-07-09 | C-F-P-363 SS+5d, C-F-P-103, SD-CS-L10-472 | 115d | 0d | 234,912.74 |
| C-F-P-383 |  | Installation of Gypsum Board Partition & Insulation within the walls at level 10 | 25d | 2015-11-21 | 2015-12-20 | C-MEP-BMS-605, C-ELV-SMATV-605, C-ELV-CCTV-605, C-ELV-FA-605, C-ELV-MSPA-605, C-ELV-RMS-605, C-ELV-CS-605, C-MEP-E-726, C-MEP-PD-605, C-P-SG-B-182 | 212d | 80d | 348,215.88 |
|  | 2 | **Ceiling Finishes** |  | 2015-06-17 | 2016-04-11 |  |  |  |  |
| C-F-CF-907 |  | Installation of Ceiling thermal/accoustic insulation at level 10 | 5d | 2015-06-17 | 2015-06-22 | C-F-P-363 SS+5d | 163d | 89d | 7,335.55 |
| C-F-CF-847 |  | Installation of Ceiling Support & Brackets at level 10 | 15d | 2015-09-23 | 2015-10-10 | C-F-CF-907 FF, C-F-CF-707 | 74d | 0d | 3,577.57 |
| C-F-CF-887 |  | Installation of Smoke Curtains support & Equipments at level 10 | 8d | 2015-09-23 | 2015-10-01 | C-F-CF-847 SS, C-F-CF-747 | 109d | 0d | 88,617.15 |
| C-F-CF-897 |  | Installation of Smoke Curtains at level 10 | 8d | 2015-10-03 | 2015-10-11 | C-F-CF-887 | 163d | 84d | 265,851.44 |
| C-F-CF-857 |  | Installation of Gypsum Ceiling at level 10 | 25d | 2016-01-19 | 2016-02-17 | C-F-CF-847, C-F-CF-887, C-MEP-BMS-625, C-ELV-SMATV-625, C-ELV-CCTV-625, C-ELV-FA-625, C-ELV-MSPA-625, C-ELV-RMS-625, C-ELV-CS-625, C-MEP-PD-625, C-MEP-PD-635, C-MEP-FF-494, C-MEP-FF-504, C-MEP-AC-998, C-MEP-AC-1028, C-MEP-AC-978, C-MEP-E-736, SD-CS-L10-532, C-F-CF-897, C-P-SG-B-182 | 79d | 0d |  |
| C-F-CF-867 |  | Istallation of Metal Ceiling at level 10 | 25d | 2016-01-19 | 2016-02-17 | C-F-CF-847, C-F-CF-887, C-MEP-BMS-625, C-ELV-SMATV-625, C-ELV-CCTV-625, C-ELV-FA-625, C-ELV-MSPA-625, C-ELV-RMS-625, C-ELV-CS-625, C-MEP-PD-625, C-MEP-PD-635, C-MEP-FF-494, C-MEP-FF-504, C-MEP-AC-998, C-MEP-AC-1028, C-MEP-AC-978, C-MEP-E-736, C-F-CF-897, C-P-SG-B-182 | 79d | 0d | 10,732.72 |
| C-F-CF-877 |  | Ceiling Painting works at level 10 | 12d | 2016-03-29 | 2016-04-11 | C-F-CF-857, C-MEP-FF-514 FF | 141d | 32d | 2,874.82 |

Notes:
- C-F-FF-404: Expenses: SW 53195.7; 2 100383
- C-F-FF-414: Expenses: 1 14425.4
- C-F-WF-404: Expenses: 1 61285.1
- C-F-WF-414: Expenses: 1 542.11
- C-F-WF-424: Expenses: 1 19022.7
- C-F-DW-424: Expenses: 1 10411.2
- C-F-DW-404: Expenses: 1 42310; 2 31233.5
- C-F-DW-414: Expenses: 1 6907.2
- C-F-P-363: Expenses: B 20892.9; F 170874
- C-F-P-373: Expenses: S 234913
- C-F-P-383: Expenses: G 348216
- C-F-CF-907: Expenses: W 7335.55
- C-F-CF-847: Expenses: 1 3577.57
- C-F-CF-887: Expenses: CS 88617.1
- C-F-CF-897: Expenses: S 265851
- C-F-CF-867: Expenses: 1 10732.7
- C-F-CF-877: Expenses: 1 2874.82

| ID | WBS | Activity | Duration | Start | Finish | Predecessors | Total float | Free float | Cost |
| --- | --- | --- | --- | --- | --- | --- | --- | --- | --- |
|  | 3 | **Floor Finishes** |  | 2015-12-01 | 2016-04-19 |  |  |  |  |
| C-F-FF-484 |  | Screed & Waterproofing works at level 10 | 20d | 2015-12-01 | 2015-12-24 | C-F-P-363, C-F-FF-404 SS | 121d | 0d | 155,767.16 |
| C-F-FF-514 |  | Installation of Raised Flooring at level 10 | 16d | 2016-02-18 | 2016-03-07 | C-F-CF-867, C-F-CF-857 | 109d | 0d |  |
| C-F-FF-494 |  | Implementation of E-poxy Resin at level 10 | 25d | 2016-03-08 | 2016-04-05 | C-F-CF-867, C-F-CF-857, C-F-FF-484, C-F-WF-514, C-F-FF-514, SD-CS-L10-492, C-F-P-2113 FF | 109d | 0d | 14,630.91 |
| C-F-FF-504 |  | Installation of Carpet tiles at level 10 | 12d | 2016-04-06 | 2016-04-19 | C-F-CF-867, C-F-CF-857, C-F-FF-484, C-F-FF-494, C-F-P-2113 FF | 109d | 0d |  |
|  | 4 | **Wall Finishes** |  | 2015-12-16 | 2016-06-11 |  |  |  |  |
| C-F-WF-484 |  | Plaster works at level 10 | 18d | 2015-12-16 | 2016-01-06 | C-F-P-363, C-F-WF-404 SS | 99d | 0d | 62,158.29 |
| C-F-WF-514 |  | Installation of Toilet Cubicals at level 10 | 5d | 2016-02-06 | 2016-02-11 | C-F-WF-484, C-F-WF-434 | 116d | 0d |  |
| C-F-WF-494 |  | Installation of Wall Cladding at level 10 | 20d | 2016-04-06 | 2016-04-28 | C-F-P-383, SD-CS-L10-512, C-F-FF-494, C-F-P-2123 FF | 176d | 12d | 542.11 |
| C-F-WF-504 |  | Wall Paint works at level 10 | 20d | 2016-05-19 | 2016-06-11 | C-F-P-373, C-F-WF-484, C-F-CF-877, C-F-P-383, C-F-FF-494 FF+5d, C-MEP-FF-514 FF, C-F-DW-484 FF+5d, C-F-DW-494 FS+5d, C-F-P-2123 FF | 109d | 0d | 19,293.74 |
|  | 5 | **Doors & Windows** |  | 2015-12-07 | 2016-05-12 |  |  |  |  |
| C-F-DW-504 |  | Installation of Steel Door Sub-frame at level 10 | 8d | 2015-12-07 | 2015-12-15 | C-F-P-363 FF, SD-CS-L10-552, C-F-DW-424 | 102d | 0d | 10,411.18 |
| C-F-DW-484 |  | Installation of Steel Doors & Handrails at level 10 | 20d | 2016-04-06 | 2016-04-28 | C-F-DW-504, C-F-FF-514, C-F-FF-494, C-F-FF-514 FF | 141d | 32d | 73,543.49 |
| C-F-DW-494 |  | Installation of Wall & Corner Guard at level 10 | 20d | 2016-04-20 | 2016-05-12 | C-F-P-383, C-F-FF-494 SS, C-F-FF-494 FF, C-F-FF-504, C-F-P-323, C-F-P-293, C-F-P-443, C-F-P-263, C-F-P-173, C-F-P-113, C-F-P-003, C-F-DW-194 | 109d | 0d | 6,907.2 |
|  | 68 | **Finishes - Level 11** |  | 2015-06-11 | 2016-06-11 |  |  |  |  |
|  | 1 | **Partitions** |  | 2015-06-11 | 2015-12-20 |  |  |  |  |
| C-F-P-213 |  | Block Works & Fireproofing at level 11 | 14d | 2015-06-11 | 2015-06-27 | C-CS-L11-141, C-F-P-363 SS, SD-CS-L11-472 | 44d | 0d | 193,558.42 |
| C-F-P-223 |  | Installation of the Studs for Gypsum Board Partition at level 11 | 20d | 2015-06-17 | 2015-07-09 | C-F-P-213 SS+5d, C-F-P-163, SD-CS-L11-492 | 97d | 0d | 232,143.92 |
| C-F-P-233 |  | Installation of Gypsum Board Partition & Insulation within the walls at level 11 | 25d | 2015-11-21 | 2015-12-20 | C-MEP-BMS-355, C-ELV-SMATV-355, C-ELV-CCTV-355, C-ELV-FA-355, C-ELV-MSPA-355, C-ELV-RMS-355, C-ELV-CS-355, C-MEP-E-426, C-MEP-PD-355, C-P-SG-B-192 | 212d | 80d | 352,369.11 |
|  | 2 | **Ceiling Finishes** |  | 2015-06-17 | 2016-04-11 |  |  |  |  |
| C-F-CF-557 |  | Installation of Ceiling thermal/accoustic insulation at level 11 | 5d | 2015-06-17 | 2015-06-22 | C-F-P-213 SS+5d | 178d | 104d | 7,423.04 |
| C-F-CF-497 |  | Installation of Ceiling Support & Brackets at level 11 | 15d | 2015-10-11 | 2015-10-27 | C-F-CF-557 FF, C-F-CF-847 | 74d | 0d | 3,620.24 |
| C-F-CF-537 |  | Installation of Smoke Curtains support & Equipments at level 11 | 8d | 2015-10-11 | 2015-10-19 | C-F-CF-497 SS, C-F-CF-887 | 102d | 0d | 88,617.15 |
| C-F-CF-547 |  | Installation of Smoke Curtains at level 11 | 8d | 2015-10-20 | 2015-10-28 | C-F-CF-537 | 178d | 69d | 265,851.44 |
| C-F-CF-507 |  | Installation of Gypsum Ceiling at level 11 | 25d | 2016-01-19 | 2016-02-17 | C-F-CF-497, C-F-CF-537, C-MEP-BMS-375, C-ELV-SMATV-375, C-ELV-CCTV-375, C-ELV-FA-375, C-ELV-MSPA-375, C-ELV-RMS-375, C-ELV-CS-375, C-MEP-PD-375, C-MEP-PD-385, C-MEP-FF-294, C-MEP-FF-304, C-MEP-AC-598, C-MEP-AC-628, C-MEP-AC-578, C-MEP-E-436, SD-CS-L11-552, C-F-CF-547, C-P-SG-B-192 | 109d | 0d |  |
| C-F-CF-517 |  | Istallation of Metal Ceiling at level 11 | 25d | 2016-01-19 | 2016-02-17 | C-F-CF-497, C-F-CF-537, C-MEP-BMS-375, C-ELV-SMATV-375, C-ELV-CCTV-375, C-ELV-FA-375, C-ELV-MSPA-375, C-ELV-RMS-375, C-ELV-CS-375, C-MEP-PD-375, C-MEP-PD-385, C-MEP-FF-294, C-MEP-FF-304, C-MEP-AC-598, C-MEP-AC-628, C-MEP-AC-578, C-MEP-E-436, C-F-CF-547, C-P-SG-B-192 | 109d | 0d | 10,860.73 |
| C-F-CF-527 |  | Ceiling Painting works at level 11 | 12d | 2016-03-29 | 2016-04-11 | C-F-CF-507, C-MEP-FF-314 FF | 141d | 32d | 2,909.11 |

Notes:
- C-F-FF-484: Expenses: SW 53953.6; 2 101814
- C-F-FF-494: Expenses: 1 14630.9
- C-F-WF-484: Expenses: 1 62158.3
- C-F-WF-494: Expenses: 1 542.11
- C-F-WF-504: Expenses: 1 19293.7
- C-F-DW-504: Expenses: 1 10411.2
- C-F-DW-484: Expenses: 1 42310; 2 31233.5
- C-F-DW-494: Expenses: 1 6907.2
- C-F-P-213: Expenses: B 20646.7; F 172912
- C-F-P-223: Expenses: S 232144
- C-F-P-233: Expenses: G 352369
- C-F-CF-557: Expenses: W 7423.04
- C-F-CF-497: Expenses: 1 3620.24
- C-F-CF-537: Expenses: CS 88617.1
- C-F-CF-547: Expenses: S 265851
- C-F-CF-517: Expenses: 1 10860.7
- C-F-CF-527: Expenses: 1 2909.11

| ID | WBS | Activity | Duration | Start | Finish | Predecessors | Total float | Free float | Cost |
| --- | --- | --- | --- | --- | --- | --- | --- | --- | --- |
|  | 3 | **Floor Finishes** |  | 2015-12-01 | 2016-04-19 |  |  |  |  |
| C-F-FF-284 |  | Screed & Waterproofing works at level 11 | 20d | 2015-12-01 | 2015-12-24 | C-F-P-213, C-F-FF-484 SS | 121d | 0d | 157,625.02 |
| C-F-FF-314 |  | Installation of Raised Flooring at level 11 | 16d | 2016-02-18 | 2016-03-07 | C-F-CF-517, C-F-CF-507 | 109d | 0d |  |
| C-F-FF-294 |  | Implementation of E-poxy Resin at level 11 | 25d | 2016-03-08 | 2016-04-05 | C-F-CF-517, C-F-CF-507, C-F-FF-284, C-F-WF-314, C-F-FF-314, SD-CS-L11-512, C-F-P-2083 FF | 109d | 0d | 14,805.42 |
| C-F-FF-304 |  | Installation of Carpet tiles at level 11 | 12d | 2016-04-06 | 2016-04-19 | C-F-CF-517, C-F-CF-507, C-F-FF-284, C-F-FF-294, C-F-P-2083 FF | 109d | 0d |  |
|  | 4 | **Wall Finishes** |  | 2016-01-07 | 2016-06-11 |  |  |  |  |
| C-F-WF-284 |  | Plaster works at level 11 | 18d | 2016-01-07 | 2016-01-27 | C-F-P-213, C-F-WF-484 | 99d | 0d | 62,899.66 |
| C-F-WF-314 |  | Installation of Toilet Cubicals at level 11 | 5d | 2016-02-13 | 2016-02-17 | C-F-WF-284, C-F-WF-514 | 116d | 0d |  |
| C-F-WF-294 |  | Installation of Wall Cladding at level 11 | 20d | 2016-04-06 | 2016-04-28 | C-F-P-233, SD-CS-L11-532, C-F-FF-294, C-F-P-2093 FF | 176d | 12d | 542.11 |
| C-F-WF-304 |  | Wall Paint works at level 11 | 20d | 2016-05-19 | 2016-06-11 | C-F-P-223, C-F-WF-284, C-F-CF-527, C-F-P-233, C-F-FF-294 FF+5d, C-MEP-FF-314 FF, C-F-DW-284 FF+5d, C-F-DW-294 FS+5d, C-F-P-2093 FF | 109d | 9d | 19,523.86 |
|  | 5 | **Doors & Windows** |  | 2015-12-16 | 2016-05-12 |  |  |  |  |
| C-F-DW-304 |  | Installation of Steel Door Sub-frame at level 11 | 8d | 2015-12-16 | 2015-12-26 | C-F-P-213 FF, SD-CS-L11-572, C-F-DW-504 | 102d | 0d | 10,411.18 |
| C-F-DW-284 |  | Installation of Steel Doors & Handrails at level 11 | 20d | 2016-04-06 | 2016-04-28 | C-F-DW-304, C-F-FF-314, C-F-FF-294, C-F-FF-314 FF | 141d | 32d | 73,543.49 |
| C-F-DW-294 |  | Installation of Wall & Corner Guard at level 11 | 20d | 2016-04-20 | 2016-05-12 | C-F-P-233, C-F-FF-294 SS, C-F-FF-294 FF, C-F-FF-304, C-F-P-383, C-F-P-323, C-F-P-293, C-F-P-443, C-F-P-263, C-F-P-173, C-F-P-113, C-F-P-003, C-F-DW-194 | 109d | 0d | 6,907.2 |
|  | 67 | **Finishes - Level 12** |  | 2015-06-20 | 2016-07-04 |  |  |  |  |
|  | 1 | **Partitions** |  | 2015-06-20 | 2016-01-12 |  |  |  |  |
| C-F-P-333 |  | Block Works & Fireproofing at level 12 | 14d | 2015-06-20 | 2015-07-05 | C-CS-L12-151, C-F-P-213 SS, SD-CS-L12-492 | 37d | 0d | 198,409.88 |
| C-F-P-343 |  | Installation of the Studs for Gypsum Board Partition at level 12 | 20d | 2015-06-25 | 2015-07-20 | C-F-P-333 SS+5d, C-F-P-253, SD-CS-L12-512 | 116d | 0d | 240,494.74 |
| C-F-P-353 |  | Installation of Gypsum Board Partition & Insulation within the walls at level 12 | 25d | 2015-12-14 | 2016-01-12 | C-MEP-BMS-555, C-ELV-SMATV-555, C-ELV-CCTV-555, C-ELV-FA-555, C-ELV-MSPA-555, C-ELV-RMS-555, C-ELV-CS-555, C-MEP-E-666, C-MEP-PD-555, C-P-SG-B-102 | 217d | 60d | 360,742.11 |
|  | 2 | **Ceiling Finishes** |  | 2015-06-25 | 2016-04-11 |  |  |  |  |
| C-F-CF-837 |  | Installation of Ceiling thermal/accoustic insulation at level 12 | 5d | 2015-06-25 | 2015-06-30 | C-F-P-333 SS+5d | 186d | 112d | 7,599.43 |
| C-F-CF-777 |  | Installation of Ceiling Support & Brackets at level 12 | 15d | 2015-10-28 | 2015-11-14 | C-F-CF-837 FF, C-F-CF-497 | 74d | 0d | 3,706.27 |
| C-F-CF-817 |  | Installation of Smoke Curtains support & Equipments at level 12 | 8d | 2015-10-28 | 2015-11-05 | C-F-CF-777 SS, C-F-CF-537 | 95d | 0d | 88,617.15 |
| C-F-CF-827 |  | Installation of Smoke Curtains at level 12 | 8d | 2015-11-07 | 2015-11-15 | C-F-CF-817 | 136d | 74d | 265,851.44 |
| C-F-CF-787 |  | Installation of Gypsum Ceiling at level 12 | 25d | 2016-02-13 | 2016-03-12 | C-F-CF-777, C-F-CF-817, C-MEP-BMS-575, C-ELV-SMATV-575, C-ELV-CCTV-575, C-ELV-FA-575, C-ELV-MSPA-575, C-ELV-RMS-575, C-ELV-CS-575, C-MEP-PD-575, C-MEP-PD-585, C-MEP-FF-454, C-MEP-FF-464, C-MEP-AC-918, C-MEP-AC-948, C-MEP-AC-898, C-MEP-E-676, SD-CS-L12-572, C-F-CF-827, C-P-SG-B-102 | 62d | 0d |  |
| C-F-CF-797 |  | Istallation of Metal Ceiling at level 12 | 25d | 2016-02-13 | 2016-03-12 | C-F-CF-777, C-F-CF-817, C-MEP-BMS-575, C-ELV-SMATV-575, C-ELV-CCTV-575, C-ELV-FA-575, C-ELV-MSPA-575, C-ELV-RMS-575, C-ELV-CS-575, C-MEP-PD-575, C-MEP-PD-585, C-MEP-FF-454, C-MEP-FF-464, C-MEP-AC-918, C-MEP-AC-948, C-MEP-AC-898, C-MEP-E-676, C-F-CF-827, C-P-SG-B-102 | 62d | 0d | 11,118.81 |
| C-F-CF-807 |  | Ceiling Painting works at level 12 | 12d | 2016-03-29 | 2016-04-11 | C-F-CF-787, C-MEP-FF-474 FF | 166d | 52d | 2,978.24 |

Notes:
- C-F-FF-284: Expenses: SW 54597.1; 2 103028
- C-F-FF-294: Expenses: 1 14805.4
- C-F-WF-284: Expenses: 1 62899.7
- C-F-WF-294: Expenses: 1 542.11
- C-F-WF-304: Expenses: 1 19523.9
- C-F-DW-304: Expenses: 1 10411.2
- C-F-DW-284: Expenses: 1 42310; 2 31233.5
- C-F-DW-294: Expenses: 1 6907.2
- C-F-P-333: Expenses: B 21389.4; F 177020
- C-F-P-343: Expenses: S 240495
- C-F-P-353: Expenses: G 360742
- C-F-CF-837: Expenses: W 7599.43
- C-F-CF-777: Expenses: 1 3706.27
- C-F-CF-817: Expenses: CS 88617.1
- C-F-CF-827: Expenses: S 265851
- C-F-CF-797: Expenses: 1 11118.8
- C-F-CF-807: Expenses: 1 2978.24

| ID | WBS | Activity | Duration | Start | Finish | Predecessors | Total float | Free float | Cost |
| --- | --- | --- | --- | --- | --- | --- | --- | --- | --- |
|  | 3 | **Floor Finishes** |  | 2015-12-01 | 2016-05-12 |  |  |  |  |
| C-F-FF-444 |  | Screed & Waterproofing works at level 12 | 20d | 2015-12-01 | 2015-12-24 | C-F-P-333, C-F-FF-284 SS | 121d | 0d | 161,370.51 |
| C-F-FF-474 |  | Installation of Raised Flooring at level 12 | 16d | 2016-03-13 | 2016-03-30 | C-F-CF-797, C-F-CF-787 | 114d | 0d |  |
| C-F-FF-454 |  | Implementation of E-poxy Resin at level 12 | 25d | 2016-03-31 | 2016-04-28 | C-F-CF-797, C-F-CF-787, C-F-FF-444, C-F-WF-474, C-F-FF-474, SD-CS-L12-532, C-F-P-2143 FF | 114d | 0d | 15,157.23 |
| C-F-FF-464 |  | Installation of Carpet tiles at level 12 | 12d | 2016-04-30 | 2016-05-12 | C-F-CF-797, C-F-CF-787, C-F-FF-444, C-F-FF-454, C-F-P-2143 FF | 114d | 0d |  |
|  | 4 | **Wall Finishes** |  | 2016-01-07 | 2016-07-04 |  |  |  |  |
| C-F-WF-444 |  | Plaster works at level 12 | 18d | 2016-01-07 | 2016-01-27 | C-F-P-333, C-F-WF-284 SS | 99d | 0d | 64,394.29 |
| C-F-WF-474 |  | Installation of Toilet Cubicals at level 12 | 5d | 2016-02-18 | 2016-02-23 | C-F-WF-444, C-F-WF-314 | 116d | 0d |  |
| C-F-WF-454 |  | Installation of Wall Cladding at level 12 | 20d | 2016-04-30 | 2016-05-22 | C-F-P-353, SD-CS-L12-552, C-F-FF-454, C-F-P-2153 FF | 166d | 12d | 542.11 |
| C-F-WF-464 |  | Wall Paint works at level 12 | 20d | 2016-06-12 | 2016-07-04 | C-F-P-343, C-F-WF-444, C-F-CF-807, C-F-P-353, C-F-FF-454 FF+5d, C-MEP-FF-474 FF, C-F-DW-444 FF+5d, C-F-DW-454 FS+5d, C-F-P-2153 FF | 114d | 0d | 19,987.79 |
|  | 5 | **Doors & Windows** |  | 2015-12-27 | 2016-06-05 |  |  |  |  |
| C-F-DW-464 |  | Installation of Steel Door Sub-frame at level 12 | 8d | 2015-12-27 | 2016-01-04 | C-F-P-333 FF, SD-CS-L12-592, C-F-DW-304 | 102d | 0d | 10,411.18 |
| C-F-DW-444 |  | Installation of Steel Doors & Handrails at level 12 | 20d | 2016-04-30 | 2016-05-22 | C-F-DW-464, C-F-FF-474, C-F-FF-454, C-F-FF-474 FF | 146d | 32d | 73,543.49 |
| C-F-DW-454 |  | Installation of Wall & Corner Guard at level 12 | 20d | 2016-05-14 | 2016-06-05 | C-F-P-353, C-F-FF-454 SS, C-F-FF-454 FF, C-F-FF-464, C-F-P-233, C-F-P-383, C-F-P-323, C-F-P-293, C-F-P-443, C-F-P-263, C-F-P-173, C-F-P-113, C-F-P-003, C-F-DW-194 | 114d | 0d | 6,907.2 |
|  | 66 | **Finishes - Level 13** |  | 2015-07-06 | 2016-07-04 |  |  |  |  |
|  | 1 | **Partitions** |  | 2015-07-06 | 2016-01-12 |  |  |  |  |
| C-F-P-393 |  | Block Works & Fireproofing at level 13 | 14d | 2015-07-06 | 2015-07-23 | C-CS-L13-161, C-F-P-333, SD-CS-L13-512 | 37d | 0d | 203,010.49 |
| C-F-P-403 |  | Installation of the Studs for Gypsum Board Partition at level 13 | 20d | 2015-07-12 | 2015-08-05 | C-F-P-393 SS+5d, C-F-P-433, SD-CS-L13-532 | 80d | 0d | 246,071.2 |
| C-F-P-413 |  | Installation of Gypsum Board Partition & Insulation within the walls at level 13 | 25d | 2015-12-14 | 2016-01-12 | C-MEP-BMS-655, C-ELV-SMATV-655, C-ELV-CCTV-655, C-ELV-FA-655, C-ELV-MSPA-655, C-ELV-RMS-655, C-ELV-CS-655, C-MEP-E-786, C-MEP-PD-655, C-P-SG-B-112 | 217d | 60d | 369,106.8 |
|  | 2 | **Ceiling Finishes** |  | 2015-07-12 | 2016-04-11 |  |  |  |  |
| C-F-CF-977 |  | Installation of Ceiling thermal/accoustic insulation at level 13 | 5d | 2015-07-12 | 2015-07-19 | C-F-P-393 SS+5d | 187d | 113d | 7,775.64 |
| C-F-CF-917 |  | Installation of Ceiling Support & Brackets at level 13 | 15d | 2015-11-15 | 2015-12-01 | C-F-CF-977 FF, C-F-CF-777 | 74d | 0d | 3,792.21 |
| C-F-CF-957 |  | Installation of Smoke Curtains support & Equipments at level 13 | 8d | 2015-11-15 | 2015-11-23 | C-F-CF-917 SS, C-F-CF-817 | 88d | 0d | 88,617.15 |
| C-F-CF-967 |  | Installation of Smoke Curtains at level 13 | 8d | 2015-11-24 | 2015-12-02 | C-F-CF-957 | 122d | 59d | 265,851.44 |
| C-F-CF-927 |  | Installation of Gypsum Ceiling at level 13 | 25d | 2016-02-13 | 2016-03-12 | C-F-CF-917, C-F-CF-957, C-MEP-BMS-675, C-ELV-SMATV-675, C-ELV-CCTV-675, C-ELV-FA-675, C-ELV-MSPA-675, C-ELV-RMS-675, C-ELV-CS-675, C-MEP-PD-675, C-MEP-PD-685, C-MEP-FF-534, C-MEP-FF-544, C-MEP-AC-1078, C-MEP-AC-1108, C-MEP-AC-1058, C-MEP-E-796, SD-CS-L13-592, C-F-CF-967, C-P-SG-B-112 | 63d | 0d |  |
| C-F-CF-937 |  | Istallation of Metal Ceiling at level 13 | 25d | 2016-02-13 | 2016-03-12 | C-F-CF-917, C-F-CF-957, C-MEP-BMS-675, C-ELV-SMATV-675, C-ELV-CCTV-675, C-ELV-FA-675, C-ELV-MSPA-675, C-ELV-RMS-675, C-ELV-CS-675, C-MEP-PD-675, C-MEP-PD-685, C-MEP-FF-534, C-MEP-FF-544, C-MEP-AC-1078, C-MEP-AC-1108, C-MEP-AC-1058, C-MEP-E-796, C-F-CF-967, C-P-SG-B-112 | 63d | 0d | 11,376.62 |
| C-F-CF-947 |  | Ceiling Painting works at level 13 | 12d | 2016-03-29 | 2016-04-11 | C-F-CF-927, C-MEP-FF-554 FF | 166d | 52d | 3,047.3 |

Notes:
- C-F-FF-444: Expenses: SW 55894.5; 2 105476
- C-F-FF-454: Expenses: 1 15157.2
- C-F-WF-444: Expenses: 1 64394.3
- C-F-WF-454: Expenses: 1 542.11
- C-F-WF-464: Expenses: 1 19987.8
- C-F-DW-464: Expenses: 1 10411.2
- C-F-DW-444: Expenses: 1 42310; 2 31233.5
- C-F-DW-454: Expenses: 1 6907.2
- C-F-P-393: Expenses: B 21885.4; F 181125
- C-F-P-403: Expenses: S 246071
- C-F-P-413: Expenses: G 369107
- C-F-CF-977: Expenses: W 7775.64
- C-F-CF-917: Expenses: 1 3792.21
- C-F-CF-957: Expenses: CS 88617.1
- C-F-CF-967: Expenses: S 265851
- C-F-CF-937: Expenses: 1 11376.6
- C-F-CF-947: Expenses: 1 3047.3

| ID | WBS | Activity | Duration | Start | Finish | Predecessors | Total float | Free float | Cost |
| --- | --- | --- | --- | --- | --- | --- | --- | --- | --- |
|  | 3 | **Floor Finishes** |  | 2015-12-01 | 2016-05-12 |  |  |  |  |
| C-F-FF-524 |  | Screed & Waterproofing works at level 13 | 20d | 2015-12-01 | 2015-12-24 | C-F-P-393, C-F-FF-444 SS | 121d | 0d | 165,112.28 |
| C-F-FF-554 |  | Installation of Raised Flooring at level 13 | 16d | 2016-03-13 | 2016-03-30 | C-F-CF-937, C-F-CF-927 | 114d | 0d |  |
| C-F-FF-534 |  | Implementation of E-poxy Resin at level 13 | 25d | 2016-03-31 | 2016-04-28 | C-F-CF-937, C-F-CF-927, C-F-FF-524, C-F-WF-554, C-F-FF-554, SD-CS-L13-552, C-F-P-2173 FF | 114d | 0d | 15,508.68 |
| C-F-FF-544 |  | Installation of Carpet tiles at level 13 | 12d | 2016-04-30 | 2016-05-12 | C-F-CF-937, C-F-CF-927, C-F-FF-524, C-F-FF-534, C-F-P-2173 FF | 114d | 0d |  |
|  | 4 | **Wall Finishes** |  | 2016-01-07 | 2016-07-04 |  |  |  |  |
| C-F-WF-524 |  | Plaster works at level 13 | 18d | 2016-01-07 | 2016-01-27 | C-F-P-393, C-F-WF-444 SS | 99d | 0d | 65,887.43 |
| C-F-WF-554 |  | Installation of Toilet Cubicals at level 13 | 5d | 2016-02-24 | 2016-02-29 | C-F-WF-524, C-F-WF-474 | 116d | 0d |  |
| C-F-WF-534 |  | Installation of Wall Cladding at level 13 | 20d | 2016-04-30 | 2016-05-22 | C-F-P-413, SD-CS-L13-572, C-F-FF-534, C-F-P-2183 FF | 166d | 17d | 542.11 |
| C-F-WF-544 |  | Wall Paint works at level 13 | 20d | 2016-06-12 | 2016-07-04 | C-F-P-403, C-F-WF-524, C-F-CF-947, C-F-P-413, C-F-FF-534 FF+5d, C-MEP-FF-554 FF, C-F-DW-524 FF+5d, C-F-DW-534 FS+5d, C-F-P-2183 FF | 114d | 0d | 20,451.25 |
|  | 5 | **Doors & Windows** |  | 2016-01-05 | 2016-06-05 |  |  |  |  |
| C-F-DW-544 |  | Installation of Steel Door Sub-frame at level 13 | 8d | 2016-01-05 | 2016-01-13 | C-F-P-393 FF, SD-CS-L13-612, C-F-DW-464 | 102d | 0d | 10,411.18 |
| C-F-DW-524 |  | Installation of Steel Doors & Handrails at level 13 | 20d | 2016-04-30 | 2016-05-22 | C-F-DW-544, C-F-FF-554, C-F-FF-534, C-F-FF-554 FF | 146d | 32d | 73,543.49 |
| C-F-DW-534 |  | Installation of Wall & Corner Guard at level 13 | 20d | 2016-05-14 | 2016-06-05 | C-F-P-413, C-F-FF-534 SS, C-F-FF-534 FF, C-F-FF-544, C-F-P-353, C-F-P-233, C-F-P-383, C-F-P-323, C-F-P-293, C-F-P-443, C-F-P-263, C-F-P-173, C-F-P-113, C-F-P-003, C-F-DW-194 | 114d | 0d | 6,907.2 |
|  | 65 | **Finishes - Level 14** |  | 2015-07-06 | 2016-07-04 |  |  |  |  |
|  | 1 | **Partitions** |  | 2015-07-06 | 2016-01-20 |  |  |  |  |
| C-F-P-483 |  | Block Works & Fireproofing at level 14 | 14d | 2015-07-06 | 2015-07-23 | C-CS-L14-171, C-F-P-393 SS, SD-CS-L14-532 | 37d | 0d | 207,175.29 |
| C-F-P-493 |  | Installation of the Studs for Gypsum Board Partition at level 14 | 20d | 2015-07-12 | 2015-08-05 | C-F-P-483 SS+5d, C-F-P-283, SD-CS-L14-552 | 110d | 0d | 251,119.4 |
| C-F-P-503 |  | Installation of Gypsum Board Partition & Insulation within the walls at level 14 | 25d | 2015-12-23 | 2016-01-20 | C-MEP-BMS-805, C-ELV-SMATV-805, C-ELV-CCTV-805, C-ELV-FA-805, C-ELV-MSPA-805, C-ELV-RMS-805, C-ELV-CS-805, C-MEP-E-966, C-MEP-PD-805, C-P-SG-B-122 | 228d | 53d | 376,679.1 |
|  | 2 | **Ceiling Finishes** |  | 2015-07-12 | 2016-04-11 |  |  |  |  |
| C-F-CF-1187 |  | Installation of Ceiling thermal/accoustic insulation at level 14 | 5d | 2015-07-12 | 2015-07-19 | C-F-P-483 SS+5d | 202d | 128d | 7,935.16 |
| C-F-CF-1127 |  | Installation of Ceiling Support & Brackets at level 14 | 15d | 2015-12-02 | 2015-12-20 | C-F-CF-1187 FF, C-F-CF-917 | 74d | 0d | 3,870.01 |
| C-F-CF-1167 |  | Installation of Smoke Curtains support & Equipments at level 14 | 8d | 2015-12-02 | 2015-12-10 | C-F-CF-1127 SS, C-F-CF-957 | 81d | 0d | 88,617.15 |
| C-F-CF-1177 |  | Installation of Smoke Curtains at level 14 | 8d | 2015-12-12 | 2015-12-21 | C-F-CF-1167 | 116d | 44d | 265,851.44 |
| C-F-CF-1137 |  | Installation of Gypsum Ceiling at level 14 | 25d | 2016-02-13 | 2016-03-12 | C-F-CF-1127, C-F-CF-1167, C-MEP-BMS-825, C-ELV-SMATV-825, C-ELV-CCTV-825, C-ELV-FA-825, C-ELV-MSPA-825, C-ELV-RMS-825, C-ELV-CS-825, C-MEP-PD-825, C-MEP-PD-835, C-MEP-FF-654, C-MEP-FF-664, C-MEP-AC-1318, C-MEP-AC-1348, C-MEP-AC-1298, C-MEP-E-976, SD-CS-L14-612, C-F-CF-1177, C-P-SG-B-122 | 72d | 0d |  |
| C-F-CF-1147 |  | Istallation of Metal Ceiling at level 14 | 25d | 2016-02-13 | 2016-03-12 | C-F-CF-1127, C-F-CF-1167, C-MEP-BMS-825, C-ELV-SMATV-825, C-ELV-CCTV-825, C-ELV-FA-825, C-ELV-MSPA-825, C-ELV-RMS-825, C-ELV-CS-825, C-MEP-PD-825, C-MEP-PD-835, C-MEP-FF-654, C-MEP-FF-664, C-MEP-AC-1318, C-MEP-AC-1348, C-MEP-AC-1298, C-MEP-E-976, C-F-CF-1177, C-P-SG-B-122 | 72d | 0d | 11,610.02 |
| C-F-CF-1157 |  | Ceiling Painting works at level 14 | 12d | 2016-03-29 | 2016-04-11 | C-F-CF-1137, C-MEP-FF-674 FF | 187d | 52d | 3,109.81 |

Notes:
- C-F-FF-524: Expenses: SW 57190.5; 2 107922
- C-F-FF-534: Expenses: 1 15508.7
- C-F-WF-524: Expenses: 1 65887.4
- C-F-WF-534: Expenses: 1 542.11
- C-F-WF-544: Expenses: 1 20451.2
- C-F-DW-544: Expenses: 1 10411.2
- C-F-DW-524: Expenses: 1 42310; 2 31233.5
- C-F-DW-534: Expenses: 1 6907.2
- C-F-P-483: Expenses: B 22334.3; F 184841
- C-F-P-493: Expenses: S 251119
- C-F-P-503: Expenses: G 376679
- C-F-CF-1187: Expenses: W 7935.16
- C-F-CF-1127: Expenses: 1 3870.01
- C-F-CF-1167: Expenses: CS 88617.1
- C-F-CF-1177: Expenses: S 265851
- C-F-CF-1147: Expenses: 1 11610
- C-F-CF-1157: Expenses: 1 3109.81

| ID | WBS | Activity | Duration | Start | Finish | Predecessors | Total float | Free float | Cost |
| --- | --- | --- | --- | --- | --- | --- | --- | --- | --- |
|  | 3 | **Floor Finishes** |  | 2015-12-01 | 2016-05-12 |  |  |  |  |
| C-F-FF-644 |  | Screed & Waterproofing works at level 14 | 20d | 2015-12-01 | 2015-12-24 | C-F-P-483, C-F-FF-524 SS | 121d | 0d | 168,499.58 |
| C-F-FF-674 |  | Installation of Raised Flooring at level 14 | 16d | 2016-03-13 | 2016-03-30 | C-F-CF-1147, C-F-CF-1137 | 135d | 0d |  |
| C-F-FF-654 |  | Implementation of E-poxy Resin at level 14 | 25d | 2016-03-31 | 2016-04-28 | C-F-CF-1147, C-F-CF-1137, C-F-FF-644, C-F-WF-674, C-F-FF-674, SD-CS-L14-572, C-F-P-2203 | 135d | 0d | 15,826.85 |
| C-F-FF-664 |  | Installation of Carpet tiles at level 14 | 12d | 2016-04-30 | 2016-05-12 | C-F-CF-1147, C-F-CF-1137, C-F-FF-644, C-F-FF-654, C-F-P-2203 | 135d | 0d |  |
|  | 4 | **Wall Finishes** |  | 2016-01-07 | 2016-07-04 |  |  |  |  |
| C-F-WF-644 |  | Plaster works at level 14 | 18d | 2016-01-07 | 2016-01-27 | C-F-P-483, C-F-WF-524 SS | 99d | 0d | 67,239.12 |
| C-F-WF-674 |  | Installation of Toilet Cubicals at level 14 | 5d | 2016-03-01 | 2016-03-06 | C-F-WF-644, C-F-WF-554 | 116d | 0d |  |
| C-F-WF-654 |  | Installation of Wall Cladding at level 14 | 20d | 2016-04-30 | 2016-05-22 | C-F-P-503, SD-CS-L14-592, C-F-FF-654, C-F-P-2213 FF | 166d | 12d | 542.11 |
| C-F-WF-664 |  | Wall Paint works at level 14 | 20d | 2016-06-12 | 2016-07-04 | C-F-P-493, C-F-WF-644, C-F-CF-1157, C-F-P-503, C-F-FF-654 FF+5d, C-MEP-FF-674 FF, C-F-DW-644 FF+5d, C-F-DW-654 FS+5d, C-F-P-2213 FF | 135d | 0d | 20,870.81 |
|  | 5 | **Doors & Windows** |  | 2016-01-14 | 2016-06-05 |  |  |  |  |
| C-F-DW-664 |  | Installation of Steel Door Sub-frame at level 14 | 8d | 2016-01-14 | 2016-01-23 | C-F-P-483 FF, SD-CS-L14-632, C-F-DW-544 | 102d | 0d | 10,411.18 |
| C-F-DW-644 |  | Installation of Steel Doors & Handrails at level 14 | 20d | 2016-04-30 | 2016-05-22 | C-F-DW-664, C-F-FF-674, C-F-FF-654, C-F-FF-674 FF | 167d | 32d | 73,543.49 |
| C-F-DW-654 |  | Installation of Wall & Corner Guard at level 14 | 20d | 2016-05-14 | 2016-06-05 | C-F-P-503, C-F-FF-654 SS, C-F-FF-654 FF, C-F-FF-664, C-F-P-413, C-F-P-353, C-F-P-233, C-F-P-383, C-F-P-323, C-F-P-293, C-F-P-443, C-F-P-263, C-F-P-173, C-F-P-113, C-F-P-003, C-F-DW-194 | 135d | 0d | 6,907.2 |
|  | 64 | **Finishes - Level 15** |  | 2015-07-25 | 2016-07-04 |  |  |  |  |
|  | 1 | **Partitions** |  | 2015-07-25 | 2016-02-07 |  |  |  |  |
| C-F-P-663 |  | Block Works & Fireproofing at level 15 | 14d | 2015-07-25 | 2015-08-09 | C-CS-L15-181, C-F-P-483, SD-CS-L15-552 | 37d | 0d | 231,091.17 |
| C-F-P-673 |  | Installation of the Studs for Gypsum Board Partition at level 15 | 20d | 2015-07-30 | 2015-08-22 | C-F-P-663 SS+5d, C-F-P-313, SD-CS-L15-572 | 78d | 0d | 275,527.15 |
| C-F-P-683 |  | Installation of Gypsum Board Partition & Insulation within the walls at level 15 | 25d | 2016-01-10 | 2016-02-07 | C-MEP-BMS-1105, C-ELV-SMATV-1105, C-ELV-CCTV-1105, C-ELV-FA-1105, C-ELV-MSPA-1105, C-ELV-RMS-1105, C-ELV-CS-1105, C-MEP-E-1326, C-MEP-PD-1105, C-P-SG-B-132 | 213d | 38d | 420,162.16 |
|  | 2 | **Ceiling Finishes** |  | 2015-07-30 | 2016-04-11 |  |  |  |  |
| C-F-CF-1607 |  | Installation of Ceiling thermal/accoustic insulation at level 15 | 5d | 2015-07-30 | 2015-08-04 | C-F-P-663 SS+5d | 203d | 129d | 8,851.17 |
| C-F-CF-1547 |  | Installation of Ceiling Support & Brackets at level 15 | 15d | 2015-12-21 | 2016-01-06 | C-F-CF-1607 FF, C-F-CF-1127 | 74d | 0d | 4,316.75 |
| C-F-CF-1587 |  | Installation of Smoke Curtains support & Equipments at level 15 | 8d | 2015-12-21 | 2015-12-29 | C-F-CF-1547 SS, C-F-CF-1167 | 74d | 0d | 88,617.15 |
| C-F-CF-1597 |  | Installation of Smoke Curtains at level 15 | 8d | 2015-12-30 | 2016-01-07 | C-F-CF-1587 | 109d | 29d | 265,851.44 |
| C-F-CF-1557 |  | Installation of Gypsum Ceiling at level 15 | 25d | 2016-02-13 | 2016-03-12 | C-F-CF-1547, C-F-CF-1587, C-MEP-BMS-1125, C-ELV-SMATV-1125, C-ELV-CCTV-1125, C-ELV-FA-1125, C-ELV-MSPA-1125, C-ELV-RMS-1125, C-ELV-CS-1125, C-MEP-PD-1125, C-MEP-PD-1135, C-MEP-FF-894, C-MEP-FF-904, C-MEP-AC-1798, C-MEP-AC-1828, C-MEP-AC-1778, C-MEP-E-1336, SD-CS-L15-632, C-F-CF-1597, C-P-SG-B-132 | 80d | 0d |  |
| C-F-CF-1567 |  | Istallation of Metal Ceiling at level 15 | 25d | 2016-02-13 | 2016-03-12 | C-F-CF-1547, C-F-CF-1587, C-MEP-BMS-1125, C-ELV-SMATV-1125, C-ELV-CCTV-1125, C-ELV-FA-1125, C-ELV-MSPA-1125, C-ELV-RMS-1125, C-ELV-CS-1125, C-MEP-PD-1125, C-MEP-PD-1135, C-MEP-FF-894, C-MEP-FF-904, C-MEP-AC-1798, C-MEP-AC-1828, C-MEP-AC-1778, C-MEP-E-1336, C-F-CF-1597, C-P-SG-B-132 | 80d | 0d | 12,950.25 |
| C-F-CF-1577 |  | Ceiling Painting works at level 15 | 12d | 2016-03-29 | 2016-04-11 | C-F-CF-1557, C-MEP-FF-914 FF | 187d | 52d | 3,468.8 |

Notes:
- C-F-FF-644: Expenses: SW 58363.8; 2 110136
- C-F-FF-654: Expenses: 1 15826.9
- C-F-WF-644: Expenses: 1 67239.1
- C-F-WF-654: Expenses: 1 542.11
- C-F-WF-664: Expenses: 1 20870.8
- C-F-DW-664: Expenses: 1 10411.2
- C-F-DW-644: Expenses: 1 42310; 2 31233.5
- C-F-DW-654: Expenses: 1 6907.2
- C-F-P-663: Expenses: B 24912.6; F 206179
- C-F-P-673: Expenses: S 275527
- C-F-P-683: Expenses: G 420162
- C-F-CF-1607: Expenses: W 8851.17
- C-F-CF-1547: Expenses: 1 4316.75
- C-F-CF-1587: Expenses: CS 88617.1
- C-F-CF-1597: Expenses: S 265851
- C-F-CF-1567: Expenses: 1 12950.2
- C-F-CF-1577: Expenses: 1 3468.8

| ID | WBS | Activity | Duration | Start | Finish | Predecessors | Total float | Free float | Cost |
| --- | --- | --- | --- | --- | --- | --- | --- | --- | --- |
|  | 3 | **Floor Finishes** |  | 2015-12-26 | 2016-05-12 |  |  |  |  |
| C-F-FF-884 |  | Screed & Waterproofing works at level 15 | 20d | 2015-12-26 | 2016-01-17 | C-F-P-663, C-F-FF-644 | 121d | 0d | 187,950.83 |
| C-F-FF-914 |  | Installation of Raised Flooring at level 15 | 16d | 2016-03-13 | 2016-03-30 | C-F-CF-1567, C-F-CF-1557 | 135d | 0d |  |
| C-F-FF-894 |  | Implementation of E-poxy Resin at level 15 | 25d | 2016-03-31 | 2016-04-28 | C-F-CF-1567, C-F-CF-1557, C-F-FF-884, C-F-WF-914, C-F-FF-914, SD-CS-L15-592, C-F-P-2233 FF | 135d | 0d | 17,653.86 |
| C-F-FF-904 |  | Installation of Carpet tiles at level 15 | 12d | 2016-04-30 | 2016-05-12 | C-F-CF-1567, C-F-CF-1557, C-F-FF-884, C-F-FF-894, C-F-P-2233 FF | 135d | 0d |  |
|  | 4 | **Wall Finishes** |  | 2016-01-07 | 2016-07-04 |  |  |  |  |
| C-F-WF-884 |  | Plaster works at level 15 | 18d | 2016-01-07 | 2016-01-27 | C-F-P-663, C-F-WF-644 SS | 99d | 0d | 75,001.07 |
| C-F-WF-914 |  | Installation of Toilet Cubicals at level 15 | 5d | 2016-03-07 | 2016-03-12 | C-F-WF-884, C-F-WF-674 | 116d | 0d |  |
| C-F-WF-894 |  | Installation of Wall Cladding at level 15 | 20d | 2016-04-30 | 2016-05-22 | C-F-P-683, SD-CS-L15-612, C-F-FF-894, C-F-P-2243 FF | 156d | 12d | 542.11 |
| C-F-WF-904 |  | Wall Paint works at level 15 | 20d | 2016-06-12 | 2016-07-04 | C-F-P-673, C-F-WF-884, C-F-CF-1577, C-F-P-683, C-F-FF-894 FF+5d, C-MEP-FF-914 FF, C-F-DW-884 FF+5d, C-F-DW-894 FS+5d, C-F-P-2243 FF | 135d | 0d | 23,280.1 |
|  | 5 | **Doors & Windows** |  | 2016-01-24 | 2016-06-05 |  |  |  |  |
| C-F-DW-904 |  | Installation of Steel Door Sub-frame at level 15 | 8d | 2016-01-24 | 2016-02-01 | C-F-P-663 FF, SD-CS-L15-652, C-F-DW-664 | 102d | 0d | 10,411.18 |
| C-F-DW-884 |  | Installation of Steel Doors & Handrails at level 15 | 20d | 2016-04-30 | 2016-05-22 | C-F-DW-904, C-F-FF-914, C-F-FF-894, C-F-FF-914 FF | 167d | 32d | 73,543.49 |
| C-F-DW-894 |  | Installation of Wall & Corner Guard at level 15 | 20d | 2016-05-14 | 2016-06-05 | C-F-P-683, C-F-FF-894 SS, C-F-FF-894 FF, C-F-FF-904, C-F-P-503, C-F-P-413, C-F-P-353, C-F-P-233, C-F-P-383, C-F-P-323, C-F-P-293, C-F-P-443, C-F-P-263, C-F-P-173, C-F-P-113, C-F-P-003, C-F-DW-194 | 135d | 0d | 6,907.2 |
|  | 63 | **Finishes - Level 16** |  | 2015-07-25 | 2016-07-04 |  |  |  |  |
|  | 1 | **Partitions** |  | 2015-07-25 | 2016-02-09 |  |  |  |  |
| C-F-P-543 |  | Block Works & Fireproofing at level 16 | 14d | 2015-07-25 | 2015-08-09 | C-CS-L16-191, C-F-P-663 SS, SD-CS-L16-572 | 37d | 0d | 227,311.86 |
| C-F-P-553 |  | Installation of the Studs for Gypsum Board Partition at level 16 | 20d | 2015-07-30 | 2015-08-22 | C-F-P-543 SS+5d, C-F-P-373, SD-CS-L16-592 | 108d | 0d | 280,108.1 |
| C-F-P-563 |  | Installation of Gypsum Board Partition & Insulation within the walls at level 16 | 25d | 2016-01-12 | 2016-02-09 | C-MEP-BMS-905, C-ELV-SMATV-905, C-ELV-CCTV-905, C-ELV-FA-905, C-ELV-MSPA-905, C-ELV-RMS-905, C-ELV-CS-905, C-MEP-E-1086, C-MEP-PD-905, C-P-SG-B-142 | 211d | 36d | 413,290.72 |
|  | 2 | **Ceiling Finishes** |  | 2015-07-30 | 2016-04-11 |  |  |  |  |
| C-F-CF-1327 |  | Installation of Ceiling thermal/accoustic insulation at level 16 | 5d | 2015-07-30 | 2015-08-04 | C-F-P-543 SS+5d | 211d | 129d | 8,706.42 |
| C-F-CF-1267 |  | Installation of Ceiling Support & Brackets at level 16 | 15d | 2015-12-21 | 2016-01-06 | C-F-CF-1327 FF, C-F-CF-1547 SS | 82d | 0d | 4,246.15 |
| C-F-CF-1307 |  | Installation of Smoke Curtains support & Equipments at level 16 | 8d | 2015-12-30 | 2016-01-07 | C-F-CF-1267 SS, C-F-CF-1587 | 74d | 0d | 88,617.15 |
| C-F-CF-1317 |  | Installation of Smoke Curtains at level 16 | 8d | 2016-01-09 | 2016-01-17 | C-F-CF-1307 | 104d | 21d | 265,851.44 |
| C-F-CF-1277 |  | Installation of Gypsum Ceiling at level 16 | 25d | 2016-02-13 | 2016-03-12 | C-F-CF-1267, C-F-CF-1307, C-MEP-BMS-925, C-ELV-SMATV-925, C-ELV-CCTV-925, C-ELV-FA-925, C-ELV-MSPA-925, C-ELV-RMS-925, C-ELV-CS-925, C-MEP-PD-925, C-MEP-PD-935, C-MEP-FF-734, C-MEP-FF-744, C-MEP-AC-1478, C-MEP-AC-1508, C-MEP-AC-1458, C-MEP-E-1096, SD-CS-L16-652, C-F-CF-1317, C-P-SG-B-142 | 83d | 0d |  |
| C-F-CF-1287 |  | Istallation of Metal Ceiling at level 16 | 25d | 2016-02-13 | 2016-03-12 | C-F-CF-1267, C-F-CF-1307, C-MEP-BMS-925, C-ELV-SMATV-925, C-ELV-CCTV-925, C-ELV-FA-925, C-ELV-MSPA-925, C-ELV-RMS-925, C-ELV-CS-925, C-MEP-PD-925, C-MEP-PD-935, C-MEP-FF-734, C-MEP-FF-744, C-MEP-AC-1478, C-MEP-AC-1508, C-MEP-AC-1458, C-MEP-E-1096, C-F-CF-1317, C-P-SG-B-142 | 83d | 0d | 12,738.46 |
| C-F-CF-1297 |  | Ceiling Painting works at level 16 | 12d | 2016-03-29 | 2016-04-11 | C-F-CF-1277, C-MEP-FF-754 FF | 187d | 52d | 3,412.07 |

Notes:
- C-F-FF-884: Expenses: SW 65101.2; 2 122850
- C-F-FF-894: Expenses: 1 17653.9
- C-F-WF-884: Expenses: 1 75001.1
- C-F-WF-894: Expenses: 1 542.11
- C-F-WF-904: Expenses: 1 23280.1
- C-F-DW-904: Expenses: 1 10411.2
- C-F-DW-884: Expenses: 1 42310; 2 31233.5
- C-F-DW-894: Expenses: 1 6907.2
- C-F-P-543: Expenses: B 24505.2; F 202807
- C-F-P-553: Expenses: S 280108
- C-F-P-563: Expenses: G 413291
- C-F-CF-1327: Expenses: W 8706.42
- C-F-CF-1267: Expenses: 1 4246.15
- C-F-CF-1307: Expenses: CS 88617.1
- C-F-CF-1317: Expenses: S 265851
- C-F-CF-1287: Expenses: 1 12738.5
- C-F-CF-1297: Expenses: 1 3412.07

| ID | WBS | Activity | Duration | Start | Finish | Predecessors | Total float | Free float | Cost |
| --- | --- | --- | --- | --- | --- | --- | --- | --- | --- |
|  | 3 | **Floor Finishes** |  | 2015-12-26 | 2016-05-12 |  |  |  |  |
| C-F-FF-724 |  | Screed & Waterproofing works at level 16 | 20d | 2015-12-26 | 2016-01-17 | C-F-P-543, C-F-FF-884 SS | 121d | 0d | 184,877.04 |
| C-F-FF-754 |  | Installation of Raised Flooring at level 16 | 16d | 2016-03-13 | 2016-03-30 | C-F-CF-1287, C-F-CF-1277 | 135d | 0d |  |
| C-F-FF-734 |  | Implementation of E-poxy Resin at level 16 | 25d | 2016-03-31 | 2016-04-28 | C-F-CF-1287, C-F-CF-1277, C-F-FF-724, C-F-WF-754, C-F-FF-754, SD-CS-L16-612, C-F-P-2263 FF | 135d | 0d | 17,365.15 |
| C-F-FF-744 |  | Installation of Carpet tiles at level 16 | 12d | 2016-04-30 | 2016-05-12 | C-F-CF-1287, C-F-CF-1277, C-F-FF-724, C-F-FF-734, C-F-P-2263 FF | 135d | 0d |  |
|  | 4 | **Wall Finishes** |  | 2016-01-07 | 2016-07-04 |  |  |  |  |
| C-F-WF-724 |  | Plaster works at level 16 | 18d | 2016-01-07 | 2016-01-27 | C-F-P-543, C-F-WF-884 SS | 99d | 0d | 73,774.48 |
| C-F-WF-754 |  | Installation of Toilet Cubicals at level 16 | 5d | 2016-03-13 | 2016-03-17 | C-F-WF-724, C-F-WF-914 | 116d | 0d |  |
| C-F-WF-734 |  | Installation of Wall Cladding at level 16 | 20d | 2016-04-30 | 2016-05-22 | C-F-P-563, SD-CS-L16-632, C-F-FF-734, C-F-P-2273 FF | 166d | 12d | 542.11 |
| C-F-WF-744 |  | Wall Paint works at level 16 | 20d | 2016-06-12 | 2016-07-04 | C-F-P-553, C-F-WF-724, C-F-CF-1297, C-F-P-563, C-F-FF-734 FF+5d, C-MEP-FF-754 FF, C-F-DW-724 FF+5d, C-F-DW-734 FS+5d, C-F-P-2273 FF | 135d | 0d | 22,899.37 |
|  | 5 | **Doors & Windows** |  | 2016-02-02 | 2016-06-05 |  |  |  |  |
| C-F-DW-744 |  | Installation of Steel Door Sub-frame at level 16 | 8d | 2016-02-02 | 2016-02-11 | C-F-P-543 FF, SD-CS-L16-672, C-F-DW-904 | 102d | 0d | 10,411.18 |
| C-F-DW-724 |  | Installation of Steel Doors & Handrails at level 16 | 20d | 2016-04-30 | 2016-05-22 | C-F-DW-744, C-F-FF-754, C-F-FF-734, C-F-FF-754 FF | 167d | 32d | 73,543.49 |
| C-F-DW-734 |  | Installation of Wall & Corner Guard at level 16 | 20d | 2016-05-14 | 2016-06-05 | C-F-P-563, C-F-FF-734 SS, C-F-FF-734 FF, C-F-FF-744, C-F-P-683, C-F-P-503, C-F-P-413, C-F-P-353, C-F-P-233, C-F-P-383, C-F-P-323, C-F-P-293, C-F-P-443, C-F-P-263, C-F-P-173, C-F-P-113, C-F-P-003, C-F-DW-194 | 135d | 0d | 6,907.2 |
|  | 62 | **Finishes - Level 17** |  | 2015-08-10 | 2016-07-04 |  |  |  |  |
|  | 1 | **Partitions** |  | 2015-08-10 | 2016-02-13 |  |  |  |  |
| C-F-P-513 |  | Block Works & Fireproofing at level 17 | 14d | 2015-08-10 | 2015-08-25 | C-CS-L17-201, C-F-P-543, SD-CS-L17-1352 | 37d | 0d | 233,170.72 |
| C-F-P-523 |  | Installation of the Studs for Gypsum Board Partition at level 17 | 20d | 2015-08-16 | 2015-09-07 | C-F-P-513 SS+5d, C-F-P-223, SD-CS-L17-1372 | 68d | 0d | 282,628.74 |
| C-F-P-533 |  | Installation of Gypsum Board Partition & Insulation within the walls at level 17 | 25d | 2016-01-14 | 2016-02-13 | C-MEP-BMS-855, C-ELV-SMATV-855, C-ELV-CCTV-855, C-ELV-FA-855, C-ELV-MSPA-855, C-ELV-RMS-855, C-ELV-CS-855, C-MEP-E-1026, C-MEP-PD-855, C-P-SG-B-152 | 209d | 34d | 423,943.11 |
|  | 2 | **Ceiling Finishes** |  | 2015-08-16 | 2016-04-11 |  |  |  |  |
| C-F-CF-1257 |  | Installation of Ceiling thermal/accoustic insulation at level 17 | 5d | 2015-08-16 | 2015-08-20 | C-F-P-513 SS+5d | 205d | 115d | 8,930.82 |
| C-F-CF-1197 |  | Installation of Ceiling Support & Brackets at level 17 | 15d | 2015-12-21 | 2016-01-06 | C-F-CF-1257 FF, C-F-CF-1267 SS | 90d | 0d | 4,355.6 |
| C-F-CF-1237 |  | Installation of Smoke Curtains support & Equipments at level 17 | 8d | 2016-01-09 | 2016-01-17 | C-F-CF-1197 SS, C-F-CF-1307 | 74d | 0d | 88,617.15 |
| C-F-CF-1247 |  | Installation of Smoke Curtains at level 17 | 8d | 2016-01-18 | 2016-01-26 | C-F-CF-1237 | 152d | 13d | 265,851.44 |
| C-F-CF-1207 |  | Installation of Gypsum Ceiling at level 17 | 25d | 2016-02-13 | 2016-03-12 | C-F-CF-1197, C-F-CF-1237, C-MEP-BMS-875, C-ELV-SMATV-875, C-ELV-CCTV-875, C-ELV-FA-875, C-ELV-MSPA-875, C-ELV-RMS-875, C-ELV-CS-875, C-MEP-PD-875, C-MEP-PD-885, C-MEP-FF-694, C-MEP-FF-704, C-MEP-AC-1398, C-MEP-AC-1428, C-MEP-AC-1378, C-MEP-E-1036, SD-CS-L17-1432, C-F-CF-1247, C-P-SG-B-152 | 139d | 0d |  |
| C-F-CF-1217 |  | Istallation of Metal Ceiling at level 17 | 25d | 2016-02-13 | 2016-03-12 | C-F-CF-1197, C-F-CF-1237, C-MEP-BMS-875, C-ELV-SMATV-875, C-ELV-CCTV-875, C-ELV-FA-875, C-ELV-MSPA-875, C-ELV-RMS-875, C-ELV-CS-875, C-MEP-PD-875, C-MEP-PD-885, C-MEP-FF-694, C-MEP-FF-704, C-MEP-AC-1398, C-MEP-AC-1428, C-MEP-AC-1378, C-MEP-E-1036, C-F-CF-1247, C-P-SG-B-152 | 139d | 0d | 13,066.79 |
| C-F-CF-1227 |  | Ceiling Painting works at level 17 | 12d | 2016-03-29 | 2016-04-11 | C-F-CF-1207, C-MEP-FF-714 FF | 191d | 52d | 3,500.02 |

Notes:
- C-F-FF-724: Expenses: SW 64036.5; 2 120841
- C-F-FF-734: Expenses: 1 17365.2
- C-F-WF-724: Expenses: 1 73774.5
- C-F-WF-734: Expenses: 1 542.11
- C-F-WF-744: Expenses: 1 22899.4
- C-F-DW-744: Expenses: 1 10411.2
- C-F-DW-724: Expenses: 1 42310; 2 31233.5
- C-F-DW-734: Expenses: 1 6907.2
- C-F-P-513: Expenses: B 25136.8; F 208034
- C-F-P-523: Expenses: S 282629
- C-F-P-533: Expenses: G 423943
- C-F-CF-1257: Expenses: W 8930.82
- C-F-CF-1197: Expenses: 1 4355.6
- C-F-CF-1237: Expenses: CS 88617.1
- C-F-CF-1247: Expenses: S 265851
- C-F-CF-1217: Expenses: 1 13066.8
- C-F-CF-1227: Expenses: 1 3500.02

| ID | WBS | Activity | Duration | Start | Finish | Predecessors | Total float | Free float | Cost |
| --- | --- | --- | --- | --- | --- | --- | --- | --- | --- |
|  | 3 | **Floor Finishes** |  | 2015-12-26 | 2016-05-12 |  |  |  |  |
| C-F-FF-684 |  | Screed & Waterproofing works at level 17 | 20d | 2015-12-26 | 2016-01-17 | C-F-P-513, C-F-FF-724 SS | 121d | 0d | 189,642.16 |
| C-F-FF-714 |  | Installation of Raised Flooring at level 17 | 16d | 2016-03-13 | 2016-03-30 | C-F-CF-1217, C-F-CF-1207 | 139d | 0d |  |
| C-F-FF-694 |  | Implementation of E-poxy Resin at level 17 | 25d | 2016-03-31 | 2016-04-28 | C-F-CF-1217, C-F-CF-1207, C-F-FF-684, C-F-WF-714, C-F-FF-714, SD-CS-L17-1392, C-F-T-001 | 139d | 0d | 17,812.73 |
| C-F-FF-704 |  | Installation of Carpet tiles at level 17 | 12d | 2016-04-30 | 2016-05-12 | C-F-CF-1217, C-F-CF-1207, C-F-FF-684, C-F-FF-694 | 139d | 0d |  |
|  | 4 | **Wall Finishes** |  | 2016-01-07 | 2016-07-04 |  |  |  |  |
| C-F-WF-684 |  | Plaster works at level 17 | 18d | 2016-01-07 | 2016-01-27 | C-F-P-513, C-F-WF-724 SS | 99d | 0d | 75,675.98 |
| C-F-WF-714 |  | Installation of Toilet Cubicals at level 17 | 5d | 2016-03-19 | 2016-03-23 | C-F-WF-684, C-F-WF-754 | 116d | 0d |  |
| C-F-WF-694 |  | Installation of Wall Cladding at level 17 | 20d | 2016-04-30 | 2016-05-22 | C-F-P-533, SD-CS-L17-1412, C-F-FF-694 | 172d | 12d | 542.11 |
| C-F-WF-704 |  | Wall Paint works at level 17 | 20d | 2016-06-12 | 2016-07-04 | C-F-P-523, C-F-WF-684, C-F-CF-1227, C-F-P-533, C-F-FF-694 FF+5d, C-MEP-FF-714 FF, C-F-DW-684 FF+5d, C-F-DW-694 FS+5d, C-RF-001 | 139d | 1d | 23,489.59 |
|  | 5 | **Doors & Windows** |  | 2016-02-13 | 2016-06-05 |  |  |  |  |
| C-F-DW-704 |  | Installation of Steel Door Sub-frame at level 17 | 8d | 2016-02-13 | 2016-02-21 | C-F-P-513 FF, SD-CS-L17-1452, C-F-DW-744 | 102d | 0d | 10,411.18 |
| C-F-DW-684 |  | Installation of Steel Doors & Handrails at level 17 | 20d | 2016-04-30 | 2016-05-22 | C-F-DW-704, C-F-FF-714, C-F-FF-694, C-F-FF-714 FF | 171d | 32d | 73,543.49 |
| C-F-DW-694 |  | Installation of Wall & Corner Guard at level 17 | 20d | 2016-05-14 | 2016-06-05 | C-F-P-533, C-F-FF-694 SS, C-F-FF-694 FF, C-F-FF-704, C-F-P-563, C-F-P-683, C-F-P-503, C-F-P-413, C-F-P-353, C-F-P-233, C-F-P-383, C-F-P-323, C-F-P-293, C-F-P-443, C-F-P-263, C-F-P-173, C-F-P-113, C-F-P-003, C-F-DW-194 | 139d | 0d | 6,907.2 |
|  | 61 | **Finishes - Level 18** |  | 2015-08-12 | 2016-07-04 |  |  |  |  |
|  | 1 | **Partitions** |  | 2015-08-12 | 2016-02-15 |  |  |  |  |
| C-F-P-603 |  | Block Works & Fireproofing at level 18 | 14d | 2015-08-12 | 2015-08-27 | C-CS-L18-211, C-F-P-513 SS, SD-CS-L18-612 | 35d | 0d | 237,344.68 |
| C-F-P-613 |  | Installation of the Studs for Gypsum Board Partition at level 18 | 20d | 2015-08-18 | 2015-09-09 | C-F-P-603 SS+5d, C-F-P-343, SD-CS-L18-632 | 92d | 0d | 287,688.04 |
| C-F-P-623 |  | Installation of Gypsum Board Partition & Insulation within the walls at level 18 | 25d | 2016-01-17 | 2016-02-15 | C-MEP-BMS-1005, C-ELV-SMATV-1005, C-ELV-CCTV-1005, C-ELV-FA-1005, C-ELV-MSPA-1005, C-ELV-RMS-1005, C-ELV-CS-1005, C-MEP-E-1206, C-MEP-PD-1005, C-P-SG-B-162 | 207d | 32d | 431,532.05 |
|  | 2 | **Ceiling Finishes** |  | 2015-08-18 | 2016-04-11 |  |  |  |  |
| C-F-CF-1467 |  | Installation of Ceiling thermal/accoustic insulation at level 18 | 5d | 2015-08-18 | 2015-08-23 | C-F-P-603 SS+5d | 211d | 113d | 9,090.69 |
| C-F-CF-1407 |  | Installation of Ceiling Support & Brackets at level 18 | 15d | 2015-12-21 | 2016-01-06 | C-F-CF-1467 FF, C-F-CF-1197 SS | 98d | 0d | 4,433.57 |
| C-F-CF-1447 |  | Installation of Smoke Curtains support & Equipments at level 18 | 8d | 2016-01-18 | 2016-01-26 | C-F-CF-1407 SS, C-F-CF-1237 | 74d | 0d | 88,617.15 |
| C-F-CF-1457 |  | Installation of Smoke Curtains at level 18 | 8d | 2016-01-27 | 2016-02-04 | C-F-CF-1447 | 91d | 5d | 265,851.44 |
| C-F-CF-1417 |  | Installation of Gypsum Ceiling at level 18 | 25d | 2016-02-13 | 2016-03-12 | C-F-CF-1407, C-F-CF-1447, C-MEP-BMS-1025, C-ELV-SMATV-1025, C-ELV-CCTV-1025, C-ELV-FA-1025, C-ELV-MSPA-1025, C-ELV-RMS-1025, C-ELV-CS-1025, C-MEP-PD-1025, C-MEP-PD-1035, C-MEP-FF-814, C-MEP-FF-824, C-MEP-AC-1638, C-MEP-AC-1668, C-MEP-AC-1618, C-MEP-E-1216, SD-CS-L18-692, C-F-CF-1457, C-P-SG-B-162 | 86d | 0d |  |
| C-F-CF-1427 |  | Istallation of Metal Ceiling at level 18 | 25d | 2016-02-13 | 2016-03-12 | C-F-CF-1407, C-F-CF-1447, C-MEP-BMS-1025, C-ELV-SMATV-1025, C-ELV-CCTV-1025, C-ELV-FA-1025, C-ELV-MSPA-1025, C-ELV-RMS-1025, C-ELV-CS-1025, C-MEP-PD-1025, C-MEP-PD-1035, C-MEP-FF-814, C-MEP-FF-824, C-MEP-AC-1638, C-MEP-AC-1668, C-MEP-AC-1618, C-MEP-E-1216, C-F-CF-1457, C-P-SG-B-162 | 86d | 0d | 13,300.7 |
| C-F-CF-1437 |  | Ceiling Painting works at level 18 | 12d | 2016-03-29 | 2016-04-11 | C-F-CF-1417, C-MEP-FF-834 FF | 191d | 52d | 3,562.67 |

Notes:
- C-F-FF-684: Expenses: SW 65687; 2 123955
- C-F-FF-694: Expenses: 1 17812.7
- C-F-WF-684: Expenses: 1 75676
- C-F-WF-694: Expenses: 1 542.11
- C-F-WF-704: Expenses: 1 23489.6
- C-F-DW-704: Expenses: 1 10411.2
- C-F-DW-684: Expenses: 1 42310; 2 31233.5
- C-F-DW-694: Expenses: 1 6907.2
- C-F-P-603: Expenses: B 25586.7; F 211758
- C-F-P-613: Expenses: S 287688
- C-F-P-623: Expenses: G 431532
- C-F-CF-1467: Expenses: W 9090.69
- C-F-CF-1407: Expenses: 1 4433.57
- C-F-CF-1447: Expenses: CS 88617.1
- C-F-CF-1457: Expenses: S 265851
- C-F-CF-1427: Expenses: 1 13300.7
- C-F-CF-1437: Expenses: 1 3562.67

| ID | WBS | Activity | Duration | Start | Finish | Predecessors | Total float | Free float | Cost |
| --- | --- | --- | --- | --- | --- | --- | --- | --- | --- |
|  | 3 | **Floor Finishes** |  | 2015-12-26 | 2016-05-12 |  |  |  |  |
| C-F-FF-804 |  | Screed & Waterproofing works at level 18 | 20d | 2015-12-26 | 2016-01-17 | C-F-P-603, C-F-FF-684 SS | 121d | 0d | 193,036.91 |
| C-F-FF-834 |  | Installation of Raised Flooring at level 18 | 16d | 2016-03-13 | 2016-03-30 | C-F-CF-1427, C-F-CF-1417 | 139d | 0d |  |
| C-F-FF-814 |  | Implementation of E-poxy Resin at level 18 | 25d | 2016-03-31 | 2016-04-28 | C-F-CF-1427, C-F-CF-1417, C-F-FF-804, C-F-WF-834, C-F-FF-834, SD-CS-L18-652, C-F-P-2323 FF | 139d | 0d | 18,131.59 |
| C-F-FF-824 |  | Installation of Carpet tiles at level 18 | 12d | 2016-04-30 | 2016-05-12 | C-F-CF-1427, C-F-CF-1417, C-F-FF-804, C-F-FF-814, C-F-P-2323 FF | 139d | 0d |  |
|  | 4 | **Wall Finishes** |  | 2016-01-07 | 2016-07-04 |  |  |  |  |
| C-F-WF-804 |  | Plaster works at level 18 | 18d | 2016-01-07 | 2016-01-27 | C-F-P-603, C-F-WF-684 SS | 99d | 0d | 77,030.65 |
| C-F-WF-834 |  | Installation of Toilet Cubicals at level 18 | 5d | 2016-03-24 | 2016-03-29 | C-F-WF-804, C-F-WF-714 | 116d | 0d |  |
| C-F-WF-814 |  | Installation of Wall Cladding at level 18 | 20d | 2016-04-30 | 2016-05-22 | C-F-P-623, SD-CS-L18-672, C-F-FF-814, C-F-P-2333 FF | 172d | 12d | 542.11 |
| C-F-WF-824 |  | Wall Paint works at level 18 | 20d | 2016-06-12 | 2016-07-04 | C-F-P-613, C-F-WF-804, C-F-CF-1437, C-F-P-623, C-F-FF-814 FF+5d, C-MEP-FF-834 FF, C-F-DW-804 FF+5d, C-F-DW-814 FS+5d, C-F-P-2333 FF | 139d | 12d | 23,910.07 |
|  | 5 | **Doors & Windows** |  | 2016-02-22 | 2016-06-05 |  |  |  |  |
| C-F-DW-824 |  | Installation of Steel Door Sub-frame at level 18 | 8d | 2016-02-22 | 2016-03-01 | C-F-P-603 FF, SD-CS-L18-712, C-F-DW-704 | 102d | 0d | 10,411.18 |
| C-F-DW-804 |  | Installation of Steel Doors & Handrails at level 18 | 20d | 2016-04-30 | 2016-05-22 | C-F-DW-824, C-F-FF-834, C-F-FF-814, C-F-FF-834 FF | 171d | 32d | 73,543.49 |
| C-F-DW-814 |  | Installation of Wall & Corner Guard at level 18 | 20d | 2016-05-14 | 2016-06-05 | C-F-P-623, C-F-FF-814 SS, C-F-FF-814 FF, C-F-FF-824, C-F-P-533, C-F-P-563, C-F-P-683, C-F-P-503, C-F-P-413, C-F-P-353, C-F-P-233, C-F-P-383, C-F-P-323, C-F-P-293, C-F-P-443, C-F-P-263, C-F-P-173, C-F-P-113, C-F-P-003, C-F-DW-194 | 139d | 0d | 6,907.2 |
|  | 60 | **Finishes - Level 19** |  | 2015-08-20 | 2016-07-12 |  |  |  |  |
|  | 1 | **Partitions** |  | 2015-08-20 | 2016-02-17 |  |  |  |  |
| C-F-P-453 |  | Block Works & Fireproofing at level 19 | 14d | 2015-08-20 | 2015-09-05 | C-CS-L19-221, C-F-P-603 SS, SD-CS-L19-632 | 28d | 0d | 239,741.07 |
| C-F-P-463 |  | Installation of the Studs for Gypsum Board Partition at level 19 | 20d | 2015-08-26 | 2015-09-17 | C-F-P-453 SS+5d, C-F-P-403, SD-CS-L19-652 | 71d | 0d | 290,592.73 |
| C-F-P-473 |  | Installation of Gypsum Board Partition & Insulation within the walls at level 19 | 25d | 2016-01-19 | 2016-02-17 | C-MEP-BMS-755, C-ELV-SMATV-755, C-ELV-CCTV-755, C-ELV-FA-755, C-ELV-MSPA-755, C-ELV-RMS-755, C-ELV-CS-755, C-MEP-E-906, C-MEP-PD-755, C-P-SG-B-172 | 205d | 30d | 435,889.09 |
|  | 2 | **Ceiling Finishes** |  | 2015-08-26 | 2016-04-11 |  |  |  |  |
| C-F-CF-1117 |  | Installation of Ceiling thermal/accoustic insulation at level 19 | 5d | 2015-08-26 | 2015-08-31 | C-F-P-453 SS+5d | 205d | 106d | 9,182.48 |
| C-F-CF-1057 |  | Installation of Ceiling Support & Brackets at level 19 | 15d | 2015-12-21 | 2016-01-06 | C-F-CF-1117 FF, C-F-CF-1407 SS | 99d | 0d | 4,478.33 |
| C-F-CF-1097 |  | Installation of Smoke Curtains support & Equipments at level 19 | 8d | 2016-01-27 | 2016-02-04 | C-F-CF-1057 SS, C-F-CF-1447 | 74d | 0d | 88,617.15 |
| C-F-CF-1107 |  | Installation of Smoke Curtains at level 19 | 8d | 2016-02-06 | 2016-02-15 | C-F-CF-1097 | 83d | 0d | 265,851.44 |
| C-F-CF-1067 |  | Installation of Gypsum Ceiling at level 19 | 25d | 2016-02-16 | 2016-03-15 | C-F-CF-1057, C-F-CF-1097, C-MEP-BMS-775, C-ELV-SMATV-775, C-ELV-CCTV-775, C-ELV-FA-775, C-ELV-MSPA-775, C-ELV-RMS-775, C-ELV-CS-775, C-MEP-PD-775, C-MEP-PD-785, C-MEP-FF-614, C-MEP-FF-624, C-MEP-AC-1238, C-MEP-AC-1268, C-MEP-AC-1218, C-MEP-E-916, SD-CS-L19-712, C-F-CF-1107, C-P-SG-B-172 | 83d | 0d |  |
| C-F-CF-1077 |  | Istallation of Metal Ceiling at level 19 | 25d | 2016-02-16 | 2016-03-15 | C-F-CF-1057, C-F-CF-1097, C-MEP-BMS-775, C-ELV-SMATV-775, C-ELV-CCTV-775, C-ELV-FA-775, C-ELV-MSPA-775, C-ELV-RMS-775, C-ELV-CS-775, C-MEP-PD-775, C-MEP-PD-785, C-MEP-FF-614, C-MEP-FF-624, C-MEP-AC-1238, C-MEP-AC-1268, C-MEP-AC-1218, C-MEP-E-916, C-F-CF-1107, C-P-SG-B-172 | 83d | 0d | 13,434.99 |
| C-F-CF-1087 |  | Ceiling Painting works at level 19 | 12d | 2016-03-29 | 2016-04-11 | C-F-CF-1067, C-MEP-FF-634 FF | 191d | 56d | 3,598.64 |

Notes:
- C-F-FF-804: Expenses: SW 66862.9; 2 126174
- C-F-FF-814: Expenses: 1 18131.6
- C-F-WF-804: Expenses: 1 77030.6
- C-F-WF-814: Expenses: 1 542.11
- C-F-WF-824: Expenses: 1 23910.1
- C-F-DW-824: Expenses: 1 10411.2
- C-F-DW-804: Expenses: 1 42310; 2 31233.5
- C-F-DW-814: Expenses: 1 6907.2
- C-F-P-453: Expenses: B 25845.1; F 213896
- C-F-P-463: Expenses: S 290593
- C-F-P-473: Expenses: G 435889
- C-F-CF-1117: Expenses: W 9182.48
- C-F-CF-1057: Expenses: 1 4478.33
- C-F-CF-1097: Expenses: CS 88617.1
- C-F-CF-1107: Expenses: S 265851
- C-F-CF-1077: Expenses: 1 13435
- C-F-CF-1087: Expenses: 1 3598.64

| ID | WBS | Activity | Duration | Start | Finish | Predecessors | Total float | Free float | Cost |
| --- | --- | --- | --- | --- | --- | --- | --- | --- | --- |
|  | 3 | **Floor Finishes** |  | 2015-12-26 | 2016-05-17 |  |  |  |  |
| C-F-FF-604 |  | Screed & Waterproofing works at level 19 | 20d | 2015-12-26 | 2016-01-17 | C-F-P-453, C-F-FF-804 SS | 121d | 0d | 194,985.95 |
| C-F-FF-634 |  | Installation of Raised Flooring at level 19 | 16d | 2016-03-16 | 2016-04-03 | C-F-CF-1077, C-F-CF-1067 | 136d | 1d |  |
| C-F-FF-614 |  | Implementation of E-poxy Resin at level 19 | 25d | 2016-04-05 | 2016-05-03 | C-F-CF-1077, C-F-CF-1067, C-F-FF-604, C-F-WF-634, C-F-FF-634, SD-CS-L19-672, C-F-P-2353 FF | 135d | 0d | 18,314.66 |
| C-F-FF-624 |  | Installation of Carpet tiles at level 19 | 12d | 2016-05-04 | 2016-05-17 | C-F-CF-1077, C-F-CF-1067, C-F-FF-604, C-F-FF-614, C-F-P-2353 FF | 135d | 0d |  |
|  | 4 | **Wall Finishes** |  | 2016-01-07 | 2016-07-12 |  |  |  |  |
| C-F-WF-604 |  | Plaster works at level 19 | 18d | 2016-01-07 | 2016-01-27 | C-F-P-453, C-F-WF-804 SS | 99d | 0d | 77,808.4 |
| C-F-WF-634 |  | Installation of Toilet Cubicals at level 19 | 5d | 2016-03-30 | 2016-04-04 | C-F-WF-604, C-F-WF-834 | 116d | 0d |  |
| C-F-WF-614 |  | Installation of Wall Cladding at level 19 | 20d | 2016-05-04 | 2016-05-26 | C-F-P-473, SD-CS-L19-692, C-F-FF-614, C-F-P-2363 FF | 168d | 28d | 542.11 |
| C-F-WF-624 |  | Wall Paint works at level 19 | 20d | 2016-06-16 | 2016-07-12 | C-F-P-463, C-F-WF-604, C-F-CF-1087, C-F-P-473, C-F-FF-614 FF+5d, C-MEP-FF-634 FF, C-F-DW-604 FF+5d, C-F-DW-614 FS+5d, C-F-P-2363 FF | 135d | 8d | 24,151.49 |
|  | 5 | **Doors & Windows** |  | 2016-03-02 | 2016-06-09 |  |  |  |  |
| C-F-DW-624 |  | Installation of Steel Door Sub-frame at level 19 | 8d | 2016-03-02 | 2016-03-10 | C-F-P-453 FF, SD-CS-L19-732, C-F-DW-824 | 102d | 0d | 10,411.18 |
| C-F-DW-604 |  | Installation of Steel Doors & Handrails at level 19 | 20d | 2016-05-04 | 2016-05-26 | C-F-DW-624, C-F-FF-634, C-F-FF-614, C-F-FF-634 FF | 167d | 32d | 73,543.49 |
| C-F-DW-614 |  | Installation of Wall & Corner Guard at level 19 | 20d | 2016-05-18 | 2016-06-09 | C-F-P-473, C-F-FF-614 SS, C-F-FF-614 FF, C-F-FF-624, C-F-P-623, C-F-P-533, C-F-P-563, C-F-P-683, C-F-P-503, C-F-P-413, C-F-P-353, C-F-P-233, C-F-P-383, C-F-P-323, C-F-P-293, C-F-P-443, C-F-P-263, C-F-P-173, C-F-P-113, C-F-P-003, C-F-DW-194 | 135d | 0d | 6,907.2 |
|  | 59 | **Finishes - Level 20** |  | 2015-08-29 | 2016-07-31 |  |  |  |  |
|  | 1 | **Partitions** |  | 2015-08-29 | 2016-02-20 |  |  |  |  |
| C-F-P-573 |  | Block Works & Fireproofing at level 20 | 14d | 2015-08-29 | 2015-09-13 | C-CS-L20-231, C-F-P-453 SS, SD-CS-L20-652 | 21d | 0d | 241,658.18 |
| C-F-P-583 |  | Installation of the Studs for Gypsum Board Partition at level 20 | 20d | 2015-09-03 | 2015-09-29 | C-F-P-573 SS+5d, C-F-P-493, SD-CS-L20-672 | 88d | 0d | 292,916.48 |
| C-F-P-593 |  | Installation of Gypsum Board Partition & Insulation within the walls at level 20 | 25d | 2016-01-21 | 2016-02-20 | C-MEP-BMS-955, C-ELV-SMATV-955, C-ELV-CCTV-955, C-ELV-FA-955, C-ELV-MSPA-955, C-ELV-RMS-955, C-ELV-CS-955, C-MEP-E-1146, C-MEP-PD-955, C-P-SG-B-282 | 203d | 28d | 439,374.73 |
|  | 2 | **Ceiling Finishes** |  | 2015-09-03 | 2016-04-27 |  |  |  |  |
| C-F-CF-1397 |  | Installation of Ceiling thermal/accoustic insulation at level 20 | 5d | 2015-09-03 | 2015-09-08 | C-F-P-573 SS+5d | 198d | 99d | 9,255.91 |
| C-F-CF-1337 |  | Installation of Ceiling Support & Brackets at level 20 | 15d | 2015-12-21 | 2016-01-06 | C-F-CF-1397 FF, C-F-CF-1057 SS | 99d | 0d | 4,514.14 |
| C-F-CF-1377 |  | Installation of Smoke Curtains support & Equipments at level 20 | 8d | 2016-02-06 | 2016-02-15 | C-F-CF-1337 SS, C-F-CF-1097 | 74d | 0d | 88,617.15 |
| C-F-CF-1387 |  | Installation of Smoke Curtains at level 20 | 8d | 2016-02-16 | 2016-02-24 | C-F-CF-1377 | 84d | 9d | 265,851.44 |
| C-F-CF-1347 |  | Installation of Gypsum Ceiling at level 20 | 25d | 2016-03-07 | 2016-04-04 | C-F-CF-1337, C-F-CF-1377, C-MEP-BMS-975, C-ELV-SMATV-975, C-ELV-CCTV-975, C-ELV-FA-975, C-ELV-MSPA-975, C-ELV-RMS-975, C-ELV-CS-975, C-MEP-PD-975, C-MEP-PD-985, C-MEP-FF-774, C-MEP-FF-784, C-MEP-AC-1558, C-MEP-AC-1588, C-MEP-AC-1538, C-MEP-E-1156, SD-CS-L20-732, C-F-CF-1387, C-P-SG-B-282 | 75d | 0d |  |
| C-F-CF-1357 |  | Istallation of Metal Ceiling at level 20 | 25d | 2016-03-07 | 2016-04-04 | C-F-CF-1337, C-F-CF-1377, C-MEP-BMS-975, C-ELV-SMATV-975, C-ELV-CCTV-975, C-ELV-FA-975, C-ELV-MSPA-975, C-ELV-RMS-975, C-ELV-CS-975, C-MEP-PD-975, C-MEP-PD-985, C-MEP-FF-774, C-MEP-FF-784, C-MEP-AC-1558, C-MEP-AC-1588, C-MEP-AC-1538, C-MEP-E-1156, C-F-CF-1387, C-P-SG-B-282 | 75d | 0d | 13,542.43 |
| C-F-CF-1367 |  | Ceiling Painting works at level 20 | 12d | 2016-04-14 | 2016-04-27 | C-F-CF-1347, C-MEP-FF-794 FF | 177d | 58d | 3,627.42 |

Notes:
- C-F-FF-604: Expenses: SW 67538; 2 127448
- C-F-FF-614: Expenses: 1 18314.7
- C-F-WF-604: Expenses: 1 77808.4
- C-F-WF-614: Expenses: 1 542.11
- C-F-WF-624: Expenses: 1 24151.5
- C-F-DW-624: Expenses: 1 10411.2
- C-F-DW-604: Expenses: 1 42310; 2 31233.5
- C-F-DW-614: Expenses: 1 6907.2
- C-F-P-573: Expenses: B 26051.7; F 215606
- C-F-P-583: Expenses: S 292916
- C-F-P-593: Expenses: G 439375
- C-F-CF-1397: Expenses: W 9255.91
- C-F-CF-1337: Expenses: 1 4514.14
- C-F-CF-1377: Expenses: CS 88617.1
- C-F-CF-1387: Expenses: S 265851
- C-F-CF-1357: Expenses: 1 13542.4
- C-F-CF-1367: Expenses: 1 3627.42

| ID | WBS | Activity | Duration | Start | Finish | Predecessors | Total float | Free float | Cost |
| --- | --- | --- | --- | --- | --- | --- | --- | --- | --- |
|  | 3 | **Floor Finishes** |  | 2015-12-26 | 2016-06-05 |  |  |  |  |
| C-F-FF-764 |  | Screed & Waterproofing works at level 20 | 20d | 2015-12-26 | 2016-01-17 | C-F-P-573, C-F-FF-604 SS | 121d | 0d | 196,545.17 |
| C-F-FF-794 |  | Installation of Raised Flooring at level 20 | 16d | 2016-04-05 | 2016-04-23 | C-F-CF-1357, C-F-CF-1347 | 119d | 0d |  |
| C-F-FF-774 |  | Implementation of E-poxy Resin at level 20 | 25d | 2016-04-24 | 2016-05-22 | C-F-CF-1357, C-F-CF-1347, C-F-FF-764, C-F-WF-794, C-F-FF-794, SD-CS-L20-692, C-F-P-2383 FF | 119d | 0d | 18,461.12 |
| C-F-FF-784 |  | Installation of Carpet tiles at level 20 | 12d | 2016-05-23 | 2016-06-05 | C-F-CF-1357, C-F-CF-1347, C-F-FF-764, C-F-FF-774, C-F-P-2383 FF | 119d | 0d |  |
|  | 4 | **Wall Finishes** |  | 2016-01-28 | 2016-07-31 |  |  |  |  |
| C-F-WF-764 |  | Plaster works at level 20 | 18d | 2016-01-28 | 2016-02-18 | C-F-P-573, C-F-WF-604 | 99d | 0d | 78,430.61 |
| C-F-WF-794 |  | Installation of Toilet Cubicals at level 20 | 5d | 2016-04-05 | 2016-04-10 | C-F-WF-764, C-F-WF-634 | 116d | 0d |  |
| C-F-WF-774 |  | Installation of Wall Cladding at level 20 | 20d | 2016-05-23 | 2016-06-14 | C-F-P-593, SD-CS-L20-712, C-F-FF-774, C-F-P-2393 FF | 152d | 17d | 542.11 |
| C-F-WF-784 |  | Wall Paint works at level 20 | 20d | 2016-07-09 | 2016-07-31 | C-F-P-583, C-F-WF-764, C-F-CF-1367, C-F-P-593, C-F-FF-774 FF+5d, C-MEP-FF-794 FF, C-F-DW-764 FF+5d, C-F-DW-774 FS+5d, C-F-P-2393 FF | 119d | 0d | 24,344.62 |
|  | 5 | **Doors & Windows** |  | 2016-03-12 | 2016-06-28 |  |  |  |  |
| C-F-DW-784 |  | Installation of Steel Door Sub-frame at level 20 | 8d | 2016-03-12 | 2016-03-20 | C-F-P-573 FF, SD-CS-L20-752, C-F-DW-624 | 102d | 0d | 10,411.18 |
| C-F-DW-764 |  | Installation of Steel Doors & Handrails at level 20 | 20d | 2016-05-23 | 2016-06-14 | C-F-DW-784, C-F-FF-794, C-F-FF-774, C-F-FF-794 FF | 151d | 32d | 73,543.49 |
| C-F-DW-774 |  | Installation of Wall & Corner Guard at level 20 | 20d | 2016-06-06 | 2016-06-28 | C-F-P-593, C-F-FF-774 SS, C-F-FF-774 FF, C-F-FF-784, C-F-P-473, C-F-P-623, C-F-P-533, C-F-P-563, C-F-P-683, C-F-P-503, C-F-P-413, C-F-P-353, C-F-P-233, C-F-P-383, C-F-P-323, C-F-P-293, C-F-P-443, C-F-P-263, C-F-P-173, C-F-P-113, C-F-P-003, C-F-DW-194 | 119d | 0d | 6,907.2 |
|  | 58 | **Finishes - Level 21** |  | 2015-09-14 | 2016-07-31 |  |  |  |  |
|  | 1 | **Partitions** |  | 2015-09-14 | 2016-02-22 |  |  |  |  |
| C-F-P-633 |  | Block Works & Fireproofing at level 21 | 14d | 2015-09-14 | 2015-10-03 | C-CS-L21-241, C-F-P-573, SD-CS-L21-672 | 21d | 0d | 243,098.31 |
| C-F-P-643 |  | Installation of the Studs for Gypsum Board Partition at level 21 | 20d | 2015-09-23 | 2015-10-15 | C-F-P-633 SS+5d, C-F-P-673, SD-CS-L21-692 | 54d | 0d | 294,662.07 |
| C-F-P-653 |  | Installation of Gypsum Board Partition & Insulation within the walls at level 21 | 25d | 2016-01-24 | 2016-02-22 | C-MEP-BMS-1055, C-ELV-SMATV-1055, C-ELV-CCTV-1055, C-ELV-FA-1055, C-ELV-MSPA-1055, C-ELV-RMS-1055, C-ELV-CS-1055, C-MEP-E-1266, C-MEP-PD-1055, C-P-SG-B-292 | 201d | 26d | 441,993.11 |
|  | 2 | **Ceiling Finishes** |  | 2015-09-23 | 2016-04-20 |  |  |  |  |
| C-F-CF-1537 |  | Installation of Ceiling thermal/accoustic insulation at level 21 | 5d | 2015-09-23 | 2015-09-28 | C-F-P-633 SS+5d | 184d | 85d | 9,311.07 |
| C-F-CF-1477 |  | Installation of Ceiling Support & Brackets at level 21 | 15d | 2015-12-21 | 2016-01-06 | C-F-CF-1537 FF, C-F-CF-1337 SS | 99d | 0d | 4,541.04 |
| C-F-CF-1517 |  | Installation of Smoke Curtains support & Equipments at level 21 | 8d | 2016-02-16 | 2016-02-24 | C-F-CF-1477 SS, C-F-CF-1377 | 74d | 0d | 88,617.15 |
| C-F-CF-1527 |  | Installation of Smoke Curtains at level 21 | 8d | 2016-02-25 | 2016-03-05 | C-F-CF-1517 | 84d | 1d | 265,851.44 |
| C-F-CF-1487 |  | Installation of Gypsum Ceiling at level 21 | 25d | 2016-03-07 | 2016-04-04 | C-F-CF-1477, C-F-CF-1517, C-MEP-BMS-1075, C-ELV-SMATV-1075, C-ELV-CCTV-1075, C-ELV-FA-1075, C-ELV-MSPA-1075, C-ELV-RMS-1075, C-ELV-CS-1075, C-MEP-PD-1075, C-MEP-PD-1085, C-MEP-FF-854, C-MEP-FF-864, C-MEP-AC-1718, C-MEP-AC-1748, C-MEP-AC-1698, C-MEP-E-1276, SD-CS-L21-752, C-F-CF-1527, C-P-SG-B-292 | 83d | 0d |  |
| C-F-CF-1497 |  | Istallation of Metal Ceiling at level 21 | 25d | 2016-03-07 | 2016-04-04 | C-F-CF-1477, C-F-CF-1517, C-MEP-BMS-1075, C-ELV-SMATV-1075, C-ELV-CCTV-1075, C-ELV-FA-1075, C-ELV-MSPA-1075, C-ELV-RMS-1075, C-ELV-CS-1075, C-MEP-PD-1075, C-MEP-PD-1085, C-MEP-FF-854, C-MEP-FF-864, C-MEP-AC-1718, C-MEP-AC-1748, C-MEP-AC-1698, C-MEP-E-1276, C-F-CF-1527, C-P-SG-B-292 | 83d | 0d | 13,623.13 |
| C-F-CF-1507 |  | Ceiling Painting works at level 21 | 12d | 2016-04-07 | 2016-04-20 | C-F-CF-1487, C-MEP-FF-874 FF | 183d | 64d | 3,649.04 |

Notes:
- C-F-FF-764: Expenses: SW 68078; 2 128467
- C-F-FF-774: Expenses: 1 18461.1
- C-F-WF-764: Expenses: 1 78430.6
- C-F-WF-774: Expenses: 1 542.11
- C-F-WF-784: Expenses: 1 24344.6
- C-F-DW-784: Expenses: 1 10411.2
- C-F-DW-764: Expenses: 1 42310; 2 31233.5
- C-F-DW-774: Expenses: 1 6907.2
- C-F-P-633: Expenses: B 26207; F 216891
- C-F-P-643: Expenses: S 294662
- C-F-P-653: Expenses: G 441993
- C-F-CF-1537: Expenses: W 9311.07
- C-F-CF-1477: Expenses: 1 4541.04
- C-F-CF-1517: Expenses: CS 88617.1
- C-F-CF-1527: Expenses: S 265851
- C-F-CF-1497: Expenses: 1 13623.1
- C-F-CF-1507: Expenses: 1 3649.04

| ID | WBS | Activity | Duration | Start | Finish | Predecessors | Total float | Free float | Cost |
| --- | --- | --- | --- | --- | --- | --- | --- | --- | --- |
|  | 3 | **Floor Finishes** |  | 2016-01-18 | 2016-06-05 |  |  |  |  |
| C-F-FF-844 |  | Screed & Waterproofing works at level 21 | 20d | 2016-01-18 | 2016-02-09 | C-F-P-633, C-F-FF-764 | 121d | 0d | 197,716.45 |
| C-F-FF-874 |  | Installation of Raised Flooring at level 21 | 16d | 2016-04-05 | 2016-04-23 | C-F-CF-1497, C-F-CF-1487 | 119d | 0d |  |
| C-F-FF-854 |  | Implementation of E-poxy Resin at level 21 | 25d | 2016-04-24 | 2016-05-22 | C-F-CF-1497, C-F-CF-1487, C-F-FF-844, C-F-WF-874, C-F-FF-874, SD-CS-L21-712, C-F-P-2413 FF | 119d | 0d | 18,571.13 |
| C-F-FF-864 |  | Installation of Carpet tiles at level 21 | 12d | 2016-05-23 | 2016-06-05 | C-F-CF-1497, C-F-CF-1487, C-F-FF-844, C-F-FF-854, C-F-P-2413 FF | 119d | 0d |  |
|  | 4 | **Wall Finishes** |  | 2016-01-28 | 2016-07-31 |  |  |  |  |
| C-F-WF-844 |  | Plaster works at level 21 | 18d | 2016-01-28 | 2016-02-18 | C-F-P-633, C-F-WF-764 SS | 99d | 0d | 78,898 |
| C-F-WF-874 |  | Installation of Toilet Cubicals at level 21 | 5d | 2016-04-11 | 2016-04-16 | C-F-WF-844, C-F-WF-794 | 116d | 0d |  |
| C-F-WF-854 |  | Installation of Wall Cladding at level 21 | 20d | 2016-05-23 | 2016-06-14 | C-F-P-653, SD-CS-L21-732, C-F-FF-854, C-F-P-2423 FF | 152d | 12d | 542.11 |
| C-F-WF-864 |  | Wall Paint works at level 21 | 20d | 2016-07-09 | 2016-07-31 | C-F-P-643, C-F-WF-844, C-F-CF-1507, C-F-P-653, C-F-FF-854 FF+5d, C-MEP-FF-874 FF, C-F-DW-844 FF+5d, C-F-DW-854 FS+5d, C-F-P-2423 FF | 119d | 0d | 24,489.69 |
|  | 5 | **Doors & Windows** |  | 2016-03-21 | 2016-06-28 |  |  |  |  |
| C-F-DW-864 |  | Installation of Steel Door Sub-frame at level 21 | 8d | 2016-03-21 | 2016-03-29 | C-F-P-633 FF, SD-CS-L21-772, C-F-DW-784 | 102d | 0d | 10,411.18 |
| C-F-DW-844 |  | Installation of Steel Doors & Handrails at level 21 | 20d | 2016-05-23 | 2016-06-14 | C-F-DW-864, C-F-FF-874, C-F-FF-854, C-F-FF-874 FF | 151d | 32d | 73,543.49 |
| C-F-DW-854 |  | Installation of Wall & Corner Guard at level 21 | 20d | 2016-06-06 | 2016-06-28 | C-F-P-653, C-F-FF-854 SS, C-F-FF-854 FF, C-F-FF-864, C-F-P-593, C-F-P-473, C-F-P-623, C-F-P-533, C-F-P-563, C-F-P-683, C-F-P-503, C-F-P-413, C-F-P-353, C-F-P-233, C-F-P-383, C-F-P-323, C-F-P-293, C-F-P-443, C-F-P-263, C-F-P-173, C-F-P-113, C-F-P-003, C-F-DW-194 | 119d | 0d | 6,907.2 |
|  | 57 | **Finishes - Level 22** |  | 2015-09-14 | 2016-08-08 |  |  |  |  |
|  | 1 | **Partitions** |  | 2015-09-14 | 2016-02-04 |  |  |  |  |
| C-F-P-723 |  | Block Works & Fireproofing at level 22 | 14d | 2015-09-14 | 2015-10-03 | C-CS-L22-251, C-F-P-633 SS, SD-CS-L22-692 | 21d | 0d | 243,965.35 |
| C-F-P-733 |  | Installation of the Studs for Gypsum Board Partition at level 22 | 20d | 2015-09-23 | 2015-10-15 | C-F-P-723 SS+5d, C-F-P-553, SD-CS-L22-712 | 84d | 0d | 295,713.03 |
| C-F-P-743 |  | Installation of Gypsum Board Partition & Insulation within the walls at level 22 | 25d | 2016-01-07 | 2016-02-04 | C-MEP-BMS-1205, C-ELV-SMATV-1205, C-ELV-CCTV-1205, C-ELV-FA-1205, C-ELV-MSPA-1205, C-ELV-RMS-1205, C-ELV-CS-1205, C-MEP-E-1446, C-MEP-PD-1205 | 215d | 40d | 443,569.55 |
|  | 2 | **Ceiling Finishes** |  | 2015-09-23 | 2016-04-28 |  |  |  |  |
| C-F-CF-1747 |  | Installation of Ceiling thermal/accoustic insulation at level 22 | 5d | 2015-09-23 | 2015-09-28 | C-F-P-723 SS+5d | 184d | 85d | 9,344.28 |
| C-F-CF-1687 |  | Installation of Ceiling Support & Brackets at level 22 | 15d | 2015-12-21 | 2016-01-06 | C-F-CF-1747 FF, C-F-CF-1477 SS | 99d | 0d | 4,557.24 |
| C-F-CF-1727 |  | Installation of Smoke Curtains support & Equipments at level 22 | 8d | 2016-02-25 | 2016-03-05 | C-F-CF-1687 SS, C-F-CF-1517 | 74d | 0d | 88,617.15 |
| C-F-CF-1737 |  | Installation of Smoke Curtains at level 22 | 8d | 2016-03-06 | 2016-03-14 | C-F-CF-1727 | 79d | 0d | 265,851.44 |
| C-F-CF-1697 |  | Installation of Gypsum Ceiling at level 22 | 25d | 2016-03-15 | 2016-04-12 | C-F-CF-1687, C-F-CF-1727, C-MEP-BMS-1225, C-ELV-SMATV-1225, C-ELV-CCTV-1225, C-ELV-FA-1225, C-ELV-MSPA-1225, C-ELV-RMS-1225, C-ELV-CS-1225, C-MEP-PD-1225, C-MEP-PD-1235, C-MEP-FF-974, C-MEP-FF-984, C-MEP-AC-1958, C-MEP-AC-1988, C-MEP-AC-1938, C-MEP-E-1456, SD-CS-L22-772, C-F-CF-1737, C-P-SG-B-202 | 79d | 0d |  |
| C-F-CF-1707 |  | Istallation of Metal Ceiling at level 22 | 25d | 2016-03-15 | 2016-04-12 | C-F-CF-1687, C-F-CF-1727, C-MEP-BMS-1225, C-ELV-SMATV-1225, C-ELV-CCTV-1225, C-ELV-FA-1225, C-ELV-MSPA-1225, C-ELV-RMS-1225, C-ELV-CS-1225, C-MEP-PD-1225, C-MEP-PD-1235, C-MEP-FF-974, C-MEP-FF-984, C-MEP-AC-1958, C-MEP-AC-1988, C-MEP-AC-1938, C-MEP-E-1456, C-F-CF-1737, C-P-SG-B-202 | 79d | 0d | 13,671.72 |
| C-F-CF-1717 |  | Ceiling Painting works at level 22 | 12d | 2016-04-16 | 2016-04-28 | C-F-CF-1697, C-MEP-FF-994 FF | 172d | 64d | 3,662.05 |

Notes:
- C-F-FF-844: Expenses: SW 68483.7; 2 129233
- C-F-FF-854: Expenses: 1 18571.1
- C-F-WF-844: Expenses: 1 78898
- C-F-WF-854: Expenses: 1 542.11
- C-F-WF-864: Expenses: 1 24489.7
- C-F-DW-864: Expenses: 1 10411.2
- C-F-DW-844: Expenses: 1 42310; 2 31233.5
- C-F-DW-854: Expenses: 1 6907.2
- C-F-P-723: Expenses: B 26300.5; F 217665
- C-F-P-733: Expenses: S 295713
- C-F-P-743: Expenses: G 443570
- C-F-CF-1747: Expenses: W 9344.28
- C-F-CF-1687: Expenses: 1 4557.24
- C-F-CF-1727: Expenses: CS 88617.1
- C-F-CF-1737: Expenses: S 265851
- C-F-CF-1707: Expenses: 1 13671.7
- C-F-CF-1717: Expenses: 1 3662.05

| ID | WBS | Activity | Duration | Start | Finish | Predecessors | Total float | Free float | Cost |
| --- | --- | --- | --- | --- | --- | --- | --- | --- | --- |
|  | 3 | **Floor Finishes** |  | 2016-01-18 | 2016-06-13 |  |  |  |  |
| C-F-FF-964 |  | Screed & Waterproofing works at level 22 | 20d | 2016-01-18 | 2016-02-09 | C-F-P-723, C-F-FF-844 SS | 121d | 0d | 198,421.64 |
| C-F-FF-994 |  | Installation of Raised Flooring at level 22 | 16d | 2016-04-13 | 2016-05-01 | C-F-CF-1707, C-F-CF-1697 | 108d | 0d |  |
| C-F-FF-974 |  | Implementation of E-poxy Resin at level 22 | 25d | 2016-05-02 | 2016-05-30 | C-F-CF-1707, C-F-CF-1697, C-F-FF-964, C-F-WF-994, C-F-FF-994, SD-CS-L22-732, C-F-P-2443 FF | 108d | 0d | 18,637.37 |
| C-F-FF-984 |  | Installation of Carpet tiles at level 22 | 12d | 2016-05-31 | 2016-06-13 | C-F-CF-1707, C-F-CF-1697, C-F-FF-964, C-F-FF-974, C-F-P-2443 FF | 108d | 0d |  |
|  | 4 | **Wall Finishes** |  | 2016-01-28 | 2016-08-08 |  |  |  |  |
| C-F-WF-964 |  | Plaster works at level 22 | 18d | 2016-01-28 | 2016-02-18 | C-F-P-723, C-F-WF-844 SS | 99d | 0d | 79,179.4 |
| C-F-WF-994 |  | Installation of Toilet Cubicals at level 22 | 5d | 2016-04-11 | 2016-04-16 | C-F-WF-964, C-F-WF-874 SS | 116d | 0d |  |
| C-F-WF-974 |  | Installation of Wall Cladding at level 22 | 20d | 2016-05-31 | 2016-06-22 | C-F-P-743, SD-CS-L22-752, C-F-FF-974, C-F-P-2453 FF | 145d | 12d | 542.11 |
| C-F-WF-984 |  | Wall Paint works at level 22 | 20d | 2016-07-17 | 2016-08-08 | C-F-P-733, C-F-WF-964, C-F-CF-1717, C-F-P-743, C-F-FF-974 FF+5d, C-MEP-FF-994 FF, C-F-DW-964 FF+5d, C-F-DW-974 FS+5d, C-F-P-2453 FF | 108d | 0d | 24,577.04 |
|  | 5 | **Doors & Windows** |  | 2016-03-30 | 2016-07-10 |  |  |  |  |
| C-F-DW-984 |  | Installation of Steel Door Sub-frame at level 22 | 8d | 2016-03-30 | 2016-04-07 | C-F-P-723 FF, SD-CS-L22-792, C-F-DW-864 | 102d | 0d | 10,411.18 |
| C-F-DW-964 |  | Installation of Steel Doors & Handrails at level 22 | 20d | 2016-05-31 | 2016-06-22 | C-F-DW-984, C-F-FF-994, C-F-FF-974, C-F-FF-994 FF | 140d | 32d | 73,543.49 |
| C-F-DW-974 |  | Installation of Wall & Corner Guard at level 22 | 20d | 2016-06-14 | 2016-07-10 | C-F-P-743, C-F-FF-974 SS, C-F-FF-974 FF, C-F-FF-984, C-F-P-653, C-F-P-593, C-F-P-473, C-F-P-623, C-F-P-533, C-F-P-563, C-F-P-683, C-F-P-503, C-F-P-413, C-F-P-353, C-F-P-233, C-F-P-383, C-F-P-323, C-F-P-293, C-F-P-443, C-F-P-263, C-F-P-173, C-F-P-113, C-F-P-003, C-F-DW-194 | 108d | 0d | 6,907.2 |
|  | 56 | **Finishes - Level 23** |  | 2015-10-04 | 2016-08-17 |  |  |  |  |
|  | 1 | **Partitions** |  | 2015-10-04 | 2016-02-27 |  |  |  |  |
| C-F-P-903 |  | Block Works & Fireproofing at level 23 | 14d | 2015-10-04 | 2015-10-19 | C-CS-L23-261, C-F-P-723, SD-CS-L23-712 | 21d | 0d | 244,613.92 |
| C-F-P-913 |  | Installation of the Studs for Gypsum Board Partition at level 23 | 20d | 2015-10-10 | 2015-11-01 | C-F-P-903 SS+5d, C-F-P-523, SD-CS-L23-732 | 52d | 0d | 296,499.17 |
| C-F-P-923 |  | Installation of Gypsum Board Partition & Insulation within the walls at level 23 | 25d | 2016-01-28 | 2016-02-27 | C-MEP-BMS-1505, C-ELV-SMATV-1505, C-ELV-CCTV-1505, C-ELV-FA-1505, C-ELV-MSPA-1505, C-ELV-RMS-1505, C-ELV-CS-1505, C-MEP-E-1806, C-MEP-PD-1505, C-P-SG-B-212 | 197d | 22d | 444,748.75 |
|  | 2 | **Ceiling Finishes** |  | 2015-10-10 | 2016-05-08 |  |  |  |  |
| C-F-CF-2167 |  | Installation of Ceiling thermal/accoustic insulation at level 23 | 5d | 2015-10-10 | 2015-10-14 | C-F-P-903 SS+5d | 170d | 71d | 9,369.12 |
| C-F-CF-2107 |  | Installation of Ceiling Support & Brackets at level 23 | 15d | 2015-12-21 | 2016-01-06 | C-F-CF-2167 FF, C-F-CF-1687 SS | 99d | 0d | 4,569.35 |
| C-F-CF-2147 |  | Installation of Smoke Curtains support & Equipments at level 23 | 8d | 2016-03-06 | 2016-03-14 | C-F-CF-2107 SS, C-F-CF-1727 | 74d | 0d | 88,617.15 |
| C-F-CF-2157 |  | Installation of Smoke Curtains at level 23 | 8d | 2016-03-15 | 2016-03-23 | C-F-CF-2147 | 90d | 0d | 265,851.44 |
| C-F-CF-2117 |  | Installation of Gypsum Ceiling at level 23 | 25d | 2016-03-24 | 2016-04-21 | C-F-CF-2107, C-F-CF-2147, C-MEP-BMS-1525, C-ELV-SMATV-1525, C-ELV-CCTV-1525, C-ELV-FA-1525, C-ELV-MSPA-1525, C-ELV-RMS-1525, C-ELV-CS-1525, C-MEP-PD-1525, C-MEP-PD-1535, C-MEP-FF-1214, C-MEP-FF-1224, C-MEP-AC-2438, C-MEP-AC-2468, C-MEP-AC-2418, C-MEP-E-1816, SD-CS-L23-792, C-F-CF-2157, C-P-SG-B-212 | 90d | 0d |  |
| C-F-CF-2127 |  | Istallation of Metal Ceiling at level 23 | 25d | 2016-03-24 | 2016-04-21 | C-F-CF-2107, C-F-CF-2147, C-MEP-BMS-1525, C-ELV-SMATV-1525, C-ELV-CCTV-1525, C-ELV-FA-1525, C-ELV-MSPA-1525, C-ELV-RMS-1525, C-ELV-CS-1525, C-MEP-PD-1525, C-MEP-PD-1535, C-MEP-FF-1214, C-MEP-FF-1224, C-MEP-AC-2438, C-MEP-AC-2468, C-MEP-AC-2418, C-MEP-E-1816, C-F-CF-2157, C-P-SG-B-212 | 90d | 0d | 13,708.06 |
| C-F-CF-2137 |  | Ceiling Painting works at level 23 | 12d | 2016-04-25 | 2016-05-08 | C-F-CF-2117, C-MEP-FF-1234 FF | 164d | 64d | 3,671.79 |

Notes:
- C-F-FF-964: Expenses: SW 68728; 2 129694
- C-F-FF-974: Expenses: 1 18637.4
- C-F-WF-964: Expenses: 1 79179.4
- C-F-WF-974: Expenses: 1 542.11
- C-F-WF-984: Expenses: 1 24577
- C-F-DW-984: Expenses: 1 10411.2
- C-F-DW-964: Expenses: 1 42310; 2 31233.5
- C-F-DW-974: Expenses: 1 6907.2
- C-F-P-903: Expenses: B 26370.4; F 218244
- C-F-P-913: Expenses: S 296499
- C-F-P-923: Expenses: G 444749
- C-F-CF-2167: Expenses: W 9369.12
- C-F-CF-2107: Expenses: 1 4569.35
- C-F-CF-2147: Expenses: CS 88617.1
- C-F-CF-2157: Expenses: S 265851
- C-F-CF-2127: Expenses: 1 13708.1
- C-F-CF-2137: Expenses: 1 3671.79

| ID | WBS | Activity | Duration | Start | Finish | Predecessors | Total float | Free float | Cost |
| --- | --- | --- | --- | --- | --- | --- | --- | --- | --- |
|  | 3 | **Floor Finishes** |  | 2016-01-18 | 2016-06-22 |  |  |  |  |
| C-F-FF-1204 |  | Screed & Waterproofing works at level 23 | 20d | 2016-01-18 | 2016-02-09 | C-F-P-903, C-F-FF-964 SS | 121d | 0d | 198,949.14 |
| C-F-FF-1234 |  | Installation of Raised Flooring at level 23 | 16d | 2016-04-23 | 2016-05-10 | C-F-CF-2127, C-F-CF-2117 | 100d | 0d |  |
| C-F-FF-1214 |  | Implementation of E-poxy Resin at level 23 | 25d | 2016-05-11 | 2016-06-08 | C-F-CF-2127, C-F-CF-2117, C-F-FF-1204, C-F-WF-1234, C-F-FF-1234, SD-CS-L23-752, C-F-P-2473 FF | 100d | 0d | 18,686.91 |
| C-F-FF-1224 |  | Installation of Carpet tiles at level 23 | 12d | 2016-06-09 | 2016-06-22 | C-F-CF-2127, C-F-CF-2117, C-F-FF-1204, C-F-FF-1214, C-F-P-2473 FF | 100d | 0d |  |
|  | 4 | **Wall Finishes** |  | 2016-01-28 | 2016-08-17 |  |  |  |  |
| C-F-WF-1204 |  | Plaster works at level 23 | 18d | 2016-01-28 | 2016-02-18 | C-F-P-903, C-F-WF-964 SS | 99d | 0d | 79,389.9 |
| C-F-WF-1234 |  | Installation of Toilet Cubicals at level 23 | 5d | 2016-04-11 | 2016-04-16 | C-F-WF-1204, C-F-WF-994 SS | 116d | 0d |  |
| C-F-WF-1214 |  | Installation of Wall Cladding at level 23 | 20d | 2016-06-09 | 2016-07-02 | C-F-P-923, SD-CS-L23-772, C-F-FF-1214, C-F-P-2483 FF | 137d | 12d | 542.11 |
| C-F-WF-1224 |  | Wall Paint works at level 23 | 20d | 2016-07-26 | 2016-08-17 | C-F-P-913, C-F-WF-1204, C-F-CF-2137, C-F-P-923, C-F-FF-1214 FF+5d, C-MEP-FF-1234 FF, C-F-DW-1204 FF+5d, C-F-DW-1214 FS+5d, C-F-P-2483 FF | 100d | 0d | 24,642.38 |
|  | 5 | **Doors & Windows** |  | 2016-04-09 | 2016-07-19 |  |  |  |  |
| C-F-DW-1224 |  | Installation of Steel Door Sub-frame at level 23 | 8d | 2016-04-09 | 2016-04-17 | C-F-P-903 FF, SD-CS-L23-812, C-F-DW-984 | 102d | 0d | 10,411.18 |
| C-F-DW-1204 |  | Installation of Steel Doors & Handrails at level 23 | 20d | 2016-06-09 | 2016-07-02 | C-F-DW-1224, C-F-FF-1234, C-F-FF-1214, C-F-FF-1234 FF | 132d | 32d | 73,543.49 |
| C-F-DW-1214 |  | Installation of Wall & Corner Guard at level 23 | 20d | 2016-06-23 | 2016-07-19 | C-F-P-923, C-F-FF-1214 SS, C-F-FF-1214 FF, C-F-FF-1224, C-F-P-743, C-F-P-653, C-F-P-593, C-F-P-473, C-F-P-623, C-F-P-533, C-F-P-563, C-F-P-683, C-F-P-503, C-F-P-413, C-F-P-353, C-F-P-233, C-F-P-383, C-F-P-323, C-F-P-293, C-F-P-443, C-F-P-263, C-F-P-173, C-F-P-113, C-F-P-003, C-F-DW-194 | 100d | 0d | 6,907.2 |
|  | 55 | **Finishes - Level 24** |  | 2015-10-04 | 2016-08-17 |  |  |  |  |
|  | 1 | **Partitions** |  | 2015-10-04 | 2016-02-29 |  |  |  |  |
| C-F-P-753 |  | Block Works & Fireproofing at level 24 | 14d | 2015-10-04 | 2015-10-19 | C-CS-L24-271, C-F-P-903 SS, SD-CS-L24-732 | 21d | 0d | 244,575.04 |
| C-F-P-763 |  | Installation of the Studs for Gypsum Board Partition at level 24 | 20d | 2015-10-10 | 2015-11-01 | C-F-P-753 SS+5d, C-F-P-613, SD-CS-L24-752 | 70d | 0d | 296,452.03 |
| C-F-P-773 |  | Installation of Gypsum Board Partition & Insulation within the walls at level 24 | 25d | 2016-01-31 | 2016-02-29 | C-MEP-BMS-1255, C-ELV-SMATV-1255, C-ELV-CCTV-1255, C-ELV-FA-1255, C-ELV-MSPA-1255, C-ELV-RMS-1255, C-ELV-CS-1255, C-MEP-E-1506, C-MEP-PD-1255, C-P-SG-B-222 | 195d | 20d | 444,678.04 |
|  | 2 | **Ceiling Finishes** |  | 2015-10-10 | 2016-05-08 |  |  |  |  |
| C-F-CF-1817 |  | Installation of Ceiling thermal/accoustic insulation at level 24 | 5d | 2015-10-10 | 2015-10-14 | C-F-P-753 SS+5d | 185d | 86d | 9,367.63 |
| C-F-CF-1757 |  | Installation of Ceiling Support & Brackets at level 24 | 15d | 2016-01-07 | 2016-01-24 | C-F-CF-1817 FF, C-F-CF-2107 | 99d | 0d | 4,568.63 |
| C-F-CF-1797 |  | Installation of Smoke Curtains support & Equipments at level 24 | 8d | 2016-03-06 | 2016-03-14 | C-F-CF-1757 SS, C-F-CF-2147 SS | 74d | 0d | 88,617.15 |
| C-F-CF-1807 |  | Installation of Smoke Curtains at level 24 | 8d | 2016-03-15 | 2016-03-23 | C-F-CF-1797 | 74d | 0d | 265,851.44 |
| C-F-CF-1767 |  | Installation of Gypsum Ceiling at level 24 | 25d | 2016-03-24 | 2016-04-21 | C-F-CF-1757, C-F-CF-1797, C-MEP-BMS-1275, C-ELV-SMATV-1275, C-ELV-CCTV-1275, C-ELV-FA-1275, C-ELV-MSPA-1275, C-ELV-RMS-1275, C-ELV-CS-1275, C-MEP-PD-1275, C-MEP-PD-1285, C-MEP-FF-1014, C-MEP-FF-1024, C-MEP-AC-2038, C-MEP-AC-2068, C-MEP-AC-2018, C-MEP-E-1516, SD-CS-L24-812, C-F-CF-1807, C-P-SG-B-222 | 74d | 0d |  |
| C-F-CF-1777 |  | Istallation of Metal Ceiling at level 24 | 25d | 2016-03-24 | 2016-04-21 | C-F-CF-1757, C-F-CF-1797, C-MEP-BMS-1275, C-ELV-SMATV-1275, C-ELV-CCTV-1275, C-ELV-FA-1275, C-ELV-MSPA-1275, C-ELV-RMS-1275, C-ELV-CS-1275, C-MEP-PD-1275, C-MEP-PD-1285, C-MEP-FF-1014, C-MEP-FF-1024, C-MEP-AC-2038, C-MEP-AC-2068, C-MEP-AC-2018, C-MEP-E-1516, C-F-CF-1807, C-P-SG-B-222 | 74d | 0d | 13,705.88 |
| C-F-CF-1787 |  | Ceiling Painting works at level 24 | 12d | 2016-04-25 | 2016-05-08 | C-F-CF-1767, C-MEP-FF-1034 FF | 164d | 64d | 3,671.2 |

Notes:
- C-F-FF-1204: Expenses: SW 68910.7; 2 130038
- C-F-FF-1214: Expenses: 1 18686.9
- C-F-WF-1204: Expenses: 1 79389.9
- C-F-WF-1214: Expenses: 1 542.11
- C-F-WF-1224: Expenses: 1 24642.4
- C-F-DW-1224: Expenses: 1 10411.2
- C-F-DW-1204: Expenses: 1 42310; 2 31233.5
- C-F-DW-1214: Expenses: 1 6907.2
- C-F-P-753: Expenses: B 26366.2; F 218209
- C-F-P-763: Expenses: S 296452
- C-F-P-773: Expenses: G 444678
- C-F-CF-1817: Expenses: W 9367.63
- C-F-CF-1757: Expenses: 1 4568.63
- C-F-CF-1797: Expenses: CS 88617.1
- C-F-CF-1807: Expenses: S 265851
- C-F-CF-1777: Expenses: 1 13705.9
- C-F-CF-1787: Expenses: 1 3671.2

| ID | WBS | Activity | Duration | Start | Finish | Predecessors | Total float | Free float | Cost |
| --- | --- | --- | --- | --- | --- | --- | --- | --- | --- |
|  | 3 | **Floor Finishes** |  | 2016-01-18 | 2016-06-22 |  |  |  |  |
| C-F-FF-1004 |  | Screed & Waterproofing works at level 24 | 20d | 2016-01-18 | 2016-02-09 | C-F-P-753, C-F-FF-1204 SS | 121d | 0d | 198,917.5 |
| C-F-FF-1034 |  | Installation of Raised Flooring at level 24 | 16d | 2016-04-23 | 2016-05-10 | C-F-CF-1777, C-F-CF-1767 | 100d | 0d |  |
| C-F-FF-1014 |  | Implementation of E-poxy Resin at level 24 | 25d | 2016-05-11 | 2016-06-08 | C-F-CF-1777, C-F-CF-1767, C-F-FF-1004, C-F-WF-1034, C-F-FF-1034, SD-CS-L24-772, C-F-P-2503 FF | 100d | 0d | 18,683.94 |
| C-F-FF-1024 |  | Installation of Carpet tiles at level 24 | 12d | 2016-06-09 | 2016-06-22 | C-F-CF-1777, C-F-CF-1767, C-F-FF-1004, C-F-FF-1014, C-F-P-2503 FF | 100d | 0d |  |
|  | 4 | **Wall Finishes** |  | 2016-01-28 | 2016-08-17 |  |  |  |  |
| C-F-WF-1004 |  | Plaster works at level 24 | 18d | 2016-01-28 | 2016-02-18 | C-F-P-753, C-F-WF-1204 SS | 99d | 0d | 79,377.28 |
| C-F-WF-1034 |  | Installation of Toilet Cubicals at level 24 | 5d | 2016-04-11 | 2016-04-16 | C-F-WF-1004, C-F-WF-1234 SS | 116d | 0d |  |
| C-F-WF-1014 |  | Installation of Wall Cladding at level 24 | 20d | 2016-06-09 | 2016-07-02 | C-F-P-773, SD-CS-L24-792, C-F-FF-1014, C-F-P-2513 FF | 137d | 12d | 542.11 |
| C-F-WF-1024 |  | Wall Paint works at level 24 | 20d | 2016-07-26 | 2016-08-17 | C-F-P-763, C-F-WF-1004, C-F-CF-1787, C-F-P-773, C-F-FF-1014 FF+5d, C-MEP-FF-1034 FF, C-F-DW-1004 FF+5d, C-F-DW-1014 FS+5d, C-F-P-2513 FF | 100d | 0d | 24,638.46 |
|  | 5 | **Doors & Windows** |  | 2016-04-18 | 2016-07-19 |  |  |  |  |
| C-F-DW-1024 |  | Installation of Steel Door Sub-frame at level 24 | 8d | 2016-04-18 | 2016-04-26 | C-F-P-753 FF, SD-CS-L24-832, C-F-DW-1224 | 102d | 0d | 10,411.18 |
| C-F-DW-1004 |  | Installation of Steel Doors & Handrails at level 24 | 20d | 2016-06-09 | 2016-07-02 | C-F-DW-1024, C-F-FF-1034, C-F-FF-1014, C-F-FF-1034 FF | 132d | 32d | 73,543.49 |
| C-F-DW-1014 |  | Installation of Wall & Corner Guard at level 24 | 20d | 2016-06-23 | 2016-07-19 | C-F-P-773, C-F-FF-1014 SS, C-F-FF-1014 FF, C-F-FF-1024, C-F-P-923, C-F-P-743, C-F-P-653, C-F-P-593, C-F-P-473, C-F-P-623, C-F-P-533, C-F-P-563, C-F-P-683, C-F-P-503, C-F-P-413, C-F-P-353, C-F-P-233, C-F-P-383, C-F-P-323, C-F-P-293, C-F-P-443, C-F-P-263, C-F-P-173, C-F-P-113, C-F-P-003, C-F-DW-194 | 100d | 0d | 6,907.2 |
|  | 54 | **Finishes - Level 25** |  | 2015-10-07 | 2016-08-17 |  |  |  |  |
|  | 1 | **Partitions** |  | 2015-10-07 | 2016-03-02 |  |  |  |  |
| C-F-P-783 |  | Block Works & Fireproofing at level 25 | 14d | 2015-10-07 | 2015-10-22 | C-CS-L25-270, C-F-P-753 SS, SD-CS-L25-752 | 18d | 0d | 244,118.64 |
| C-F-P-793 |  | Installation of the Studs for Gypsum Board Partition at level 25 | 20d | 2015-10-13 | 2015-11-04 | C-F-P-783 SS+5d, C-F-P-463, SD-CS-L25-772 | 53d | 0d | 295,898.82 |
| C-F-P-803 |  | Installation of Gypsum Board Partition & Insulation within the walls at level 25 | 25d | 2016-02-02 | 2016-03-02 | C-MEP-BMS-1305, C-ELV-SMATV-1305, C-ELV-CCTV-1305, C-ELV-FA-1305, C-ELV-MSPA-1305, C-ELV-RMS-1305, C-ELV-CS-1305, C-MEP-E-1566, C-MEP-PD-1305, C-P-SG-B-232 | 193d | 18d | 443,848.23 |
|  | 2 | **Ceiling Finishes** |  | 2015-10-13 | 2016-05-08 |  |  |  |  |
| C-F-CF-1887 |  | Installation of Ceiling thermal/accoustic insulation at level 25 | 5d | 2015-10-13 | 2015-10-18 | C-F-P-783 SS+5d | 182d | 83d | 9,350.15 |
| C-F-CF-1827 |  | Installation of Ceiling Support & Brackets at level 25 | 15d | 2016-01-07 | 2016-01-24 | C-F-CF-1887 FF, C-F-CF-1757 SS | 99d | 0d | 4,560.1 |
| C-F-CF-1867 |  | Installation of Smoke Curtains support & Equipments at level 25 | 8d | 2016-03-06 | 2016-03-14 | C-F-CF-1827 SS, C-F-CF-1797 SS | 74d | 0d | 88,617.15 |
| C-F-CF-1877 |  | Installation of Smoke Curtains at level 25 | 8d | 2016-03-15 | 2016-03-23 | C-F-CF-1867 | 74d | 0d | 265,851.44 |
| C-F-CF-1837 |  | Installation of Gypsum Ceiling at level 25 | 25d | 2016-03-24 | 2016-04-21 | C-F-CF-1827, C-F-CF-1867, C-MEP-BMS-1325, C-ELV-SMATV-1325, C-ELV-CCTV-1325, C-ELV-FA-1325, C-ELV-MSPA-1325, C-ELV-RMS-1325, C-ELV-CS-1325, C-MEP-PD-1325, C-MEP-PD-1335, C-MEP-FF-1054, C-MEP-FF-1064, C-MEP-AC-2118, C-MEP-AC-2148, C-MEP-AC-2098, C-MEP-E-1576, SD-CS-L25-832, C-F-CF-1877, C-P-SG-B-232 | 74d | 0d |  |
| C-F-CF-1847 |  | Istallation of Metal Ceiling at level 25 | 25d | 2016-03-24 | 2016-04-21 | C-F-CF-1827, C-F-CF-1867, C-MEP-BMS-1325, C-ELV-SMATV-1325, C-ELV-CCTV-1325, C-ELV-FA-1325, C-ELV-MSPA-1325, C-ELV-RMS-1325, C-ELV-CS-1325, C-MEP-PD-1325, C-MEP-PD-1335, C-MEP-FF-1054, C-MEP-FF-1064, C-MEP-AC-2118, C-MEP-AC-2148, C-MEP-AC-2098, C-MEP-E-1576, C-F-CF-1877, C-P-SG-B-232 | 74d | 0d | 13,680.31 |
| C-F-CF-1857 |  | Ceiling Painting works at level 25 | 12d | 2016-04-25 | 2016-05-08 | C-F-CF-1837, C-MEP-FF-1074 FF | 164d | 64d | 3,664.35 |

Notes:
- C-F-FF-1004: Expenses: SW 68899.8; 2 130018
- C-F-FF-1014: Expenses: 1 18683.9
- C-F-WF-1004: Expenses: 1 79377.3
- C-F-WF-1014: Expenses: 1 542.11
- C-F-WF-1024: Expenses: 1 24638.5
- C-F-DW-1024: Expenses: 1 10411.2
- C-F-DW-1004: Expenses: 1 42310; 2 31233.5
- C-F-DW-1014: Expenses: 1 6907.2
- C-F-P-783: Expenses: B 26317; F 217802
- C-F-P-793: Expenses: S 295899
- C-F-P-803: Expenses: G 443848
- C-F-CF-1887: Expenses: W 9350.15
- C-F-CF-1827: Expenses: 1 4560.1
- C-F-CF-1867: Expenses: CS 88617.1
- C-F-CF-1877: Expenses: S 265851
- C-F-CF-1847: Expenses: 1 13680.3
- C-F-CF-1857: Expenses: 1 3664.35

| ID | WBS | Activity | Duration | Start | Finish | Predecessors | Total float | Free float | Cost |
| --- | --- | --- | --- | --- | --- | --- | --- | --- | --- |
|  | 3 | **Floor Finishes** |  | 2016-01-18 | 2016-06-22 |  |  |  |  |
| C-F-FF-1044 |  | Screed & Waterproofing works at level 25 | 20d | 2016-01-18 | 2016-02-09 | C-F-P-783, C-F-FF-1004 SS | 121d | 0d | 198,546.3 |
| C-F-FF-1074 |  | Installation of Raised Flooring at level 25 | 16d | 2016-04-23 | 2016-05-10 | C-F-CF-1847, C-F-CF-1837 | 100d | 0d |  |
| C-F-FF-1054 |  | Implementation of E-poxy Resin at level 25 | 25d | 2016-05-11 | 2016-06-08 | C-F-CF-1847, C-F-CF-1837, C-F-FF-1044, C-F-WF-1074, C-F-FF-1074, SD-CS-L25-792, C-F-P-2533 FF | 100d | 0d | 18,649.08 |
| C-F-FF-1064 |  | Installation of Carpet tiles at level 25 | 12d | 2016-06-09 | 2016-06-22 | C-F-CF-1847, C-F-CF-1837, C-F-FF-1044, C-F-FF-1054, C-F-P-2533 FF | 100d | 0d |  |
|  | 4 | **Wall Finishes** |  | 2016-01-28 | 2016-08-17 |  |  |  |  |
| C-F-WF-1044 |  | Plaster works at level 25 | 18d | 2016-01-28 | 2016-02-18 | C-F-P-783, C-F-WF-1004 SS | 99d | 0d | 79,229.15 |
| C-F-WF-1074 |  | Installation of Toilet Cubicals at level 25 | 5d | 2016-04-11 | 2016-04-16 | C-F-WF-1044, C-F-WF-1034 SS | 116d | 0d |  |
| C-F-WF-1054 |  | Installation of Wall Cladding at level 25 | 20d | 2016-06-09 | 2016-07-02 | C-F-P-803, SD-CS-L25-812, C-F-FF-1054, C-F-P-2543 FF | 137d | 12d | 542.11 |
| C-F-WF-1064 |  | Wall Paint works at level 25 | 20d | 2016-07-26 | 2016-08-17 | C-F-P-793, C-F-WF-1044, C-F-CF-1857, C-F-P-803, C-F-FF-1054 FF+5d, C-MEP-FF-1074 FF, C-F-DW-1044 FF+5d, C-F-DW-1054 FS+5d, C-F-P-2543 FF | 100d | 0d | 24,592.48 |
|  | 5 | **Doors & Windows** |  | 2016-04-27 | 2016-07-19 |  |  |  |  |
| C-F-DW-1064 |  | Installation of Steel Door Sub-frame at level 25 | 8d | 2016-04-27 | 2016-05-05 | C-F-P-783 FF, SD-CS-L25-842, SD-CS-L25-852, C-F-DW-1024 | 102d | 0d | 10,411.18 |
| C-F-DW-1044 |  | Installation of Steel Doors & Handrails at level 25 | 20d | 2016-06-09 | 2016-07-02 | C-F-DW-1064, C-F-FF-1074, C-F-FF-1054, C-F-FF-1074 FF | 132d | 32d | 73,543.49 |
| C-F-DW-1054 |  | Installation of Wall & Corner Guard at level 25 | 20d | 2016-06-23 | 2016-07-19 | C-F-P-803, C-F-FF-1054 SS, C-F-FF-1054 FF, C-F-FF-1064, SD-CS-L25-852, C-F-P-773, C-F-P-923, C-F-P-743, C-F-P-653, C-F-P-593, C-F-P-473, C-F-P-623, C-F-P-533, C-F-P-563, C-F-P-683, C-F-P-503, C-F-P-413, C-F-P-353, C-F-P-233, C-F-P-383, C-F-P-323, C-F-P-293, C-F-P-443, C-F-P-263, C-F-P-173, C-F-P-113, C-F-P-003, C-F-DW-194 | 100d | 0d | 6,907.2 |
|  | 90 | **Finishes - Level 26** |  | 2015-10-14 | 2016-08-17 |  |  |  |  |
|  | 1 | **Partitions** |  | 2015-10-14 | 2016-03-05 |  |  |  |  |
| C-F-P-843 |  | Block Works & Fireproofing at level 26 | 14d | 2015-10-14 | 2015-10-29 | C-CS-L26-51, C-F-P-783 SS, SD-CS-L26-772 | 12d | 0d | 243,224.14 |
| C-F-P-853 |  | Installation of the Studs for Gypsum Board Partition at level 26 | 20d | 2015-10-20 | 2015-11-11 | C-F-P-843 SS+5d, C-F-P-583, SD-CS-L26-792 | 71d | 0d | 294,814.59 |
| C-F-P-863 |  | Installation of Gypsum Board Partition & Insulation within the walls at level 26 | 25d | 2016-02-04 | 2016-03-05 | C-MEP-BMS-1405, C-ELV-SMATV-1405, C-ELV-CCTV-1405, C-ELV-FA-1405, C-ELV-MSPA-1405, C-ELV-RMS-1405, C-ELV-CS-1405, C-MEP-E-1686, C-MEP-PD-1405, C-P-SG-B-242 | 191d | 16d | 442,221.88 |
|  | 2 | **Ceiling Finishes** |  | 2015-10-20 | 2016-05-08 |  |  |  |  |
| C-F-CF-2027 |  | Installation of Ceiling thermal/accoustic insulation at level 26 | 5d | 2015-10-20 | 2015-10-25 | C-F-P-843 SS+5d | 176d | 77d | 9,315.89 |
| C-F-CF-1967 |  | Installation of Ceiling Support & Brackets at level 26 | 15d | 2016-01-07 | 2016-01-24 | C-F-CF-2027 FF, C-F-CF-1827 SS | 99d | 0d | 4,543.39 |
| C-F-CF-2007 |  | Installation of Smoke Curtains support & Equipments at level 26 | 8d | 2016-03-06 | 2016-03-14 | C-F-CF-1967 SS, C-F-CF-1867 SS | 83d | 0d | 88,617.15 |
| C-F-CF-2017 |  | Installation of Smoke Curtains at level 26 | 8d | 2016-03-15 | 2016-03-23 | C-F-CF-2007 | 83d | 0d | 265,851.44 |
| C-F-CF-1977 |  | Installation of Gypsum Ceiling at level 26 | 25d | 2016-03-24 | 2016-04-21 | C-F-CF-1967, C-F-CF-2007, C-MEP-BMS-1425, C-ELV-SMATV-1425, C-ELV-CCTV-1425, C-ELV-FA-1425, C-ELV-MSPA-1425, C-ELV-RMS-1425, C-ELV-CS-1425, C-MEP-PD-1425, C-MEP-PD-1435, C-MEP-FF-1134, C-MEP-FF-1144, C-MEP-AC-2278, C-MEP-AC-2308, C-MEP-AC-2258, C-MEP-E-1696, SD-CS-L26-852, C-F-CF-2017, C-P-SG-B-242 | 83d | 0d |  |
| C-F-CF-1987 |  | Istallation of Metal Ceiling at level 26 | 25d | 2016-03-24 | 2016-04-21 | C-F-CF-1967, C-F-CF-2007, C-MEP-BMS-1425, C-ELV-SMATV-1425, C-ELV-CCTV-1425, C-ELV-FA-1425, C-ELV-MSPA-1425, C-ELV-RMS-1425, C-ELV-CS-1425, C-MEP-PD-1425, C-MEP-PD-1435, C-MEP-FF-1134, C-MEP-FF-1144, C-MEP-AC-2278, C-MEP-AC-2308, C-MEP-AC-2258, C-MEP-E-1696, C-F-CF-2017, C-P-SG-B-242 | 83d | 0d | 13,630.18 |
| C-F-CF-1997 |  | Ceiling Painting works at level 26 | 12d | 2016-04-25 | 2016-05-08 | C-F-CF-1977, C-MEP-FF-1154 FF | 164d | 64d | 3,650.93 |

Notes:
- C-F-FF-1044: Expenses: SW 68771.2; 2 129775
- C-F-FF-1054: Expenses: 1 18649.1
- C-F-WF-1044: Expenses: 1 79229.1
- C-F-WF-1054: Expenses: 1 542.11
- C-F-WF-1064: Expenses: 1 24592.5
- C-F-DW-1064: Expenses: 1 10411.2
- C-F-DW-1044: Expenses: 1 42310; 2 31233.5
- C-F-DW-1054: Expenses: 1 6907.2
- C-F-P-843: Expenses: B 26220.6; F 217004
- C-F-P-853: Expenses: S 294815
- C-F-P-863: Expenses: G 442222
- C-F-CF-2027: Expenses: W 9315.89
- C-F-CF-1967: Expenses: 1 4543.39
- C-F-CF-2007: Expenses: CS 88617.1
- C-F-CF-2017: Expenses: S 265851
- C-F-CF-1987: Expenses: 1 13630.2
- C-F-CF-1997: Expenses: 1 3650.93

| ID | WBS | Activity | Duration | Start | Finish | Predecessors | Total float | Free float | Cost |
| --- | --- | --- | --- | --- | --- | --- | --- | --- | --- |
|  | 3 | **Floor Finishes** |  | 2016-01-18 | 2016-06-22 |  |  |  |  |
| C-F-FF-1124 |  | Screed & Waterproofing works at level 26 | 20d | 2016-01-18 | 2016-02-09 | C-F-P-843, C-F-FF-1044 SS | 121d | 0d | 197,818.79 |
| C-F-FF-1154 |  | Installation of Raised Flooring at level 26 | 16d | 2016-04-23 | 2016-05-10 | C-F-CF-1987, C-F-CF-1977 | 100d | 0d |  |
| C-F-FF-1134 |  | Implementation of E-poxy Resin at level 26 | 25d | 2016-05-11 | 2016-06-08 | C-F-CF-1987, C-F-CF-1977, C-F-FF-1124, C-F-WF-1154, C-F-FF-1154, SD-CS-L26-812, C-F-P-2563 FF | 100d | 0d | 18,580.74 |
| C-F-FF-1144 |  | Installation of Carpet tiles at level 26 | 12d | 2016-06-09 | 2016-06-22 | C-F-CF-1987, C-F-CF-1977, C-F-FF-1124, C-F-FF-1134, C-F-P-2563 FF | 100d | 0d |  |
|  | 4 | **Wall Finishes** |  | 2016-01-28 | 2016-08-17 |  |  |  |  |
| C-F-WF-1124 |  | Plaster works at level 26 | 18d | 2016-01-28 | 2016-02-18 | C-F-P-843, C-F-WF-1044 SS | 99d | 0d | 78,938.84 |
| C-F-WF-1154 |  | Installation of Toilet Cubicals at level 26 | 5d | 2016-04-11 | 2016-04-16 | C-F-WF-1124, C-F-WF-1074 SS | 116d | 0d |  |
| C-F-WF-1134 |  | Installation of Wall Cladding at level 26 | 20d | 2016-06-09 | 2016-07-02 | C-F-P-863, SD-CS-L26-832, C-F-FF-1134, C-F-P-2573 FF | 137d | 17d | 542.11 |
| C-F-WF-1144 |  | Wall Paint works at level 26 | 20d | 2016-07-26 | 2016-08-17 | C-F-P-853, C-F-WF-1124, C-F-CF-1997, C-F-P-863, C-F-FF-1134 FF+5d, C-MEP-FF-1154 FF, C-F-DW-1124 FF+5d, C-F-DW-1134 FS+5d, C-F-P-2573 FF | 100d | 0d | 24,502.37 |
|  | 5 | **Doors & Windows** |  | 2016-05-07 | 2016-07-19 |  |  |  |  |
| C-F-DW-1144 |  | Installation of Steel Door Sub-frame at level 26 | 8d | 2016-05-07 | 2016-05-15 | C-F-P-843 FF, SD-CS-L26-872, C-F-DW-1064 | 102d | 0d | 10,411.18 |
| C-F-DW-1124 |  | Installation of Steel Doors & Handrails at level 26 | 20d | 2016-06-09 | 2016-07-02 | C-F-DW-1144, C-F-FF-1154, C-F-FF-1134, C-F-FF-1154 FF | 132d | 32d | 73,543.49 |
| C-F-DW-1134 |  | Installation of Wall & Corner Guard at level 26 | 20d | 2016-06-23 | 2016-07-19 | C-F-P-863, C-F-FF-1134 SS, C-F-FF-1134 FF, C-F-FF-1144, C-F-P-803, SD-CS-L25-852, C-F-P-773, C-F-P-923, C-F-P-743, C-F-P-653, C-F-P-593, C-F-P-473, C-F-P-623, C-F-P-533, C-F-P-563, C-F-P-683, C-F-P-503, C-F-P-413, C-F-P-353, C-F-P-233, C-F-P-383, C-F-P-323, C-F-P-293, C-F-P-443, C-F-P-263, C-F-P-173, C-F-P-113, C-F-P-003, C-F-DW-194 | 100d | 0d | 6,907.2 |
|  | 89 | **Finishes - Level 27** |  | 2015-10-21 | 2016-08-17 |  |  |  |  |
|  | 1 | **Partitions** |  | 2015-10-21 | 2016-03-07 |  |  |  |  |
| C-F-P-693 |  | Block Works & Fireproofing at level 27 | 14d | 2015-10-21 | 2015-11-05 | C-CS-L27-61, C-F-P-843 SS, SD-CS-L27-792 | 6d | 0d | 241,828.62 |
| C-F-P-703 |  | Installation of the Studs for Gypsum Board Partition at level 27 | 20d | 2015-10-27 | 2015-11-18 | C-F-P-693 SS+5d, C-F-P-643, SD-CS-L27-812 | 53d | 0d | 293,123.07 |
| C-F-P-713 |  | Installation of Gypsum Board Partition & Insulation within the walls at level 27 | 25d | 2016-02-07 | 2016-03-07 | C-MEP-BMS-1155, C-ELV-SMATV-1155, C-ELV-CCTV-1155, C-ELV-FA-1155, C-ELV-MSPA-1155, C-ELV-RMS-1155, C-ELV-CS-1155, C-MEP-E-1386, C-MEP-PD-1155, C-P-SG-B-252 | 189d | 14d | 439,684.61 |
|  | 2 | **Ceiling Finishes** |  | 2015-10-27 | 2016-05-08 |  |  |  |  |
| C-F-CF-1677 |  | Installation of Ceiling thermal/accoustic insulation at level 27 | 5d | 2015-10-27 | 2015-11-01 | C-F-P-693 SS+5d | 170d | 71d | 9,262.44 |
| C-F-CF-1617 |  | Installation of Ceiling Support & Brackets at level 27 | 15d | 2016-01-07 | 2016-01-24 | C-F-CF-1677 FF, C-F-CF-1967 SS | 99d | 0d | 4,517.33 |
| C-F-CF-1657 |  | Installation of Smoke Curtains support & Equipments at level 27 | 8d | 2016-03-06 | 2016-03-14 | C-F-CF-1617 SS, C-F-CF-2007 SS | 91d | 0d | 88,617.15 |
| C-F-CF-1667 |  | Installation of Smoke Curtains at level 27 | 8d | 2016-03-15 | 2016-03-23 | C-F-CF-1657 | 91d | 0d | 265,851.44 |
| C-F-CF-1627 |  | Installation of Gypsum Ceiling at level 27 | 25d | 2016-03-24 | 2016-04-21 | C-F-CF-1617, C-F-CF-1657, C-MEP-BMS-1175, C-ELV-SMATV-1175, C-ELV-CCTV-1175, C-ELV-FA-1175, C-ELV-MSPA-1175, C-ELV-RMS-1175, C-ELV-CS-1175, C-MEP-PD-1175, C-MEP-PD-1185, C-MEP-FF-934, C-MEP-FF-944, C-MEP-AC-1878, C-MEP-AC-1908, C-MEP-AC-1858, C-MEP-E-1396, SD-CS-L27-872, C-F-CF-1667, C-P-SG-B-252 | 91d | 0d |  |
| C-F-CF-1637 |  | Istallation of Metal Ceiling at level 27 | 25d | 2016-03-24 | 2016-04-21 | C-F-CF-1617, C-F-CF-1657, C-MEP-BMS-1175, C-ELV-SMATV-1175, C-ELV-CCTV-1175, C-ELV-FA-1175, C-ELV-MSPA-1175, C-ELV-RMS-1175, C-ELV-CS-1175, C-MEP-PD-1175, C-MEP-PD-1185, C-MEP-FF-934, C-MEP-FF-944, C-MEP-AC-1878, C-MEP-AC-1908, C-MEP-AC-1858, C-MEP-E-1396, C-F-CF-1667, C-P-SG-B-252 | 91d | 0d | 13,551.98 |
| C-F-CF-1647 |  | Ceiling Painting works at level 27 | 12d | 2016-04-25 | 2016-05-08 | C-F-CF-1627, C-MEP-FF-954 FF | 164d | 64d | 3,629.98 |

Notes:
- C-F-FF-1124: Expenses: SW 68519.2; 2 129300
- C-F-FF-1134: Expenses: 1 18580.7
- C-F-WF-1124: Expenses: 1 78938.8
- C-F-WF-1134: Expenses: 1 542.11
- C-F-WF-1144: Expenses: 1 24502.4
- C-F-DW-1144: Expenses: 1 10411.2
- C-F-DW-1124: Expenses: 1 42310; 2 31233.5
- C-F-DW-1134: Expenses: 1 6907.2
- C-F-P-693: Expenses: B 26070.1; F 215759
- C-F-P-703: Expenses: S 293123
- C-F-P-713: Expenses: G 439685
- C-F-CF-1677: Expenses: W 9262.44
- C-F-CF-1617: Expenses: 1 4517.33
- C-F-CF-1657: Expenses: CS 88617.1
- C-F-CF-1667: Expenses: S 265851
- C-F-CF-1637: Expenses: 1 13552
- C-F-CF-1647: Expenses: 1 3629.98

| ID | WBS | Activity | Duration | Start | Finish | Predecessors | Total float | Free float | Cost |
| --- | --- | --- | --- | --- | --- | --- | --- | --- | --- |
|  | 3 | **Floor Finishes** |  | 2016-02-11 | 2016-06-22 |  |  |  |  |
| C-F-FF-924 |  | Screed & Waterproofing works at level 27 | 20d | 2016-02-11 | 2016-03-05 | C-F-P-693, C-F-FF-1124 | 121d | 0d | 196,683.8 |
| C-F-FF-954 |  | Installation of Raised Flooring at level 27 | 16d | 2016-04-23 | 2016-05-10 | C-F-CF-1637, C-F-CF-1627 | 100d | 0d |  |
| C-F-FF-934 |  | Implementation of E-poxy Resin at level 27 | 25d | 2016-05-11 | 2016-06-08 | C-F-CF-1637, C-F-CF-1627, C-F-FF-924, C-F-WF-954, C-F-FF-954, SD-CS-L27-832 | 100d | 0d | 18,474.14 |
| C-F-FF-944 |  | Installation of Carpet tiles at level 27 | 12d | 2016-06-09 | 2016-06-22 | C-F-CF-1637, C-F-CF-1627, C-F-FF-924, C-F-FF-934 | 100d | 0d |  |
|  | 4 | **Wall Finishes** |  | 2016-02-20 | 2016-08-17 |  |  |  |  |
| C-F-WF-924 |  | Plaster works at level 27 | 18d | 2016-02-20 | 2016-03-10 | C-F-P-693, C-F-WF-1124 | 99d | 0d | 78,485.92 |
| C-F-WF-954 |  | Installation of Toilet Cubicals at level 27 | 5d | 2016-04-11 | 2016-04-16 | C-F-WF-924, C-F-WF-1154 SS | 116d | 0d |  |
| C-F-WF-934 |  | Installation of Wall Cladding at level 27 | 20d | 2016-06-09 | 2016-07-02 | C-F-P-713, SD-CS-L27-852, C-F-FF-934, C-F-P-2603 FF | 137d | 22d | 542.11 |
| C-F-WF-944 |  | Wall Paint works at level 27 | 20d | 2016-07-26 | 2016-08-17 | C-F-P-703, C-F-WF-924, C-F-CF-1647, C-F-P-713, C-F-FF-934 FF+5d, C-MEP-FF-954 FF, C-F-DW-924 FF+5d, C-F-DW-934 FS+5d, C-F-P-2603 FF | 100d | 0d | 24,361.79 |
|  | 5 | **Doors & Windows** |  | 2016-05-16 | 2016-07-19 |  |  |  |  |
| C-F-DW-944 |  | Installation of Steel Door Sub-frame at level 27 | 8d | 2016-05-16 | 2016-05-24 | C-F-P-693 FF, SD-CS-L27-892, C-F-DW-1144 | 102d | 0d | 10,411.18 |
| C-F-DW-924 |  | Installation of Steel Doors & Handrails at level 27 | 20d | 2016-06-09 | 2016-07-02 | C-F-DW-944, C-F-FF-954, C-F-FF-934, C-F-FF-954 FF | 132d | 32d | 73,543.49 |
| C-F-DW-934 |  | Installation of Wall & Corner Guard at level 27 | 20d | 2016-06-23 | 2016-07-19 | C-F-P-713, C-F-FF-934 SS, C-F-FF-934 FF, C-F-FF-944, C-F-P-863, C-F-P-803, SD-CS-L25-852, C-F-P-773, C-F-P-923, C-F-P-743, C-F-P-653, C-F-P-593, C-F-P-473, C-F-P-623, C-F-P-533, C-F-P-563, C-F-P-683, C-F-P-503, C-F-P-413, C-F-P-353, C-F-P-233, C-F-P-383, C-F-P-323, C-F-P-293, C-F-P-443, C-F-P-263, C-F-P-173, C-F-P-113, C-F-P-003, C-F-DW-194 | 100d | 0d | 6,907.2 |
|  | 88 | **Finishes - Level 28** |  | 2015-11-07 | 2016-08-23 |  |  |  |  |
|  | 1 | **Partitions** |  | 2015-11-07 | 2016-03-09 |  |  |  |  |
| C-F-P-813 |  | Block Works & Fireproofing at level 28 | 14d | 2015-11-07 | 2015-11-22 | C-CS-L28-71, C-F-P-693, SD-CS-L28-812 | 38d | 0d | 239,930.95 |
| C-F-P-823 |  | Installation of the Studs for Gypsum Board Partition at level 28 | 20d | 2015-11-12 | 2015-12-05 | C-F-P-813 SS+5d, C-F-P-733, SD-CS-L28-832 | 63d | 0d | 290,822.89 |
| C-F-P-833 |  | Installation of Gypsum Board Partition & Insulation within the walls at level 28 | 25d | 2016-02-09 | 2016-03-09 | C-MEP-BMS-1355, C-ELV-SMATV-1355, C-ELV-CCTV-1355, C-ELV-FA-1355, C-ELV-MSPA-1355, C-ELV-RMS-1355, C-ELV-CS-1355, C-MEP-E-1626, C-MEP-PD-1355, C-P-SG-B-262 | 187d | 12d | 436,234.33 |
|  | 2 | **Ceiling Finishes** |  | 2015-11-12 | 2016-05-14 |  |  |  |  |
| C-F-CF-1957 |  | Installation of Ceiling thermal/accoustic insulation at level 28 | 5d | 2015-11-12 | 2015-11-17 | C-F-P-813 SS+5d | 156d | 57d | 9,189.75 |
| C-F-CF-1897 |  | Installation of Ceiling Support & Brackets at level 28 | 15d | 2016-01-07 | 2016-01-24 | C-F-CF-1957 FF, C-F-CF-1617 SS | 99d | 0d | 4,481.88 |
| C-F-CF-1937 |  | Installation of Smoke Curtains support & Equipments at level 28 | 8d | 2016-03-06 | 2016-03-14 | C-F-CF-1897 SS, C-F-CF-1657 SS | 94d | 0d | 88,617.15 |
| C-F-CF-1947 |  | Installation of Smoke Curtains at level 28 | 8d | 2016-03-15 | 2016-03-23 | C-F-CF-1937 | 94d | 5d | 265,851.44 |
| C-F-CF-1907 |  | Installation of Gypsum Ceiling at level 28 | 25d | 2016-03-30 | 2016-04-27 | C-F-CF-1897, C-F-CF-1937, C-MEP-BMS-1375, C-ELV-SMATV-1375, C-ELV-CCTV-1375, C-ELV-FA-1375, C-ELV-MSPA-1375, C-ELV-RMS-1375, C-ELV-CS-1375, C-MEP-PD-1375, C-MEP-PD-1385, C-MEP-FF-1094, C-MEP-FF-1104, C-MEP-AC-2198, C-MEP-AC-2228, C-MEP-AC-2178, C-MEP-E-1636, SD-CS-L28-892, C-F-CF-1947, C-P-SG-B-262 | 89d | 0d |  |
| C-F-CF-1917 |  | Istallation of Metal Ceiling at level 28 | 25d | 2016-03-30 | 2016-04-27 | C-F-CF-1897, C-F-CF-1937, C-MEP-BMS-1375, C-ELV-SMATV-1375, C-ELV-CCTV-1375, C-ELV-FA-1375, C-ELV-MSPA-1375, C-ELV-RMS-1375, C-ELV-CS-1375, C-MEP-PD-1375, C-MEP-PD-1385, C-MEP-FF-1094, C-MEP-FF-1104, C-MEP-AC-2198, C-MEP-AC-2228, C-MEP-AC-2178, C-MEP-E-1636, C-F-CF-1947, C-P-SG-B-262 | 89d | 0d | 13,445.63 |
| C-F-CF-1927 |  | Ceiling Painting works at level 28 | 12d | 2016-05-01 | 2016-05-14 | C-F-CF-1907, C-MEP-FF-1114 FF | 159d | 64d | 3,601.49 |

Notes:
- C-F-FF-924: Expenses: SW 68126.1; 2 128558
- C-F-FF-934: Expenses: 1 18474.1
- C-F-WF-924: Expenses: 1 78485.9
- C-F-WF-934: Expenses: 1 542.11
- C-F-WF-944: Expenses: 1 24361.8
- C-F-DW-944: Expenses: 1 10411.2
- C-F-DW-924: Expenses: 1 42310; 2 31233.5
- C-F-DW-934: Expenses: 1 6907.2
- C-F-P-813: Expenses: B 25865.5; F 214065
- C-F-P-823: Expenses: S 290823
- C-F-P-833: Expenses: G 436234
- C-F-CF-1957: Expenses: W 9189.75
- C-F-CF-1897: Expenses: 1 4481.88
- C-F-CF-1937: Expenses: CS 88617.1
- C-F-CF-1947: Expenses: S 265851
- C-F-CF-1917: Expenses: 1 13445.6
- C-F-CF-1927: Expenses: 1 3601.49

| ID | WBS | Activity | Duration | Start | Finish | Predecessors | Total float | Free float | Cost |
| --- | --- | --- | --- | --- | --- | --- | --- | --- | --- |
|  | 3 | **Floor Finishes** |  | 2016-02-11 | 2016-06-28 |  |  |  |  |
| C-F-FF-1084 |  | Screed & Waterproofing works at level 28 | 20d | 2016-02-11 | 2016-03-05 | C-F-P-813, C-F-FF-924 SS | 121d | 0d | 195,140.38 |
| C-F-FF-1114 |  | Installation of Raised Flooring at level 28 | 16d | 2016-04-28 | 2016-05-16 | C-F-CF-1917, C-F-CF-1907 | 95d | 0d |  |
| C-F-FF-1094 |  | Implementation of E-poxy Resin at level 28 | 25d | 2016-05-17 | 2016-06-14 | C-F-CF-1917, C-F-CF-1907, C-F-FF-1084, C-F-WF-1114, C-F-FF-1114, SD-CS-L28-852, C-F-P-2623 FF | 95d | 0d | 18,329.17 |
| C-F-FF-1104 |  | Installation of Carpet tiles at level 28 | 12d | 2016-06-15 | 2016-06-28 | C-F-CF-1917, C-F-CF-1907, C-F-FF-1084, C-F-FF-1094, C-F-P-2623 FF | 95d | 0d |  |
|  | 4 | **Wall Finishes** |  | 2016-02-20 | 2016-08-23 |  |  |  |  |
| C-F-WF-1084 |  | Plaster works at level 28 | 18d | 2016-02-20 | 2016-03-10 | C-F-P-813, C-F-WF-924 SS | 99d | 0d | 77,870.03 |
| C-F-WF-1114 |  | Installation of Toilet Cubicals at level 28 | 5d | 2016-04-11 | 2016-04-16 | C-F-WF-1084, C-F-WF-954 SS | 116d | 0d |  |
| C-F-WF-1094 |  | Installation of Wall Cladding at level 28 | 20d | 2016-06-15 | 2016-07-11 | C-F-P-833, SD-CS-L28-872, C-F-FF-1094, C-F-P-2633 FF | 132d | 12d | 542.11 |
| C-F-WF-1104 |  | Wall Paint works at level 28 | 20d | 2016-08-01 | 2016-08-23 | C-F-P-823, C-F-WF-1084, C-F-CF-1927, C-F-P-833, C-F-FF-1094 FF+5d, C-MEP-FF-1114 FF, C-F-DW-1084 FF+5d, C-F-DW-1094 FS+5d, C-F-P-2633 FF | 95d | 0d | 24,170.61 |
|  | 5 | **Doors & Windows** |  | 2016-05-25 | 2016-07-25 |  |  |  |  |
| C-F-DW-1104 |  | Installation of Steel Door Sub-frame at level 28 | 8d | 2016-05-25 | 2016-06-02 | C-F-P-813 FF, SD-CS-L28-912, SD-CS-L29-932, C-F-DW-944 | 102d | 0d | 10,411.18 |
| C-F-DW-1084 |  | Installation of Steel Doors & Handrails at level 28 | 20d | 2016-06-15 | 2016-07-11 | C-F-DW-1104, C-F-FF-1114, C-F-FF-1094, C-F-FF-1114 FF | 127d | 32d | 73,543.49 |
| C-F-DW-1094 |  | Installation of Wall & Corner Guard at level 28 | 20d | 2016-06-29 | 2016-07-25 | C-F-P-833, C-F-FF-1094 SS, C-F-FF-1094 FF, C-F-FF-1104, SD-CS-L29-932, C-F-P-713, C-F-P-863, C-F-P-803, SD-CS-L25-852, C-F-P-773, C-F-P-923, C-F-P-743, C-F-P-653, C-F-P-593, C-F-P-473, C-F-P-623, C-F-P-533, C-F-P-563, C-F-P-683, C-F-P-503, C-F-P-413, C-F-P-353, C-F-P-233, C-F-P-383, C-F-P-323, C-F-P-293, C-F-P-443, C-F-P-263, C-F-P-173, C-F-P-113, C-F-P-003, C-F-DW-194 | 95d | 0d | 6,907.2 |
|  | 87 | **Finishes - Level 29** |  | 2015-11-07 | 2016-08-29 |  |  |  |  |
|  | 1 | **Partitions** |  | 2015-11-07 | 2016-03-12 |  |  |  |  |
| C-F-P-873 |  | Block Works & Fireproofing at level 29 | 14d | 2015-11-07 | 2015-11-22 | C-CS-L29-81, C-F-P-813 SS, SD-CS-L29-832 | 38d | 0d | 228,294.43 |
| C-F-P-883 |  | Installation of the Studs for Gypsum Board Partition at level 29 | 20d | 2015-11-12 | 2015-12-05 | C-F-P-873 SS+5d, C-F-P-913, SD-CS-L29-852 | 43d | 0d | 276,718.14 |
| C-F-P-893 |  | Installation of Gypsum Board Partition & Insulation within the walls at level 29 | 25d | 2016-02-13 | 2016-03-12 | C-MEP-BMS-1455, C-ELV-SMATV-1455, C-ELV-CCTV-1455, C-ELV-FA-1455, C-ELV-MSPA-1455, C-ELV-RMS-1455, C-ELV-CS-1455, C-MEP-E-1746, C-MEP-PD-1455, C-P-SG-B-272 | 185d | 10d | 415,077.21 |
|  | 2 | **Ceiling Finishes** |  | 2015-11-12 | 2016-05-14 |  |  |  |  |
| C-F-CF-2097 |  | Installation of Ceiling thermal/accoustic insulation at level 29 | 5d | 2015-11-12 | 2015-11-17 | C-F-P-873 SS+5d | 156d | 57d | 8,744.06 |
| C-F-CF-2037 |  | Installation of Ceiling Support & Brackets at level 29 | 15d | 2016-01-07 | 2016-01-24 | C-F-CF-2097 FF, C-F-CF-1897 SS | 99d | 0d | 4,264.51 |
| C-F-CF-2077 |  | Installation of Smoke Curtains support & Equipments at level 29 | 8d | 2016-03-06 | 2016-03-14 | C-F-CF-2037 SS, C-F-CF-1937 SS | 100d | 0d | 88,617.15 |
| C-F-CF-2087 |  | Installation of Smoke Curtains at level 29 | 8d | 2016-03-15 | 2016-03-23 | C-F-CF-2077 | 100d | 5d | 265,851.44 |
| C-F-CF-2047 |  | Installation of Gypsum Ceiling at level 29 | 25d | 2016-03-30 | 2016-04-27 | C-F-CF-2037, C-F-CF-2077, C-MEP-BMS-1475, C-ELV-SMATV-1475, C-ELV-CCTV-1475, C-ELV-FA-1475, C-ELV-MSPA-1475, C-ELV-RMS-1475, C-ELV-CS-1475, C-MEP-PD-1475, C-MEP-PD-1485, C-MEP-FF-1174, C-MEP-FF-1184, C-MEP-AC-2358, C-MEP-AC-2388, C-MEP-AC-2338, C-MEP-E-1756, SD-CS-L29-912, C-F-CF-2087, C-P-SG-B-272 | 95d | 0d |  |
| C-F-CF-2057 |  | Istallation of Metal Ceiling at level 29 | 25d | 2016-03-30 | 2016-04-27 | C-F-CF-2037, C-F-CF-2077, C-MEP-BMS-1475, C-ELV-SMATV-1475, C-ELV-CCTV-1475, C-ELV-FA-1475, C-ELV-MSPA-1475, C-ELV-RMS-1475, C-ELV-CS-1475, C-MEP-PD-1475, C-MEP-PD-1485, C-MEP-FF-1174, C-MEP-FF-1184, C-MEP-AC-2358, C-MEP-AC-2388, C-MEP-AC-2338, C-MEP-E-1756, C-F-CF-2087, C-P-SG-B-272 | 95d | 0d | 12,793.53 |
| C-F-CF-2067 |  | Ceiling Painting works at level 29 | 12d | 2016-05-01 | 2016-05-14 | C-F-CF-2047, C-MEP-FF-1194 FF | 159d | 69d | 3,426.82 |

Notes:
- C-F-FF-1084: Expenses: SW 67591.5; 2 127549
- C-F-FF-1094: Expenses: 1 18329.2
- C-F-WF-1084: Expenses: 1 77870
- C-F-WF-1094: Expenses: 1 542.11
- C-F-WF-1104: Expenses: 1 24170.6
- C-F-DW-1104: Expenses: 1 10411.2
- C-F-DW-1084: Expenses: 1 42310; 2 31233.5
- C-F-DW-1094: Expenses: 1 6907.2
- C-F-P-873: Expenses: B 24611.1; F 203683
- C-F-P-883: Expenses: S 276718
- C-F-P-893: Expenses: G 415077
- C-F-CF-2097: Expenses: W 8744.06
- C-F-CF-2037: Expenses: 1 4264.51
- C-F-CF-2077: Expenses: CS 88617.1
- C-F-CF-2087: Expenses: S 265851
- C-F-CF-2057: Expenses: 1 12793.5
- C-F-CF-2067: Expenses: 1 3426.82

| ID | WBS | Activity | Duration | Start | Finish | Predecessors | Total float | Free float | Cost |
| --- | --- | --- | --- | --- | --- | --- | --- | --- | --- |
|  | 3 | **Floor Finishes** |  | 2016-02-11 | 2016-07-04 |  |  |  |  |
| C-F-FF-1164 |  | Screed & Waterproofing works at level 29 | 20d | 2016-02-11 | 2016-03-05 | C-F-P-873, C-F-FF-1084 SS | 121d | 0d | 185,676.18 |
| C-F-FF-1194 |  | Installation of Raised Flooring at level 29 | 16d | 2016-04-28 | 2016-05-16 | C-F-CF-2057, C-F-CF-2047 | 95d | 5d |  |
| C-F-FF-1174 |  | Implementation of E-poxy Resin at level 29 | 25d | 2016-05-23 | 2016-06-20 | C-F-CF-2057, C-F-CF-2047, C-F-FF-1164, C-F-WF-1194, C-F-FF-1194, SD-CS-L29-872, C-F-P-2653 FF | 90d | 0d | 17,440.21 |
| C-F-FF-1184 |  | Installation of Carpet tiles at level 29 | 12d | 2016-06-21 | 2016-07-04 | C-F-CF-2057, C-F-CF-2047, C-F-FF-1164, C-F-FF-1174, C-F-P-2653 FF | 90d | 0d |  |
|  | 4 | **Wall Finishes** |  | 2016-02-20 | 2016-08-29 |  |  |  |  |
| C-F-WF-1164 |  | Plaster works at level 29 | 18d | 2016-02-20 | 2016-03-10 | C-F-P-873, C-F-WF-1084 SS | 99d | 0d | 74,093.38 |
| C-F-WF-1194 |  | Installation of Toilet Cubicals at level 29 | 5d | 2016-04-11 | 2016-04-16 | C-F-WF-1164, C-F-WF-1114 SS | 116d | 0d |  |
| C-F-WF-1174 |  | Installation of Wall Cladding at level 29 | 20d | 2016-06-25 | 2016-07-20 | C-F-P-893, SD-CS-L29-892, C-F-FF-1174, C-F-P-2663 FF | 124d | 11d | 542.11 |
| C-F-WF-1184 |  | Wall Paint works at level 29 | 20d | 2016-08-07 | 2016-08-29 | C-F-P-883, C-F-WF-1164, C-F-CF-2067, C-F-P-893, C-F-FF-1174 FF+5d, C-MEP-FF-1194 FF, C-F-DW-1164 FF+5d, C-F-DW-1174 FS+5d, C-F-P-2663 FF | 90d | 2d | 22,998.35 |
|  | 5 | **Doors & Windows** |  | 2016-06-04 | 2016-07-31 |  |  |  |  |
| C-F-DW-1184 |  | Installation of Steel Door Sub-frame at level 29 | 8d | 2016-06-04 | 2016-06-12 | C-F-P-873 FF, C-F-DW-1104 | 102d | 0d | 10,411.18 |
| C-F-DW-1164 |  | Installation of Steel Doors & Handrails at level 29 | 20d | 2016-06-21 | 2016-07-17 | C-F-DW-1184, C-F-FF-1194, C-F-FF-1174, C-F-FF-1194 FF | 122d | 32d | 73,543.49 |
| C-F-DW-1174 |  | Installation of Wall & Corner Guard at level 29 | 20d | 2016-07-09 | 2016-07-31 | C-F-P-893, C-F-FF-1174 SS, C-F-FF-1174 FF, C-F-FF-1184, C-F-P-833, SD-CS-L29-932, C-F-P-713, C-F-P-863, C-F-P-803, SD-CS-L25-852, C-F-P-773, C-F-P-923, C-F-P-743, C-F-P-653, C-F-P-593, C-F-P-473, C-F-P-623, C-F-P-533, C-F-P-563, C-F-P-683, C-F-P-503, C-F-P-413, C-F-P-353, C-F-P-233, C-F-P-383, C-F-P-323, C-F-P-293, C-F-P-443, C-F-P-263, C-F-P-173, C-F-P-113, C-F-P-003, C-F-DW-194 | 90d | 0d | 6,907.2 |
|  | 102 | **Finishes - Level 30** |  | 2015-11-11 | 2016-09-26 |  |  |  |  |
|  | 1 | **Partitions** |  | 2015-11-11 | 2016-03-14 |  |  |  |  |
| C-F-P-993 |  | Block Works & Fireproofing at level 30 | 14d | 2015-11-11 | 2015-11-26 | C-CS-L30-91, C-F-P-873 SS, SD-CS-L30-852 | 34d | 0d | 234,845.34 |
| C-F-P-1003 |  | Installation of the Studs for Gypsum Board Partition at level 30 | 20d | 2015-11-17 | 2015-12-09 | C-F-P-993 SS+5d, C-F-P-763, SD-CS-L30-872 | 57d | 0d | 284,658.56 |
| C-F-P-1013 |  | Installation of Gypsum Board Partition & Insulation within the walls at level 30 | 25d | 2016-02-15 | 2016-03-14 | C-MEP-BMS-1655, C-ELV-SMATV-1655, C-ELV-CCTV-1655, C-ELV-FA-1655, C-ELV-MSPA-1655, C-ELV-RMS-1655, C-ELV-CS-1655, C-MEP-E-1986, C-MEP-PD-1655, C-P-SG-B-382 | 183d | 8d | 426,987.84 |
|  | 2 | **Ceiling Finishes** |  | 2015-11-17 | 2016-06-12 |  |  |  |  |
| C-F-CF-2377 |  | Installation of Ceiling thermal/accoustic insulation at level 30 | 5d | 2015-11-17 | 2015-11-22 | C-F-P-993 SS+5d | 152d | 53d | 8,994.97 |
| C-F-CF-2317 |  | Installation of Ceiling Support & Brackets at level 30 | 15d | 2016-01-07 | 2016-01-24 | C-F-CF-2377 FF, C-F-CF-2037 SS | 99d | 0d | 4,386.88 |
| C-F-CF-2337 |  | Istallation of Metal Ceiling at level 30 | 25d | 2016-03-30 | 2016-04-27 | C-F-CF-2317, C-MEP-BMS-1675, C-ELV-SMATV-1675, C-ELV-CCTV-1675, C-ELV-FA-1675, C-ELV-MSPA-1675, C-ELV-RMS-1675, C-ELV-CS-1675, C-MEP-PD-1675, C-MEP-PD-1685, C-MEP-FF-1334, C-MEP-FF-1344, C-MEP-AC-2678, C-MEP-AC-2708, C-MEP-AC-2658, C-MEP-E-1996, C-F-CF-2317 SS, C-P-SG-B-382 | 67d | 0d | 13,160.64 |
| C-F-CF-2327 |  | Installation of Gypsum Ceiling at level 30 | 25d | 2016-04-28 | 2016-05-26 | C-F-CF-2317, C-MEP-BMS-1675, C-ELV-SMATV-1675, C-ELV-CCTV-1675, C-ELV-FA-1675, C-ELV-MSPA-1675, C-ELV-RMS-1675, C-ELV-CS-1675, C-MEP-PD-1675, C-MEP-PD-1685, C-MEP-FF-1334, C-MEP-FF-1344, C-MEP-AC-2678, C-MEP-AC-2708, C-MEP-AC-2658, C-MEP-E-1996, SD-CS-L30-932, C-F-CF-2317 SS, C-F-CF-2337 SS, C-F-CF-2337, C-P-SG-B-382 | 67d | 0d |  |
| C-F-CF-2347 |  | Ceiling Painting works at level 30 | 12d | 2016-05-30 | 2016-06-12 | C-F-CF-2327, C-MEP-FF-1354 FF | 144d | 64d | 3,525.15 |

Notes:
- C-F-FF-1164: Expenses: SW 64313.3; 2 121363
- C-F-FF-1174: Expenses: 1 17440.2
- C-F-WF-1164: Expenses: 1 74093.4
- C-F-WF-1174: Expenses: 1 542.11
- C-F-WF-1184: Expenses: 1 22998.3
- C-F-DW-1184: Expenses: 1 10411.2
- C-F-DW-1164: Expenses: 1 42310; 2 31233.5
- C-F-DW-1174: Expenses: 1 6907.2
- C-F-P-993: Expenses: B 25317.3; F 209528
- C-F-P-1003: Expenses: S 284659
- C-F-P-1013: Expenses: G 426988
- C-F-CF-2377: Expenses: W 8994.97
- C-F-CF-2317: Expenses: 1 4386.88
- C-F-CF-2337: Expenses: 1 13160.6
- C-F-CF-2347: Expenses: 1 3525.15

| ID | WBS | Activity | Duration | Start | Finish | Predecessors | Total float | Free float | Cost |
| --- | --- | --- | --- | --- | --- | --- | --- | --- | --- |
|  | 3 | **Floor Finishes** |  | 2016-02-11 | 2016-07-31 |  |  |  |  |
| C-F-FF-1324 |  | Screed & Waterproofing works at level 30 | 20d | 2016-02-11 | 2016-03-05 | C-F-P-993, C-F-FF-1164 SS | 121d | 0d | 191,004.16 |
| C-F-FF-1354 |  | Installation of Raised Flooring at level 30 | 16d | 2016-05-28 | 2016-06-14 | C-F-CF-2337, C-F-CF-2327 | 80d | 0d |  |
| C-F-FF-1334 |  | Implementation of E-poxy Resin at level 30 | 25d | 2016-06-15 | 2016-07-17 | C-F-CF-2337, C-F-CF-2327, C-F-FF-1324, C-F-WF-1354, C-F-FF-1354, SD-CS-L30-892, C-F-P-2683 FF | 80d | 0d | 17,940.66 |
| C-F-FF-1344 |  | Installation of Carpet tiles at level 30 | 12d | 2016-07-18 | 2016-07-31 | C-F-CF-2337, C-F-CF-2327, C-F-FF-1324, C-F-FF-1334, C-F-P-2683 FF | 80d | 0d |  |
|  | 4 | **Wall Finishes** |  | 2016-02-20 | 2016-09-26 |  |  |  |  |
| C-F-WF-1324 |  | Plaster works at level 30 | 18d | 2016-02-20 | 2016-03-10 | C-F-P-993, C-F-WF-1164 SS | 99d | 0d | 76,219.48 |
| C-F-WF-1354 |  | Installation of Toilet Cubicals at level 30 | 5d | 2016-04-11 | 2016-04-16 | C-F-WF-1324, C-F-WF-1194 SS | 116d | 0d |  |
| C-F-WF-1334 |  | Installation of Wall Cladding at level 30 | 20d | 2016-07-18 | 2016-08-09 | C-F-P-1013, SD-CS-L30-912, C-F-FF-1334, C-F-P-2693 FF | 107d | 12d | 542.11 |
| C-F-WF-1344 |  | Wall Paint works at level 30 | 20d | 2016-08-30 | 2016-09-26 | C-F-P-1003, C-F-WF-1324, C-F-CF-2347, C-F-P-1013, C-F-FF-1334 FF+5d, C-MEP-FF-1354 FF, C-F-DW-1324 FF+5d, C-F-DW-1334 FS+5d, C-F-P-2693 FF | 80d | 0d | 23,658.29 |
|  | 5 | **Doors & Windows** |  | 2016-06-13 | 2016-08-23 |  |  |  |  |
| C-F-DW-1344 |  | Installation of Steel Door Sub-frame at level 30 | 8d | 2016-06-13 | 2016-06-21 | C-F-P-993 FF, SD-CS-L30-952, C-F-DW-1184 | 102d | 0d | 10,411.18 |
| C-F-DW-1324 |  | Installation of Steel Doors & Handrails at level 30 | 20d | 2016-07-18 | 2016-08-09 | C-F-DW-1344, C-F-FF-1354, C-F-FF-1334, C-F-FF-1354 FF | 107d | 32d | 73,543.49 |
| C-F-DW-1334 |  | Installation of Wall & Corner Guard at level 30 | 20d | 2016-08-01 | 2016-08-23 | C-F-P-1013, C-F-FF-1334 SS, C-F-FF-1334 FF, C-F-FF-1344, C-F-P-893, C-F-P-833, SD-CS-L29-932, C-F-P-713, C-F-P-863, C-F-P-803, SD-CS-L25-852, C-F-P-773, C-F-P-923, C-F-P-743, C-F-P-653, C-F-P-593, C-F-P-473, C-F-P-623, C-F-P-533, C-F-P-563, C-F-P-683, C-F-P-503, C-F-P-413, C-F-P-353, C-F-P-233, C-F-P-383, C-F-P-323, C-F-P-293, C-F-P-443, C-F-P-263, C-F-P-173, C-F-P-113, C-F-P-003, C-F-DW-194 | 80d | 0d |  |
|  | 101 | **Finishes - Level 31** |  | 2015-11-28 | 2016-10-10 |  |  |  |  |
|  | 1 | **Partitions** |  | 2015-11-28 | 2016-03-16 |  |  |  |  |
| C-F-P-933 |  | Block Works & Fireproofing at level 31 | 14d | 2015-11-28 | 2015-12-13 | C-CS-L31-101, C-F-P-993, SD-CS-L31-872 | 34d | 0d | 203,169.49 |
| C-F-P-943 |  | Installation of the Studs for Gypsum Board Partition at level 31 | 20d | 2015-12-03 | 2015-12-27 | C-F-P-933 SS+5d, C-F-P-793, SD-CS-L31-892 | 37d | 0d | 246,263.92 |
| C-F-P-953 |  | Installation of Gypsum Board Partition & Insulation within the walls at level 31 | 25d | 2016-02-17 | 2016-03-16 | C-MEP-BMS-1555, C-ELV-SMATV-1555, C-ELV-CCTV-1555, C-ELV-FA-1555, C-ELV-MSPA-1555, C-ELV-RMS-1555, C-ELV-CS-1555, C-MEP-E-1866, C-MEP-PD-1555, C-P-SG-B-392 | 181d | 6d | 369,395.88 |
|  | 2 | **Ceiling Finishes** |  | 2015-12-03 | 2016-06-26 |  |  |  |  |
| C-F-CF-2237 |  | Installation of Ceiling thermal/accoustic insulation at level 31 | 5d | 2015-12-03 | 2015-12-08 | C-F-P-933 SS+5d | 153d | 54d | 7,781.73 |
| C-F-CF-2177 |  | Installation of Ceiling Support & Brackets at level 31 | 15d | 2016-01-25 | 2016-02-11 | C-F-CF-2237 FF, C-F-CF-2317 | 99d | 0d | 3,795.18 |
| C-F-CF-2197 |  | Istallation of Metal Ceiling at level 31 | 25d | 2016-04-13 | 2016-05-11 | C-F-CF-2177, C-MEP-BMS-1575, C-ELV-SMATV-1575, C-ELV-CCTV-1575, C-ELV-FA-1575, C-ELV-MSPA-1575, C-ELV-RMS-1575, C-ELV-CS-1575, C-MEP-PD-1575, C-MEP-PD-1585, C-MEP-FF-1254, C-MEP-FF-1264, C-MEP-AC-2518, C-MEP-AC-2548, C-MEP-AC-2498, C-MEP-E-1876, C-F-CF-2177 SS, C-P-SG-B-392 | 55d | 0d | 11,385.53 |
| C-F-CF-2187 |  | Installation of Gypsum Ceiling at level 31 | 25d | 2016-05-12 | 2016-06-09 | C-F-CF-2177, C-MEP-BMS-1575, C-ELV-SMATV-1575, C-ELV-CCTV-1575, C-ELV-FA-1575, C-ELV-MSPA-1575, C-ELV-RMS-1575, C-ELV-CS-1575, C-MEP-PD-1575, C-MEP-PD-1585, C-MEP-FF-1254, C-MEP-FF-1264, C-MEP-AC-2518, C-MEP-AC-2548, C-MEP-AC-2498, C-MEP-E-1876, SD-CS-L31-952, C-F-CF-2197 SS, C-F-CF-2197, C-F-CF-2177 SS, C-P-SG-B-392 | 55d | 0d |  |
| C-F-CF-2207 |  | Ceiling Painting works at level 31 | 12d | 2016-06-13 | 2016-06-26 | C-F-CF-2187, C-MEP-FF-1274 FF | 132d | 64d | 3,049.68 |

Notes:
- C-F-FF-1324: Expenses: SW 66158.8; 2 124845
- C-F-FF-1334: Expenses: 1 17940.7
- C-F-WF-1324: Expenses: 1 76219.5
- C-F-WF-1334: Expenses: 1 542.11
- C-F-WF-1344: Expenses: 1 23658.3
- C-F-DW-1344: Expenses: 1 10411.2
- C-F-DW-1324: Expenses: 1 42310; 2 31233.5
- C-F-P-933: Expenses: B 21902.5; F 181267
- C-F-P-943: Expenses: S 246264
- C-F-P-953: Expenses: G 369396
- C-F-CF-2237: Expenses: W 7781.73
- C-F-CF-2177: Expenses: 1 3795.18
- C-F-CF-2197: Expenses: 1 11385.5
- C-F-CF-2207: Expenses: 1 3049.68

| ID | WBS | Activity | Duration | Start | Finish | Predecessors | Total float | Free float | Cost |
| --- | --- | --- | --- | --- | --- | --- | --- | --- | --- |
|  | 3 | **Floor Finishes** |  | 2016-02-11 | 2016-08-14 |  |  |  |  |
| C-F-FF-1244 |  | Screed & Waterproofing works at level 31 | 20d | 2016-02-11 | 2016-03-05 | C-F-P-933, C-F-FF-1324 SS | 121d | 0d | 165,241.59 |
| C-F-FF-1274 |  | Installation of Raised Flooring at level 31 | 16d | 2016-06-11 | 2016-06-28 | C-F-CF-2197, C-F-CF-2187 | 68d | 0d |  |
| C-F-FF-1254 |  | Implementation of E-poxy Resin at level 31 | 25d | 2016-06-29 | 2016-07-31 | C-F-CF-2197, C-F-CF-2187, C-F-FF-1244, C-F-WF-1274, C-F-FF-1274, SD-CS-L31-912, C-F-P-2713 FF | 68d | 0d | 15,520.83 |
| C-F-FF-1264 |  | Installation of Carpet tiles at level 31 | 12d | 2016-08-01 | 2016-08-14 | C-F-CF-2197, C-F-CF-2187, C-F-FF-1244, C-F-FF-1254, C-F-P-2713 FF | 68d | 0d |  |
|  | 4 | **Wall Finishes** |  | 2016-02-20 | 2016-10-10 |  |  |  |  |
| C-F-WF-1244 |  | Plaster works at level 31 | 18d | 2016-02-20 | 2016-03-10 | C-F-P-933, C-F-WF-1324 SS | 99d | 0d | 65,939.03 |
| C-F-WF-1274 |  | Installation of Toilet Cubicals at level 31 | 5d | 2016-04-11 | 2016-04-16 | C-F-WF-1244, C-F-WF-1354 SS | 116d | 0d |  |
| C-F-WF-1254 |  | Installation of Wall Cladding at level 31 | 20d | 2016-08-01 | 2016-08-23 | C-F-P-953, SD-CS-L31-932, C-F-FF-1254, C-F-P-2723 FF | 95d | 12d | 542.11 |
| C-F-WF-1264 |  | Wall Paint works at level 31 | 20d | 2016-09-17 | 2016-10-10 | C-F-P-943, C-F-WF-1244, C-F-CF-2207, C-F-P-953, C-F-FF-1254 FF+5d, C-MEP-FF-1274 FF, C-F-DW-1244 FF+5d, C-F-DW-1254 FS+5d, C-F-P-2723 FF | 68d | 0d | 20,467.27 |
|  | 5 | **Doors & Windows** |  | 2016-06-22 | 2016-09-06 |  |  |  |  |
| C-F-DW-1264 |  | Installation of Steel Door Sub-frame at level 31 | 8d | 2016-06-22 | 2016-06-30 | C-F-P-933 FF, SD-CS-L31-972, C-F-DW-1344 | 102d | 0d | 10,411.18 |
| C-F-DW-1244 |  | Installation of Steel Doors & Handrails at level 31 | 20d | 2016-08-01 | 2016-08-23 | C-F-DW-1264, C-F-FF-1274, C-F-FF-1254, C-F-FF-1274 FF | 95d | 32d | 73,543.49 |
| C-F-DW-1254 |  | Installation of Wall & Corner Guard at level 31 | 20d | 2016-08-15 | 2016-09-06 | C-F-P-953, C-F-FF-1254 SS, C-F-FF-1254 FF, C-F-FF-1264, C-F-P-1013, C-F-P-893, C-F-P-833, SD-CS-L29-932, C-F-P-713, C-F-P-863, C-F-P-803, SD-CS-L25-852, C-F-P-773, C-F-P-923, C-F-P-743, C-F-P-653, C-F-P-593, C-F-P-473, C-F-P-623, C-F-P-533, C-F-P-563, C-F-P-683, C-F-P-503, C-F-P-413, C-F-P-353, C-F-P-233, C-F-P-383, C-F-P-323, C-F-P-293, C-F-P-443, C-F-P-263, C-F-P-173, C-F-P-113, C-F-P-003, C-F-DW-194 | 68d | 0d | 6,907.2 |
|  | 100 | **Finishes - Level 32** |  | 2015-11-29 | 2016-10-11 |  |  |  |  |
|  | 1 | **Partitions** |  | 2015-11-29 | 2016-03-19 |  |  |  |  |
| C-F-P-963 |  | Block Works & Fireproofing at level 32 | 14d | 2015-11-29 | 2015-12-14 | C-CS-L32-111, C-F-P-933 SS, SD-CS-L32-892 | 33d | 0d | 262,173.36 |
| C-F-P-973 |  | Installation of the Studs for Gypsum Board Partition at level 32 | 20d | 2015-12-05 | 2015-12-28 | C-F-P-963 SS+5d, C-F-P-853, SD-CS-L32-912 | 52d | 0d | 317,783.15 |
| C-F-P-983 |  | Installation of Gypsum Board Partition & Insulation within the walls at level 32 | 25d | 2016-02-20 | 2016-03-19 | C-MEP-BMS-1605, C-ELV-SMATV-1605, C-ELV-CCTV-1605, C-ELV-FA-1605, C-ELV-MSPA-1605, C-ELV-RMS-1605, C-ELV-CS-1605, C-MEP-E-1926, C-MEP-PD-1605, C-P-SG-B-302 | 179d | 4d | 476,674.73 |
|  | 2 | **Ceiling Finishes** |  | 2015-12-05 | 2016-06-27 |  |  |  |  |
| C-F-CF-2307 |  | Installation of Ceiling thermal/accoustic insulation at level 32 | 5d | 2015-12-05 | 2015-12-09 | C-F-P-963 SS+5d | 154d | 53d | 10,041.67 |
| C-F-CF-2247 |  | Installation of Ceiling Support & Brackets at level 32 | 15d | 2016-01-25 | 2016-02-11 | C-F-CF-2307 FF, C-F-CF-2177 SS | 101d | 0d | 4,897.36 |
| C-F-CF-2267 |  | Istallation of Metal Ceiling at level 32 | 25d | 2016-04-14 | 2016-05-12 | C-F-CF-2247, C-MEP-BMS-1625, C-ELV-SMATV-1625, C-ELV-CCTV-1625, C-ELV-FA-1625, C-ELV-MSPA-1625, C-ELV-RMS-1625, C-ELV-CS-1625, C-MEP-PD-1625, C-MEP-PD-1635, C-MEP-FF-1294, C-MEP-FF-1304, C-MEP-AC-2598, C-MEP-AC-2628, C-MEP-AC-2578, C-MEP-E-1936, C-F-CF-2247 SS, C-P-SG-B-302 | 63d | 0d | 14,692.09 |
| C-F-CF-2257 |  | Installation of Gypsum Ceiling at level 32 | 25d | 2016-05-14 | 2016-06-11 | C-F-CF-2247, C-MEP-BMS-1625, C-ELV-SMATV-1625, C-ELV-CCTV-1625, C-ELV-FA-1625, C-ELV-MSPA-1625, C-ELV-RMS-1625, C-ELV-CS-1625, C-MEP-PD-1625, C-MEP-PD-1635, C-MEP-FF-1294, C-MEP-FF-1304, C-MEP-AC-2598, C-MEP-AC-2628, C-MEP-AC-2578, C-MEP-E-1936, SD-CS-L32-972, C-F-CF-2247 SS, C-F-CF-2267 SS, C-F-CF-2267, C-P-SG-B-302 | 63d | 0d |  |
| C-F-CF-2277 |  | Ceiling Painting works at level 32 | 12d | 2016-06-14 | 2016-06-27 | C-F-CF-2257, C-MEP-FF-1314 FF | 131d | 64d | 3,935.36 |

Notes:
- C-F-FF-1244: Expenses: SW 57235.3; 2 108006
- C-F-FF-1254: Expenses: 1 15520.8
- C-F-WF-1244: Expenses: 1 65939
- C-F-WF-1254: Expenses: 1 542.11
- C-F-WF-1264: Expenses: 1 20467.3
- C-F-DW-1264: Expenses: 1 10411.2
- C-F-DW-1244: Expenses: 1 42310; 2 31233.5
- C-F-DW-1254: Expenses: 1 6907.2
- C-F-P-963: Expenses: B 28263.4; F 233910
- C-F-P-973: Expenses: S 317783
- C-F-P-983: Expenses: G 476675
- C-F-CF-2307: Expenses: W 10041.7
- C-F-CF-2247: Expenses: 1 4897.36
- C-F-CF-2267: Expenses: 1 14692.1
- C-F-CF-2277: Expenses: 1 3935.36

| ID | WBS | Activity | Duration | Start | Finish | Predecessors | Total float | Free float | Cost |
| --- | --- | --- | --- | --- | --- | --- | --- | --- | --- |
|  | 3 | **Floor Finishes** |  | 2016-03-06 | 2016-08-15 |  |  |  |  |
| C-F-FF-1284 |  | Screed & Waterproofing works at level 32 | 20d | 2016-03-06 | 2016-03-28 | C-F-P-963, C-F-FF-1244 | 121d | 0d | 213,230.56 |
| C-F-FF-1314 |  | Installation of Raised Flooring at level 32 | 16d | 2016-06-12 | 2016-06-29 | C-F-CF-2267, C-F-CF-2257 | 67d | 0d |  |
| C-F-FF-1294 |  | Implementation of E-poxy Resin at level 32 | 25d | 2016-06-30 | 2016-08-01 | C-F-CF-2267, C-F-CF-2257, C-F-FF-1284, C-F-WF-1314, C-F-FF-1314, SD-CS-L32-932, C-F-P-2743 FF, C-F-T-1 | 67d | 0d | 20,028.34 |
| C-F-FF-1304 |  | Installation of Carpet tiles at level 32 | 12d | 2016-08-02 | 2016-08-15 | C-F-CF-2267, C-F-CF-2257, C-F-FF-1284, C-F-FF-1294, C-F-P-2743 FF | 67d | 0d |  |
|  | 4 | **Wall Finishes** |  | 2016-02-20 | 2016-10-11 |  |  |  |  |
| C-F-WF-1284 |  | Plaster works & Cement Board (Internal & External walls) at level 32 | 18d | 2016-02-20 | 2016-03-10 | C-F-P-963, C-F-WF-1244 SS | 99d | 0d | 144,177.46 |
| C-F-WF-1314 |  | Installation of Toilet Cubicals at level 32 | 5d | 2016-04-11 | 2016-04-16 | C-F-WF-1284, C-F-WF-1274 SS | 116d | 0d |  |
| C-F-WF-1294 |  | Installation of Wall Cladding at level 32 | 20d | 2016-08-02 | 2016-08-24 | C-F-P-983, SD-CS-L32-952, C-F-FF-1294, C-F-P-2753 FF | 94d | 12d | 542.11 |
| C-F-WF-1304 |  | Wall Paint works at level 32 | 20d | 2016-09-18 | 2016-10-11 | C-F-P-973, C-F-WF-1284, C-F-CF-2277, C-F-P-983, C-F-FF-1294 FF+5d, C-MEP-FF-1314 FF, C-F-DW-1284 FF+5d, C-F-DW-1294 FS+5d, C-F-P-2753 FF | 67d | 0d | 26,411.31 |
|  | 5 | **Doors & Windows** |  | 2016-06-22 | 2016-09-07 |  |  |  |  |
| C-F-DW-1304 |  | Installation of Steel Door Sub-frame at level 32 | 8d | 2016-06-22 | 2016-06-30 | C-F-P-963 FF, SD-CS-L32-992, C-F-DW-1264 SS | 102d | 0d | 10,411.18 |
| C-F-DW-1284 |  | Installation of Steel Doors & Handrails at level 32 | 20d | 2016-08-02 | 2016-08-24 | C-F-DW-1304, C-F-FF-1314, C-F-FF-1294, C-F-FF-1314 FF | 94d | 32d | 73,543.49 |
| C-F-DW-1294 |  | Installation of Wall & Corner Guard at level 32 | 20d | 2016-08-16 | 2016-09-07 | C-F-P-983, C-F-FF-1294 SS, C-F-FF-1294 FF, C-F-FF-1304, C-F-P-953, C-F-P-1013, C-F-P-893, C-F-P-833, SD-CS-L29-932, C-F-P-713, C-F-P-863, C-F-P-803, SD-CS-L25-852, C-F-P-773, C-F-P-923, C-F-P-743, C-F-P-653, C-F-P-593, C-F-P-473, C-F-P-623, C-F-P-533, C-F-P-563, C-F-P-683, C-F-P-503, C-F-P-413, C-F-P-353, C-F-P-233, C-F-P-383, C-F-P-323, C-F-P-293, C-F-P-443, C-F-P-263, C-F-P-173, C-F-P-113, C-F-P-003, C-F-DW-194 | 67d | 0d | 6,907.2 |
|  | 99 | **Finishes - Level 33** |  | 2015-12-06 | 2016-11-05 |  |  |  |  |
|  | 1 | **Partitions** |  | 2015-12-06 | 2016-03-21 |  |  |  |  |
| C-F-P-1023 |  | Block Works & Fireproofing at level 33 | 14d | 2015-12-06 | 2015-12-22 | C-CS-L33-121, C-F-P-963 SS, SD-CS-L33-912 | 27d | 0d | 277,394.75 |
| C-F-P-1033 |  | Installation of the Studs for Gypsum Board Partition at level 33 | 20d | 2015-12-12 | 2016-01-04 | C-F-P-1023 SS+5d, C-F-P-703, SD-CS-L33-932 | 34d | 0d | 336,233.16 |
| C-F-P-1043 |  | Installation of Gypsum Board Partition & Insulation within the walls at level 33 | 25d | 2016-02-22 | 2016-03-21 | C-MEP-BMS-1705, C-ELV-SMATV-1705, C-ELV-CCTV-1705, C-ELV-FA-1705, C-ELV-MSPA-1705, C-ELV-RMS-1705, C-ELV-CS-1705, C-MEP-E-2046, C-MEP-PD-1705, C-P-SG-B-312 | 177d | 2d | 504,349.73 |
|  | 2 | **Ceiling Finishes** |  | 2015-12-12 | 2016-07-04 |  |  |  |  |
| C-F-CF-2447 |  | Installation of Ceiling thermal/accoustic insulation at level 33 | 5d | 2015-12-12 | 2015-12-16 | C-F-P-1023 SS+5d | 150d | 47d | 10,624.68 |
| C-F-CF-2387 |  | Installation of Ceiling Support & Brackets at level 33 | 15d | 2016-01-25 | 2016-02-11 | C-F-CF-2447 FF, C-F-CF-2247 SS | 103d | 0d | 5,181.7 |
| C-F-CF-2407 |  | Istallation of Metal Ceiling at level 33 | 25d | 2016-04-21 | 2016-05-19 | C-F-CF-2387, C-MEP-BMS-1725, C-ELV-SMATV-1725, C-ELV-CCTV-1725, C-ELV-FA-1725, C-ELV-MSPA-1725, C-ELV-RMS-1725, C-ELV-CS-1725, C-MEP-PD-1725, C-MEP-PD-1735, C-MEP-FF-1374, C-MEP-FF-1384, C-MEP-AC-2758, C-MEP-AC-2788, C-MEP-AC-2738, C-MEP-E-2056, C-F-CF-2387 SS, C-P-SG-B-312 | 46d | 0d | 15,545.09 |
| C-F-CF-2397 |  | Installation of Gypsum Ceiling at level 33 | 25d | 2016-05-21 | 2016-06-18 | C-F-CF-2387, C-MEP-BMS-1725, C-ELV-SMATV-1725, C-ELV-CCTV-1725, C-ELV-FA-1725, C-ELV-MSPA-1725, C-ELV-RMS-1725, C-ELV-CS-1725, C-MEP-PD-1725, C-MEP-PD-1735, C-MEP-FF-1374, C-MEP-FF-1384, C-MEP-AC-2758, C-MEP-AC-2788, C-MEP-AC-2738, C-MEP-E-2056, SD-CS-L33-992, C-F-CF-2407 SS, C-F-CF-2407, C-F-CF-2387 SS, C-P-SG-B-312 | 46d | 0d |  |
| C-F-CF-2417 |  | Ceiling Painting works at level 33 | 12d | 2016-06-21 | 2016-07-04 | C-F-CF-2397, C-MEP-FF-1394 FF | 125d | 79d | 4,163.84 |

Notes:
- C-F-FF-1284: Expenses: SW 73857.4; 2 139373
- C-F-FF-1294: Expenses: 1 20028.3
- C-F-WF-1284: Expenses: 1 59088.6; 2 85088.9
- C-F-WF-1294: Expenses: 1 542.11
- C-F-WF-1304: Expenses: 1 26411.3
- C-F-DW-1304: Expenses: 1 10411.2
- C-F-DW-1284: Expenses: 1 42310; 2 31233.5
- C-F-DW-1294: Expenses: 1 6907.2
- C-F-P-1023: Expenses: B 29904.3; F 247490
- C-F-P-1033: Expenses: S 336233
- C-F-P-1043: Expenses: G 504350
- C-F-CF-2447: Expenses: W 10624.7
- C-F-CF-2387: Expenses: 1 5181.7
- C-F-CF-2407: Expenses: 1 15545.1
- C-F-CF-2417: Expenses: 1 4163.84

| ID | WBS | Activity | Duration | Start | Finish | Predecessors | Total float | Free float | Calendar | Cost |
| --- | --- | --- | --- | --- | --- | --- | --- | --- | --- | --- |
|  | 3 | **Floor Finishes** |  | 2016-03-06 | 2016-09-08 |  |  |  |  |  |
| C-F-FF-1364 |  | Screed & Waterproofing works at level 33 | 20d | 2016-03-06 | 2016-03-28 | C-F-P-1023, C-F-FF-1284 SS | 121d | 0d |  | 225,610.39 |
| C-F-FF-1394 |  | Installation of Raised Flooring at level 33 | 16d | 2016-06-19 | 2016-07-10 | C-F-CF-2407, C-F-CF-2397 | 46d | 0d |  |  |
| C-F-FF-1374 |  | Implementation of E-poxy Resin at level 33 | 25d | 2016-07-11 | 2016-08-08 | C-F-CF-2407, C-F-CF-2397, C-F-FF-1364, C-F-WF-1394, C-F-FF-1394, SD-CS-L33-952, C-F-P-2773 FF | 46d | 0d |  | 21,191.16 |
| C-F-FF-2344 |  | Installation of Glass Ballustrade at swimming pool terrace at level 33 | 15d | 2016-08-09 | 2016-08-25 | C-F-FF-1374, C-F-FF-1374 FF | 50d | 0d | *APB - 6 D week + Qatar Holiday | 366,330.24 |
| C-F-FF-1384 |  | Installation of Carpet tiles at level 33 | 12d | 2016-08-27 | 2016-09-08 | C-F-CF-2407, C-F-CF-2397, C-F-FF-1364, C-F-FF-1374, C-F-P-2773 FF, C-F-FF-2344 | 46d | 0d |  |  |
|  | 4 | **Wall Finishes** |  | 2016-03-12 | 2016-11-05 |  |  |  |  |  |
| C-F-WF-1364 |  | Plaster works at level 33 | 18d | 2016-03-12 | 2016-03-31 | C-F-P-1023, C-F-WF-1284 | 99d | 0d |  | 90,028.97 |
| C-F-WF-1394 |  | Installation of Toilet Cubicals at level 33 | 5d | 2016-04-11 | 2016-04-16 | C-F-WF-1364, C-F-WF-1314 SS | 116d | 0d |  |  |
| C-F-WF-1374 |  | Installation of Wall Cladding at level 33 | 20d | 2016-08-09 | 2016-08-31 | C-F-P-1043, SD-CS-L33-972, C-F-FF-1374, C-F-P-2783 FF | 88d | 27d |  | 542.11 |
| C-F-WF-1384 |  | Wall Paint works at level 33 | 20d | 2016-10-13 | 2016-11-05 | C-F-P-1033, C-F-WF-1364, C-F-CF-2417, C-F-P-1043, C-F-FF-1374 FF+5d, C-MEP-FF-1394 FF, C-F-DW-1364 FF+5d, C-F-DW-1374 FS+5d, C-F-P-2783 FF, C-AF-KF-36 | 46d | 0d |  | 27,944.71 |
|  | 5 | **Doors & Windows** |  | 2016-06-22 | 2016-10-06 |  |  |  |  |  |
| C-F-DW-1384 |  | Installation of Steel Door Sub-frame at level 33 | 8d | 2016-06-22 | 2016-06-30 | C-F-P-1023 FF, SD-CS-L33-1012, C-F-DW-1304 SS | 102d | 0d |  | 10,411.18 |
| C-F-DW-1364 |  | Installation of Steel Doors & Handrails at level 33 | 20d | 2016-08-09 | 2016-08-31 | C-F-DW-1384, C-F-FF-1394, C-F-FF-1374, C-F-FF-1394 FF | 88d | 47d |  | 73,543.49 |
| C-F-DW-1374 |  | Installation of Wall & Corner Guard at level 33 | 20d | 2016-09-13 | 2016-10-06 | C-F-P-1043, C-F-FF-1374 SS, C-F-FF-1374 FF, C-F-FF-1384, C-F-P-983, C-F-P-953, C-F-P-1013, C-F-P-893, C-F-P-833, SD-CS-L29-932, C-F-P-713, C-F-P-863, C-F-P-803, SD-CS-L25-852, C-F-P-773, C-F-P-923, C-F-P-743, C-F-P-653, C-F-P-593, C-F-P-473, C-F-P-623, C-F-P-533, C-F-P-563, C-F-P-683, C-F-P-503, C-F-P-413, C-F-P-353, C-F-P-233, C-F-P-383, C-F-P-323, C-F-P-293, C-F-P-443, C-F-P-263, C-F-P-173, C-F-P-113, C-F-P-003, C-F-DW-194 | 46d | 0d |  | 6,907.2 |
|  | 98 | **Finishes - Level 34** |  | 2015-12-13 | 2016-10-25 |  |  |  |  |  |
|  | 1 | **Partitions** |  | 2015-12-13 | 2016-03-23 |  |  |  |  |  |
| C-F-P-1083 |  | Block Works & Fireproofing at level 34 | 14d | 2015-12-13 | 2015-12-29 | C-CS-L34-131, C-F-P-1023 SS, SD-CS-L34-932 | 21d | 0d |  | 157,899.97 |
| C-F-P-1093 |  | Installation of the Studs for Gypsum Board Partition at level 34 | 20d | 2015-12-20 | 2016-01-11 | C-F-P-1083 SS+5d, C-F-P-823, SD-CS-L34-952 | 52d | 0d |  | 191,392.25 |
| C-F-P-1103 |  | Installation of Gypsum Board Partition & Insulation within the walls at level 34 | 25d | 2016-02-24 | 2016-03-23 | C-MEP-BMS-1805, C-ELV-SMATV-1805, C-ELV-CCTV-1805, C-ELV-FA-1805, C-ELV-MSPA-1805, C-ELV-RMS-1805, C-ELV-CS-1805, C-MEP-E-2166, C-MEP-PD-1805, C-P-AV-NC-002, C-P-SG-B-322 | 175d | 0d |  | 287,088.38 |
|  | 2 | **Ceiling Finishes** |  | 2015-12-20 | 2016-07-14 |  |  |  |  |  |
| C-F-CF-2587 |  | Installation of Ceiling thermal/accoustic insulation at level 34 | 5d | 2015-12-20 | 2015-12-24 | C-F-P-1083 SS+5d | 154d | 41d |  | 6,047.83 |
| C-F-CF-2527 |  | Installation of Ceiling Support & Brackets at level 34 | 15d | 2016-01-25 | 2016-02-11 | C-F-CF-2587 FF, C-F-CF-2387 SS | 113d | 0d |  | 2,949.55 |
| C-F-CF-2547 |  | Istallation of Metal Ceiling at level 34 | 25d | 2016-04-28 | 2016-05-26 | C-F-CF-2527, C-MEP-BMS-1825, C-ELV-SMATV-1825, C-ELV-CCTV-1825, C-ELV-FA-1825, C-ELV-MSPA-1825, C-ELV-RMS-1825, C-ELV-CS-1825, C-MEP-PD-1825, C-MEP-PD-1835, C-MEP-FF-1454, C-MEP-FF-1464, C-MEP-AC-2918, C-MEP-AC-2948, C-MEP-AC-2898, C-MEP-E-2176, C-F-CF-2527 SS, C-P-AV-NC-004, C-P-SG-B-322 | 55d | 0d |  | 8,848.65 |
| C-F-CF-2537 |  | Installation of Gypsum Ceiling at level 34 | 25d | 2016-05-28 | 2016-06-25 | C-F-CF-2527, C-MEP-BMS-1825, C-ELV-SMATV-1825, C-ELV-CCTV-1825, C-ELV-FA-1825, C-ELV-MSPA-1825, C-ELV-RMS-1825, C-ELV-CS-1825, C-MEP-PD-1825, C-MEP-PD-1835, C-MEP-FF-1454, C-MEP-FF-1464, C-MEP-AC-2918, C-MEP-AC-2948, C-MEP-AC-2898, C-MEP-E-2176, SD-CS-L34-1012, C-F-CF-2527 SS, C-F-CF-2547 SS, C-F-CF-2547, C-P-AV-NC-004, C-P-SG-B-322 | 55d | 0d |  |  |
| C-F-CF-2557 |  | Ceiling Painting works at level 34 | 12d | 2016-06-28 | 2016-07-14 | C-F-CF-2537, C-MEP-FF-1474 FF | 119d | 64d |  | 2,370.16 |

Notes:
- C-F-FF-1364: Expenses: SW 78145.5; 2 147465
- C-F-FF-1374: Expenses: 1 21191.2
- C-F-FF-2344: Expenses: B 366330
- C-F-WF-1364: Expenses: 1 90029
- C-F-WF-1374: Expenses: 1 542.11
- C-F-WF-1384: Expenses: 1 27944.7
- C-F-DW-1384: Expenses: 1 10411.2
- C-F-DW-1364: Expenses: 1 42310; 2 31233.5
- C-F-DW-1374: Expenses: 1 6907.2
- C-F-P-1083: Expenses: B 17022.3; F 140878
- C-F-P-1093: Expenses: S 191392
- C-F-P-1103: Expenses: G 287088
- C-F-CF-2587: Expenses: W 6047.83
- C-F-CF-2527: Expenses: 1 2949.55
- C-F-CF-2547: Expenses: 1 8848.65
- C-F-CF-2557: Expenses: 1 2370.16

| ID | WBS | Activity | Duration | Start | Finish | Predecessors | Total float | Free float | Calendar | Cost |
| --- | --- | --- | --- | --- | --- | --- | --- | --- | --- | --- |
|  | 3 | **Floor Finishes** |  | 2016-03-06 | 2016-08-29 |  |  |  |  |  |
| C-F-FF-1444 |  | Screed & Waterproofing works at level 34 | 20d | 2016-03-06 | 2016-03-28 | C-F-P-1083, C-F-FF-1364 SS | 121d | 0d |  | 128,423.04 |
| C-F-FF-1474 |  | Installation of Raised Flooring at level 34 | 16d | 2016-06-26 | 2016-07-17 | C-F-CF-2547, C-F-CF-2537 | 55d | 0d |  |  |
| C-F-FF-1454 |  | Implementation of E-poxy Resin at level 34 | 25d | 2016-07-18 | 2016-08-15 | C-F-CF-2547, C-F-CF-2537, C-F-FF-1444, C-F-WF-1474, C-F-FF-1474, SD-CS-L34-972, C-F-P-2803 FF | 55d | 0d |  | 12,062.53 |
| C-F-FF-2334 |  | Installation of Glass Ballustrade at swimming pool terrace at level 34 | 10d | 2016-08-04 | 2016-08-15 | C-F-FF-1454 SS, C-F-FF-1454 FF | 59d | 0d | *APB - 6 D week + Qatar Holiday | 99,103.83 |
| C-F-FF-1464 |  | Installation of Carpet tiles at level 34 | 12d | 2016-08-16 | 2016-08-29 | C-F-CF-2547, C-F-CF-2537, C-F-FF-1444, C-F-FF-1454, C-F-P-2803 FF, C-F-FF-2334 | 55d | 0d |  |  |
|  | 4 | **Wall Finishes** |  | 2016-03-12 | 2016-10-25 |  |  |  |  |  |
| C-F-WF-1444 |  | Plaster works at level 34 | 18d | 2016-03-12 | 2016-03-31 | C-F-P-1083, C-F-WF-1364 SS | 99d | 0d |  | 51,246.72 |
| C-F-WF-1474 |  | Installation of Toilet Cubicals at level 34 | 5d | 2016-04-11 | 2016-04-16 | C-F-WF-1444, C-F-WF-1394 SS | 121d | 0d |  |  |
| C-F-WF-1454 |  | Installation of Wall Cladding at level 34 | 20d | 2016-08-16 | 2016-09-07 | C-F-P-1103, SD-CS-L34-992, C-F-FF-1454, C-F-P-2813 FF | 82d | 12d |  | 542.11 |
| C-F-WF-1464 |  | Wall Paint works at level 34 | 20d | 2016-10-03 | 2016-10-25 | C-F-P-1093, C-F-WF-1444, C-F-CF-2557, C-F-P-1103, C-F-FF-1454 FF+5d, C-MEP-FF-1474 FF, C-F-DW-1444 FF+5d, C-F-DW-1454 FS+5d, C-F-P-2813 FF, C-AF-TF-006, C-AF-KF-46 | 55d | 0d |  | 15,906.82 |
|  | 5 | **Doors & Windows** |  | 2016-06-22 | 2016-09-26 |  |  |  |  |  |
| C-F-DW-1464 |  | Installation of Steel Door Sub-frame at level 34 | 8d | 2016-06-22 | 2016-06-30 | C-F-P-1083 FF, SD-CS-L34-1032, C-F-DW-1384 SS | 102d | 0d |  | 10,411.18 |
| C-F-DW-1444 |  | Installation of Steel Doors & Handrails at level 34 | 20d | 2016-08-16 | 2016-09-07 | C-F-DW-1464, C-F-FF-1474, C-F-FF-1454, C-F-FF-1474 FF | 82d | 32d |  | 73,543.49 |
| C-F-DW-1454 |  | Installation of Wall & Corner Guard at level 34 | 20d | 2016-08-30 | 2016-09-26 | C-F-P-1103, C-F-FF-1454 SS, C-F-FF-1454 FF, C-F-FF-1464, C-F-P-1043, C-F-P-983, C-F-P-953, C-F-P-1013, C-F-P-893, C-F-P-833, SD-CS-L29-932, C-F-P-713, C-F-P-863, C-F-P-803, SD-CS-L25-852, C-F-P-773, C-F-P-923, C-F-P-743, C-F-P-653, C-F-P-593, C-F-P-473, C-F-P-623, C-F-P-533, C-F-P-563, C-F-P-683, C-F-P-503, C-F-P-413, C-F-P-353, C-F-P-233, C-F-P-383, C-F-P-323, C-F-P-293, C-F-P-443, C-F-P-263, C-F-P-173, C-F-P-113, C-F-P-003, C-F-DW-194 | 55d | 0d |  | 6,907.2 |
|  | 97 | **Finishes - Level 35** |  | 2015-12-30 | 2016-11-10 |  |  |  |  |  |
|  | 1 | **Partitions** |  | 2015-12-30 | 2016-03-28 |  |  |  |  |  |
| C-F-P-1263 |  | Block Works & Fireproofing at level 35 | 14d | 2015-12-30 | 2016-01-14 | C-CS-L35-141, C-F-P-1083, SD-CS-L35-952 | 21d | 0d |  | 187,290.38 |
| C-F-P-1273 |  | Installation of the Studs for Gypsum Board Partition at level 35 | 20d | 2016-01-05 | 2016-01-27 | C-F-P-1263 SS+5d, C-F-P-883, SD-CS-L35-972 | 26d | 0d |  | 231,550.5 |
| C-F-P-1283 |  | Installation of Gypsum Board Partition & Insulation within the walls at level 35 | 25d | 2016-02-29 | 2016-03-28 | C-MEP-BMS-2105, C-ELV-SMATV-2105, C-ELV-CCTV-2105, C-ELV-FA-2105, C-ELV-MSPA-2105, C-ELV-RMS-2105, C-ELV-CS-2105, C-MEP-E-2526, C-MEP-PD-2105, C-P-SG-B-332 | 179d | 4d |  | 340,525.03 |
|  | 2 | **Ceiling Finishes** |  | 2016-01-05 | 2016-07-31 |  |  |  |  |  |
| C-F-CF-3007 |  | Installation of Ceiling thermal/accoustic insulation at level 35 | 5d | 2016-01-05 | 2016-01-10 | C-F-P-1263 SS+5d | 140d | 27d |  | 7,173.53 |
| C-F-CF-2947 |  | Installation of Ceiling Support & Brackets at level 35 | 15d | 2016-01-25 | 2016-02-11 | C-F-CF-3007 FF, C-F-CF-2527 SS | 113d | 0d |  | 3,498.56 |
| C-F-CF-2967 |  | Istallation of Metal Ceiling at level 35 | 25d | 2016-05-15 | 2016-06-12 | C-F-CF-2947, C-MEP-BMS-2125, C-ELV-SMATV-2125, C-ELV-CCTV-2125, C-ELV-FA-2125, C-ELV-MSPA-2125, C-ELV-RMS-2125, C-ELV-CS-2125, C-MEP-PD-2125, C-MEP-PD-2135, C-MEP-FF-1694, C-MEP-FF-1704, C-MEP-AC-3398, C-MEP-AC-3428, C-MEP-AC-3378, C-MEP-E-2536, C-F-CF-2947 SS, C-P-SG-B-332 | 41d | 0d |  | 10,495.68 |
| C-F-CF-2957 |  | Installation of Gypsum Ceiling at level 35 | 25d | 2016-06-13 | 2016-07-14 | C-F-CF-2947, C-MEP-BMS-2125, C-ELV-SMATV-2125, C-ELV-CCTV-2125, C-ELV-FA-2125, C-ELV-MSPA-2125, C-ELV-RMS-2125, C-ELV-CS-2125, C-MEP-PD-2125, C-MEP-PD-2135, C-MEP-FF-1694, C-MEP-FF-1704, C-MEP-AC-3398, C-MEP-AC-3428, C-MEP-AC-3378, C-MEP-E-2536, SD-CS-L35-1032, C-F-CF-2947 SS, C-F-CF-2967 SS, C-F-CF-2967, C-P-SG-B-332 | 41d | 0d |  |  |
| C-F-CF-2977 |  | Ceiling Painting works at level 35 | 12d | 2016-07-18 | 2016-07-31 | C-F-CF-2957, C-MEP-FF-1714 FF | 105d | 64d |  | 2,811.33 |

Notes:
- C-F-FF-1444: Expenses: SW 44482.3; 2 83940.7
- C-F-FF-1454: Expenses: 1 12062.5
- C-F-FF-2334: Expenses: B 99103.8
- C-F-WF-1444: Expenses: 1 51246.7
- C-F-WF-1454: Expenses: 1 542.11
- C-F-WF-1464: Expenses: 1 15906.8
- C-F-DW-1464: Expenses: 1 10411.2
- C-F-DW-1444: Expenses: 1 42310; 2 31233.5
- C-F-DW-1454: Expenses: 1 6907.2
- C-F-P-1263: Expenses: B 20190.7; F 167100
- C-F-P-1273: Expenses: S 231550
- C-F-P-1283: Expenses: G 340525
- C-F-CF-3007: Expenses: W 7173.53
- C-F-CF-2947: Expenses: 1 3498.56
- C-F-CF-2967: Expenses: 1 10495.7
- C-F-CF-2977: Expenses: 1 2811.33

| ID | WBS | Activity | Duration | Start | Finish | Predecessors | Total float | Free float | Cost |
| --- | --- | --- | --- | --- | --- | --- | --- | --- | --- |
|  | 3 | **Floor Finishes** |  | 2016-03-06 | 2016-09-18 |  |  |  |  |
| C-F-FF-1684 |  | Screed & Waterproofing works at level 35 | 20d | 2016-03-06 | 2016-03-28 | C-F-P-1263, C-F-FF-1444 SS | 121d | 0d | 152,326.81 |
| C-F-FF-1714 |  | Installation of Raised Flooring at level 35 | 16d | 2016-07-16 | 2016-08-02 | C-F-CF-2967, C-F-CF-2957 | 41d | 0d |  |
| C-F-FF-1694 |  | Implementation of E-poxy Resin at level 35 | 25d | 2016-08-03 | 2016-08-31 | C-F-CF-2967, C-F-CF-2957, C-F-FF-1684, C-F-WF-1714, C-F-FF-1714, SD-CS-L35-992 | 41d | 0d | 14,307.77 |
| C-F-FF-1704 |  | Installation of Carpet tiles at level 35 | 12d | 2016-09-01 | 2016-09-18 | C-F-CF-2967, C-F-CF-2957, C-F-FF-1684, C-F-FF-1694 | 41d | 0d |  |
|  | 4 | **Wall Finishes** |  | 2016-03-12 | 2016-11-10 |  |  |  |  |
| C-F-WF-1684 |  | Plaster works at level 35 | 18d | 2016-03-12 | 2016-03-31 | C-F-P-1263, C-F-WF-1444 SS | 99d | 0d | 60,785.44 |
| C-F-WF-1714 |  | Installation of Toilet Cubicals at level 35 | 5d | 2016-04-11 | 2016-04-16 | C-F-WF-1684, C-F-WF-1474 SS | 121d | 0d |  |
| C-F-WF-1694 |  | Installation of Wall Cladding at level 35 | 20d | 2016-09-01 | 2016-09-28 | C-F-P-1283, SD-CS-L35-1012, C-F-FF-1694 | 68d | 12d | 542.11 |
| C-F-WF-1704 |  | Wall Paint works at level 35 | 20d | 2016-10-19 | 2016-11-10 | C-F-P-1273, C-F-WF-1684, C-F-CF-2977, C-F-P-1283, C-F-FF-1694 FF+5d, C-MEP-FF-1714 FF, C-F-DW-1684 FF+5d, C-F-DW-1694 FS+5d, C-F-DW-1754 FF, C-RF-1 | 41d | 0d | 18,867.61 |
|  | 5 | **Doors & Windows** |  | 2016-03-24 | 2016-10-18 |  |  |  |  |
| C-F-DW-1714 |  | Installation of Wood Door Sub-frame at level 35 | 8d | 2016-03-24 | 2016-04-02 | C-F-P-1283 FF, C-F-P-1103, C-F-P-1043, C-F-P-983, C-F-P-953, C-F-P-1013, C-F-P-893, C-F-P-833, SD-CS-L29-932, C-F-P-713, C-F-P-863, C-F-P-803, SD-CS-L25-852, C-F-P-773, C-F-P-923, C-F-P-743, C-F-P-653, C-F-P-593, C-F-P-473, C-F-P-623, C-F-P-533, C-F-P-563, C-F-P-683, C-F-P-503, C-F-P-413, C-F-P-353, C-F-P-233, C-F-P-383, C-F-P-323, C-F-P-293, C-F-P-443, C-F-P-263, C-F-P-173, C-F-P-113, C-F-P-003, C-F-DW-194 | 175d | 138d | 7,577.11 |
| C-F-DW-1704 |  | Installation of Steel Door Sub-frame at level 35 | 8d | 2016-06-22 | 2016-06-30 | C-F-P-1263 FF, SD-CS-L35-1052, C-F-DW-1464 SS | 102d | 0d | 10,411.18 |
| C-F-DW-1684 |  | Installation of Steel Doors & Handrails at level 35 | 20d | 2016-09-01 | 2016-09-28 | C-F-DW-1704, C-F-FF-1714, C-F-FF-1694, C-F-FF-1714 FF | 68d | 12d | 73,543.49 |
| C-F-DW-1694 |  | Installation of Wood Doors at level 35 | 20d | 2016-09-19 | 2016-10-12 | C-F-DW-1714, C-F-P-1283, C-F-FF-1694 SS, C-F-FF-1694 FF, C-F-FF-1704 | 41d | 0d | 22,731.34 |
| C-F-DW-1754 |  | Installation of Wall & Corner Guard at level 35 | 5d | 2016-10-13 | 2016-10-18 | C-F-DW-1684, C-F-DW-1694 | 61d | 20d | 6,907.2 |
|  | 96 | **Finishes - Level 36** |  | 2015-12-30 | 2016-11-10 |  |  |  |  |
|  | 1 | **Partitions** |  | 2015-12-30 | 2016-04-13 |  |  |  |  |
| C-F-P-1113 |  | Block Works & Fireproofing at level 36 | 14d | 2015-12-30 | 2016-01-14 | C-CS-L36-151, C-F-P-1263 SS, SD-CS-L36-972 | 21d | 0d | 191,030.81 |
| C-F-P-1123 |  | Installation of the Studs for Gypsum Board Partition at level 36 | 20d | 2016-01-05 | 2016-01-27 | C-F-P-1113 SS+5d, C-F-P-1003, SD-CS-L36-992 | 36d | 0d | 227,016.69 |
| C-F-P-1133 |  | Installation of Gypsum Board Partition & Insulation within the walls at level 36 | 25d | 2016-03-16 | 2016-04-13 | C-MEP-BMS-1855, C-ELV-SMATV-1855, C-ELV-CCTV-1855, C-ELV-FA-1855, C-ELV-MSPA-1855, C-ELV-RMS-1855, C-ELV-CS-1855, C-MEP-E-2226, C-MEP-PD-1855, C-P-SG-B-342 | 165d | 117d | 347,325.76 |
|  | 2 | **Ceiling Finishes** |  | 2016-01-05 | 2016-07-31 |  |  |  |  |
| C-F-CF-2657 |  | Installation of Ceiling thermal/accoustic insulation at level 36 | 5d | 2016-01-05 | 2016-01-10 | C-F-P-1113 SS+5d | 140d | 27d | 7,316.8 |
| C-F-CF-2597 |  | Installation of Ceiling Support & Brackets at level 36 | 15d | 2016-01-25 | 2016-02-11 | C-F-CF-2657 FF, C-F-CF-2947 SS | 113d | 0d | 3,568.43 |
| C-F-CF-2617 |  | Istallation of Metal Ceiling at level 36 | 25d | 2016-05-15 | 2016-06-12 | C-F-CF-2597, C-MEP-BMS-1875, C-ELV-SMATV-1875, C-ELV-CCTV-1875, C-ELV-FA-1875, C-ELV-MSPA-1875, C-ELV-RMS-1875, C-ELV-CS-1875, C-MEP-PD-1875, C-MEP-PD-1885, C-MEP-FF-1494, C-MEP-FF-1504, C-MEP-AC-2998, C-MEP-AC-3028, C-MEP-AC-2978, C-MEP-E-2236, C-F-CF-2597 SS, C-P-SG-B-342 | 41d | 0d | 10,705.29 |
| C-F-CF-2607 |  | Installation of Gypsum Ceiling at level 36 | 25d | 2016-06-13 | 2016-07-14 | C-F-CF-2597, C-MEP-BMS-1875, C-ELV-SMATV-1875, C-ELV-CCTV-1875, C-ELV-FA-1875, C-ELV-MSPA-1875, C-ELV-RMS-1875, C-ELV-CS-1875, C-MEP-PD-1875, C-MEP-PD-1885, C-MEP-FF-1494, C-MEP-FF-1504, C-MEP-AC-2998, C-MEP-AC-3028, C-MEP-AC-2978, C-MEP-E-2236, SD-CS-L36-1052, C-F-CF-2597 SS, C-F-CF-2617 SS, C-F-CF-2617, C-P-SG-B-342 | 41d | 0d |  |
| C-F-CF-2627 |  | Ceiling Painting works at level 36 | 12d | 2016-07-18 | 2016-07-31 | C-F-CF-2607, C-MEP-FF-1514 FF | 105d | 64d | 2,867.48 |

Notes:
- C-F-FF-1684: Expenses: SW 52762; 2 99564.8
- C-F-FF-1694: Expenses: 1 14307.8
- C-F-WF-1684: Expenses: 1 60785.4
- C-F-WF-1694: Expenses: 1 542.11
- C-F-WF-1704: Expenses: 1 18867.6
- C-F-DW-1714: Expenses: 1 7577.11
- C-F-DW-1704: Expenses: 1 10411.2
- C-F-DW-1684: Expenses: 1 42310; 2 31233.5
- C-F-DW-1694: Expenses: 1 22731.3
- C-F-DW-1754: Expenses: 1 6907.2
- C-F-P-1113: Expenses: B 20593.9; F 170437
- C-F-P-1123: Expenses: S 227017
- C-F-P-1133: Expenses: G 347326
- C-F-CF-2657: Expenses: W 7316.8
- C-F-CF-2597: Expenses: 1 3568.43
- C-F-CF-2617: Expenses: 1 10705.3
- C-F-CF-2627: Expenses: 1 2867.48

| ID | WBS | Activity | Duration | Start | Finish | Predecessors | Total float | Free float | Cost |
| --- | --- | --- | --- | --- | --- | --- | --- | --- | --- |
|  | 3 | **Floor Finishes** |  | 2016-03-06 | 2016-09-18 |  |  |  |  |
| C-F-FF-1484 |  | Screed & Waterproofing works at level 36 | 20d | 2016-03-06 | 2016-03-28 | C-F-P-1113, C-F-FF-1684 SS | 121d | 0d | 155,368.98 |
| C-F-FF-1514 |  | Installation of Raised Flooring at level 36 | 16d | 2016-07-16 | 2016-08-02 | C-F-CF-2617, C-F-CF-2607 | 41d | 0d |  |
| C-F-FF-1494 |  | Implementation of E-poxy Resin at level 36 | 25d | 2016-08-03 | 2016-08-31 | C-F-CF-2617, C-F-CF-2607, C-F-FF-1484, C-F-WF-1514, C-F-FF-1514, SD-CS-L36-1012, C-F-P-2863 FF | 41d | 0d | 14,593.51 |
| C-F-FF-1504 |  | Installation of Carpet tiles at level 36 | 12d | 2016-09-01 | 2016-09-18 | C-F-CF-2617, C-F-CF-2607, C-F-FF-1484, C-F-FF-1494, C-F-P-2863 FF | 41d | 0d |  |
|  | 4 | **Wall Finishes** |  | 2016-03-12 | 2016-11-10 |  |  |  |  |
| C-F-WF-1484 |  | Plaster works at level 36 | 18d | 2016-03-12 | 2016-03-31 | C-F-P-1113, C-F-WF-1684 SS | 99d | 0d | 61,999.4 |
| C-F-WF-1514 |  | Installation of Toilet Cubicals at level 36 | 5d | 2016-04-11 | 2016-04-16 | C-F-WF-1484, C-F-WF-1714 SS | 121d | 0d |  |
| C-F-WF-1494 |  | Installation of Wall Cladding at level 36 | 20d | 2016-09-01 | 2016-09-28 | C-F-P-1133, SD-CS-L36-1032, C-F-FF-1494, C-F-P-2873 FF | 68d | 12d | 542.11 |
| C-F-WF-1504 |  | Wall Paint works at level 36 | 20d | 2016-10-19 | 2016-11-10 | C-F-P-1123, C-F-WF-1484, C-F-CF-2627, C-F-P-1133, C-F-FF-1494 FF+5d, C-MEP-FF-1514 FF, C-F-DW-1484 FF+5d, C-F-DW-1494 FS+5d, C-F-P-2873 FF | 41d | 0d | 19,244.42 |
|  | 5 | **Doors & Windows** |  | 2016-06-22 | 2016-10-12 |  |  |  |  |
| C-F-DW-1504 |  | Installation of Steel Door Sub-frame at level 36 | 8d | 2016-06-22 | 2016-06-30 | C-F-P-1113 FF, SD-CS-L36-1072, C-F-DW-1704 SS | 102d | 0d | 10,411.18 |
| C-F-DW-1484 |  | Installation of Steel Doors & Handrails at level 36 | 20d | 2016-09-01 | 2016-09-28 | C-F-DW-1504, C-F-FF-1514, C-F-FF-1494, C-F-FF-1514 FF | 68d | 32d | 73,543.49 |
| C-F-DW-1494 |  | Installation of Wall & Corner Guard at level 36 | 20d | 2016-09-19 | 2016-10-12 | C-F-P-1133, C-F-FF-1494 SS, C-F-FF-1494 FF, C-F-FF-1504, C-F-DW-1714 | 41d | 0d | 6,907.2 |
|  | 95 | **Finishes - Level 37** |  | 2016-01-04 | 2016-11-15 |  |  |  |  |
|  | 1 | **Partitions** |  | 2016-01-04 | 2016-04-13 |  |  |  |  |
| C-F-P-1143 |  | Block Works & Fireproofing at level 37 | 14d | 2016-01-04 | 2016-01-19 | C-CS-L37-161, C-F-P-1113 SS, SD-CS-L37-992 | 17d | 0d | 182,228.79 |
| C-F-P-1153 |  | Installation of the Studs for Gypsum Board Partition at level 37 | 20d | 2016-01-10 | 2016-02-01 | C-F-P-1143 SS+5d, C-F-P-943, SD-CS-L37-1012 | 26d | 0d | 220,881.48 |
| C-F-P-1163 |  | Installation of Gypsum Board Partition & Insulation within the walls at level 37 | 25d | 2016-03-16 | 2016-04-13 | C-MEP-BMS-1905, C-ELV-SMATV-1905, C-ELV-CCTV-1905, C-ELV-FA-1905, C-ELV-MSPA-1905, C-ELV-RMS-1905, C-ELV-CS-1905, C-MEP-E-2286, C-MEP-PD-1905, C-P-SG-B-352 | 165d | 121d | 331,322.21 |
|  | 2 | **Ceiling Finishes** |  | 2016-01-10 | 2016-08-04 |  |  |  |  |
| C-F-CF-2727 |  | Installation of Ceiling thermal/accoustic insulation at level 37 | 5d | 2016-01-10 | 2016-01-14 | C-F-P-1143 SS+5d | 136d | 23d | 6,979.66 |
| C-F-CF-2667 |  | Installation of Ceiling Support & Brackets at level 37 | 15d | 2016-01-25 | 2016-02-11 | C-F-CF-2727 FF, C-F-CF-2597 SS | 113d | 0d | 3,404.01 |
| C-F-CF-2687 |  | Istallation of Metal Ceiling at level 37 | 25d | 2016-05-19 | 2016-06-16 | C-F-CF-2667, C-MEP-BMS-1925, C-ELV-SMATV-1925, C-ELV-CCTV-1925, C-ELV-FA-1925, C-ELV-MSPA-1925, C-ELV-RMS-1925, C-ELV-CS-1925, C-MEP-PD-1925, C-MEP-PD-1935, C-MEP-FF-1534, C-MEP-FF-1544, C-MEP-AC-3078, C-MEP-AC-3108, C-MEP-AC-3058, C-MEP-E-2296, C-F-CF-2667 SS, C-P-SG-B-352 | 47d | 0d | 10,212.03 |
| C-F-CF-2677 |  | Installation of Gypsum Ceiling at level 37 | 25d | 2016-06-18 | 2016-07-19 | C-F-CF-2667, C-MEP-BMS-1925, C-ELV-SMATV-1925, C-ELV-CCTV-1925, C-ELV-FA-1925, C-ELV-MSPA-1925, C-ELV-RMS-1925, C-ELV-CS-1925, C-MEP-PD-1925, C-MEP-PD-1935, C-MEP-FF-1534, C-MEP-FF-1544, C-MEP-AC-3078, C-MEP-AC-3108, C-MEP-AC-3058, C-MEP-E-2296, SD-CS-L37-1072, C-F-CF-2667 SS, C-F-CF-2687 SS, C-F-CF-2687, C-P-SG-B-352 | 47d | 0d |  |
| C-F-CF-2697 |  | Ceiling Painting works at level 37 | 12d | 2016-07-23 | 2016-08-04 | C-F-CF-2677, C-MEP-FF-1554 FF | 111d | 64d | 2,735.35 |

Notes:
- C-F-FF-1484: Expenses: SW 53815.7; 2 101553
- C-F-FF-1494: Expenses: 1 14593.5
- C-F-WF-1484: Expenses: 1 61999.4
- C-F-WF-1494: Expenses: 1 542.11
- C-F-WF-1504: Expenses: 1 19244.4
- C-F-DW-1504: Expenses: 1 10411.2
- C-F-DW-1484: Expenses: 1 42310; 2 31233.5
- C-F-DW-1494: Expenses: 1 6907.2
- C-F-P-1143: Expenses: B 19645; F 162584
- C-F-P-1153: Expenses: S 220881
- C-F-P-1163: Expenses: G 331322
- C-F-CF-2727: Expenses: W 6979.66
- C-F-CF-2667: Expenses: 1 3404.01
- C-F-CF-2687: Expenses: 1 10212
- C-F-CF-2697: Expenses: 1 2735.35

| ID | WBS | Activity | Duration | Start | Finish | Predecessors | Total float | Free float | Cost |
| --- | --- | --- | --- | --- | --- | --- | --- | --- | --- |
|  | 3 | **Floor Finishes** |  | 2016-03-06 | 2016-09-22 |  |  |  |  |
| C-F-FF-1524 |  | Screed & Waterproofing works at level 37 | 20d | 2016-03-06 | 2016-03-28 | C-F-P-1143, C-F-FF-1484 SS | 121d | 0d | 148,210.12 |
| C-F-FF-1554 |  | Installation of Raised Flooring at level 37 | 16d | 2016-07-20 | 2016-08-07 | C-F-CF-2687, C-F-CF-2677 | 57d | 0d |  |
| C-F-FF-1534 |  | Implementation of E-poxy Resin at level 37 | 25d | 2016-08-08 | 2016-09-05 | C-F-CF-2687, C-F-CF-2677, C-F-FF-1524, C-F-WF-1554, C-F-FF-1554, SD-CS-L37-1032, C-F-P-2893 FF | 57d | 0d | 13,921.1 |
| C-F-FF-1544 |  | Installation of Carpet tiles at level 37 | 12d | 2016-09-06 | 2016-09-22 | C-F-CF-2687, C-F-CF-2677, C-F-FF-1524, C-F-FF-1534, C-F-P-2893 FF | 57d | 0d |  |
|  | 4 | **Wall Finishes** |  | 2016-03-12 | 2016-11-15 |  |  |  |  |
| C-F-WF-1524 |  | Plaster works at level 37 | 18d | 2016-03-12 | 2016-03-31 | C-F-P-1143, C-F-WF-1484 SS | 99d | 0d | 59,142.69 |
| C-F-WF-1554 |  | Installation of Toilet Cubicals at level 37 | 5d | 2016-04-11 | 2016-04-16 | C-F-WF-1524, C-F-WF-1514 SS | 121d | 5d |  |
| C-F-WF-1534 |  | Installation of Wall Cladding at level 37 | 20d | 2016-09-06 | 2016-10-03 | C-F-P-1163, SD-CS-L37-1052, C-F-FF-1534, C-F-P-2903 FF | 64d | 12d | 542.11 |
| C-F-WF-1544 |  | Wall Paint works at level 37 | 20d | 2016-10-24 | 2016-11-15 | C-F-P-1153, C-F-WF-1524, C-F-CF-2697, C-F-P-1163, C-F-FF-1534 FF+5d, C-MEP-FF-1554 FF, C-F-DW-1524 FF+5d, C-F-DW-1534 FS+5d, C-F-P-2903 FF | 57d | 0d | 18,357.71 |
|  | 5 | **Doors & Windows** |  | 2016-06-22 | 2016-10-17 |  |  |  |  |
| C-F-DW-1544 |  | Installation of Steel Door Sub-frame at level 37 | 8d | 2016-06-22 | 2016-06-30 | C-F-P-1143 FF, SD-CS-L37-1092, C-F-DW-1504 SS | 102d | 0d | 10,411.18 |
| C-F-DW-1524 |  | Installation of Steel Doors & Handrails at level 37 | 20d | 2016-09-06 | 2016-10-03 | C-F-DW-1544, C-F-FF-1554, C-F-FF-1534, C-F-FF-1554 FF | 64d | 32d | 73,543.49 |
| C-F-DW-1534 |  | Installation of Wall & Corner Guard at level 37 | 20d | 2016-09-25 | 2016-10-17 | C-F-P-1163, C-F-FF-1534 SS, C-F-FF-1534 FF, C-F-FF-1544, C-F-P-1133, C-F-DW-1714 | 57d | 0d | 6,907.2 |
|  | 94 | **Finishes - Level 38** |  | 2016-01-11 | 2016-11-22 |  |  |  |  |
|  | 1 | **Partitions** |  | 2016-01-11 | 2016-04-18 |  |  |  |  |
| C-F-P-1203 |  | Block Works & Fireproofing at level 38 | 14d | 2016-01-11 | 2016-01-26 | C-CS-L38-171, C-F-P-1143 SS, SD-CS-L38-1012 | 11d | 0d | 176,546.08 |
| C-F-P-1213 |  | Installation of the Studs for Gypsum Board Partition at level 38 | 20d | 2016-01-17 | 2016-02-08 | C-F-P-1203 SS+5d, SD-CS-L38-1032 | 46d | 0d | 213,993.4 |
| C-F-P-1223 |  | Installation of Gypsum Board Partition & Insulation within the walls at level 38 | 25d | 2016-03-21 | 2016-04-18 | C-MEP-BMS-2005, C-ELV-SMATV-2005, C-ELV-CCTV-2005, C-ELV-FA-2005, C-ELV-MSPA-2005, C-ELV-RMS-2005, C-ELV-CS-2005, C-MEP-E-2406, C-MEP-PD-2005, C-F-P-973, C-P-SG-B-362 | 161d | 123d | 320,990.1 |
|  | 2 | **Ceiling Finishes** |  | 2016-01-17 | 2016-08-11 |  |  |  |  |
| C-F-CF-2867 |  | Installation of Ceiling thermal/accoustic insulation at level 38 | 5d | 2016-01-17 | 2016-01-21 | C-F-P-1203 SS+5d | 145d | 32d | 6,762.01 |
| C-F-CF-2807 |  | Installation of Ceiling Support & Brackets at level 38 | 15d | 2016-02-13 | 2016-02-29 | C-F-CF-2867 FF, C-F-CF-2667 | 113d | 0d | 3,297.86 |
| C-F-CF-2827 |  | Istallation of Metal Ceiling at level 38 | 25d | 2016-05-26 | 2016-06-23 | C-F-CF-2807, C-MEP-BMS-2025, C-ELV-SMATV-2025, C-ELV-CCTV-2025, C-ELV-FA-2025, C-ELV-MSPA-2025, C-ELV-RMS-2025, C-ELV-CS-2025, C-MEP-PD-2025, C-MEP-PD-2035, C-MEP-FF-1614, C-MEP-FF-1624, C-MEP-AC-3238, C-MEP-AC-3268, C-MEP-AC-3218, C-MEP-E-2416, C-F-CF-2807 SS, C-P-SG-B-362 | 50d | 0d | 9,893.57 |
| C-F-CF-2817 |  | Installation of Gypsum Ceiling at level 38 | 25d | 2016-06-25 | 2016-07-26 | C-F-CF-2807, C-MEP-BMS-2025, C-ELV-SMATV-2025, C-ELV-CCTV-2025, C-ELV-FA-2025, C-ELV-MSPA-2025, C-ELV-RMS-2025, C-ELV-CS-2025, C-MEP-PD-2025, C-MEP-PD-2035, C-MEP-FF-1614, C-MEP-FF-1624, C-MEP-AC-3238, C-MEP-AC-3268, C-MEP-AC-3218, C-MEP-E-2416, SD-CS-L38-1092, C-F-CF-2807 SS, C-F-CF-2827 SS, C-F-CF-2827, C-P-SG-B-362 | 50d | 0d |  |
| C-F-CF-2837 |  | Ceiling Painting works at level 38 | 12d | 2016-07-30 | 2016-08-11 | C-F-CF-2817, C-MEP-FF-1634 FF | 105d | 64d | 2,650.05 |

Notes:
- C-F-FF-1524: Expenses: SW 51336.1; 2 96874.1
- C-F-FF-1534: Expenses: 1 13921.1
- C-F-WF-1524: Expenses: 1 59142.7
- C-F-WF-1534: Expenses: 1 542.11
- C-F-WF-1544: Expenses: 1 18357.7
- C-F-DW-1544: Expenses: 1 10411.2
- C-F-DW-1524: Expenses: 1 42310; 2 31233.5
- C-F-DW-1534: Expenses: 1 6907.2
- C-F-P-1203: Expenses: B 19032.4; F 157514
- C-F-P-1213: Expenses: S 213993
- C-F-P-1223: Expenses: G 320990
- C-F-CF-2867: Expenses: W 6762.01
- C-F-CF-2807: Expenses: 1 3297.86
- C-F-CF-2827: Expenses: 1 9893.57
- C-F-CF-2837: Expenses: 1 2650.05

| ID | WBS | Activity | Duration | Start | Finish | Predecessors | Total float | Free float | Cost |
| --- | --- | --- | --- | --- | --- | --- | --- | --- | --- |
|  | 3 | **Floor Finishes** |  | 2016-03-29 | 2016-10-01 |  |  |  |  |
| C-F-FF-1604 |  | Screed & Waterproofing works at level 38 | 20d | 2016-03-29 | 2016-04-20 | C-F-P-1203, C-F-FF-1524 | 121d | 0d | 143,588.27 |
| C-F-FF-1634 |  | Installation of Raised Flooring at level 38 | 16d | 2016-07-27 | 2016-08-14 | C-F-CF-2827, C-F-CF-2817 | 51d | 0d |  |
| C-F-FF-1614 |  | Implementation of E-poxy Resin at level 38 | 25d | 2016-08-15 | 2016-09-15 | C-F-CF-2827, C-F-CF-2817, C-F-FF-1604, C-F-WF-1634, C-F-FF-1634, SD-CS-L38-1052, C-F-P-2923 FF | 51d | 0d | 13,486.97 |
| C-F-FF-1624 |  | Installation of Carpet tiles at level 38 | 12d | 2016-09-17 | 2016-10-01 | C-F-CF-2827, C-F-CF-2817, C-F-FF-1604, C-F-FF-1614, C-F-P-2923 FF | 51d | 0d |  |
|  | 4 | **Wall Finishes** |  | 2016-04-02 | 2016-11-22 |  |  |  |  |
| C-F-WF-1604 |  | Plaster works at level 38 | 18d | 2016-04-02 | 2016-04-21 | C-F-P-1203, C-F-WF-1524 | 99d | 0d | 57,298.35 |
| C-F-WF-1634 |  | Installation of Toilet Cubicals at level 38 | 5d | 2016-04-23 | 2016-04-27 | C-F-WF-1604, C-F-WF-1554 | 116d | 0d |  |
| C-F-WF-1614 |  | Installation of Wall Cladding at level 38 | 20d | 2016-09-17 | 2016-10-10 | C-F-P-1223, SD-CS-L38-1072, C-F-FF-1614, C-F-P-2933 FF | 58d | 12d | 542.11 |
| C-F-WF-1624 |  | Wall Paint works at level 38 | 20d | 2016-10-31 | 2016-11-22 | C-F-P-1213, C-F-WF-1604, C-F-CF-2837, C-F-P-1223, C-F-FF-1614 FF+5d, C-MEP-FF-1634 FF, C-F-DW-1604 FF+5d, C-F-DW-1614 FS+5d, C-F-P-2933 FF | 51d | 0d | 17,785.23 |
|  | 5 | **Doors & Windows** |  | 2016-06-22 | 2016-10-24 |  |  |  |  |
| C-F-DW-1624 |  | Installation of Steel Door Sub-frame at level 38 | 8d | 2016-06-22 | 2016-06-30 | C-F-P-1203 FF, SD-CS-L38-1112, C-F-DW-1544 SS | 102d | 0d | 10,411.18 |
| C-F-DW-1604 |  | Installation of Steel Doors & Handrails at level 38 | 20d | 2016-09-17 | 2016-10-10 | C-F-DW-1624, C-F-FF-1634, C-F-FF-1614, C-F-FF-1634 FF | 58d | 32d | 73,543.49 |
| C-F-DW-1614 |  | Installation of Wall & Corner Guard at level 38 | 20d | 2016-10-02 | 2016-10-24 | C-F-P-1223, C-F-FF-1614 SS, C-F-FF-1614 FF, C-F-FF-1624, C-F-P-1163, C-F-P-1133, C-F-DW-1714 | 51d | 0d | 6,907.2 |
|  | 93 | **Finishes - Level 39** |  | 2016-01-27 | 2016-12-08 |  |  |  |  |
|  | 1 | **Partitions** |  | 2016-01-27 | 2016-04-18 |  |  |  |  |
| C-F-P-1053 |  | Block Works & Fireproofing at level 39 | 14d | 2016-01-27 | 2016-02-13 | C-CS-L39-181, C-F-P-1203, SD-CS-L39-1032 | 11d | 0d | 170,219.37 |
| C-F-P-1063 |  | Installation of the Studs for Gypsum Board Partition at level 39 | 20d | 2016-02-02 | 2016-02-25 | C-F-P-1053 SS+5d, C-F-P-1033, SD-CS-L39-1052 | 18d | 0d | 206,324.73 |
| C-F-P-1073 |  | Installation of Gypsum Board Partition & Insulation within the walls at level 39 | 25d | 2016-03-21 | 2016-04-18 | C-MEP-BMS-1755, C-ELV-SMATV-1755, C-ELV-CCTV-1755, C-ELV-FA-1755, C-ELV-MSPA-1755, C-ELV-RMS-1755, C-ELV-CS-1755, C-MEP-E-2106, C-MEP-PD-1755, C-P-SG-B-372 | 161d | 124d | 309,487.1 |
|  | 2 | **Ceiling Finishes** |  | 2016-02-02 | 2016-08-28 |  |  |  |  |
| C-F-CF-2517 |  | Installation of Ceiling thermal/accoustic insulation at level 39 | 5d | 2016-02-02 | 2016-02-07 | C-F-P-1053 SS+5d | 133d | 18d | 6,519.68 |
| C-F-CF-2457 |  | Installation of Ceiling Support & Brackets at level 39 | 15d | 2016-02-13 | 2016-02-29 | C-F-CF-2517 FF, C-F-CF-2807 SS | 115d | 0d | 3,179.67 |
| C-F-CF-2477 |  | Istallation of Metal Ceiling at level 39 | 25d | 2016-06-12 | 2016-07-13 | C-F-CF-2457, C-MEP-BMS-1775, C-ELV-SMATV-1775, C-ELV-CCTV-1775, C-ELV-FA-1775, C-ELV-MSPA-1775, C-ELV-RMS-1775, C-ELV-CS-1775, C-MEP-PD-1775, C-MEP-PD-1785, C-MEP-FF-1414, C-MEP-FF-1424, C-MEP-AC-2838, C-MEP-AC-2868, C-MEP-AC-2818, C-MEP-E-2116, C-F-CF-2457 SS, C-P-SG-B-372 | 39d | 0d | 9,539.02 |
| C-F-CF-2467 |  | Installation of Gypsum Ceiling at level 39 | 25d | 2016-07-14 | 2016-08-11 | C-F-CF-2457, C-MEP-BMS-1775, C-ELV-SMATV-1775, C-ELV-CCTV-1775, C-ELV-FA-1775, C-ELV-MSPA-1775, C-ELV-RMS-1775, C-ELV-CS-1775, C-MEP-PD-1775, C-MEP-PD-1785, C-MEP-FF-1414, C-MEP-FF-1424, C-MEP-AC-2838, C-MEP-AC-2868, C-MEP-AC-2818, C-MEP-E-2116, SD-CS-L39-1112, C-F-CF-2457 SS, C-F-CF-2477 SS, C-F-CF-2477, C-P-SG-B-372 | 39d | 0d |  |
| C-F-CF-2487 |  | Ceiling Painting works at level 39 | 12d | 2016-08-15 | 2016-08-28 | C-F-CF-2467, C-MEP-FF-1434 FF | 91d | 64d | 2,555.08 |

Notes:
- C-F-FF-1604: Expenses: SW 49735.2; 2 93853.1
- C-F-FF-1614: Expenses: 1 13487
- C-F-WF-1604: Expenses: 1 57298.3
- C-F-WF-1614: Expenses: 1 542.11
- C-F-WF-1624: Expenses: 1 17785.2
- C-F-DW-1624: Expenses: 1 10411.2
- C-F-DW-1604: Expenses: 1 42310; 2 31233.5
- C-F-DW-1614: Expenses: 1 6907.2
- C-F-P-1053: Expenses: B 18350.3; F 151869
- C-F-P-1063: Expenses: S 206325
- C-F-P-1073: Expenses: G 309487
- C-F-CF-2517: Expenses: W 6519.68
- C-F-CF-2457: Expenses: 1 3179.67
- C-F-CF-2477: Expenses: 1 9539.02
- C-F-CF-2487: Expenses: 1 2555.08

| ID | WBS | Activity | Duration | Start | Finish | Predecessors | Total float | Free float | Cost |
| --- | --- | --- | --- | --- | --- | --- | --- | --- | --- |
|  | 3 | **Floor Finishes** |  | 2016-03-29 | 2016-10-17 |  |  |  |  |
| C-F-FF-1404 |  | Screed & Waterproofing works at level 39 | 20d | 2016-03-29 | 2016-04-20 | C-F-P-1053, C-F-FF-1604 SS | 121d | 0d | 138,442.64 |
| C-F-FF-1434 |  | Installation of Raised Flooring at level 39 | 16d | 2016-08-13 | 2016-08-30 | C-F-CF-2477, C-F-CF-2467 | 39d | 0d |  |
| C-F-FF-1414 |  | Implementation of E-poxy Resin at level 39 | 25d | 2016-08-31 | 2016-10-03 | C-F-CF-2477, C-F-CF-2467, C-F-FF-1404, C-F-WF-1434, C-F-FF-1434, SD-CS-L39-1072, C-F-P-2953 FF | 39d | 0d | 13,003.65 |
| C-F-FF-1424 |  | Installation of Carpet tiles at level 39 | 12d | 2016-10-04 | 2016-10-17 | C-F-CF-2477, C-F-CF-2467, C-F-FF-1404, C-F-FF-1414, C-F-P-2953 FF | 39d | 0d |  |
|  | 4 | **Wall Finishes** |  | 2016-04-02 | 2016-12-08 |  |  |  |  |
| C-F-WF-1404 |  | Plaster works at level 39 | 18d | 2016-04-02 | 2016-04-21 | C-F-P-1053, C-F-WF-1604 SS | 99d | 0d | 55,245.01 |
| C-F-WF-1434 |  | Installation of Toilet Cubicals at level 39 | 5d | 2016-04-23 | 2016-04-27 | C-F-WF-1404, C-F-WF-1634 SS | 116d | 0d |  |
| C-F-WF-1414 |  | Installation of Wall Cladding at level 39 | 20d | 2016-10-04 | 2016-10-26 | C-F-P-1073, SD-CS-L39-1092, C-F-FF-1414, C-F-P-2963 FF | 44d | 12d | 542.11 |
| C-F-WF-1424 |  | Wall Paint works at level 39 | 20d | 2016-11-16 | 2016-12-08 | C-F-P-1063, C-F-WF-1404, C-F-CF-2487, C-F-P-1073, C-F-FF-1414 FF+5d, C-MEP-FF-1434 FF, C-F-DW-1404 FF+5d, C-F-DW-1414 FS+5d, C-F-P-2963 FF | 39d | 0d | 17,147.88 |
|  | 5 | **Doors & Windows** |  | 2016-06-22 | 2016-11-09 |  |  |  |  |
| C-F-DW-1424 |  | Installation of Steel Door Sub-frame at level 39 | 8d | 2016-06-22 | 2016-06-30 | C-F-P-1053 FF, SD-CS-L39-1132, C-F-DW-1624 SS | 102d | 0d | 10,411.18 |
| C-F-DW-1404 |  | Installation of Steel Doors & Handrails at level 39 | 20d | 2016-10-04 | 2016-10-26 | C-F-DW-1424, C-F-FF-1434, C-F-FF-1414, C-F-FF-1434 FF | 44d | 32d | 73,543.49 |
| C-F-DW-1414 |  | Installation of Wall & Corner Guard at level 39 | 20d | 2016-10-18 | 2016-11-09 | C-F-P-1073, C-F-FF-1414 SS, C-F-FF-1414 FF, C-F-FF-1424, C-F-P-1223, C-F-P-1163, C-F-P-1133, C-F-DW-1714 | 39d | 0d | 6,907.2 |
|  | 92 | **Finishes - Level 40** |  | 2016-01-27 | 2016-11-09 |  |  |  |  |
|  | 1 | **Partitions** |  | 2016-01-27 | 2016-04-18 |  |  |  |  |
| C-F-P-1173 |  | Block Works & Fireproofing at level 40 | 14d | 2016-01-27 | 2016-02-13 | C-CS-L40-191, C-F-P-1053 SS, SD-CS-L40-1052 | 11d | 0d | 163,209.78 |
| C-F-P-1183 |  | Installation of the Studs for Gypsum Board Partition at level 40 | 20d | 2016-02-02 | 2016-02-25 | C-F-P-1173 SS+5d, C-F-P-1093, SD-CS-L40-1072 | 34d | 0d | 197,828.33 |
| C-F-P-1193 |  | Installation of Gypsum Board Partition & Insulation within the walls at level 40 | 25d | 2016-03-21 | 2016-04-18 | C-MEP-BMS-1955, C-ELV-SMATV-1955, C-ELV-CCTV-1955, C-ELV-FA-1955, C-ELV-MSPA-1955, C-ELV-RMS-1955, C-ELV-CS-1955, C-MEP-E-2346, C-MEP-PD-1955, C-P-SG-B-482 | 161d | 112d | 296,742.5 |
|  | 2 | **Ceiling Finishes** |  | 2016-02-02 | 2016-07-30 |  |  |  |  |
| C-F-CF-2797 |  | Installation of Ceiling thermal/accoustic insulation at level 40 | 5d | 2016-02-02 | 2016-02-07 | C-F-P-1173 SS+5d | 135d | 18d | 6,251.21 |
| C-F-CF-2737 |  | Installation of Ceiling Support & Brackets at level 40 | 15d | 2016-02-13 | 2016-02-29 | C-F-CF-2797 FF, C-F-CF-2457 SS | 117d | 0d | 3,048.74 |
| C-F-CF-2747 |  | Installation of Gypsum Ceiling at level 40 | 25d | 2016-06-12 | 2016-07-13 | C-F-CF-2737, C-MEP-BMS-1975, C-ELV-SMATV-1975, C-ELV-CCTV-1975, C-ELV-FA-1975, C-ELV-MSPA-1975, C-ELV-RMS-1975, C-ELV-CS-1975, C-MEP-PD-1975, C-MEP-PD-1985, C-MEP-FF-1574, C-MEP-FF-1584, C-MEP-AC-3158, C-MEP-AC-3188, C-MEP-AC-3138, C-MEP-E-2356, SD-CS-L40-1132, C-F-CF-2737 SS, C-P-SG-B-482 | 37d | 0d |  |
| C-F-CF-2757 |  | Istallation of Metal Ceiling at level 40 | 25d | 2016-06-12 | 2016-07-13 | C-F-CF-2737, C-MEP-BMS-1975, C-ELV-SMATV-1975, C-ELV-CCTV-1975, C-ELV-FA-1975, C-ELV-MSPA-1975, C-ELV-RMS-1975, C-ELV-CS-1975, C-MEP-PD-1975, C-MEP-PD-1985, C-MEP-FF-1574, C-MEP-FF-1584, C-MEP-AC-3158, C-MEP-AC-3188, C-MEP-AC-3138, C-MEP-E-2356, C-F-CF-2737 SS, C-P-SG-B-482 | 37d | 0d | 9,146.21 |
| C-F-CF-2767 |  | Ceiling Painting works at level 40 | 12d | 2016-07-17 | 2016-07-30 | C-F-CF-2747, C-MEP-FF-1594 FF | 106d | 64d | 2,449.87 |

Notes:
- C-F-FF-1404: Expenses: SW 47952.9; 2 90489.8
- C-F-FF-1414: Expenses: 1 13003.6
- C-F-WF-1404: Expenses: 1 55245
- C-F-WF-1414: Expenses: 1 542.11
- C-F-WF-1424: Expenses: 1 17147.9
- C-F-DW-1424: Expenses: 1 10411.2
- C-F-DW-1404: Expenses: 1 42310; 2 31233.5
- C-F-DW-1414: Expenses: 1 6907.2
- C-F-P-1173: Expenses: B 17594.7; F 145615
- C-F-P-1183: Expenses: S 197828
- C-F-P-1193: Expenses: G 296742
- C-F-CF-2797: Expenses: W 6251.21
- C-F-CF-2737: Expenses: 1 3048.74
- C-F-CF-2757: Expenses: 1 9146.21
- C-F-CF-2767: Expenses: 1 2449.87

| ID | WBS | Activity | Duration | Start | Finish | Predecessors | Total float | Free float | Cost |
| --- | --- | --- | --- | --- | --- | --- | --- | --- | --- |
|  | 3 | **Floor Finishes** |  | 2016-03-29 | 2016-09-17 |  |  |  |  |
| C-F-FF-1564 |  | Screed & Waterproofing works at level 40 | 20d | 2016-03-29 | 2016-04-20 | C-F-P-1173, C-F-FF-1404 SS | 121d | 0d | 132,741.61 |
| C-F-FF-1594 |  | Installation of Raised Flooring at level 40 | 16d | 2016-07-14 | 2016-08-01 | C-F-CF-2757, C-F-CF-2747 | 42d | 0d |  |
| C-F-FF-1574 |  | Implementation of E-poxy Resin at level 40 | 25d | 2016-08-02 | 2016-08-30 | C-F-CF-2757, C-F-CF-2747, C-F-FF-1564, C-F-WF-1594, C-F-FF-1594, SD-CS-L40-1092, C-F-P-2983 FF | 42d | 0d | 12,468.17 |
| C-F-FF-1584 |  | Installation of Carpet tiles at level 40 | 12d | 2016-08-31 | 2016-09-17 | C-F-CF-2757, C-F-CF-2747, C-F-FF-1564, C-F-FF-1574, C-F-P-2983 FF | 42d | 0d |  |
|  | 4 | **Wall Finishes** |  | 2016-04-02 | 2016-11-09 |  |  |  |  |
| C-F-WF-1564 |  | Plaster works at level 40 | 18d | 2016-04-02 | 2016-04-21 | C-F-P-1173, C-F-WF-1404 SS | 99d | 0d | 52,970.03 |
| C-F-WF-1594 |  | Installation of Toilet Cubicals at level 40 | 5d | 2016-04-23 | 2016-04-27 | C-F-WF-1564, C-F-WF-1434 SS | 116d | 0d |  |
| C-F-WF-1574 |  | Installation of Wall Cladding at level 40 | 20d | 2016-08-31 | 2016-09-27 | C-F-P-1193, SD-CS-L40-1112, C-F-FF-1574, C-F-P-2993 FF | 69d | 28d | 542.11 |
| C-F-WF-1584 |  | Wall Paint works at level 40 | 20d | 2016-10-18 | 2016-11-09 | C-F-P-1183, C-F-WF-1564, C-F-CF-2767, C-F-P-1193, C-F-FF-1574 FF+5d, C-MEP-FF-1594 FF, C-F-DW-1564 FF+5d, C-F-DW-1574 FS+5d, C-F-P-2993 FF | 42d | 0d | 16,441.73 |
|  | 5 | **Doors & Windows** |  | 2016-06-22 | 2016-10-11 |  |  |  |  |
| C-F-DW-1584 |  | Installation of Steel Door Sub-frame at level 40 | 8d | 2016-06-22 | 2016-06-30 | C-F-P-1173 FF, SD-CS-L40-1152, C-F-DW-1424 SS | 102d | 0d | 10,411.18 |
| C-F-DW-1564 |  | Installation of Steel Doors & Handrails at level 40 | 20d | 2016-08-31 | 2016-09-27 | C-F-DW-1584, C-F-FF-1594, C-F-FF-1574, C-F-FF-1594 FF | 69d | 32d | 73,543.49 |
| C-F-DW-1574 |  | Installation of Wall & Corner Guard at level 40 | 20d | 2016-09-18 | 2016-10-11 | C-F-P-1193, C-F-FF-1574 SS, C-F-FF-1574 FF, C-F-FF-1584, C-F-P-1073, C-F-P-1223, C-F-P-1163, C-F-P-1133, C-F-DW-1714 | 42d | 0d | 6,907.2 |
|  | 86 | **Finishes - Level 41** |  | 2016-02-01 | 2016-11-14 |  |  |  |  |
|  | 1 | **Partitions** |  | 2016-02-01 | 2016-04-23 |  |  |  |  |
| C-F-P-1233 |  | Block Works & Fireproofing at level 41 | 14d | 2016-02-01 | 2016-02-17 | C-CS-L41-201, C-F-P-1173 SS, SD-CS-L41-1072 | 7d | 0d | 155,555.05 |
| C-F-P-1243 |  | Installation of the Studs for Gypsum Board Partition at level 41 | 20d | 2016-02-07 | 2016-03-01 | C-F-P-1233 SS+5d, C-F-P-1273, SD-CS-L41-1092 | 18d | 0d | 188,549.95 |
| C-F-P-1253 |  | Installation of Gypsum Board Partition & Insulation within the walls at level 41 | 25d | 2016-03-26 | 2016-04-23 | C-MEP-BMS-2055, C-ELV-SMATV-2055, C-ELV-CCTV-2055, C-ELV-FA-2055, C-ELV-MSPA-2055, C-ELV-RMS-2055, C-ELV-CS-2055, C-MEP-E-2466, C-MEP-PD-2055, C-P-SG-B-492 | 157d | 112d | 282,824.93 |
|  | 2 | **Ceiling Finishes** |  | 2016-02-07 | 2016-08-03 |  |  |  |  |
| C-F-CF-2937 |  | Installation of Ceiling thermal/accoustic insulation at level 41 | 5d | 2016-02-07 | 2016-02-13 | C-F-P-1233 SS+5d | 133d | 14d | 5,958.02 |
| C-F-CF-2877 |  | Installation of Ceiling Support & Brackets at level 41 | 15d | 2016-02-13 | 2016-02-29 | C-F-CF-2937 FF, C-F-CF-2737 SS | 119d | 0d | 2,905.75 |
| C-F-CF-2887 |  | Installation of Gypsum Ceiling at level 41 | 25d | 2016-06-16 | 2016-07-18 | C-F-CF-2877, C-MEP-BMS-2075, C-ELV-SMATV-2075, C-ELV-CCTV-2075, C-ELV-FA-2075, C-ELV-MSPA-2075, C-ELV-RMS-2075, C-ELV-CS-2075, C-MEP-PD-2075, C-MEP-PD-2085, C-MEP-FF-1654, C-MEP-FF-1664, C-MEP-AC-3318, C-MEP-AC-3348, C-MEP-AC-3298, C-MEP-E-2476, SD-CS-L41-1152, C-F-CF-2877 SS, C-P-SG-B-492 | 38d | 0d |  |
| C-F-CF-2897 |  | Istallation of Metal Ceiling at level 41 | 25d | 2016-06-16 | 2016-07-18 | C-F-CF-2877, C-MEP-BMS-2075, C-ELV-SMATV-2075, C-ELV-CCTV-2075, C-ELV-FA-2075, C-ELV-MSPA-2075, C-ELV-RMS-2075, C-ELV-CS-2075, C-MEP-PD-2075, C-MEP-PD-2085, C-MEP-FF-1654, C-MEP-FF-1664, C-MEP-AC-3318, C-MEP-AC-3348, C-MEP-AC-3298, C-MEP-E-2476, C-F-CF-2877 SS, C-P-SG-B-492 | 38d | 0d | 8,717.24 |
| C-F-CF-2907 |  | Ceiling Painting works at level 41 | 12d | 2016-07-21 | 2016-08-03 | C-F-CF-2887, C-MEP-FF-1674 FF | 102d | 64d | 2,334.97 |

Notes:
- C-F-FF-1564: Expenses: SW 45978.2; 2 86763.4
- C-F-FF-1574: Expenses: 1 12468.2
- C-F-WF-1564: Expenses: 1 52970
- C-F-WF-1574: Expenses: 1 542.11
- C-F-WF-1584: Expenses: 1 16441.7
- C-F-DW-1584: Expenses: 1 10411.2
- C-F-DW-1564: Expenses: 1 42310; 2 31233.5
- C-F-DW-1574: Expenses: 1 6907.2
- C-F-P-1233: Expenses: B 16769.5; F 138786
- C-F-P-1243: Expenses: S 188550
- C-F-P-1253: Expenses: G 282825
- C-F-CF-2937: Expenses: W 5958.02
- C-F-CF-2877: Expenses: 1 2905.75
- C-F-CF-2897: Expenses: 1 8717.24
- C-F-CF-2907: Expenses: 1 2334.97

| ID | WBS | Activity | Duration | Start | Finish | Predecessors | Total float | Free float | Cost |
| --- | --- | --- | --- | --- | --- | --- | --- | --- | --- |
|  | 3 | **Floor Finishes** |  | 2016-03-29 | 2016-09-21 |  |  |  |  |
| C-F-FF-1644 |  | Screed & Waterproofing works at level 41 | 20d | 2016-03-29 | 2016-04-20 | C-F-P-1233, C-F-FF-1564 SS | 121d | 0d | 126,515.86 |
| C-F-FF-1674 |  | Installation of Raised Flooring at level 41 | 16d | 2016-07-19 | 2016-08-06 | C-F-CF-2897, C-F-CF-2887 | 38d | 0d |  |
| C-F-FF-1654 |  | Implementation of E-poxy Resin at level 41 | 25d | 2016-08-07 | 2016-09-04 | C-F-CF-2897, C-F-CF-2887, C-F-FF-1644, C-F-WF-1674, C-F-FF-1674, SD-CS-L41-1112, C-F-P-3013 FF | 38d | 0d | 11,883.4 |
| C-F-FF-1664 |  | Installation of Carpet tiles at level 41 | 12d | 2016-09-05 | 2016-09-21 | C-F-CF-2897, C-F-CF-2887, C-F-FF-1644, C-F-FF-1654, C-F-P-3013 FF | 38d | 0d |  |
|  | 4 | **Wall Finishes** |  | 2016-04-02 | 2016-11-14 |  |  |  |  |
| C-F-WF-1644 |  | Plaster works at level 41 | 18d | 2016-04-02 | 2016-04-21 | C-F-P-1233, C-F-WF-1564 SS | 99d | 0d | 50,485.68 |
| C-F-WF-1674 |  | Installation of Toilet Cubicals at level 41 | 5d | 2016-04-23 | 2016-04-27 | C-F-WF-1644, C-F-WF-1594 SS | 116d | 0d |  |
| C-F-WF-1654 |  | Installation of Wall Cladding at level 41 | 20d | 2016-09-05 | 2016-10-02 | C-F-P-1253, SD-CS-L41-1132, C-F-FF-1654, C-F-P-3023 FF | 65d | 15d | 542.11 |
| C-F-WF-1664 |  | Wall Paint works at level 41 | 20d | 2016-10-23 | 2016-11-14 | C-F-P-1243, C-F-WF-1644, C-F-CF-2907, C-F-P-1253, C-F-FF-1654 FF+5d, C-MEP-FF-1674 FF, C-F-DW-1644 FF+5d, C-F-DW-1654 FS+5d, C-F-P-3023 FF | 38d | 9d | 15,670.6 |
|  | 5 | **Doors & Windows** |  | 2016-06-22 | 2016-10-16 |  |  |  |  |
| C-F-DW-1664 |  | Installation of Steel Door Sub-frame at level 41 | 8d | 2016-06-22 | 2016-06-30 | C-F-P-1233 FF, SD-CS-L41-1172, C-F-DW-1584 SS | 102d | 0d | 10,411.18 |
| C-F-DW-1644 |  | Installation of Steel Doors & Handrails at level 41 | 20d | 2016-09-05 | 2016-10-02 | C-F-DW-1664, C-F-FF-1674, C-F-FF-1654, C-F-FF-1674 FF | 65d | 32d | 73,543.49 |
| C-F-DW-1654 |  | Installation of Wall & Corner Guard at level 41 | 20d | 2016-09-22 | 2016-10-16 | C-F-P-1253, C-F-FF-1654 SS, C-F-FF-1654 FF, C-F-FF-1664, C-F-P-1193, C-F-P-1073, C-F-P-1223, C-F-P-1163, C-F-P-1133, C-F-DW-1714 | 38d | 0d | 6,907.2 |
|  | 91 | **Finishes - Level 42** |  | 2016-02-13 | 2016-11-30 |  |  |  |  |
|  | 1 | **Partitions** |  | 2016-02-18 | 2016-05-09 |  |  |  |  |
| C-F-P-1323 |  | Block Works & Fireproofing at level 42 | 14d | 2016-02-18 | 2016-03-05 | C-CS-L42-211, C-F-P-1233, SD-CS-L42-1092 | 7d | 0d | 147,250.61 |
| C-F-P-1333 |  | Installation of the Studs for Gypsum Board Partition at level 42 | 20d | 2016-02-24 | 2016-03-17 | C-F-P-1323 SS+5d, C-F-P-1123, SD-CS-L42-1112 | 14d | 0d | 178,484.05 |
| C-F-P-1343 |  | Installation of Gypsum Board Partition & Insulation within the walls at level 42 | 25d | 2016-04-11 | 2016-05-09 | C-MEP-BMS-2205, C-ELV-SMATV-2205, C-ELV-CCTV-2205, C-ELV-FA-2205, C-ELV-MSPA-2205, C-ELV-RMS-2205, C-ELV-CS-2205, C-MEP-E-2646, C-MEP-PD-2205, C-P-SG-B-402 | 143d | 112d | 267,726.07 |
|  | 2 | **Ceiling Finishes** |  | 2016-02-13 | 2016-08-20 |  |  |  |  |
| C-F-CF-3087 |  | Installation of Ceiling Support & Brackets at level 42 | 15d | 2016-02-13 | 2016-02-29 | C-F-CF-3147 FF | 121d | 15d | 2,750.62 |
| C-F-CF-3147 |  | Installation of Ceiling thermal/accoustic insulation at level 42 | 5d | 2016-02-24 | 2016-02-29 | C-F-P-1323 SS+5d | 121d | 0d | 5,639.94 |
| C-F-CF-3097 |  | Installation of Gypsum Ceiling at level 42 | 25d | 2016-07-03 | 2016-08-03 | C-F-CF-3087, C-MEP-BMS-2225, C-ELV-SMATV-2225, C-ELV-CCTV-2225, C-ELV-FA-2225, C-ELV-MSPA-2225, C-ELV-RMS-2225, C-ELV-CS-2225 FF, C-MEP-PD-2225, C-MEP-PD-2235, C-MEP-FF-1774, C-MEP-FF-1784, C-MEP-AC-3558, C-MEP-AC-3588, C-MEP-AC-3538, C-MEP-E-2656, SD-CS-L42-1172, C-F-CF-3087 SS | 19d | 0d |  |
| C-F-CF-3107 |  | Istallation of Metal Ceiling at level 42 | 25d | 2016-07-03 | 2016-08-03 | C-F-CF-3087, C-MEP-BMS-2225, C-ELV-SMATV-2225, C-ELV-CCTV-2225, C-ELV-FA-2225, C-ELV-MSPA-2225, C-ELV-RMS-2225, C-ELV-CS-2225 FF, C-MEP-PD-2225, C-MEP-PD-2235, C-MEP-FF-1774, C-MEP-FF-1784, C-MEP-AC-3558, C-MEP-AC-3588, C-MEP-AC-3538, C-MEP-E-2656, C-F-CF-3087 SS, C-P-SG-B-402 | 19d | 0d | 8,251.86 |
| C-F-CF-3117 |  | Ceiling Painting works at level 42 | 12d | 2016-08-07 | 2016-08-20 | C-F-CF-3097, C-MEP-FF-1794 FF, C-P-SG-B-402 | 83d | 64d | 2,210.31 |

Notes:
- C-F-FF-1644: Expenses: SW 43821.7; 2 82694.1
- C-F-FF-1654: Expenses: 1 11883.4
- C-F-WF-1644: Expenses: 1 50485.7
- C-F-WF-1654: Expenses: 1 542.11
- C-F-WF-1664: Expenses: 1 15670.6
- C-F-DW-1664: Expenses: 1 10411.2
- C-F-DW-1644: Expenses: 1 42310; 2 31233.5
- C-F-DW-1654: Expenses: 1 6907.2
- C-F-P-1323: Expenses: B 15874.2; F 131376
- C-F-P-1333: Expenses: S 178484
- C-F-P-1343: Expenses: G 267726
- C-F-CF-3087: Expenses: 1 2750.62
- C-F-CF-3147: Expenses: W 5639.94
- C-F-CF-3107: Expenses: 1 8251.86
- C-F-CF-3117: Expenses: 1 2210.31

| ID | WBS | Activity | Duration | Start | Finish | Predecessors | Total float | Free float | Cost |
| --- | --- | --- | --- | --- | --- | --- | --- | --- | --- |
|  | 3 | **Floor Finishes** |  | 2016-03-29 | 2016-10-09 |  |  |  |  |
| C-F-FF-1764 |  | Screed & Waterproofing works at level 42 | 20d | 2016-03-29 | 2016-04-20 | C-F-P-1323, C-F-FF-1644 SS | 121d | 0d | 119,761.7 |
| C-F-FF-1794 |  | Installation of Raised Flooring at level 42 | 16d | 2016-08-04 | 2016-08-22 | C-F-CF-3107, C-F-CF-3097 | 19d | 0d |  |
| C-F-FF-1774 |  | Implementation of E-poxy Resin at level 42 | 25d | 2016-08-23 | 2016-09-25 | C-F-CF-3107, C-F-CF-3097, C-F-FF-1764, C-F-WF-1794, C-F-FF-1794, SD-CS-L42-1132, C-F-P-3043 FF | 19d | 0d | 11,248.99 |
| C-F-FF-1784 |  | Installation of Carpet tiles at level 42 | 12d | 2016-09-26 | 2016-10-09 | C-F-CF-3107, C-F-CF-3097, C-F-FF-1764, C-F-FF-1774, C-F-P-3043 FF | 19d | 0d |  |
|  | 4 | **Wall Finishes** |  | 2016-04-02 | 2016-11-30 |  |  |  |  |
| C-F-WF-1764 |  | Plaster works at level 42 | 18d | 2016-04-02 | 2016-04-21 | C-F-P-1323, C-F-WF-1644 SS | 99d | 0d | 47,790.45 |
| C-F-WF-1794 |  | Installation of Toilet Cubicals at level 42 | 5d | 2016-04-23 | 2016-04-27 | C-F-WF-1764, C-F-WF-1674 SS | 116d | 0d |  |
| C-F-WF-1774 |  | Installation of Wall Cladding at level 42 | 20d | 2016-09-26 | 2016-10-18 | C-F-P-1343, SD-CS-L42-1152, C-F-FF-1774, C-F-P-3053 FF | 51d | 15d | 542.11 |
| C-F-WF-1784 |  | Wall Paint works at level 42 | 20d | 2016-11-08 | 2016-11-30 | C-F-P-1333, C-F-WF-1764, C-F-CF-3117, C-F-P-1343, C-F-FF-1774 FF+5d, C-MEP-FF-1794 FF, C-F-DW-1764 FF+5d, C-F-DW-1774 FS+5d, C-F-P-3053 FF | 19d | 0d | 14,834.01 |
|  | 5 | **Doors & Windows** |  | 2016-07-02 | 2016-11-01 |  |  |  |  |
| C-F-DW-1784 |  | Installation of Steel Door Sub-frame at level 42 | 8d | 2016-07-02 | 2016-07-13 | C-F-P-1323 FF, SD-CS-L42-1192, C-F-DW-1664 | 102d | 0d | 10,411.18 |
| C-F-DW-1764 |  | Installation of Steel Doors & Handrails at level 42 | 20d | 2016-09-26 | 2016-10-18 | C-F-DW-1784, C-F-FF-1794, C-F-FF-1774, C-F-FF-1794 FF | 51d | 32d | 73,543.49 |
| C-F-DW-1774 |  | Installation of Wall & Corner Guard at level 42 | 20d | 2016-10-10 | 2016-11-01 | C-F-P-1343, C-F-FF-1774 SS, C-F-FF-1774 FF, C-F-FF-1784, C-F-P-1253, C-F-P-1193, C-F-P-1073, C-F-P-1223, C-F-P-1163, C-F-P-1133, C-F-DW-1714 | 19d | 0d | 6,907.2 |
|  | 85 | **Finishes - Level 43** |  | 2016-02-13 | 2016-11-30 |  |  |  |  |
|  | 86 | **Partitions** |  | 2016-02-18 | 2016-06-01 |  |  |  |  |
| C-F-P-1503 |  | Block Works & Fireproofing at level 43 | 14d | 2016-02-18 | 2016-03-05 | C-CS-L43-221, C-F-P-1323 SS, SD-CS-L43-1112 | 7d | 0d | 138,264.42 |
| C-F-P-1513 |  | Installation of the Studs for Gypsum Board Partition at level 43 | 20d | 2016-02-24 | 2016-03-17 | C-F-P-1503 SS+5d, C-F-P-1153, SD-CS-L43-1132 | 18d | 0d | 167,591.79 |
| C-F-P-1523 |  | Installation of Gypsum Board Partition & Insulation within the walls at level 43 | 25d | 2016-05-04 | 2016-06-01 | C-MEP-BMS-2505, C-ELV-SMATV-2505, C-ELV-CCTV-2505, C-ELV-FA-2505, C-ELV-MSPA-2505, C-ELV-RMS-2505, C-ELV-CS-2505, C-MEP-E-3006, C-MEP-PD-2505, C-P-SG-B-412 | 123d | 92d | 251,387.69 |
|  | 2 | **Ceiling Finishes** |  | 2016-02-13 | 2016-08-20 |  |  |  |  |
| C-F-CF-3507 |  | Installation of Ceiling Support & Brackets at level 43 | 15d | 2016-02-13 | 2016-02-29 | C-F-CF-3567 FF, C-F-CF-2877 SS | 123d | 4d | 2,582.76 |
| C-F-CF-3567 |  | Installation of Ceiling thermal/accoustic insulation at level 43 | 5d | 2016-02-24 | 2016-02-29 | C-F-P-1503 SS+5d | 123d | 0d | 5,295.76 |
| C-F-CF-3517 |  | Installation of Gypsum Ceiling at level 43 | 25d | 2016-07-03 | 2016-08-03 | C-F-CF-3507, C-MEP-BMS-2525, C-ELV-SMATV-2525, C-ELV-CCTV-2525, C-ELV-FA-2525, C-ELV-MSPA-2525, C-ELV-RMS-2525, C-ELV-CS-2525 FF, C-MEP-PD-2525, C-MEP-PD-2535, C-MEP-FF-2014, C-MEP-FF-2024, C-MEP-AC-4038, C-MEP-AC-4068, C-MEP-AC-4018, C-MEP-E-3016, SD-CS-L43-1192, C-F-CF-3507 SS, C-P-SG-B-412 | 19d | 0d |  |
| C-F-CF-3527 |  | Istallation of Metal Ceiling at level 43 | 25d | 2016-07-03 | 2016-08-03 | C-F-CF-3507, C-MEP-BMS-2525, C-ELV-SMATV-2525, C-ELV-CCTV-2525, C-ELV-FA-2525, C-ELV-MSPA-2525, C-ELV-RMS-2525, C-ELV-CS-2525 FF, C-MEP-PD-2525, C-MEP-PD-2535, C-MEP-FF-2014, C-MEP-FF-2024, C-MEP-AC-4038, C-MEP-AC-4068, C-MEP-AC-4018, C-MEP-E-3016, C-F-CF-3507 SS, C-P-SG-B-412 | 19d | 0d | 7,748.28 |
| C-F-CF-3537 |  | Ceiling Painting works at level 43 | 12d | 2016-08-07 | 2016-08-20 | C-F-CF-3517, C-MEP-FF-2034 FF | 83d | 64d | 2,075.42 |

Notes:
- C-F-FF-1764: Expenses: SW 41482.3; 2 78279.4
- C-F-FF-1774: Expenses: 1 11249
- C-F-WF-1764: Expenses: 1 47790.4
- C-F-WF-1774: Expenses: 1 542.11
- C-F-WF-1784: Expenses: 1 14834
- C-F-DW-1784: Expenses: 1 10411.2
- C-F-DW-1764: Expenses: 1 42310; 2 31233.5
- C-F-DW-1774: Expenses: 1 6907.2
- C-F-P-1503: Expenses: B 14905.5; F 123359
- C-F-P-1513: Expenses: S 167592
- C-F-P-1523: Expenses: G 251388
- C-F-CF-3507: Expenses: 1 2582.76
- C-F-CF-3567: Expenses: W 5295.76
- C-F-CF-3527: Expenses: 1 7748.28
- C-F-CF-3537: Expenses: 1 2075.42

| ID | WBS | Activity | Duration | Start | Finish | Predecessors | Total float | Free float | Cost |
| --- | --- | --- | --- | --- | --- | --- | --- | --- | --- |
|  | 3 | **Floor Finishes** |  | 2016-03-29 | 2016-10-09 |  |  |  |  |
| C-F-FF-2004 |  | Screed & Waterproofing works at level 43 | 20d | 2016-03-29 | 2016-04-20 | C-F-P-1503, C-F-FF-1764 SS | 121d | 0d | 112,453.07 |
| C-F-FF-2034 |  | Installation of Raised Flooring at level 43 | 16d | 2016-08-04 | 2016-08-22 | C-F-CF-3527, C-F-CF-3517 | 19d | 0d |  |
| C-F-FF-2014 |  | Implementation of E-poxy Resin at level 43 | 25d | 2016-08-23 | 2016-09-25 | C-F-CF-3527, C-F-CF-3517, C-F-FF-2004, C-F-WF-2034, C-F-FF-2034, SD-CS-L43-1152, C-F-P-3073 FF | 19d | 0d | 10,562.5 |
| C-F-FF-2024 |  | Installation of Carpet tiles at level 43 | 12d | 2016-09-26 | 2016-10-09 | C-F-CF-3527, C-F-CF-3517, C-F-FF-2004, C-F-FF-2014, C-F-P-3073 FF | 19d | 0d |  |
|  | 4 | **Wall Finishes** |  | 2016-04-02 | 2016-11-30 |  |  |  |  |
| C-F-WF-2004 |  | Plaster works at level 43 | 18d | 2016-04-02 | 2016-04-21 | C-F-P-1503, C-F-WF-1764 SS | 99d | 0d | 44,873.97 |
| C-F-WF-2034 |  | Installation of Toilet Cubicals at level 43 | 5d | 2016-04-23 | 2016-04-27 | C-F-WF-2004, C-F-WF-1794 SS | 116d | 18d |  |
| C-F-WF-2014 |  | Installation of Wall Cladding at level 43 | 20d | 2016-09-26 | 2016-10-18 | C-F-P-1523, SD-CS-L43-1172, C-F-FF-2014, C-F-P-3083 FF | 51d | 15d | 542.11 |
| C-F-WF-2024 |  | Wall Paint works at level 43 | 20d | 2016-11-08 | 2016-11-30 | C-F-P-1513, C-F-WF-2004, C-F-CF-3537, C-F-P-1523, C-F-FF-2014 FF+5d, C-MEP-FF-2034 FF, C-F-DW-2004 FF+5d, C-F-DW-2014 FS+5d, C-F-P-3083 FF | 19d | 0d | 13,928.74 |
|  | 5 | **Doors & Windows** |  | 2016-07-02 | 2016-11-01 |  |  |  |  |
| C-F-DW-2024 |  | Installation of Steel Door Sub-frame at level 43 | 8d | 2016-07-02 | 2016-07-13 | C-F-P-1503 FF, SD-CS-L43-1212, C-F-DW-1784 SS | 102d | 0d | 10,411.18 |
| C-F-DW-2004 |  | Installation of Steel Doors & Handrails at level 43 | 20d | 2016-09-26 | 2016-10-18 | C-F-DW-2024, C-F-FF-2034, C-F-FF-2014, C-F-FF-2034 FF | 51d | 32d | 73,543.49 |
| C-F-DW-2014 |  | Installation of Wall & Corner Guard at level 43 | 20d | 2016-10-10 | 2016-11-01 | C-F-P-1523, C-F-FF-2014 SS, C-F-FF-2014 FF, C-F-FF-2024, C-F-P-1343, C-F-P-1253, C-F-P-1193, C-F-P-1073, C-F-P-1223, C-F-P-1163, C-F-P-1133, C-F-DW-1714 | 19d | 0d | 6,907.2 |
|  | 84 | **Finishes - LeveL 44** |  | 2016-02-17 | 2016-12-05 |  |  |  |  |
|  | 1 | **Partitions** |  | 2016-02-23 | 2016-06-01 |  |  |  |  |
| C-F-P-1383 |  | Block Works & Fireproofing at level 44 | 14d | 2016-02-23 | 2016-03-09 | C-CS-L44-231, C-F-P-1503 SS, SD-CS-L44-1132 | 3d | 0d | 122,873.74 |
| C-F-P-1393 |  | Installation of the Studs for Gypsum Board Partition at level 44 | 20d | 2016-02-29 | 2016-03-22 | C-F-P-1383 SS+5d, C-F-P-1213, SD-CS-L44-1152 | 30d | 0d | 148,936.59 |
| C-F-P-1403 |  | Installation of Gypsum Board Partition & Insulation within the walls at level 44 | 25d | 2016-05-04 | 2016-06-01 | C-MEP-BMS-2305, C-ELV-SMATV-2305, C-ELV-CCTV-2305, C-ELV-FA-2305, C-ELV-MSPA-2305, C-ELV-RMS-2305, C-ELV-CS-2305, C-MEP-E-2766, C-MEP-PD-2305, C-P-SG-B-422 | 140d | 96d | 223,404.88 |
|  | 2 | **Ceiling Finishes** |  | 2016-02-17 | 2016-08-24 |  |  |  |  |
| C-F-CF-3227 |  | Installation of Ceiling Support & Brackets at level 44 | 15d | 2016-02-17 | 2016-03-05 | C-F-CF-3287 FF, C-F-CF-3507 SS | 122d | 14d | 2,295.26 |
| C-F-CF-3287 |  | Installation of Ceiling thermal/accoustic insulation at level 44 | 5d | 2016-02-29 | 2016-03-05 | C-F-P-1383 SS+5d | 122d | 0d | 4,706.27 |
| C-F-CF-3237 |  | Installation of Gypsum Ceiling at level 44 | 25d | 2016-07-11 | 2016-08-08 | C-F-CF-3227, C-MEP-BMS-2325, C-ELV-SMATV-2325, C-ELV-CCTV-2325, C-ELV-FA-2325, C-ELV-MSPA-2325, C-ELV-RMS-2325, C-ELV-CS-2325, C-MEP-PD-2325, C-MEP-PD-2335, C-MEP-FF-1854, C-MEP-FF-1864, C-MEP-AC-3718, C-MEP-AC-3748, C-MEP-AC-3698, C-MEP-E-2776, SD-CS-L44-1212, C-F-CF-3227 SS, C-P-SG-B-422 | 35d | 0d |  |
| C-F-CF-3247 |  | Istallation of Metal Ceiling at level 44 | 25d | 2016-07-11 | 2016-08-08 | C-F-CF-3227, C-MEP-BMS-2325, C-ELV-SMATV-2325, C-ELV-CCTV-2325, C-ELV-FA-2325, C-ELV-MSPA-2325, C-ELV-RMS-2325, C-ELV-CS-2325, C-MEP-PD-2325, C-MEP-PD-2335, C-MEP-FF-1854, C-MEP-FF-1864, C-MEP-AC-3718, C-MEP-AC-3748, C-MEP-AC-3698, C-MEP-E-2776, C-F-CF-3227 SS, C-P-SG-B-422 | 35d | 0d | 6,885.79 |
| C-F-CF-3257 |  | Ceiling Painting works at level 44 | 12d | 2016-08-11 | 2016-08-24 | C-F-CF-3237, C-MEP-FF-1874 FF | 94d | 64d | 1,844.4 |

Notes:
- C-F-FF-2004: Expenses: SW 38950.8; 2 73502.3
- C-F-FF-2014: Expenses: 1 10562.5
- C-F-WF-2004: Expenses: 1 44874
- C-F-WF-2014: Expenses: 1 542.11
- C-F-WF-2024: Expenses: 1 13928.7
- C-F-DW-2024: Expenses: 1 10411.2
- C-F-DW-2004: Expenses: 1 42310; 2 31233.5
- C-F-DW-2014: Expenses: 1 6907.2
- C-F-P-1383: Expenses: B 13246.3; F 109627
- C-F-P-1393: Expenses: S 148937
- C-F-P-1403: Expenses: G 223405
- C-F-CF-3227: Expenses: 1 2295.26
- C-F-CF-3287: Expenses: W 4706.27
- C-F-CF-3247: Expenses: 1 6885.79
- C-F-CF-3257: Expenses: 1 1844.4

| ID | WBS | Activity | Duration | Start | Finish | Predecessors | Total float | Free float | Cost |
| --- | --- | --- | --- | --- | --- | --- | --- | --- | --- |
|  | 3 | **Floor Finishes** |  | 2016-03-29 | 2016-10-13 |  |  |  |  |
| C-F-FF-1844 |  | Screed & Waterproofing works at level 44 | 20d | 2016-03-29 | 2016-04-20 | C-F-P-1383, C-F-FF-2004 SS | 121d | 0d | 99,935.54 |
| C-F-FF-1874 |  | Installation of Raised Flooring at level 44 | 16d | 2016-08-09 | 2016-08-27 | C-F-CF-3247, C-F-CF-3237 | 35d | 0d |  |
| C-F-FF-1854 |  | Implementation of E-poxy Resin at level 44 | 25d | 2016-08-28 | 2016-09-29 | C-F-CF-3247, C-F-CF-3237, C-F-FF-1844, C-F-WF-1874, C-F-FF-1874, SD-CS-L44-1172, C-F-P-3103 FF | 35d | 0d | 9,386.76 |
| C-F-FF-1864 |  | Installation of Carpet tiles at level 44 | 12d | 2016-10-01 | 2016-10-13 | C-F-CF-3247, C-F-CF-3237, C-F-FF-1844, C-F-FF-1854, C-F-P-3103 FF | 35d | 0d |  |
|  | 4 | **Wall Finishes** |  | 2016-04-23 | 2016-12-05 |  |  |  |  |
| C-F-WF-1844 |  | Plaster works at level 44 | 18d | 2016-04-23 | 2016-05-12 | C-F-P-1383, C-F-WF-2004 | 99d | 0d | 39,878.9 |
| C-F-WF-1874 |  | Installation of Toilet Cubicals at level 44 | 5d | 2016-05-14 | 2016-05-18 | C-F-WF-1844, C-F-WF-2034 SS | 112d | 0d |  |
| C-F-WF-1854 |  | Installation of Wall Cladding at level 44 | 20d | 2016-10-01 | 2016-10-23 | C-F-P-1403, SD-CS-L44-1192, C-F-FF-1854, C-F-P-3113 FF | 47d | 15d | 542.11 |
| C-F-WF-1864 |  | Wall Paint works at level 44 | 20d | 2016-11-13 | 2016-12-05 | C-F-P-1393, C-F-WF-1844, C-F-CF-3257, C-F-P-1403, C-F-FF-1854 FF+5d, C-MEP-FF-1874 FF, C-F-DW-1844 FF+5d, C-F-DW-1854 FS+5d, C-F-P-3113 FF, C-PF-21 | 39d | 1d | 12,378.29 |
|  | 5 | **Doors & Windows** |  | 2016-07-02 | 2016-11-06 |  |  |  |  |
| C-F-DW-1864 |  | Installation of Steel Door Sub-frame at level 44 | 8d | 2016-07-02 | 2016-07-13 | C-F-P-1383 FF, SD-CS-L44-1232, C-F-DW-2024 SS | 102d | 0d | 10,411.18 |
| C-F-DW-1844 |  | Installation of Steel Doors & Handrails at level 44 | 20d | 2016-10-01 | 2016-10-23 | C-F-DW-1864, C-F-FF-1874, C-F-FF-1854, C-F-FF-1874 FF | 47d | 32d | 73,543.49 |
| C-F-DW-1854 |  | Installation of Wall & Corner Guard at level 44 | 20d | 2016-10-15 | 2016-11-06 | C-F-P-1403, C-F-FF-1854 SS, C-F-FF-1854 FF, C-F-FF-1864, C-F-P-1523, C-F-P-1343, C-F-P-1253, C-F-P-1193, C-F-P-1073, C-F-P-1223, C-F-P-1163, C-F-P-1133, C-F-DW-1714 | 35d | 0d | 6,907.2 |
|  | 83 | **Finishes - Level 45** |  | 2016-03-05 | 2016-12-21 |  |  |  |  |
|  | 1 | **Partitions** |  | 2016-03-10 | 2016-06-06 |  |  |  |  |
| C-F-P-1353 |  | Block Works & Fireproofing at level 45 | 14d | 2016-03-10 | 2016-03-26 | C-CS-L45-281, C-F-P-1383, SD-CS-L45-1152 | 3d | 0d | 118,275.41 |
| C-F-P-1363 |  | Installation of the Studs for Gypsum Board Partition at level 45 | 20d | 2016-03-15 | 2016-04-06 | C-F-P-1353 SS+4d, C-F-P-1063, SD-CS-L45-1172 | 3d | 0d | 143,362.91 |
| C-F-P-1373 |  | Installation of Gypsum Board Partition & Insulation within the walls at level 45 | 25d | 2016-05-09 | 2016-06-06 | C-MEP-BMS-2255, C-ELV-SMATV-2255, C-ELV-CCTV-2255, C-ELV-FA-2255, C-ELV-MSPA-2255, C-ELV-RMS-2255, C-ELV-CS-2255, C-MEP-E-2706, C-MEP-PD-2255, C-P-SG-B-426 | 136d | 105d | 215,044.36 |
|  | 2 | **Ceiling Finishes** |  | 2016-03-05 | 2016-09-08 |  |  |  |  |
| C-F-CF-3157 |  | Installation of Ceiling Support & Brackets at level 45 | 15d | 2016-03-05 | 2016-03-21 | C-F-CF-3217 FF, C-F-CF-3227 SS | 108d | 0d | 2,209.37 |
| C-F-CF-3217 |  | Installation of Ceiling thermal/accoustic insulation at level 45 | 5d | 2016-03-16 | 2016-03-21 | C-F-P-1353 SS+5d | 108d | 0d | 4,530.14 |
| C-F-CF-3167 |  | Installation of Gypsum Ceiling at level 45 | 25d | 2016-07-26 | 2016-08-23 | C-F-CF-3157, C-MEP-BMS-2275, C-ELV-SMATV-2275, C-ELV-CCTV-2275, C-ELV-FA-2275, C-ELV-MSPA-2275, C-ELV-RMS-2275, C-ELV-CS-2275 FF, C-MEP-PD-2275, C-MEP-PD-2285, C-MEP-FF-1814, C-MEP-FF-1824, C-MEP-AC-3638, C-MEP-AC-3668, C-MEP-AC-3618, C-MEP-E-2716, SD-CS-L45-1232, C-F-CF-3157 SS, C-P-SG-B-426 | 22d | 0d |  |
| C-F-CF-3177 |  | Istallation of Metal Ceiling at level 45 | 25d | 2016-07-26 | 2016-08-23 | C-F-CF-3157, C-MEP-BMS-2275, C-ELV-SMATV-2275, C-ELV-CCTV-2275, C-ELV-FA-2275, C-ELV-MSPA-2275, C-ELV-RMS-2275, C-ELV-CS-2275 FF, C-MEP-PD-2275, C-MEP-PD-2285, C-MEP-FF-1814, C-MEP-FF-1824, C-MEP-AC-3638, C-MEP-AC-3668, C-MEP-AC-3618, C-MEP-E-2716, C-F-CF-3157 SS, C-P-SG-B-426 | 22d | 0d | 6,628.11 |
| C-F-CF-3187 |  | Ceiling Painting works at level 45 | 12d | 2016-08-27 | 2016-09-08 | C-F-CF-3167, C-MEP-FF-1834 FF | 81d | 64d | 1,775.38 |

Notes:
- C-F-FF-1844: Expenses: SW 34615; 2 65320.5
- C-F-FF-1854: Expenses: 1 9386.76
- C-F-WF-1844: Expenses: 1 39878.9
- C-F-WF-1854: Expenses: 1 542.11
- C-F-WF-1864: Expenses: 1 12378.3
- C-F-DW-1864: Expenses: 1 10411.2
- C-F-DW-1844: Expenses: 1 42310; 2 31233.5
- C-F-DW-1854: Expenses: 1 6907.2
- C-F-P-1353: Expenses: B 12750.6; F 105525
- C-F-P-1363: Expenses: S 143363
- C-F-P-1373: Expenses: G 215044
- C-F-CF-3157: Expenses: 1 2209.37
- C-F-CF-3217: Expenses: W 4530.14
- C-F-CF-3177: Expenses: 1 6628.11
- C-F-CF-3187: Expenses: 1 1775.38

| ID | WBS | Activity | Duration | Start | Finish | Predecessors | Total float | Free float | Cost |
| --- | --- | --- | --- | --- | --- | --- | --- | --- | --- |
|  | 3 | **Floor Finishes** |  | 2016-04-21 | 2016-10-29 |  |  |  |  |
| C-F-FF-1804 |  | Screed & Waterproofing works at level 45 | 20d | 2016-04-21 | 2016-05-14 | C-F-P-1353, C-F-FF-1844 | 121d | 0d | 96,195.64 |
| C-F-FF-1834 |  | Installation of Raised Flooring at level 45 | 16d | 2016-08-24 | 2016-09-14 | C-F-CF-3177, C-F-CF-3167 | 22d | 0d |  |
| C-F-FF-1814 |  | Implementation of E-poxy Resin at level 45 | 25d | 2016-09-15 | 2016-10-15 | C-F-CF-3177, C-F-CF-3167, C-F-FF-1804, C-F-WF-1834, C-F-FF-1834, SD-CS-L45-1192, C-F-P-3133 FF | 22d | 0d | 9,035.47 |
| C-F-FF-1824 |  | Installation of Carpet tiles at level 45 | 12d | 2016-10-16 | 2016-10-29 | C-F-CF-3177, C-F-CF-3167, C-F-FF-1804, C-F-FF-1814, C-F-P-3133 FF | 22d | 0d |  |
|  | 4 | **Wall Finishes** |  | 2016-04-23 | 2016-12-21 |  |  |  |  |
| C-F-WF-1804 |  | Plaster works at level 45 | 18d | 2016-04-23 | 2016-05-12 | C-F-P-1353, C-F-WF-1844 SS | 99d | 0d | 38,386.5 |
| C-F-WF-1834 |  | Installation of Toilet Cubicals at level 45 | 5d | 2016-05-19 | 2016-05-24 | C-F-WF-1804, C-F-WF-1874 | 112d | 0d |  |
| C-F-WF-1814 |  | Installation of Wall Cladding at level 45 | 20d | 2016-10-16 | 2016-11-07 | C-F-P-1373, SD-CS-L45-1212, C-F-FF-1814, C-F-P-3143 FF | 34d | 12d | 542.11 |
| C-F-WF-1824 |  | Wall Paint works at level 45 | 20d | 2016-11-28 | 2016-12-21 | C-F-P-1363, C-F-WF-1804, C-F-CF-3187, C-F-P-1373, C-F-FF-1814 FF+5d, C-MEP-FF-1834 FF, C-F-DW-1804 FF+5d, C-F-DW-1814 FS+5d, C-F-P-3143 FF | 26d | 2d | 11,915.05 |
|  | 5 | **Doors & Windows** |  | 2016-07-02 | 2016-11-21 |  |  |  |  |
| C-F-DW-1824 |  | Installation of Steel Door Sub-frame at level 45 | 8d | 2016-07-02 | 2016-07-13 | C-F-P-1353 FF, SD-CS-L45-1252, C-F-DW-1864 SS | 102d | 0d | 10,411.18 |
| C-F-DW-1804 |  | Installation of Steel Doors & Handrails at level 45 | 20d | 2016-10-16 | 2016-11-07 | C-F-DW-1824, C-F-FF-1834, C-F-FF-1814, C-F-FF-1834 FF | 34d | 29d | 73,543.49 |
| C-F-DW-1814 |  | Installation of Wall & Corner Guard at level 45 | 20d | 2016-10-30 | 2016-11-21 | C-F-P-1373, C-F-FF-1814 SS, C-F-FF-1814 FF, C-F-FF-1824, C-F-P-1403, C-F-P-1523, C-F-P-1343, C-F-P-1253, C-F-P-1193, C-F-P-1073, C-F-P-1223, C-F-P-1163, C-F-P-1133, C-F-DW-1714 | 22d | 0d | 6,907.2 |
|  | 82 | **Finishes - Level 46** |  | 2016-03-10 | 2016-12-22 |  |  |  |  |
|  | 1 | **Partitions** |  | 2016-03-10 | 2016-06-06 |  |  |  |  |
| C-F-P-1443 |  | Block Works & Fireproofing at level 46 | 14d | 2016-03-10 | 2016-03-26 | C-CS-L46-291, C-F-P-1353 SS, SD-CS-L46-1172 | 16d | 0d | 107,214.27 |
| C-F-P-1453 |  | Installation of the Studs for Gypsum Board Partition at level 46 | 20d | 2016-03-16 | 2016-04-07 | C-F-P-1443 SS+5d, C-F-P-1183, SD-CS-L46-1192 | 21d | 0d | 129,955.56 |
| C-F-P-1463 |  | Installation of Gypsum Board Partition & Insulation within the walls at level 46 | 25d | 2016-05-09 | 2016-06-06 | C-MEP-BMS-2405, C-ELV-SMATV-2405, C-ELV-CCTV-2405, C-ELV-FA-2405, C-ELV-MSPA-2405, C-ELV-RMS-2405, C-ELV-CS-2405, C-MEP-E-2886, C-MEP-PD-2405, C-P-SG-B-432 | 136d | 106d | 194,933.34 |
|  | 2 | **Ceiling Finishes** |  | 2016-03-16 | 2016-09-13 |  |  |  |  |
| C-F-CF-3427 |  | Installation of Ceiling thermal/accoustic insulation at level 46 | 5d | 2016-03-16 | 2016-03-21 | C-F-P-1443 SS+5d | 123d | 15d | 4,106.48 |
| C-F-CF-3367 |  | Installation of Ceiling Support & Brackets at level 46 | 15d | 2016-03-22 | 2016-04-07 | C-F-CF-3427 FF, C-F-CF-3157 | 108d | 0d | 2,002.75 |
| C-F-CF-3377 |  | Installation of Gypsum Ceiling at level 46 | 25d | 2016-07-27 | 2016-08-24 | C-F-CF-3367, C-MEP-BMS-2425, C-ELV-SMATV-2425, C-ELV-CCTV-2425, C-ELV-FA-2425, C-ELV-MSPA-2425, C-ELV-RMS-2425, C-ELV-CS-2425, C-MEP-PD-2425, C-MEP-PD-2435, C-MEP-FF-1934, C-MEP-FF-1944, C-MEP-AC-3878, C-MEP-AC-3908, C-MEP-AC-3858, C-MEP-E-2896, SD-CS-L46-1252, C-F-CF-3367 SS, C-P-SG-B-432 | 21d | 0d |  |
| C-F-CF-3387 |  | Istallation of Metal Ceiling at level 46 | 25d | 2016-07-27 | 2016-08-24 | C-F-CF-3367, C-MEP-BMS-2425, C-ELV-SMATV-2425, C-ELV-CCTV-2425, C-ELV-FA-2425, C-ELV-MSPA-2425, C-ELV-RMS-2425, C-ELV-CS-2425, C-MEP-PD-2425, C-MEP-PD-2435, C-MEP-FF-1934, C-MEP-FF-1944, C-MEP-AC-3878, C-MEP-AC-3908, C-MEP-AC-3858, C-MEP-E-2896, C-F-CF-3367 SS, C-P-SG-B-432 | 21d | 0d | 6,008.24 |
| C-F-CF-3397 |  | Ceiling Painting works at level 46 | 12d | 2016-08-28 | 2016-09-13 | C-F-CF-3377, C-MEP-FF-1954 FF | 80d | 64d | 1,609.34 |

Notes:
- C-F-FF-1804: Expenses: SW 33319.6; 2 62876
- C-F-FF-1814: Expenses: 1 9035.47
- C-F-WF-1804: Expenses: 1 38386.5
- C-F-WF-1814: Expenses: 1 542.11
- C-F-WF-1824: Expenses: 1 11915
- C-F-DW-1824: Expenses: 1 10411.2
- C-F-DW-1804: Expenses: 1 42310; 2 31233.5
- C-F-DW-1814: Expenses: 1 6907.2
- C-F-P-1443: Expenses: B 11558.1; F 95656.1
- C-F-P-1453: Expenses: S 129956
- C-F-P-1463: Expenses: G 194933
- C-F-CF-3427: Expenses: W 4106.48
- C-F-CF-3367: Expenses: 1 2002.75
- C-F-CF-3387: Expenses: 1 6008.24
- C-F-CF-3397: Expenses: 1 1609.34

| ID | WBS | Activity | Duration | Start | Finish | Predecessors | Total float | Free float | Cost |
| --- | --- | --- | --- | --- | --- | --- | --- | --- | --- |
|  | 3 | **Floor Finishes** |  | 2016-04-21 | 2016-10-30 |  |  |  |  |
| C-F-FF-1924 |  | Screed & Waterproofing works at level 46 | 20d | 2016-04-21 | 2016-05-14 | C-F-P-1443, C-F-FF-1804 SS | 121d | 0d | 87,199.39 |
| C-F-FF-1954 |  | Installation of Raised Flooring at level 46 | 16d | 2016-08-25 | 2016-09-15 | C-F-CF-3387, C-F-CF-3377 | 21d | 0d |  |
| C-F-FF-1934 |  | Implementation of E-poxy Resin at level 46 | 25d | 2016-09-17 | 2016-10-16 | C-F-CF-3387, C-F-CF-3377, C-F-FF-1924, C-F-WF-1954, C-F-FF-1954, SD-CS-L46-1212, C-F-P-3163 FF | 21d | 0d | 8,190.47 |
| C-F-FF-1944 |  | Installation of Carpet tiles at level 46 | 12d | 2016-10-17 | 2016-10-30 | C-F-CF-3387, C-F-CF-3377, C-F-FF-1924, C-F-FF-1934, C-F-P-3163 FF | 21d | 0d |  |
|  | 4 | **Wall Finishes** |  | 2016-04-23 | 2016-12-22 |  |  |  |  |
| C-F-WF-1924 |  | Plaster works at level 46 | 18d | 2016-04-23 | 2016-05-12 | C-F-P-1443, C-F-WF-1804 SS | 99d | 0d | 34,796.59 |
| C-F-WF-1954 |  | Installation of Toilet Cubicals at level 46 | 5d | 2016-05-19 | 2016-05-24 | C-F-WF-1924, C-F-WF-1834 SS | 112d | 13d |  |
| C-F-WF-1934 |  | Installation of Wall Cladding at level 46 | 20d | 2016-10-17 | 2016-11-08 | C-F-P-1463, SD-CS-L46-1232, C-F-FF-1934, C-F-P-3173 FF | 33d | 21d | 542.11 |
| C-F-WF-1944 |  | Wall Paint works at level 46 | 20d | 2016-11-29 | 2016-12-22 | C-F-P-1453, C-F-WF-1924, C-F-CF-3397, C-F-P-1463, C-F-FF-1934 FF+5d, C-MEP-FF-1954 FF, C-F-DW-1924 FF+5d, C-F-DW-1934 FS+5d, C-F-P-3173 FF | 25d | 0d | 10,800.75 |
|  | 5 | **Doors & Windows** |  | 2016-07-02 | 2016-11-22 |  |  |  |  |
| C-F-DW-1944 |  | Installation of Steel Door Sub-frame at level 46 | 8d | 2016-07-02 | 2016-07-13 | C-F-P-1443 FF, SD-CS-L46-1272, C-F-DW-1824 SS | 102d | 0d | 10,411.18 |
| C-F-DW-1924 |  | Installation of Steel Doors & Handrails at level 46 | 20d | 2016-10-17 | 2016-11-08 | C-F-DW-1944, C-F-FF-1954, C-F-FF-1934, C-F-FF-1954 FF | 33d | 28d | 73,543.49 |
| C-F-DW-1934 |  | Installation of Wall & Corner Guard at level 46 | 20d | 2016-10-31 | 2016-11-22 | C-F-P-1463, C-F-FF-1934 SS, C-F-FF-1934 FF, C-F-FF-1944, C-F-P-1373, C-F-P-1403, C-F-P-1523, C-F-P-1343, C-F-P-1253, C-F-P-1193, C-F-P-1073, C-F-P-1223, C-F-P-1163, C-F-P-1133, C-F-DW-1714 | 21d | 0d | 6,907.2 |
|  | 81 | **Finishes - Level 47** |  | 2016-03-15 | 2016-12-27 |  |  |  |  |
|  | 1 | **Partitions** |  | 2016-03-15 | 2016-06-06 |  |  |  |  |
| C-F-P-1293 |  | Block Works & Fireproofing at level 47 | 14d | 2016-03-15 | 2016-03-30 | C-CS-L47-301, C-F-P-1443 SS, SD-CS-L47-1192 | 12d | 0d | 95,433.62 |
| C-F-P-1303 |  | Installation of the Studs for Gypsum Board Partition at level 47 | 20d | 2016-03-21 | 2016-04-12 | C-F-P-1293 SS+5d, C-F-P-1243, SD-CS-L47-1212 | 12d | 0d | 115,676.12 |
| C-F-P-1313 |  | Installation of Gypsum Board Partition & Insulation within the walls at level 47 | 25d | 2016-05-09 | 2016-06-06 | C-MEP-BMS-2155, C-ELV-SMATV-2155, C-ELV-CCTV-2155, C-ELV-FA-2155, C-ELV-MSPA-2155, C-ELV-RMS-2155, C-ELV-CS-2155, C-MEP-E-2586, C-MEP-PD-2155, C-P-SG-B-442 | 136d | 110d | 173,514.18 |
|  | 2 | **Ceiling Finishes** |  | 2016-03-21 | 2016-09-18 |  |  |  |  |
| C-F-CF-3077 |  | Installation of Ceiling thermal/accoustic insulation at level 47 | 5d | 2016-03-21 | 2016-03-26 | C-F-P-1293 SS+5d | 121d | 11d | 3,655.27 |
| C-F-CF-3017 |  | Installation of Ceiling Support & Brackets at level 47 | 15d | 2016-03-22 | 2016-04-07 | C-F-CF-3077 FF, C-F-CF-3367 SS | 110d | 0d | 1,782.69 |
| C-F-CF-3027 |  | Installation of Gypsum Ceiling at level 47 | 25d | 2016-08-01 | 2016-08-29 | C-F-CF-3017, C-MEP-BMS-2175, C-ELV-SMATV-2175, C-ELV-CCTV-2175, C-ELV-FA-2175, C-ELV-MSPA-2175, C-ELV-RMS-2175, C-ELV-CS-2175, C-MEP-PD-2175, C-MEP-PD-2185, C-MEP-FF-1734, C-MEP-FF-1744, C-MEP-AC-3478, C-MEP-AC-3508, C-MEP-AC-3458, C-MEP-E-2596, SD-CS-L47-1272, C-F-CF-3017 SS, C-P-SG-B-442 | 17d | 0d |  |
| C-F-CF-3037 |  | Istallation of Metal Ceiling at level 47 | 25d | 2016-08-01 | 2016-08-29 | C-F-CF-3017, C-MEP-BMS-2175, C-ELV-SMATV-2175, C-ELV-CCTV-2175, C-ELV-FA-2175, C-ELV-MSPA-2175, C-ELV-RMS-2175, C-ELV-CS-2175, C-MEP-PD-2175, C-MEP-PD-2185, C-MEP-FF-1734, C-MEP-FF-1744, C-MEP-AC-3478, C-MEP-AC-3508, C-MEP-AC-3458, C-MEP-E-2596, C-F-CF-3017 SS, C-P-SG-B-442 | 17d | 0d | 5,348.06 |
| C-F-CF-3047 |  | Ceiling Painting works at level 47 | 12d | 2016-09-01 | 2016-09-18 | C-F-CF-3027, C-MEP-FF-1754 FF | 76d | 64d | 1,432.51 |

Notes:
- C-F-FF-1924: Expenses: SW 30203.6; 2 56995.8
- C-F-FF-1934: Expenses: 1 8190.47
- C-F-WF-1924: Expenses: 1 34796.6
- C-F-WF-1934: Expenses: 1 542.11
- C-F-WF-1944: Expenses: 1 10800.8
- C-F-DW-1944: Expenses: 1 10411.2
- C-F-DW-1924: Expenses: 1 42310; 2 31233.5
- C-F-DW-1934: Expenses: 1 6907.2
- C-F-P-1293: Expenses: B 10288.1; F 85145.5
- C-F-P-1303: Expenses: S 115676
- C-F-P-1313: Expenses: G 173514
- C-F-CF-3077: Expenses: W 3655.27
- C-F-CF-3017: Expenses: 1 1782.69
- C-F-CF-3037: Expenses: 1 5348.06
- C-F-CF-3047: Expenses: 1 1432.51

| ID | WBS | Activity | Duration | Start | Finish | Predecessors | Total float | Free float | Cost |
| --- | --- | --- | --- | --- | --- | --- | --- | --- | --- |
|  | 3 | **Floor Finishes** |  | 2016-04-21 | 2016-11-03 |  |  |  |  |
| C-F-FF-1724 |  | Screed & Waterproofing works at level 47 | 20d | 2016-04-21 | 2016-05-14 | C-F-P-1293, C-F-FF-1924 SS | 121d | 0d | 77,617.97 |
| C-F-FF-1754 |  | Installation of Raised Flooring at level 47 | 16d | 2016-08-30 | 2016-09-20 | C-F-CF-3037, C-F-CF-3027 | 17d | 0d |  |
| C-F-FF-1734 |  | Implementation of E-poxy Resin at level 47 | 25d | 2016-09-21 | 2016-10-20 | C-F-CF-3037, C-F-CF-3027, C-F-FF-1724, C-F-WF-1754, C-F-FF-1754, SD-CS-L47-1232 | 17d | 0d | 7,290.51 |
| C-F-FF-1744 |  | Installation of Carpet tiles at level 47 | 12d | 2016-10-22 | 2016-11-03 | C-F-CF-3037, C-F-CF-3027, C-F-FF-1724, C-F-FF-1734 | 17d | 0d |  |
|  | 4 | **Wall Finishes** |  | 2016-05-14 | 2016-12-27 |  |  |  |  |
| C-F-WF-1724 |  | Plaster works at level 47 | 18d | 2016-05-14 | 2016-06-02 | C-F-P-1293, C-F-WF-1924 | 99d | 0d | 30,973.16 |
| C-F-WF-1754 |  | Installation of Toilet Cubicals at level 47 | 5d | 2016-06-04 | 2016-06-08 | C-F-WF-1724, C-F-WF-1954 SS | 99d | 0d |  |
| C-F-WF-1734 |  | Installation of Wall Cladding at level 47 | 20d | 2016-10-22 | 2016-11-13 | C-F-P-1313, SD-CS-L47-1252, C-F-FF-1734 | 29d | 12d | 542.11 |
| C-F-WF-1744 |  | Wall Paint works at level 47 | 20d | 2016-12-04 | 2016-12-27 | C-F-P-1303, C-F-WF-1724, C-F-CF-3047, C-F-P-1313, C-F-FF-1734 FF+5d, C-MEP-FF-1754 FF, C-F-DW-1724 FF+5d, C-F-DW-1734 FS+5d, C-PF-31, C-OF-21 | 21d | 0d | 9,613.97 |
|  | 5 | **Doors & Windows** |  | 2016-07-14 | 2016-11-27 |  |  |  |  |
| C-F-DW-1744 |  | Installation of Steel Door Sub-frame at level 47 | 8d | 2016-07-14 | 2016-07-23 | C-F-P-1293 FF, SD-CS-L47-1292, C-F-DW-1944 | 102d | 0d | 10,411.18 |
| C-F-DW-1724 |  | Installation of Steel Doors & Handrails at level 47 | 20d | 2016-10-22 | 2016-11-13 | C-F-DW-1744, C-F-FF-1754, C-F-FF-1734, C-F-FF-1754 FF | 29d | 24d | 73,543.49 |
| C-F-DW-1734 |  | Installation of Wall & Corner Guard at level 47 | 20d | 2016-11-05 | 2016-11-27 | C-F-P-1313, C-F-FF-1734 SS, C-F-FF-1734 FF, C-F-FF-1744, C-F-P-1463, C-F-P-1373, C-F-P-1403, C-F-P-1523, C-F-P-1343, C-F-P-1253, C-F-P-1193, C-F-P-1073, C-F-P-1223, C-F-P-1163, C-F-P-1133, C-F-DW-1714 | 17d | 0d | 6,907.2 |
|  | 80 | **Finishes - Level 48** |  | 2016-03-22 | 2016-12-14 |  |  |  |  |
|  | 1 | **Partitions** |  | 2016-03-22 | 2016-06-06 |  |  |  |  |
| C-F-P-1413 |  | Block Works & Fireproofing at level 48 | 14d | 2016-03-22 | 2016-04-06 | C-CS-L48-311, C-F-P-1293 SS, SD-CS-L48-1212 | 10d | 0d | 91,282.54 |
| C-F-P-1423 |  | Installation of the Studs for Gypsum Board Partition at level 48 | 20d | 2016-03-22 | 2016-04-13 | C-F-P-1413 SS, C-F-P-1333, SD-CS-L48-1232 | 11d | 0d | 110,644.55 |
| C-F-P-1433 |  | Installation of Gypsum Board Partition & Insulation within the walls at level 48 | 25d | 2016-05-09 | 2016-06-06 | C-MEP-BMS-2355, C-ELV-SMATV-2355, C-ELV-CCTV-2355, C-ELV-FA-2355, C-ELV-MSPA-2355, C-ELV-RMS-2355, C-ELV-CS-2355, C-MEP-E-2826, C-MEP-PD-2355 | 136d | 103d | 165,966.83 |
|  | 2 | **Ceiling Finishes** |  | 2016-03-22 | 2016-09-07 |  |  |  |  |
| C-F-CF-3297 |  | Installation of Ceiling Support & Brackets at level 48 | 15d | 2016-03-22 | 2016-04-07 | C-F-CF-3357 FF, C-F-CF-3017 SS | 116d | 2d | 1,901.29 |
| C-F-CF-3357 |  | Installation of Ceiling thermal/accoustic insulation at level 48 | 5d | 2016-03-28 | 2016-04-02 | C-F-P-1413 SS+5d | 121d | 5d | 3,496.27 |
| C-F-CF-3307 |  | Installation of Gypsum Ceiling at level 48 | 18d | 2016-08-02 | 2016-08-22 | C-F-CF-3297, C-MEP-BMS-2375, C-ELV-SMATV-2375, C-ELV-CCTV-2375, C-ELV-FA-2375, C-ELV-MSPA-2375, C-ELV-RMS-2375, C-ELV-CS-2375, C-MEP-PD-2375, C-MEP-PD-2385, C-MEP-FF-1894, C-MEP-FF-1904, C-MEP-AC-3798, C-MEP-AC-3828, C-MEP-AC-3778, C-MEP-E-2836, SD-CS-L48-1292, C-F-CF-3297 SS, C-P-SG-B-452 | 22d | 0d |  |
| C-F-CF-3317 |  | Istallation of Metal Ceiling at level 48 | 18d | 2016-08-02 | 2016-08-22 | C-F-CF-3297, C-MEP-BMS-2375, C-ELV-SMATV-2375, C-ELV-CCTV-2375, C-ELV-FA-2375, C-ELV-MSPA-2375, C-ELV-RMS-2375, C-ELV-CS-2375, C-MEP-PD-2375, C-MEP-PD-2385, C-MEP-FF-1894, C-MEP-FF-1904, C-MEP-AC-3798, C-MEP-AC-3828, C-MEP-AC-3778, C-MEP-E-2836, C-F-CF-3297 SS, C-P-SG-B-452 | 22d | 0d | 5,703.87 |
| C-F-CF-3327 |  | Ceiling Painting works at level 48 | 12d | 2016-08-25 | 2016-09-07 | C-F-CF-3307, C-MEP-FF-1914 FF | 82d | 61d | 1,370.2 |

Notes:
- C-F-FF-1724: Expenses: SW 26884.8; 2 50733.2
- C-F-FF-1734: Expenses: 1 7290.51
- C-F-WF-1724: Expenses: 1 30973.2
- C-F-WF-1734: Expenses: 1 542.11
- C-F-WF-1744: Expenses: 1 9613.97
- C-F-DW-1744: Expenses: 1 10411.2
- C-F-DW-1724: Expenses: 1 42310; 2 31233.5
- C-F-DW-1734: Expenses: 1 6907.2
- C-F-P-1413: Expenses: B 9840.63; F 81441.9
- C-F-P-1423: Expenses: S 110645
- C-F-P-1433: Expenses: G 165967
- C-F-CF-3297: Expenses: 1 1901.29
- C-F-CF-3357: Expenses: W 3496.27
- C-F-CF-3317: Expenses: 1 5703.87
- C-F-CF-3327: Expenses: 1 1370.2

| ID | WBS | Activity | Duration | Start | Finish | Predecessors | Total float | Free float | Cost |
| --- | --- | --- | --- | --- | --- | --- | --- | --- | --- |
|  | 3 | **Floor Finishes** |  | 2016-04-21 | 2016-10-25 |  |  |  |  |
| C-F-FF-1884 |  | Screed & Waterproofing works at level 48 | 20d | 2016-04-21 | 2016-05-14 | C-F-P-1413, C-F-FF-1724 SS | 121d | 0d | 74,241.82 |
| C-F-FF-1914 |  | Installation of Raised Flooring at level 48 | 16d | 2016-08-23 | 2016-09-13 | C-F-CF-3317, C-F-CF-3307 | 22d | 0d |  |
| C-F-FF-1894 |  | Implementation of E-poxy Resin at level 48 | 24d | 2016-09-14 | 2016-10-12 | C-F-CF-3317, C-F-CF-3307, C-F-FF-1884, C-F-WF-1914, C-F-FF-1914, SD-CS-L48-1252 | 22d | 0d | 6,973.39 |
| C-F-FF-1904 |  | Installation of Carpet tiles at level 48 | 11d | 2016-10-13 | 2016-10-25 | C-F-CF-3317, C-F-CF-3307, C-F-FF-1884, C-F-FF-1894 | 22d | 0d |  |
|  | 4 | **Wall Finishes** |  | 2016-04-23 | 2016-12-14 |  |  |  |  |
| C-F-WF-1884 |  | Plaster works at level 48 | 18d | 2016-04-23 | 2016-05-12 | C-F-P-1413, C-F-WF-1924 SS | 117d | 0d | 29,625.92 |
| C-F-WF-1914 |  | Installation of Toilet Cubicals at level 48 | 5d | 2016-06-04 | 2016-06-08 | C-F-WF-1884, C-F-WF-1754 SS | 99d | 0d |  |
| C-F-WF-1894 |  | Installation of Wall Cladding at level 48 | 20d | 2016-10-13 | 2016-11-05 | C-F-P-1433, SD-CS-L48-1272, C-F-FF-1894 | 36d | 10d | 542.11 |
| C-F-WF-1904 |  | Wall Paint works at level 48 | 19d | 2016-11-23 | 2016-12-14 | C-F-P-1423, C-F-WF-1884, C-F-CF-3327, C-F-P-1433, C-F-FF-1894 FF+5d, C-MEP-FF-1914 FF, C-F-DW-1884 FF+5d, C-F-DW-1894 FS+5d, C-PF-41, C-OF-31 | 22d | 0d | 9,195.79 |
|  | 5 | **Doors & Windows** |  | 2016-07-14 | 2016-11-16 |  |  |  |  |
| C-F-DW-1904 |  | Installation of Steel Door Sub-frame at level 48 | 8d | 2016-07-14 | 2016-07-23 | C-F-P-1413 FF, SD-CS-L48-1312, C-F-DW-1744 SS | 102d | 0d | 10,411.18 |
| C-F-DW-1884 |  | Installation of Steel Doors & Handrails at level 48 | 20d | 2016-10-13 | 2016-11-05 | C-F-DW-1904, C-F-FF-1914, C-F-FF-1894, C-F-FF-1914 FF | 36d | 29d | 73,543.49 |
| C-F-DW-1894 |  | Installation of Wall & Corner Guard at level 48 | 19d | 2016-10-26 | 2016-11-16 | C-F-P-1433, C-F-FF-1894 SS, C-F-FF-1894 FF, C-F-FF-1904, C-F-P-1313, C-F-P-1463, C-F-P-1373, C-F-P-1403, C-F-P-1523, C-F-P-1343, C-F-P-1253, C-F-P-1193, C-F-P-1073, C-F-P-1223, C-F-P-1163, C-F-P-1133, C-F-DW-1714 | 22d | 0d | 6,907.2 |
|  | 79 | **Finishes - Level 49** |  | 2016-03-24 | 2017-01-09 |  |  |  |  |
|  | 1 | **Partitions** |  | 2016-03-30 | 2016-06-19 |  |  |  |  |
| C-F-P-1473 |  | Block Works & Fireproofing at level 49 | 14d | 2016-03-30 | 2016-04-14 | C-CS-L49-321, C-F-P-1413 SS, SD-CS-L49-1232 | 3d | 0d | 95,393.59 |
| C-F-P-1483 |  | Installation of the Studs for Gypsum Board Partition at level 49 | 20d | 2016-04-05 | 2016-04-27 | C-F-P-1473 SS+5d, C-F-P-1513, SD-CS-L49-1252 | 3d | 0d | 115,627.59 |
| C-F-P-1493 |  | Installation of Gypsum Board Partition & Insulation within the walls at level 49 | 25d | 2016-05-22 | 2016-06-19 | C-MEP-BMS-2455, C-ELV-SMATV-2455, C-ELV-CCTV-2455, C-ELV-FA-2455, C-ELV-MSPA-2455, C-ELV-RMS-2455, C-ELV-CS-2455, C-MEP-E-2946, C-MEP-PD-2455, C-P-SG-B-462 | 128d | 110d | 173,441.39 |
|  | 2 | **Ceiling Finishes** |  | 2016-03-24 | 2016-10-02 |  |  |  |  |
| C-F-CF-3437 |  | Installation of Ceiling Support & Brackets at level 49 | 15d | 2016-03-24 | 2016-04-10 | C-F-CF-3497 FF, C-F-CF-3297 SS | 116d | 6d | 1,781.94 |
| C-F-CF-3497 |  | Installation of Ceiling thermal/accoustic insulation at level 49 | 5d | 2016-04-05 | 2016-04-10 | C-F-P-1473 SS+5d | 116d | 0d | 3,653.73 |
| C-F-CF-3447 |  | Installation of Gypsum Ceiling at level 49 | 25d | 2016-08-14 | 2016-09-14 | C-F-CF-3437, C-MEP-BMS-2475, C-ELV-SMATV-2475, C-ELV-CCTV-2475, C-ELV-FA-2475, C-ELV-MSPA-2475, C-ELV-RMS-2475, C-ELV-CS-2475, C-MEP-PD-2475, C-MEP-PD-2485, C-MEP-FF-1974, C-MEP-FF-1984, C-MEP-AC-3958, C-MEP-AC-3988, C-MEP-AC-3938, C-MEP-E-2956, SD-CS-L49-1312, C-F-CF-3437 SS, C-P-SG-B-462 | 18d | 0d |  |
| C-F-CF-3457 |  | Istallation of Metal Ceiling at level 49 | 25d | 2016-08-14 | 2016-09-14 | C-F-CF-3437, C-MEP-BMS-2475, C-ELV-SMATV-2475, C-ELV-CCTV-2475, C-ELV-FA-2475, C-ELV-MSPA-2475, C-ELV-RMS-2475, C-ELV-CS-2475, C-MEP-PD-2475, C-MEP-PD-2485, C-MEP-FF-1974, C-MEP-FF-1984, C-MEP-AC-3958, C-MEP-AC-3988, C-MEP-AC-3938, C-MEP-E-2956, C-F-CF-3437 SS, C-P-SG-B-462 | 18d | 0d | 5,345.82 |
| C-F-CF-3467 |  | Ceiling Painting works at level 49 | 12d | 2016-09-18 | 2016-10-02 | C-F-CF-3447, C-MEP-FF-1994 FF | 65d | 60d | 1,431.91 |

Notes:
- C-F-FF-1884: Expenses: SW 25715.4; 2 48526.4
- C-F-FF-1894: Expenses: 1 6973.39
- C-F-WF-1884: Expenses: 1 29625.9
- C-F-WF-1894: Expenses: 1 542.11
- C-F-WF-1904: Expenses: 1 9195.79
- C-F-DW-1904: Expenses: 1 10411.2
- C-F-DW-1884: Expenses: 1 42310; 2 31233.5
- C-F-DW-1894: Expenses: 1 6907.2
- C-F-P-1473: Expenses: B 10283.8; F 85109.8
- C-F-P-1483: Expenses: S 115628
- C-F-P-1493: Expenses: G 173441
- C-F-CF-3437: Expenses: 1 1781.94
- C-F-CF-3497: Expenses: W 3653.73
- C-F-CF-3457: Expenses: 1 5345.82
- C-F-CF-3467: Expenses: 1 1431.91

| ID | WBS | Activity | Duration | Start | Finish | Predecessors | Total float | Free float | Cost |
| --- | --- | --- | --- | --- | --- | --- | --- | --- | --- |
|  | 3 | **Floor Finishes** |  | 2016-04-21 | 2016-11-16 |  |  |  |  |
| C-F-FF-1964 |  | Screed & Waterproofing works at level 49 | 20d | 2016-04-21 | 2016-05-14 | C-F-P-1473, C-F-FF-1884 SS | 134d | 1d | 77,585.41 |
| C-F-FF-1994 |  | Installation of Raised Flooring at level 49 | 16d | 2016-09-15 | 2016-10-04 | C-F-CF-3457, C-F-CF-3447 | 18d | 0d |  |
| C-F-FF-1974 |  | Implementation of E-poxy Resin at level 49 | 25d | 2016-10-05 | 2016-11-02 | C-F-CF-3457, C-F-CF-3447, C-F-FF-1964, C-F-WF-1994, C-F-FF-1994, SD-CS-L49-1272, C-F-T-11 | 18d | 0d | 7,287.45 |
| C-F-FF-1984 |  | Installation of Carpet tiles at level 49 | 12d | 2016-11-03 | 2016-11-16 | C-F-CF-3457, C-F-CF-3447, C-F-FF-1964, C-F-FF-1974 | 25d | 0d |  |
|  | 4 | **Wall Finishes** |  | 2016-04-23 | 2017-01-09 |  |  |  |  |
| C-F-WF-1964 |  | Plaster works at level 49 | 18d | 2016-04-23 | 2016-05-12 | C-F-P-1473, C-F-WF-1884 SS | 120d | 0d | 30,960.16 |
| C-F-WF-1994 |  | Installation of Toilet Cubicals at level 49 | 5d | 2016-06-04 | 2016-06-08 | C-F-WF-1964, C-F-WF-1914 SS | 112d | 0d |  |
| C-F-WF-1974 |  | Installation of Wall Cladding at level 49 | 20d | 2016-11-03 | 2016-11-26 | C-F-P-1493, SD-CS-L49-1292, C-F-FF-1974 | 18d | 12d | 542.11 |
| C-F-WF-1984 |  | Wall Paint works at level 49 | 20d | 2016-12-17 | 2017-01-09 | C-F-P-1483, C-F-WF-1964, C-F-CF-3467, C-F-P-1493, C-F-FF-1974 FF+5d, C-MEP-FF-1994 FF, C-F-DW-1964 FF+5d, C-F-DW-1974 FS+5d, C-RF-11 | 30d | 0d | 9,609.94 |
|  | 5 | **Doors & Windows** |  | 2016-07-14 | 2016-12-10 |  |  |  |  |
| C-F-DW-1984 |  | Installation of Steel Door Sub-frame at level 49 | 8d | 2016-07-14 | 2016-07-23 | C-F-P-1473 FF, SD-CS-L49-1332, C-F-DW-1904 SS | 102d | 0d | 10,411.18 |
| C-F-DW-1964 |  | Installation of Steel Doors & Handrails at level 49 | 20d | 2016-11-03 | 2016-11-26 | C-F-DW-1984, C-F-FF-1994, C-F-FF-1974, C-F-FF-1994 FF | 18d | 13d | 73,543.49 |
| C-F-DW-1974 |  | Installation of Wall & Corner Guard at level 49 | 20d | 2016-11-17 | 2016-12-10 | C-F-P-1493, C-F-FF-1974 SS, C-F-FF-1974 FF, C-F-FF-1984, C-F-P-1433, C-F-P-1313, C-F-P-1463, C-F-P-1373, C-F-P-1403, C-F-P-1523, C-F-P-1343, C-F-P-1253, C-F-P-1193, C-F-P-1073, C-F-P-1223, C-F-P-1163, C-F-P-1133, C-F-DW-1714 | 25d | 0d | 6,907.2 |
|  | 78 | **Finishes - Level 50** |  | 2016-03-31 | 2017-01-18 |  |  |  |  |
|  | 1 | **Partitions** |  | 2016-04-06 | 2016-06-26 |  |  |  |  |
| C-F-P-1533 |  | Block Works & Fireproofing at level 50 | 14d | 2016-04-06 | 2016-04-21 | C-CS-L50-331, C-F-P-1473 SS, SD-CS-L50-1252 | 13d | 0d | 98,379.07 |
| C-F-P-1543 |  | Installation of the Studs for Gypsum Board Partition at level 50 | 20d | 2016-04-12 | 2016-05-04 | C-F-P-1533 SS+5d, C-F-P-1393, SD-CS-L50-1272 | 13d | 0d | 104,033.77 |
| C-F-P-1553 |  | Installation of Gypsum Board Partition & Insulation within the walls at level 50 | 25d | 2016-05-29 | 2016-06-26 | C-MEP-BMS-2555, C-ELV-SMATV-2555, C-ELV-CCTV-2555, C-ELV-FA-2555, C-ELV-MSPA-2555, C-ELV-RMS-2555, C-ELV-CS-2555, C-MEP-E-3066, C-MEP-PD-2555, C-P-SG-B-472 | 125d | 112d | 178,869.49 |
|  | 2 | **Ceiling Finishes** |  | 2016-03-31 | 2016-10-11 |  |  |  |  |
| C-F-CF-3577 |  | Installation of Ceiling Support & Brackets at level 50 | 15d | 2016-03-31 | 2016-04-17 | C-F-CF-3637 FF, C-F-CF-3437 SS | 112d | 0d | 1,818.09 |
| C-F-CF-3637 |  | Installation of Ceiling thermal/accoustic insulation at level 50 | 5d | 2016-04-12 | 2016-04-17 | C-F-P-1533 SS+5d | 112d | 0d | 3,768.08 |
| C-F-CF-3587 |  | Installation of Gypsum Ceiling at level 50 | 25d | 2016-08-23 | 2016-09-25 | C-F-CF-3577, C-MEP-BMS-2575, C-ELV-SMATV-2575, C-ELV-CCTV-2575, C-ELV-FA-2575, C-ELV-MSPA-2575, C-ELV-RMS-2575, C-ELV-CS-2575, C-MEP-PD-2575, C-MEP-PD-2585, C-MEP-FF-2054, C-MEP-FF-2064, C-MEP-AC-4118, C-MEP-AC-4148, C-MEP-AC-4098, C-MEP-E-3076, SD-CS-L50-1332, C-F-CF-3577 SS, C-P-SG-B-472 | 13d | 0d |  |
| C-F-CF-3597 |  | Istallation of Metal Ceiling at level 50 | 25d | 2016-08-23 | 2016-09-25 | C-F-CF-3577, C-MEP-BMS-2575, C-ELV-SMATV-2575, C-ELV-CCTV-2575, C-ELV-FA-2575, C-ELV-MSPA-2575, C-ELV-RMS-2575, C-ELV-CS-2575, C-MEP-PD-2575, C-MEP-PD-2585, C-MEP-FF-2054, C-MEP-FF-2064, C-MEP-AC-4118, C-MEP-AC-4148, C-MEP-AC-4098, C-MEP-E-3076, C-F-CF-3577 SS, C-P-SG-B-472 | 13d | 0d | 5,454.28 |
| C-F-CF-3607 |  | Ceiling Painting works at level 50 | 12d | 2016-09-28 | 2016-10-11 | C-F-CF-3587, C-MEP-FF-2074 FF | 57d | 52d | 1,476.72 |

Notes:
- C-F-FF-1964: Expenses: SW 26873.5; 2 50711.9
- C-F-FF-1974: Expenses: 1 7287.45
- C-F-WF-1964: Expenses: 1 30960.2
- C-F-WF-1974: Expenses: 1 542.11
- C-F-WF-1984: Expenses: 1 9609.94
- C-F-DW-1984: Expenses: 1 10411.2
- C-F-DW-1964: Expenses: 1 42310; 2 31233.5
- C-F-DW-1974: Expenses: 1 6907.2
- C-F-P-1533: Expenses: B 10605.7; F 87773.4
- C-F-P-1543: Expenses: S 104034
- C-F-P-1553: Expenses: G 178869
- C-F-CF-3577: Expenses: 1 1818.09
- C-F-CF-3637: Expenses: W 3768.08
- C-F-CF-3597: Expenses: 1 5454.28
- C-F-CF-3607: Expenses: 1 1476.72

| ID | WBS | Activity | Duration | Start | Finish | Predecessors | Total float | Free float | Cost |
| --- | --- | --- | --- | --- | --- | --- | --- | --- | --- |
|  | 3 | **Floor Finishes** |  | 2016-04-23 | 2016-11-26 |  |  |  |  |
| C-F-FF-2044 |  | Screed & Waterproofing works at level 50 | 20d | 2016-04-23 | 2016-05-15 | C-F-P-1533, C-F-FF-1964 SS | 136d | 0d | 80,013.56 |
| C-F-FF-2074 |  | Installation of Raised Flooring at level 50 | 16d | 2016-09-26 | 2016-10-13 | C-F-CF-3597, C-F-CF-3587 | 13d | 0d |  |
| C-F-FF-2054 |  | Implementation of E-poxy Resin at level 50 | 25d | 2016-10-15 | 2016-11-12 | C-F-CF-3597, C-F-CF-3587, C-F-FF-2044, C-F-WF-2074, C-F-FF-2074, SD-CS-L50-1292, C-F-P-3283 FF, C-SS-CW-23 | 13d | 0d | 7,515.52 |
| C-F-FF-2064 |  | Installation of Carpet tiles at level 50 | 12d | 2016-11-13 | 2016-11-26 | C-F-CF-3597, C-F-CF-3587, C-F-FF-2044, C-F-FF-2054, C-F-P-3283 FF | 18d | 0d |  |
|  | 4 | **Wall Finishes** |  | 2016-04-23 | 2017-01-18 |  |  |  |  |
| C-F-WF-2044 |  | Plaster works at level 50 | 18d | 2016-04-23 | 2016-05-12 | C-F-P-1533, C-F-WF-1964 SS | 120d | 0d | 31,929.11 |
| C-F-WF-2074 |  | Installation of Toilet Cubicals at level 50 | 5d | 2016-06-04 | 2016-06-08 | C-F-WF-2044, C-F-WF-1994 SS | 115d | 0d |  |
| C-F-WF-2054 |  | Installation of Wall Cladding at level 50 | 20d | 2016-11-13 | 2016-12-05 | C-F-P-1553, SD-CS-L50-1312, C-F-FF-2054, C-F-P-3293 FF | 13d | 7d | 542.11 |
| C-F-WF-2064 |  | Wall Paint works at level 50 | 20d | 2016-12-27 | 2017-01-18 | C-F-P-1543, C-F-WF-2044, C-F-CF-3607, C-F-P-1553, C-F-FF-2054 FF+5d, C-MEP-FF-2074 FF, C-F-DW-2044 FF+5d, C-F-DW-2054 FS+5d, C-F-P-3293 FF | 22d | 0d | 9,910.7 |
|  | 5 | **Doors & Windows** |  | 2016-07-14 | 2016-12-20 |  |  |  |  |
| C-F-DW-2064 |  | Installation of Steel Door Sub-frame at level 50 | 8d | 2016-07-14 | 2016-07-23 | C-F-P-1533 FF, SD-CS-L50-1352, C-F-DW-1984 SS | 105d | 0d | 10,411.18 |
| C-F-DW-2044 |  | Installation of Steel Doors & Handrails at level 50 | 20d | 2016-11-13 | 2016-12-05 | C-F-DW-2064, C-F-FF-2074, C-F-FF-2054, C-F-FF-2074 FF | 13d | 7d | 73,543.49 |
| C-F-DW-2054 |  | Installation of Wall & Corner Guard at level 50 | 20d | 2016-11-27 | 2016-12-20 | C-F-P-1553, C-F-FF-2054 SS, C-F-FF-2054 FF, C-F-FF-2064, C-F-P-1493, C-F-P-1433, C-F-P-1313, C-F-P-1463, C-F-P-1373, C-F-P-1403, C-F-P-1523, C-F-P-1343, C-F-P-1253, C-F-P-1193, C-F-P-1073, C-F-P-1223, C-F-P-1163, C-F-P-1133, C-F-DW-1714 | 22d | 0d | 6,907.2 |
|  | 51 | **Finishes - Level 51** |  | 2016-03-31 | 2017-01-17 |  |  |  |  |
|  | 1 | **Partitions** |  | 2016-04-06 | 2016-07-23 |  |  |  |  |
| C-F-P-1563 |  | Block Works & Fireproofing at level 51 | 7d | 2016-04-06 | 2016-04-13 | C-CS-L51-341, C-F-P-1533 SS, SD-CS-L51-1692 | 15d | 0d | 85,828.6 |
| C-F-P-1573 |  | Installation of the Studs for Gypsum Board Partition at level 51 | 7d | 2016-04-06 | 2016-04-13 | C-F-P-1563 SS, C-F-P-1363 SS+11d, SD-CS-L51-1752 | 15d | 0d | 119,246.33 |
| C-F-P-1583 |  | Installation of Gypsum Board Partition & Insulation within the walls at level 51 | 25d | 2016-06-21 | 2016-07-23 | C-MEP-BMS-2605, C-ELV-SMATV-2605, C-ELV-CCTV-2605, C-ELV-FA-2605, C-ELV-MSPA-2605, C-ELV-RMS-2605, C-ELV-CS-2605, C-MEP-E-3126, C-MEP-PD-2605, C-P-SG-B-475 | 61d |  | 156,050.66 |
|  | 2 | **Ceiling Finishes** |  | 2016-03-31 | 2016-10-10 |  |  |  |  |
| C-F-CF-3647 |  | Installation of Ceiling Support & Brackets at level 51 | 15d | 2016-03-31 | 2016-04-17 | C-F-CF-3707 FF, C-F-CF-3577 SS | 114d | 17d | 1,818.09 |
| C-F-CF-3707 |  | Installation of Ceiling thermal/accoustic insulation at level 51 | 5d | 2016-04-12 | 2016-04-17 | C-F-P-1563 SS+5d | 114d | 0d | 3,287.38 |
| C-F-CF-3657 |  | Installation of Gypsum Ceiling at level 51 | 25d | 2016-08-22 | 2016-09-22 | C-F-CF-3647, C-MEP-BMS-2625, C-ELV-SMATV-2625, C-ELV-CCTV-2625, C-ELV-FA-2625, C-ELV-MSPA-2625, C-ELV-RMS-2625, C-ELV-CS-2625, C-MEP-PD-2625, C-MEP-PD-2635, C-MEP-FF-2094, C-MEP-FF-2104, C-MEP-AC-4198, C-MEP-AC-4228, C-MEP-AC-4178, C-MEP-E-3136, SD-CS-L51-1932, C-F-CF-3647 SS, C-P-SG-B-475 | 18d | 0d |  |
| C-F-CF-3667 |  | Istallation of Metal Ceiling at level 51 | 25d | 2016-08-22 | 2016-09-22 | C-F-CF-3647, C-MEP-BMS-2625, C-ELV-SMATV-2625, C-ELV-CCTV-2625, C-ELV-FA-2625, C-ELV-MSPA-2625, C-ELV-RMS-2625, C-ELV-CS-2625, C-MEP-PD-2625, C-MEP-PD-2635, C-MEP-FF-2094, C-MEP-FF-2104, C-MEP-AC-4198, C-MEP-AC-4228, C-MEP-AC-4178, C-MEP-E-3136, C-F-CF-3647 SS, C-P-SG-B-475 | 18d | 0d | 5,407.01 |
| C-F-CF-3677 |  | Ceiling Painting works | 12d | 2016-09-27 | 2016-10-10 | C-F-CF-3657, C-MEP-FF-2114 FF | 58d | 53d | 1,288.33 |

Notes:
- C-F-FF-2044: Expenses: SW 27714.6; 2 52299
- C-F-FF-2054: Expenses: 1 7515.52
- C-F-WF-2044: Expenses: 1 31929.1
- C-F-WF-2054: Expenses: 1 542.11
- C-F-WF-2064: Expenses: 1 9910.7
- C-F-DW-2064: Expenses: 1 10411.2
- C-F-DW-2044: Expenses: 1 42310; 2 31233.5
- C-F-DW-2054: Expenses: 1 6907.2
- C-F-P-1563: Expenses: B 9252.67; F 76575.9
- C-F-P-1573: Expenses: S 119246
- C-F-P-1583: Expenses: G 156051
- C-F-CF-3647: Expenses: 1 1818.09
- C-F-CF-3707: Expenses: W 3287.38
- C-F-CF-3667: Expenses: 1 5407.01
- C-F-CF-3677: Expenses: 1 1288.33

| ID | WBS | Activity | Duration | Start | Finish | Predecessors | Total float | Free float | Cost |
| --- | --- | --- | --- | --- | --- | --- | --- | --- | --- |
|  | 3 | **Floor Finishes** |  | 2016-04-23 | 2016-11-24 |  |  |  |  |
| C-F-FF-2084 |  | Screed & Waterproofing works at level 51 | 20d | 2016-04-23 | 2016-05-15 | C-F-P-1563, C-F-FF-2044 SS | 141d | 122d | 69,806.03 |
| C-F-FF-2114 |  | Installation of Raised Flooring at level 51 | 16d | 2016-09-25 | 2016-10-12 | C-F-CF-3667, C-F-CF-3657 | 19d | 0d |  |
| C-F-FF-2094 |  | Implementation of E-poxy Resin at level 51 | 25d | 2016-10-13 | 2016-11-10 | C-F-CF-3667, C-F-CF-3657, C-F-FF-2084, C-F-WF-2114, C-F-FF-2114, SD-CS-L51-1812, C-F-P-3313 FF | 19d | 0d | 6,556.75 |
| C-F-FF-2104 |  | Installation of Carpet tiles at level 51 | 12d | 2016-11-12 | 2016-11-24 | C-F-CF-3667, C-F-CF-3657, C-F-FF-2084, C-F-FF-2094, C-F-P-3313 FF | 19d | 0d |  |
|  | 4 | **Wall Finishes** |  | 2016-05-14 | 2017-01-17 |  |  |  |  |
| C-F-WF-2084 |  | Plaster works at level 51 | 18d | 2016-05-14 | 2016-06-02 | C-F-P-1563, C-F-WF-2044 | 120d | 5d | 27,855.83 |
| C-F-WF-2114 |  | Installation of Toilet Cubicals at level 51 | 5d | 2016-06-09 | 2016-06-14 | C-F-WF-2084, C-F-WF-2074 | 115d | 96d |  |
| C-F-WF-2094 |  | Installation of Wall Cladding at level 51 | 20d | 2016-11-12 | 2016-12-04 | C-F-P-1583, SD-CS-L51-1872, C-F-FF-2094, C-F-P-3323 FF | 40d | 12d | 542.11 |
| C-F-WF-2104 |  | Wall Paint works at level 51 | 20d | 2016-12-26 | 2017-01-17 | C-F-P-1573, C-F-WF-2084, C-F-CF-3677, C-F-P-1583, C-F-FF-2094 FF+5d, C-MEP-FF-2114 FF, C-F-DW-2084 FF+5d, C-F-DW-2094 FS+5d, C-F-P-3323 FF | 33d | 0d | 8,646.36 |
|  | 5 | **Doors & Windows** |  | 2016-07-24 | 2016-12-19 |  |  |  |  |
| C-F-DW-2104 |  | Installation of Steel Door Sub-frame at level 51 | 8d | 2016-07-24 | 2016-08-01 | C-F-P-1563 FF, SD-CS-L51-1992, C-F-DW-2064 | 113d | 83d | 10,411.18 |
| C-F-DW-2084 |  | Installation of Steel Doors & Handrails at level 51 | 20d | 2016-11-12 | 2016-12-04 | C-F-DW-2104, C-F-FF-2114, C-F-FF-2094, C-F-FF-2114 FF | 30d | 24d | 73,543.49 |
| C-F-DW-2094 |  | Installation of Wall & Corner Guard at level 51 | 20d | 2016-11-26 | 2016-12-19 | C-F-P-1583, C-F-FF-2094 SS, C-F-FF-2094 FF, C-F-FF-2104, C-F-P-1553, C-F-P-1493, C-F-P-1433, C-F-P-1313, C-F-P-1463, C-F-P-1373, C-F-P-1403, C-F-P-1523, C-F-P-1343, C-F-P-1253, C-F-P-1193, C-F-P-1073, C-F-P-1223, C-F-P-1163, C-F-P-1133, C-F-DW-1714 | 28d | 0d | 6,907.2 |
|  | 1 | **Finishes - Lower Roof Level** |  | 2016-04-12 | 2017-01-02 |  |  |  |  |
|  | 1 | **Partitions** |  | 2016-04-13 | 2016-06-12 |  |  |  |  |
| C-F-P-3413 |  | Block Works & Fireproofing at LR level | 7d | 2016-04-13 | 2016-04-20 | C-CS-L51-361 | 7d | 0d | 30,450.79 |
| C-F-P-3423 |  | Installation of the Studs for Gypsum Board Partition at LR level | 7d | 2016-04-13 | 2016-04-20 | C-F-P-3413 SS | 7d | 0d | 36,909.73 |
| C-F-P-3433 |  | Installation of Gypsum Board Partition & Insulation within the walls at LR level | 25d | 2016-05-15 | 2016-06-12 | C-MEP-BMS-3015, C-ELV-SMATV-2805, C-ELV-CCTV-2805, C-ELV-FA-2805, C-ELV-MSPA-2805, C-ELV-RMS-3275, C-ELV-CS-2805, C-MEP-E-3366, C-MEP-PD-2805 | 147d | 110d | 55,364.6 |
|  | 2 | **Ceiling Finishes** |  | 2016-04-19 | 2016-09-25 |  |  |  |  |
| C-F-CF-3967 |  | Installation of Ceiling thermal/accoustic insulation at LR level | 5d | 2016-04-19 | 2016-04-24 | C-F-P-3413 SS+5d | 111d | 86d | 1,166.32 |
| C-F-CF-3937 |  | Installation of Metal Ceiling at LR level | 25d | 2016-08-07 | 2016-09-04 | C-MEP-BMS-3035, C-ELV-SMATV-2825, C-ELV-CCTV-2825, C-ELV-FA-2825, C-ELV-MSPA-2825, C-ELV-RMS-3295, C-ELV-CS-2825, C-MEP-PD-2825, C-MEP-PD-2835, C-MEP-FF-2254, C-MEP-FF-2264, C-MEP-AC-4518, C-MEP-AC-4548, C-MEP-AC-4498, C-MEP-E-3376, C-F-CF-3967 | 25d | 0d | 6,562.55 |
| C-F-CF-3957 |  | Ceiling Painting works | 12d | 2016-09-07 | 2016-09-25 | C-F-CF-3937, C-MEP-FF-2274 FF | 89d | 64d | 457.08 |
|  | 3 | **Floor Finishes** |  | 2016-04-21 | 2016-11-09 |  |  |  |  |
| C-F-FF-2244 |  | Screed & Waterproofing works at LR level | 20d | 2016-04-21 | 2016-05-14 | C-F-P-3413 | 135d | 110d | 24,766.21 |
| C-F-FF-2274 |  | Installation of Raised Flooring at LR level | 16d | 2016-09-05 | 2016-09-27 | C-F-CF-3937, C-MEP-BMS-3035, C-ELV-SMATV-2825, C-ELV-CCTV-2825, C-ELV-FA-2825, C-ELV-MSPA-2825, C-ELV-RMS-3295, C-ELV-CS-2825, C-MEP-PD-2825, C-MEP-PD-2835, C-MEP-FF-2254, C-MEP-FF-2264, C-MEP-AC-4518, C-MEP-AC-4548, C-MEP-AC-4498, C-MEP-E-3376, C-F-CF-3967 | 25d | 0d |  |
| C-F-FF-2254 |  | Implementation of E-poxy Resin at LR level | 25d | 2016-09-28 | 2016-10-26 | C-F-CF-3937, C-F-FF-2244, C-F-WF-2274, C-F-FF-2274, C-MEP-BMS-3035, C-ELV-SMATV-2825, C-ELV-CCTV-2825, C-ELV-FA-2825, C-ELV-MSPA-2825, C-ELV-RMS-3295, C-ELV-CS-2825, C-MEP-PD-2825, C-MEP-PD-2835, C-MEP-FF-2254, C-MEP-FF-2264, C-MEP-AC-4518, C-MEP-AC-4548, C-MEP-AC-4498, C-MEP-E-3376, C-F-CF-3967 | 25d | 0d | 2,326.24 |
| C-F-FF-2264 |  | Installation of Carpet tiles at LR level | 12d | 2016-10-27 | 2016-11-09 | C-F-CF-3937, C-F-FF-2244, C-F-FF-2254, C-MEP-BMS-3035, C-ELV-SMATV-2825, C-ELV-CCTV-2825, C-ELV-FA-2825, C-ELV-MSPA-2825, C-ELV-RMS-3295, C-ELV-CS-2825, C-MEP-PD-2825, C-MEP-PD-2835, C-MEP-FF-2254, C-MEP-FF-2264, C-MEP-AC-4518, C-MEP-AC-4548, C-MEP-AC-4498, C-MEP-E-3376, C-F-CF-3967 | 25d | 0d |  |

Notes:
- C-F-FF-2084: Expenses: SW 24179; 2 45627.1
- C-F-FF-2094: Expenses: 1 6556.75
- C-F-WF-2084: Expenses: 1 27855.8
- C-F-WF-2094: Expenses: 1 542.11
- C-F-WF-2104: Expenses: 1 8646.36
- C-F-DW-2104: Expenses: 1 10411.2
- C-F-DW-2084: Expenses: 1 42310; 2 31233.5
- C-F-DW-2094: Expenses: 1 6907.2
- C-F-P-3413: Expenses: B 3282.72; F 27168.1
- C-F-P-3423: Expenses: S 36909.7
- C-F-P-3433: Expenses: G 55364.6
- C-F-CF-3967: Expenses: W 1166.32
- C-F-CF-3937: Expenses: 1 6562.55
- C-F-CF-3957: Expenses: 1 457.08
- C-F-FF-2244: Expenses: SW 8578.36; 2 16187.9
- C-F-FF-2254: Expenses: 1 2326.24

| ID | WBS | Activity | Duration | Start | Finish | Predecessors | Total float | Free float | Cost |
| --- | --- | --- | --- | --- | --- | --- | --- | --- | --- |
|  | 4 | **Wall Finishes** |  | 2016-04-21 | 2017-01-02 |  |  |  |  |
| C-F-WF-2244 |  | Plaster works at LR level | 18d | 2016-04-21 | 2016-05-11 | C-F-P-3413 | 132d | 0d | 9,882.86 |
| C-F-WF-2274 |  | Installation of Toilet Cubicals at LR level | 5d | 2016-05-12 | 2016-05-17 | C-F-WF-2244 | 132d | 107d |  |
| C-F-WF-2254 |  | Installation of Wall Cladding at LR level | 20d | 2016-10-27 | 2016-11-19 | C-F-P-3433, C-F-FF-2254 | 62d | 12d |  |
| C-F-WF-2264 |  | Wall Paint works at LR level | 20d | 2016-12-10 | 2017-01-02 | C-F-P-3423, C-F-WF-2244, C-F-CF-3957, C-F-P-3433, C-F-FF-2254 FF+5d, C-MEP-FF-2274 FF, C-F-DW-2264 FF+5d, C-F-DW-2274 FS+5d | 25d | 0d | 3,067.61 |
|  | 5 | **Doors & Windows** |  | 2016-04-12 | 2016-12-03 |  |  |  |  |
| C-F-DW-2284 |  | Installation of Steel Door Sub-frame at LR level | 8d | 2016-04-12 | 2016-04-20 | C-F-P-3413 FF | 212d | 155d | 10,411.18 |
| C-F-DW-2264 |  | Installation of Steel Doors & Handrails at LR level | 20d | 2016-10-27 | 2016-11-19 | C-F-DW-2284, C-F-FF-2274, C-F-FF-2254, C-F-FF-2274 FF | 57d | 32d | 73,543.49 |
| C-F-DW-2274 |  | Installation of Wall & Corner Guard at LR level | 20d | 2016-11-10 | 2016-12-03 | C-F-P-3433, C-F-FF-2254 SS, C-F-FF-2254 FF, C-F-FF-2264 | 25d | 0d | 6,907.2 |
|  | 3 | **Finishes - Top Roof Level** |  | 2016-04-20 | 2017-01-10 |  |  |  |  |
|  | 1 | **Partitions** |  | 2016-04-21 | 2016-06-20 |  |  |  |  |
| C-F-P-3443 |  | Block works at TR level | 7d | 2016-04-21 | 2016-04-28 | C-CS-L51-371 | 0d |  | 21,046.38 |
| C-F-P-3453 |  | Installation of the Studs for Gypsum Board Partition at TR level | 7d | 2016-04-21 | 2016-04-28 | C-F-P-3443 SS | 0d |  | 25,510.53 |
| C-F-P-3463 |  | Installation of Gypsum Board Partition & Insulation within the walls at TR level | 25d | 2016-05-23 | 2016-06-20 | C-MEP-BMS-3085, C-ELV-SMATV-2855, C-ELV-CCTV-2855, C-ELV-FA-2855, C-ELV-MSPA-2855, C-ELV-RMS-3325, C-ELV-CS-2855, C-MEP-E-3426, C-MEP-PD-2855 | 140d | 110d | 38,265.8 |
|  | 2 | **Ceiling Finishes** |  | 2016-04-27 | 2016-10-03 |  |  |  |  |
| C-F-CF-4017 |  | Installation of Ceiling thermal/accoustic insulation at TR level | 5d | 2016-04-27 | 2016-05-02 | C-F-P-3443 SS+5d | 104d | 86d | 806.11 |
| C-F-CF-3987 |  | Installation of Gypsum Ceiling at TR level | 25d | 2016-08-15 | 2016-09-15 | C-MEP-BMS-3105, C-ELV-SMATV-2875, C-ELV-CCTV-2875, C-ELV-FA-2875, C-ELV-MSPA-2875, C-ELV-RMS-3345, C-ELV-CS-2875, C-MEP-PD-2875, C-MEP-PD-2885, C-MEP-FF-2294, C-MEP-FF-2304, C-MEP-AC-4598, C-MEP-AC-4628, C-MEP-AC-4578, C-MEP-E-3436, C-F-CF-4017 | 18d | 0d |  |
| C-F-CF-4007 |  | Ceiling Painting works | 12d | 2016-09-19 | 2016-10-03 | C-F-CF-3987, C-MEP-FF-2314 FF | 82d | 64d | 315.92 |
|  | 3 | **Floor Finishes** |  | 2016-04-30 | 2016-11-17 |  |  |  |  |
| C-F-FF-2284 |  | Screed & Waterproofing works at TR level | 20d | 2016-04-30 | 2016-05-22 | C-F-P-3443 | 128d | 110d | 17,117.41 |
| C-F-FF-2314 |  | Installation of Raised Flooring at TR level | 16d | 2016-09-17 | 2016-10-05 | C-F-CF-3987, C-MEP-BMS-3105, C-ELV-SMATV-2875, C-ELV-CCTV-2875, C-ELV-FA-2875, C-ELV-MSPA-2875, C-ELV-RMS-3345, C-ELV-CS-2875, C-MEP-PD-2875, C-MEP-PD-2885, C-MEP-FF-2294, C-MEP-FF-2304, C-MEP-AC-4598, C-MEP-AC-4628, C-MEP-AC-4578, C-MEP-E-3436, C-F-CF-4017 | 18d | 0d |  |
| C-F-FF-2294 |  | Implementation of E-poxy Resin at TR level | 25d | 2016-10-06 | 2016-11-03 | C-F-CF-3987, C-F-FF-2284, C-F-WF-2314, C-F-FF-2314, C-MEP-BMS-3105, C-ELV-SMATV-2875, C-ELV-CCTV-2875, C-ELV-FA-2875, C-ELV-MSPA-2875, C-ELV-RMS-3345, C-ELV-CS-2875, C-MEP-PD-2875, C-MEP-PD-2885, C-MEP-FF-2294, C-MEP-FF-2304, C-MEP-AC-4598, C-MEP-AC-4628, C-MEP-AC-4578, C-MEP-E-3436, C-F-CF-4017 | 18d | 0d | 1,607.81 |
| C-F-FF-2304 |  | Installation of Carpet tiles at TR level | 12d | 2016-11-05 | 2016-11-17 | C-F-CF-3987, C-F-FF-2284, C-F-FF-2294, C-MEP-BMS-3105, C-ELV-SMATV-2875, C-ELV-CCTV-2875, C-ELV-FA-2875, C-ELV-MSPA-2875, C-ELV-RMS-3345, C-ELV-CS-2875, C-MEP-PD-2875, C-MEP-PD-2885, C-MEP-FF-2294, C-MEP-FF-2304, C-MEP-AC-4598, C-MEP-AC-4628, C-MEP-AC-4578, C-MEP-E-3436, C-F-CF-4017 | 18d | 0d |  |
|  | 4 | **Wall Finishes** |  | 2016-04-30 | 2017-01-10 |  |  |  |  |
| C-F-WF-2284 |  | Plaster works at TR level | 18d | 2016-04-30 | 2016-05-19 | C-F-P-3443 | 125d | 0d | 6,830.64 |
| C-F-WF-2314 |  | Installation of Toilet Cubicals at TR level | 5d | 2016-05-21 | 2016-05-25 | C-F-WF-2284 | 125d | 107d |  |
| C-F-WF-2294 |  | Installation of Wall Cladding at TR level | 20d | 2016-11-05 | 2016-11-27 | C-F-P-3463, C-F-FF-2294 | 55d | 12d |  |
| C-F-WF-2304 |  | Wall Paint works at TR level | 20d | 2016-12-19 | 2017-01-10 | C-F-P-3453, C-F-WF-2284, C-F-CF-4007, C-F-P-3463, C-F-FF-2294 FF+5d, C-MEP-FF-2314 FF, C-F-DW-2304 FF+5d, C-F-DW-2314 FS+5d | 18d | 0d | 2,120.21 |

Notes:
- C-F-WF-2244: Expenses: 1 9882.86
- C-F-WF-2264: Expenses: 1 3067.61
- C-F-DW-2284: Expenses: 1 10411.2
- C-F-DW-2264: Expenses: 1 42310; 2 31233.5
- C-F-DW-2274: Expenses: 1 6907.2
- C-F-P-3443: Expenses: B 2268.89; F 18777.5
- C-F-P-3453: Expenses: S 25510.5
- C-F-P-3463: Expenses: G 38265.8
- C-F-CF-4017: Expenses: W 806.11
- C-F-CF-4007: Expenses: 1 315.92
- C-F-FF-2284: Expenses: SW 5929.02; 2 11188.4
- C-F-FF-2294: Expenses: 1 1607.81
- C-F-WF-2284: Expenses: 1 6830.64
- C-F-WF-2304: Expenses: 1 2120.21

| ID | WBS | Activity | Duration | Start | Finish | Predecessors | Total float | Free float | Cost |
| --- | --- | --- | --- | --- | --- | --- | --- | --- | --- |
|  | 5 | **Doors & Windows** |  | 2016-04-20 | 2016-12-11 |  |  |  |  |
| C-F-DW-2324 |  | Installation of Steel Door Sub-frame at TR level | 8d | 2016-04-20 | 2016-04-28 | C-F-P-3443 FF | 205d | 155d | 10,411.18 |
| C-F-DW-2304 |  | Installation of Steel Doors & Handrails at TR level | 20d | 2016-11-05 | 2016-11-27 | C-F-DW-2324, C-F-FF-2314, C-F-FF-2294, C-F-FF-2314 FF | 50d | 32d | 73,543.49 |
| C-F-DW-2314 |  | Installation of Wall & Corner Guard at TR level | 20d | 2016-11-19 | 2016-12-11 | C-F-P-3463, C-F-FF-2294 SS, C-F-FF-2294 FF, C-F-FF-2304 | 18d | 0d | 6,907.2 |
|  | 5 | **Stairs Finishes** |  | 2016-06-26 | 2017-03-26 |  |  |  |  |
|  | 2 | **Basement** |  | 2016-06-26 | 2016-12-13 |  |  |  |  |
|  | 2 | **Stair # 2** |  | 2016-06-26 | 2016-09-06 |  |  |  |  |
| C-A-SF-S2-51 |  | Closing Shafts & installaton of Finishes from B3 to B2 at Area A | 20d | 2016-06-26 | 2016-07-21 | A5070, A5090, A5080, A5110 SS | 62d | 0d | 22,556.62 |
| C-A-SF-S2-61 |  | Closing shafts & installation of Finishes from B2 to B1 at Area A | 20d | 2016-07-23 | 2016-08-14 | C-A-SF-S2-51, A5140, A5150, A5160, A10470 SS, A5180 SS | 62d | 0d | 22,556.62 |
| C-A-SF-S2-71 |  | Closing shafts & installation of Finishes from B1 to GF at Area A | 20d | 2016-08-15 | 2016-09-06 | C-A-SF-S2-61, A5210, A5230, A5220, A10490, A5250 SS | 62d | 0d | 23,007.49 |
|  | 1 | **Stair # 3** |  | 2016-06-26 | 2016-09-06 |  |  |  |  |
| C-A-SF-S3-21 |  | Closing shafts & installation of Finishes from B3 to B2 at Area A | 20d | 2016-06-26 | 2016-07-21 | C-A-SF-S2-51 SS | 82d | 0d | 22,556.62 |
| C-A-SF-S3-31 |  | Closing shafts & installation of Finishes from B2 to B1 at Area A | 20d | 2016-07-23 | 2016-08-14 | C-A-SF-S3-21, C-A-SF-S2-61 SS | 82d | 0d | 22,556.62 |
| C-A-SF-S3-41 |  | Closing shafts & installation of Finishes from B1 to GF at Area A | 20d | 2016-08-15 | 2016-09-06 | C-A-SF-S3-31, C-A-SF-S2-71 SS | 82d | 0d | 23,007.49 |
|  | 3 | **Stair # 4** |  | 2016-06-26 | 2016-09-06 |  |  |  |  |
| C-A-SF-S4-81 |  | Closing shafts & installation of Finishes from B3 to B2 at Area A | 20d | 2016-06-26 | 2016-07-21 | C-A-SF-S3-21 SS | 92d | 0d | 22,556.62 |
| C-A-SF-S4-91 |  | Closing shafts & installation of Finishes from B2 to B1 at Area A | 20d | 2016-07-23 | 2016-08-14 | C-A-SF-S4-81, C-A-SF-S3-31 SS | 92d | 0d | 22,556.62 |
| C-A-SF-S4-101 |  | Closing shafts & installation of Finishes from B1 to GF at Area A | 20d | 2016-08-15 | 2016-09-06 | C-A-SF-S4-91, C-A-SF-S3-41 SS | 112d | 20d | 23,007.49 |
|  | 4 | **Stair # 5** |  | 2016-06-26 | 2016-10-04 |  |  |  |  |
| C-A-SF-S5-111 |  | Closing shafts & installation of Finishes from B3 to B2 at Area A | 20d | 2016-06-26 | 2016-07-21 | C-A-SF-S4-81 SS | 112d | 20d | 22,556.62 |
| C-A-SF-S5-121 |  | Closing shafts & installation of Finishes from B2 to B1 at Area A | 20d | 2016-08-15 | 2016-09-06 | C-A-SF-S5-111, C-A-SF-S4-91 | 92d | 0d | 22,556.62 |
| C-A-SF-S5-131 |  | Closing shafts & installation of Finishes from B1 to GF at Area A | 20d | 2016-09-07 | 2016-10-04 | C-A-SF-S5-121, C-A-SF-S4-101 SS | 92d | 0d | 23,007.49 |
|  | 5 | **Stair # 6** |  | 2016-09-07 | 2016-11-20 |  |  |  |  |
| C-A-SF-S6-141 |  | Closing shafts & installation of Finishes from B3 to B2 at Area B | 20d | 2016-09-07 | 2016-10-04 | C-A-SF-S5-131 SS | 92d | 0d | 22,556.62 |
| C-A-SF-S6-151 |  | Closing shafts & installation of Finishes from B2 to B1 at Area B | 20d | 2016-10-05 | 2016-10-27 | C-A-SF-S6-141 | 92d | 0d | 22,556.62 |
| C-A-SF-S6-161 |  | Closing shafts & installation of Finishes from B1 to GF at Area B | 20d | 2016-10-29 | 2016-11-20 | C-A-SF-S6-151 | 112d | 20d | 23,007.49 |

Notes:
- C-F-DW-2324: Expenses: 1 10411.2
- C-F-DW-2304: Expenses: 1 42310; 2 31233.5
- C-F-DW-2314: Expenses: 1 6907.2
- C-A-SF-S2-51: Expenses: H 6679.72; F 15876.9
- C-A-SF-S2-61: Expenses: H 6679.72; F 15876.9
- C-A-SF-S2-71: Expenses: G 450.87; H 6679.72; F 15876.9
- C-A-SF-S3-21: Expenses: H 6679.72; F 15876.9
- C-A-SF-S3-31: Expenses: H 6679.72; F 15876.9
- C-A-SF-S3-41: Expenses: G 450.87; H 6679.72; F 15876.9
- C-A-SF-S4-81: Expenses: H 6679.72; F 15876.9
- C-A-SF-S4-91: Expenses: H 6679.72; F 15876.9
- C-A-SF-S4-101: Expenses: G 450.87; H 6679.72; F 15876.9
- C-A-SF-S5-111: Expenses: H 6679.72; F 15876.9
- C-A-SF-S5-121: Expenses: H 6679.72; F 15876.9
- C-A-SF-S5-131: Expenses: G 450.87; H 6679.72; F 15876.9
- C-A-SF-S6-141: Expenses: H 6679.72; F 15876.9
- C-A-SF-S6-151: Expenses: H 6679.72; F 15876.9
- C-A-SF-S6-161: Expenses: G 450.87; H 6679.72; F 15876.9

| ID | WBS | Activity | Duration | Start | Finish | Predecessors | Total float | Free float | Cost |
| --- | --- | --- | --- | --- | --- | --- | --- | --- | --- |
|  | 6 | **Stair # 7** |  | 2016-09-07 | 2016-12-13 |  |  |  |  |
| C-A-SF-S7-171 |  | Closing shafts & installation of Finishes from B3 to B2 at Area B | 20d | 2016-09-07 | 2016-10-04 | C-A-SF-S6-141 SS | 112d | 0d | 22,556.62 |
| C-A-SF-S7-181 |  | Closing shafts & installation of Finishes from B2 to B1 at Area B | 20d | 2016-10-29 | 2016-11-20 | C-A-SF-S7-171, C-A-SF-S6-151 | 92d | 0d | 22,556.62 |
| C-A-SF-S7-191 |  | Closing shafts & installation of Finishes from B1 to GF at Area B | 20d | 2016-11-21 | 2016-12-13 | C-A-SF-S7-181, C-A-SF-S6-161 SS | 92d | 0d | 23,007.49 |
|  | 7 | **Stair # 8** |  | 2016-09-07 | 2016-12-13 |  |  |  |  |
| C-A-SF-S8-201 |  | Closing shafts & installation of Finishes from B3 to B2 at Area B | 20d | 2016-09-07 | 2016-10-04 | C-A-SF-S7-171 SS | 112d | 20d | 22,556.62 |
| C-A-SF-S8-211 |  | Closing shafts & installation of Finishes from B2 to B1 at Area B | 20d | 2016-10-29 | 2016-11-20 | C-A-SF-S8-201, C-A-SF-S7-181 SS | 92d | 0d | 22,556.62 |
| C-A-SF-S8-221 |  | Closing shafts & installation of Finishes from B1 to GF at Area B | 20d | 2016-11-21 | 2016-12-13 | C-A-SF-S8-211, C-A-SF-S7-191 SS | 92d | 86d | 23,007.49 |
|  | 1 | **Ground to Roof** |  | 2016-09-15 | 2017-03-26 |  |  |  |  |
|  | 1 | **Stair 1** |  | 2016-09-15 | 2017-03-26 |  |  |  |  |
| C-A-SF-S1-42 |  | Stairs finishes & ballustrades "ST-01" from GF level to MZ level | 20d | 2016-09-15 | 2016-10-09 | A1360, A1380, A1370, A10400, A1400 | 56d | 0d | 30,009.05 |
| C-A-SF-S1-52 |  | Stairs finishes & ballustrades "ST-01" from MZ level to L1 | 20d | 2016-09-15 | 2016-10-09 | C-A-SF-S1-42 SS, A1780, A1800, A1790, A1820 | 76d | 0d | 30,009.05 |
| C-A-SF-S1-62 |  | Stairs finishes & ballustrades "ST-01" from L1 to L2 | 20d | 2016-09-15 | 2016-10-09 | C-A-SF-S1-52 SS, A1430, A1450, A1440, A1470, A10410 | 96d | 0d | 30,009.05 |
| C-A-SF-S1-72 |  | Stairs finishes & ballustrades "ST-01" from L2 to L3 | 20d | 2016-09-15 | 2016-10-09 | C-A-SF-S1-62 SS, A1640, A1660, A1650, A1680 | 116d | 0d | 30,009.05 |
| C-A-SF-S1-02 |  | Stairs finishes & ballustrades "ST-01" from L5 to L6 | 20d | 2016-10-31 | 2016-11-22 | C-A-SF-S1-92 SS, A1710, A1730, A1720, A1750 | 107d | 0d | 30,009.05 |
| C-A-SF-S1-12 |  | Stairs finishes & ballustrades "ST-01" from L6 to L7 | 20d | 2016-10-31 | 2016-11-22 | C-A-SF-S1-02 SS, A1920, A1940, A1930, A1960 | 107d | 0d | 30,009.05 |
| C-A-SF-S1-22 |  | Stairs finishes & ballustrades "ST-01" from L7 to L8 | 20d | 2016-10-31 | 2016-11-22 | C-A-SF-S1-12 SS, A2340, A2360, A2350, A2380 | 107d | 0d | 30,009.05 |
| C-A-SF-S1-532 |  | Stairs finishes & ballustrades "ST-01" from L8 to L9 | 20d | 2016-10-31 | 2016-11-22 | C-A-SF-S1-22 SS, A1990, A2010, A2000, A2030 | 107d | 0d | 30,009.05 |
| C-A-SF-S1-542 |  | Stairs finishes & ballustrades "ST-01" from L9 to L10 | 20d | 2016-10-31 | 2016-11-22 | C-A-SF-S1-532 SS, A2060, A2080, A2070, A2100 | 107d | 0d | 30,009.05 |
| C-A-SF-S1-552 |  | Stairs finishes & ballustrades "ST-01" from L10 to L11 | 20d | 2016-10-31 | 2016-11-22 | C-A-SF-S1-542 SS, A2200, A2220, A2210, A2240 | 107d | 0d | 30,009.05 |
| C-A-SF-S1-562 |  | Stairs finishes & ballustrades "ST-01" from L11 to L12 | 20d | 2016-10-31 | 2016-11-22 | C-A-SF-S1-552 SS, A1850, A1870, A1860, A1890 | 107d | 0d | 30,009.05 |
| C-A-SF-S1-572 |  | Stairs finishes & ballustrades "ST-01" from L12 to L13 | 20d | 2016-10-31 | 2016-11-22 | C-A-SF-S1-562 SS, A2130, A2150, A2140, A2170 | 107d | 0d | 30,009.05 |
| C-A-SF-S1-582 |  | Stairs finishes & ballustrades "ST-01" from L13 to L14 | 20d | 2016-10-31 | 2016-11-22 | C-A-SF-S1-572 SS, A2270, A2290, A2280, A2310 | 107d | 0d | 30,009.05 |
| C-A-SF-S1-592 |  | Stairs finishes & ballustrades "ST-01" from L14 to L15 | 20d | 2016-10-31 | 2016-11-22 | C-A-SF-S1-582 SS, A2480, A2500, A2490, A2520 | 107d | 0d | 30,009.05 |
| C-A-SF-S1-602 |  | Stairs finishes & ballustrades "ST-01" from L15 to L16 | 20d | 2016-10-31 | 2016-11-22 | C-A-SF-S1-592 SS, A2900, A2920, A2910, A2940 | 107d | 0d | 30,009.05 |
| C-A-SF-S1-612 |  | Stairs finishes & ballustrades "ST-01" from L16 to L17 | 20d | 2016-10-31 | 2016-11-22 | C-A-SF-S1-602 SS, A2620, A2640, A2630, A2660 | 107d | 0d | 30,009.05 |
| C-A-SF-S1-622 |  | Stairs finishes & ballustrades "ST-01" from L17 to L18 | 20d | 2016-10-31 | 2016-11-22 | C-A-SF-S1-612 SS, A2550, A2570, A2560, A2590 | 107d | 0d | 30,009.05 |
| C-A-SF-S1-632 |  | Stairs finishes & ballustrades "ST-01" from L18 to L19 | 20d | 2016-10-31 | 2016-11-22 | C-A-SF-S1-622 SS, A2760, A2780, A2770, A2800 | 107d | 0d | 30,009.05 |
| C-A-SF-S1-642 |  | Stairs finishes & ballustrades "ST-01" from L19 to L20 | 20d | 2016-10-31 | 2016-11-22 | C-A-SF-S1-632 SS, A2410, A2430, A2420, A2450 | 107d | 0d | 30,009.05 |
| C-A-SF-S1-652 |  | Stairs finishes & ballustrades "ST-01" from L20 to L21 | 20d | 2016-10-31 | 2016-11-22 | C-A-SF-S1-642 SS, A2690, A2710, A2700, A2730 | 107d | 0d | 30,009.05 |
| C-A-SF-S1-662 |  | Stairs finishes & ballustrades "ST-01" from L21 to L22 | 20d | 2016-10-31 | 2016-11-22 | C-A-SF-S1-652 SS, A2830, A2850, A2840, A2870 | 107d | 0d | 30,009.05 |
| C-A-SF-S1-82 |  | Stairs finishes & ballustrades "ST-01" from L3 to L4 | 20d | 2016-10-31 | 2016-11-22 | C-A-SF-S1-72 SS, A1290, A1310, A1300, A1330, A10420 | 107d | 0d | 30,009.05 |
| C-A-SF-S1-92 |  | Stairs finishes & ballustrades "ST-01" from L4 to L5 | 20d | 2016-10-31 | 2016-11-22 | C-A-SF-S1-82 SS, A1570, A1590, A1580, A1610 | 107d | 0d | 30,009.05 |
| C-A-SF-S1-672 |  | Stairs finishes & ballustrades "ST-01" from L22 to L23 | 20d | 2016-11-12 | 2016-12-04 | C-A-SF-S1-662 SS, A3040, A3060, A3050, A3080 | 97d | 0d | 30,009.05 |
| C-A-SF-S1-682 |  | Stairs finishes & ballustrades "ST-01" from L23 to L24 | 20d | 2016-11-12 | 2016-12-04 | C-A-SF-S1-672 SS, A3460, A3480, A3470, A3500 | 97d | 0d | 30,009.05 |
| C-A-SF-S1-692 |  | Stairs finishes & ballustrades "ST-01" from L24 to L25 | 20d | 2016-11-12 | 2016-12-04 | C-A-SF-S1-682 SS, A3110, A3130, A3120, A3150 | 97d | 0d | 30,009.05 |
| C-A-SF-S1-702 |  | Stairs finishes & ballustrades "ST-01" from L25 to L26 | 20d | 2016-11-12 | 2016-12-04 | C-A-SF-S1-692 SS, A3180, A3200, A3190, A3220 | 97d | 0d | 30,009.05 |
| C-A-SF-S1-712 |  | Stairs finishes & ballustrades "ST-01" from L26 to L27 | 20d | 2016-11-12 | 2016-12-04 | C-A-SF-S1-702 SS, A3320, A3340, A3330, A3360 | 97d | 0d | 30,009.05 |
| C-A-SF-S1-722 |  | Stairs finishes & ballustrades "ST-01" from L27 to L28 | 20d | 2016-11-12 | 2016-12-04 | C-A-SF-S1-712 SS, A2970, A2990, A2980, A3010 | 97d | 0d | 30,009.05 |
| C-A-SF-S1-732 |  | Stairs finishes & ballustrades "ST-01" from L28 to L29 | 20d | 2016-11-12 | 2016-12-04 | C-A-SF-S1-722 SS, A3250, A3270, A3260, A3290 | 97d | 0d | 30,009.05 |
| C-A-SF-S1-742 |  | Stairs finishes & ballustrades "ST-01" from L29 to L30 | 20d | 2016-11-12 | 2016-12-04 | C-A-SF-S1-732 SS, A3390, A3410, A3400, A3430 | 97d | 0d | 30,009.05 |
| C-A-SF-S1-752 |  | Stairs finishes & ballustrades "ST-01" from L30 to L31 | 20d | 2016-11-30 | 2016-12-24 | C-A-SF-S1-742 SS, A3670, A3690, A3680, A3710 | 81d | 0d | 30,009.05 |
| C-A-SF-S1-762 |  | Stairs finishes & ballustrades "ST-01" from L31 to L32 | 20d | 2016-11-30 | 2016-12-24 | C-A-SF-S1-752 SS, A3530, A3550, A3540, A3570 | 81d | 0d | 30,009.05 |
| C-A-SF-S1-772 |  | Stairs finishes & ballustrades "ST-01" from L32 to L33 | 20d | 2016-11-30 | 2016-12-24 | C-A-SF-S1-762 SS, A3600, A3620, A3610, A3640 | 81d | 0d | 30,009.05 |
| C-A-SF-S1-782 |  | Stairs finishes & ballustrades "ST-01" from L33 to L34 | 20d | 2016-12-17 | 2017-01-09 | C-A-SF-S1-772 SS, A3740, A3760, A3750, A3780, A10430 | 67d | 0d | 30,009.05 |
| C-A-SF-S1-792 |  | Stairs finishes & ballustrades "ST-01" from L34 to L35 | 20d | 2017-02-02 | 2017-02-26 | C-A-SF-S1-782 SS, A3880, A3900, A3890, A3920, A10440 | 27d | 0d | 30,009.05 |
| C-A-SF-S1-802 |  | Stairs finishes & ballustrades "ST-01" from L35 to L36 | 20d | 2017-02-02 | 2017-02-26 | C-A-SF-S1-792 SS, A4300, A4320, A4310, A4340 | 27d | 0d | 30,009.05 |
| C-A-SF-S1-812 |  | Stairs finishes & ballustrades "ST-01" from L36 to L37 | 20d | 2017-02-02 | 2017-02-26 | C-A-SF-S1-802 SS, A3950, A3970, A3960, A3990 | 27d | 0d | 30,009.05 |
| C-A-SF-S1-822 |  | Stairs finishes & ballustrades "ST-01" from L37 to L38 | 20d | 2017-02-02 | 2017-02-26 | C-A-SF-S1-812 SS, A4020, A4040, A4030, A4060 | 27d | 0d | 30,009.05 |
| C-A-SF-S1-832 |  | Stairs finishes & ballustrades "ST-01" from L38 to L39 | 20d | 2017-02-02 | 2017-02-26 | C-A-SF-S1-822 SS, A4160, A4180, A4170, A4200 | 27d | 0d | 30,009.05 |
| C-A-SF-S1-842 |  | Stairs finishes & ballustrades "ST-01" from L39 to L40 | 20d | 2017-02-02 | 2017-02-26 | C-A-SF-S1-832 SS, A3810, A3830, A3820, A3850 | 27d | 0d | 30,009.05 |
| C-A-SF-S1-852 |  | Stairs finishes & ballustrades "ST-01" from L40 to L41 | 20d | 2017-02-02 | 2017-02-26 | C-A-SF-S1-842 SS, A4090, A4110, A4100, A4130 | 27d | 0d | 30,009.05 |
| C-A-SF-S1-862 |  | Stairs finishes & ballustrades "ST-01" from L41 to L42 | 20d | 2017-02-02 | 2017-02-26 | C-A-SF-S1-852 SS, A4230, A4250, A4240, A4270 | 27d | 0d | 30,009.05 |
| C-A-SF-S1-872 |  | Stairs finishes & ballustrades "ST-01" from L42 to L43 | 20d | 2017-02-02 | 2017-02-26 | C-A-SF-S1-862 SS, A4460, A4440, A4450, A4480 | 27d | 0d | 30,009.05 |
| C-A-SF-S1-882 |  | Stairs finishes & ballustrades "ST-01" from L43 to L44 | 20d | 2017-02-02 | 2017-02-26 | C-A-SF-S1-872 SS, A4860, A4880, A4870, A4900 | 27d | 0d | 30,009.05 |
| C-A-SF-S1-892 |  | Stairs finishes & ballustrades "ST-01" from L44 to L45 | 20d | 2017-02-02 | 2017-02-26 | C-A-SF-S1-882 SS, A4580, A4600, A4590, A4620 | 27d | 0d | 30,009.05 |
| C-A-SF-S1-902 |  | Stairs finishes & ballustrades "ST-01" from L45 to L46 | 20d | 2017-02-02 | 2017-02-26 | C-A-SF-S1-892 SS, A4510, A4530, A4520, A4550 | 27d | 0d | 30,009.05 |
| C-A-SF-S1-912 |  | Stairs finishes & ballustrades "ST-01" from L46 to L47 | 20d | 2017-02-02 | 2017-02-26 | C-A-SF-S1-902 SS, A4720, A4740, A4730, A4760 SS | 30d | 0d | 30,009.05 |
| C-A-SF-S1-922 |  | Stairs finishes & ballustrades "ST-01" from L47 to L48 | 20d | 2017-02-02 | 2017-02-26 | C-A-SF-S1-912 SS, A4370, A4390, A4380, A4410 | 30d | 0d | 30,009.05 |
| C-A-SF-S1-932 |  | Stairs finishes & ballustrades "ST-01" from L48 to L49 | 20d | 2017-02-02 | 2017-02-26 | C-A-SF-S1-922 SS, A4650, A4670, A4690, A4660 | 30d | 0d | 30,009.05 |
| C-A-SF-S1-942 |  | Stairs finishes & ballustrades "ST-01" from L49 to L40 | 20d | 2017-02-02 | 2017-02-26 | C-A-SF-S1-932 SS, A4790, A4810, A4800, A4830 | 30d | 3d | 30,009.05 |
| C-A-SF-S1-952 |  | Stairs finishes & ballustrades "ST-01" from L50 to L51 | 20d | 2017-02-27 | 2017-03-21 | C-A-SF-S1-942 SS, A4930, A4950, A4940, A4970, A10450 | 10d | 0d | 30,009.05 |
| C-A-SF-S1-962 |  | Stairs finishes & ballustrades "ST-01" from L51 to Roof | 20d | 2017-03-04 | 2017-03-26 | C-A-SF-S1-952 SS, A5000, A5020, A5010, A5040, A10460 SS | 6d | 0d | 30,009.05 |

Notes:
- C-A-SF-S7-171: Expenses: H 6679.72; F 15876.9
- C-A-SF-S7-181: Expenses: H 6679.72; F 15876.9
- C-A-SF-S7-191: Expenses: G 450.87; H 6679.72; F 15876.9
- C-A-SF-S8-201: Expenses: H 6679.72; F 15876.9
- C-A-SF-S8-211: Expenses: H 6679.72; F 15876.9
- C-A-SF-S8-221: Expenses: G 450.87; H 6679.72; F 15876.9
- C-A-SF-S1-42: Expenses: 1 8719.45; 2 21289.6
- C-A-SF-S1-52: Expenses: 1 8719.45; 2 21289.6
- C-A-SF-S1-62: Expenses: 1 8719.45; 2 21289.6
- C-A-SF-S1-72: Expenses: 1 8719.45; 2 21289.6
- C-A-SF-S1-02: Expenses: 1 8719.45; 2 21289.6
- C-A-SF-S1-12: Expenses: 1 8719.45; 2 21289.6
- C-A-SF-S1-22: Expenses: 1 8719.45; 2 21289.6
- C-A-SF-S1-532: Expenses: 1 8719.45; 2 21289.6
- C-A-SF-S1-542: Expenses: 1 8719.45; 2 21289.6
- C-A-SF-S1-552: Expenses: 1 8719.45; 2 21289.6
- C-A-SF-S1-562: Expenses: 1 8719.45; 2 21289.6
- C-A-SF-S1-572: Expenses: 1 8719.45; 2 21289.6
- C-A-SF-S1-582: Expenses: 1 8719.45; 2 21289.6
- C-A-SF-S1-592: Expenses: 1 8719.45; 2 21289.6
- C-A-SF-S1-602: Expenses: 1 8719.45; 2 21289.6
- C-A-SF-S1-612: Expenses: 1 8719.45; 2 21289.6
- C-A-SF-S1-622: Expenses: 1 8719.45; 2 21289.6
- C-A-SF-S1-632: Expenses: 1 8719.45; 2 21289.6
- C-A-SF-S1-642: Expenses: 1 8719.45; 2 21289.6
- C-A-SF-S1-652: Expenses: 1 8719.45; 2 21289.6
- C-A-SF-S1-662: Expenses: 1 8719.45; 2 21289.6
- C-A-SF-S1-82: Expenses: 1 8719.45; 2 21289.6
- C-A-SF-S1-92: Expenses: 1 8719.45; 2 21289.6
- C-A-SF-S1-672: Expenses: 1 8719.45; 2 21289.6
- C-A-SF-S1-682: Expenses: 1 8719.45; 2 21289.6
- C-A-SF-S1-692: Expenses: 1 8719.45; 2 21289.6
- C-A-SF-S1-702: Expenses: 1 8719.45; 2 21289.6
- C-A-SF-S1-712: Expenses: 1 8719.45; 2 21289.6
- C-A-SF-S1-722: Expenses: 1 8719.45; 2 21289.6
- C-A-SF-S1-732: Expenses: 1 8719.45; 2 21289.6
- C-A-SF-S1-742: Expenses: 1 8719.45; 2 21289.6
- C-A-SF-S1-752: Expenses: 1 8719.45; 2 21289.6
- C-A-SF-S1-762: Expenses: 1 8719.45; 2 21289.6
- C-A-SF-S1-772: Expenses: 1 8719.45; 2 21289.6
- C-A-SF-S1-782: Expenses: 1 8719.45; 2 21289.6
- C-A-SF-S1-792: Expenses: 1 8719.45; 2 21289.6
- C-A-SF-S1-802: Expenses: 1 8719.45; 2 21289.6
- C-A-SF-S1-812: Expenses: 1 8719.45; 2 21289.6
- C-A-SF-S1-822: Expenses: 1 8719.45; 2 21289.6
- C-A-SF-S1-832: Expenses: 1 8719.45; 2 21289.6
- C-A-SF-S1-842: Expenses: 1 8719.45; 2 21289.6
- C-A-SF-S1-852: Expenses: 1 8719.45; 2 21289.6
- C-A-SF-S1-862: Expenses: 1 8719.45; 2 21289.6
- C-A-SF-S1-872: Expenses: 1 8719.45; 2 21289.6
- C-A-SF-S1-882: Expenses: 1 8719.45; 2 21289.6
- C-A-SF-S1-892: Expenses: 1 8719.45; 2 21289.6
- C-A-SF-S1-902: Expenses: 1 8719.45; 2 21289.6
- C-A-SF-S1-912: Expenses: 1 8719.45; 2 21289.6
- C-A-SF-S1-922: Expenses: 1 8719.45; 2 21289.6
- C-A-SF-S1-932: Expenses: 1 8719.45; 2 21289.6
- C-A-SF-S1-942: Expenses: 1 8719.45; 2 21289.6
- C-A-SF-S1-952: Expenses: 1 8719.45; 2 21289.6
- C-A-SF-S1-962: Expenses: 1 8719.45; 2 21289.6

| ID | WBS | Activity | Duration | Start | Finish | Predecessors | Total float | Free float | Cost |
| --- | --- | --- | --- | --- | --- | --- | --- | --- | --- |
|  | 2 | **Stair 2** |  | 2016-09-18 | 2017-03-26 |  |  |  |  |
| C-A-SF-S2-32 |  | Stairs finishes & ballustrades "ST-02" from GF level to MZ level | 20d | 2016-09-18 | 2016-10-11 | C-A-SF-S1-42 SS+2d, C-A-SF-S2-71, C-CS-S-A-ST-1132 | 56d | 0d | 30,009.05 |
| C-A-SF-S2-42 |  | Stairs finishes & ballustrades "ST-02" from MZ level to L1 | 20d | 2016-09-18 | 2016-10-11 | C-A-SF-S2-32 SS, C-A-SF-S1-52 SS+2d, C-CS-S-A-ST-1142 | 76d | 0d | 30,009.05 |
| C-A-SF-S2-52 |  | Stairs finishes & ballustrades "ST-02" from L1 to L2 | 20d | 2016-09-18 | 2016-10-11 | C-A-SF-S2-42 SS, C-A-SF-S1-62 SS+2d, C-CS-S-A-ST-1152 | 96d | 0d | 30,009.05 |
| C-A-SF-S2-62 |  | Stairs finishes & ballustrades "ST-02" from L2 to L3 | 20d | 2016-09-18 | 2016-10-11 | C-A-SF-S2-52 SS, C-A-SF-S1-72 SS+2d, C-CS-S-A-ST-1162 | 116d | 38d | 30,009.05 |
| C-A-SF-S2-02 |  | Stairs finishes & ballustrades "ST-02" from L6 to L7 | 20d | 2016-11-02 | 2016-11-24 | C-A-SF-S2-92 SS, C-A-SF-S1-12 SS+2d, C-CS-S-A-ST-202 | 108d | 0d | 30,009.05 |
| C-A-SF-S2-12 |  | Stairs finishes & ballustrades "ST-02" from L7 to L8 | 20d | 2016-11-02 | 2016-11-24 | C-A-SF-S2-02 SS, C-A-SF-S1-22 SS+2d, C-CS-S-A-ST-212 | 108d | 0d | 30,009.05 |
| C-A-SF-S2-22 |  | Stairs finishes & ballustrades "ST-02" from L8 to L9 | 20d | 2016-11-02 | 2016-11-24 | C-A-SF-S2-12 SS, C-A-SF-S1-532 SS+2d, C-CS-S-A-ST-222 | 108d | 0d | 30,009.05 |
| C-A-SF-S2-72 |  | Stairs finishes & ballustrades "ST-02" from L3 to L4 | 20d | 2016-11-02 | 2016-11-24 | C-A-SF-S2-62 SS, C-A-SF-S1-82 SS+2d, C-CS-S-A-ST-1172 | 108d | 0d | 30,009.05 |
| C-A-SF-S2-82 |  | Stairs finishes & ballustrades "ST-02" from L4 to L5 | 20d | 2016-11-02 | 2016-11-24 | C-A-SF-S2-72 SS, C-A-SF-S1-92 SS+2d, C-CS-S-A-ST-1182 | 108d | 0d | 30,009.05 |
| C-A-SF-S2-832 |  | Stairs finishes & ballustrades "ST-02" from L9 to L10 | 20d | 2016-11-02 | 2016-11-24 | C-A-SF-S2-22 SS, C-A-SF-S1-542 SS+2d, C-CS-S-A-ST-232 | 108d | 0d | 30,009.05 |
| C-A-SF-S2-842 |  | Stairs finishes & ballustrades "ST-02" from L10 to L11 | 20d | 2016-11-02 | 2016-11-24 | C-A-SF-S2-832 SS, C-A-SF-S1-552 SS+2d, C-CS-S-A-ST-242 | 108d | 0d | 30,009.05 |
| C-A-SF-S2-852 |  | Stairs finishes & ballustrades "ST-02" from L11 to L12 | 20d | 2016-11-02 | 2016-11-24 | C-A-SF-S2-842 SS, C-A-SF-S1-562 SS+2d, C-CS-S-A-ST-252 | 108d | 0d | 30,009.05 |
| C-A-SF-S2-862 |  | Stairs finishes & ballustrades "ST-02" from L12 to L13 | 20d | 2016-11-02 | 2016-11-24 | C-A-SF-S2-852 SS, C-A-SF-S1-572 SS+2d, C-CS-S-A-ST-262 | 108d | 1d | 30,009.05 |
| C-A-SF-S2-92 |  | Stairs finishes & ballustrades "ST-02" from L5 to L6 | 20d | 2016-11-02 | 2016-11-24 | C-A-SF-S2-82 SS, C-A-SF-S1-02 SS+2d, C-CS-S-A-ST-1192 | 108d | 0d | 30,009.05 |
| C-A-SF-S2-872 |  | Stairs finishes & ballustrades "ST-02" from L13 to L14 | 20d | 2016-11-03 | 2016-11-26 | C-A-SF-S2-862 SS, C-A-SF-S1-582 SS+3d, C-CS-S-A-ST-272 | 107d | 0d | 30,009.05 |
| C-A-SF-S2-882 |  | Stairs finishes & ballustrades "ST-02" from L14 to L15 | 20d | 2016-11-03 | 2016-11-26 | C-A-SF-S2-872 SS, C-A-SF-S1-592 SS+3d, C-CS-S-A-ST-82 | 107d | 0d | 30,009.05 |
| C-A-SF-S2-892 |  | Stairs finishes & ballustrades "ST-02" from L15 to L16 | 20d | 2016-11-03 | 2016-11-26 | C-A-SF-S2-882 SS, C-A-SF-S1-602 SS+3d, C-CS-S-A-ST-292 | 107d | 0d | 30,009.05 |
| C-A-SF-S2-902 |  | Stairs finishes & ballustrades "ST-02" from L16 to L17 | 20d | 2016-11-03 | 2016-11-26 | C-A-SF-S2-892 SS, C-A-SF-S1-612 SS+3d, C-CS-S-A-ST-302 | 107d | 0d | 30,009.05 |
| C-A-SF-S2-912 |  | Stairs finishes & ballustrades "ST-02" from L17 to L18 | 20d | 2016-11-03 | 2016-11-26 | C-A-SF-S2-902 SS, C-A-SF-S1-622 SS+3d, C-CS-S-A-ST-312 | 107d | 0d | 30,009.05 |
| C-A-SF-S2-922 |  | Stairs finishes & ballustrades "ST-02" from L18 to L19 | 20d | 2016-11-03 | 2016-11-26 | C-A-SF-S2-912 SS, C-A-SF-S1-632 SS+3d, C-CS-S-A-ST-322 | 107d | 0d | 30,009.05 |
| C-A-SF-S2-932 |  | Stairs finishes & ballustrades "ST-02" from L19 to L20 | 20d | 2016-11-03 | 2016-11-26 | C-A-SF-S2-922 SS, C-A-SF-S1-642 SS+3d, C-CS-S-A-ST-32 | 107d | 0d | 30,009.05 |
| C-A-SF-S2-942 |  | Stairs finishes & ballustrades "ST-02" from L20 to L21 | 20d | 2016-11-03 | 2016-11-26 | C-A-SF-S2-932 SS, C-A-SF-S1-652 SS+3d, C-CS-S-A-ST-342 | 107d | 0d | 30,009.05 |
| C-A-SF-S2-952 |  | Stairs finishes & ballustrades "ST-02" from L21 to L22 | 20d | 2016-11-03 | 2016-11-26 | C-A-SF-S2-942 SS, C-A-SF-S1-662 SS+3d, C-CS-S-A-ST-52 | 107d | 10d | 30,009.05 |
| C-A-SF-S2-002 |  | Stairs finishes & ballustrades "ST-02" from L26 to L27 | 20d | 2016-11-15 | 2016-12-07 | C-A-SF-S2-992 SS, C-A-SF-S1-712 SS+3d, C-CS-S-A-ST-402 | 97d | 0d | 30,009.05 |
| C-A-SF-S2-012 |  | Stairs finishes & ballustrades "ST-02" from L27 to L28 | 20d | 2016-11-15 | 2016-12-07 | C-A-SF-S2-002 SS, C-A-SF-S1-722 SS+3d, C-CS-S-A-ST-412 | 97d | 0d | 30,009.05 |
| C-A-SF-S2-022 |  | Stairs finishes & ballustrades "ST-02" from L28 to L29 | 20d | 2016-11-15 | 2016-12-07 | C-A-SF-S2-012 SS, C-A-SF-S1-732 SS+3d, C-CS-S-A-ST-422 | 97d | 0d | 30,009.05 |
| C-A-SF-S2-032 |  | Stairs finishes & ballustrades "ST-02" from L29 to L30 | 20d | 2016-11-15 | 2016-12-07 | C-A-SF-S2-022 SS, C-A-SF-S1-742 SS+3d, C-CS-S-A-ST-432 | 97d | 16d | 30,009.05 |
| C-A-SF-S2-962 |  | Stairs finishes & ballustrades "ST-02" from L22 to L23 | 20d | 2016-11-15 | 2016-12-07 | C-A-SF-S2-952 SS, C-A-SF-S1-672 SS+3d, C-CS-S-A-ST-62 | 97d | 0d | 30,009.05 |
| C-A-SF-S2-972 |  | Stairs finishes & ballustrades "ST-02" from L23 to L24 | 20d | 2016-11-15 | 2016-12-07 | C-A-SF-S2-962 SS, C-A-SF-S1-682 SS+3d, C-CS-S-A-ST-72 | 97d | 0d | 30,009.05 |
| C-A-SF-S2-982 |  | Stairs finishes & ballustrades "ST-02" from L24 to L25 | 20d | 2016-11-15 | 2016-12-07 | C-A-SF-S2-972 SS, C-A-SF-S1-692 SS+3d, C-CS-S-A-ST-382 | 97d | 0d | 30,009.05 |
| C-A-SF-S2-992 |  | Stairs finishes & ballustrades "ST-02" from L25 to L26 | 20d | 2016-11-15 | 2016-12-07 | C-A-SF-S2-982 SS, C-A-SF-S1-702 SS+3d, C-CS-S-A-ST-392 | 97d | 0d | 30,009.05 |
| C-A-SF-S2-042 |  | Stairs finishes & ballustrades "ST-02" from L30 to L31 | 20d | 2016-12-04 | 2016-12-27 | C-A-SF-S2-032 SS, C-A-SF-S1-752 SS+3d, C-CS-S-A-ST-442 | 81d | 0d | 30,009.05 |
| C-A-SF-S2-052 |  | Stairs finishes & ballustrades "ST-02" from L31 to L32 | 20d | 2016-12-04 | 2016-12-27 | C-A-SF-S2-042 SS, C-A-SF-S1-762 SS+3d, C-CS-S-A-ST-452 | 81d | 0d | 30,009.05 |
| C-A-SF-S2-062 |  | Stairs finishes & ballustrades "ST-02" from L32 to L33 | 20d | 2016-12-04 | 2016-12-27 | C-A-SF-S2-052 SS, C-A-SF-S1-772 SS+3d, C-CS-S-A-ST-462 | 81d | 14d | 30,009.05 |
| C-A-SF-S2-072 |  | Stairs finishes & ballustrades "ST-02" from L33 to L34 | 20d | 2016-12-21 | 2017-01-12 | C-A-SF-S2-062 SS, C-A-SF-S1-782 SS+3d, C-CS-S-A-ST-472 | 67d | 40d | 30,009.05 |
| C-A-SF-S2-082 |  | Stairs finishes & ballustrades "ST-02" from L34 to L35 | 20d | 2017-02-06 | 2017-03-01 | C-A-SF-S2-072 SS, C-A-SF-S1-792 SS+3d, C-CS-S-A-ST-482 | 27d | 0d | 30,009.05 |
| C-A-SF-S2-092 |  | Stairs finishes & ballustrades "ST-02" from L35 to L36 | 20d | 2017-02-06 | 2017-03-01 | C-A-SF-S2-082 SS, C-A-SF-S1-802 SS+3d, C-CS-S-A-ST-492 | 27d | 0d | 30,009.05 |
| C-A-SF-S2-102 |  | Stairs finishes & ballustrades "ST-02" from L36 to L37 | 20d | 2017-02-06 | 2017-03-01 | C-A-SF-S2-092 SS, C-A-SF-S1-812 SS+3d, C-CS-S-A-ST-502 | 27d | 0d | 30,009.05 |
| C-A-SF-S2-112 |  | Stairs finishes & ballustrades "ST-02" from L37 to L38 | 20d | 2017-02-06 | 2017-03-01 | C-A-SF-S2-102 SS, C-A-SF-S1-822 SS+3d, C-CS-S-A-ST-512 | 27d | 0d | 30,009.05 |
| C-A-SF-S2-122 |  | Stairs finishes & ballustrades "ST-02" from L38 to L39 | 20d | 2017-02-06 | 2017-03-01 | C-A-SF-S2-112 SS, C-A-SF-S1-832 SS+3d, C-CS-S-A-ST-522 | 27d | 0d | 30,009.05 |
| C-A-SF-S2-132 |  | Stairs finishes & ballustrades "ST-02" from L39 to L40 | 20d | 2017-02-06 | 2017-03-01 | C-A-SF-S2-122 SS, C-A-SF-S1-842 SS+3d, C-CS-S-A-ST-532 | 27d | 0d | 30,009.05 |
| C-A-SF-S2-142 |  | Stairs finishes & ballustrades "ST-02" from L40 to L41 | 20d | 2017-02-06 | 2017-03-01 | C-A-SF-S2-132 SS, C-A-SF-S1-852 SS+3d, C-CS-S-A-ST-542 | 27d | 0d | 30,009.05 |
| C-A-SF-S2-152 |  | Stairs finishes & ballustrades "ST-02" from L41 to L42 | 20d | 2017-02-06 | 2017-03-01 | C-A-SF-S2-142 SS, C-A-SF-S1-862 SS+3d, C-CS-S-A-ST-552 | 27d | 0d | 30,009.05 |
| C-A-SF-S2-162 |  | Stairs finishes & ballustrades "ST-02" from L42 to L43 | 20d | 2017-02-06 | 2017-03-01 | C-A-SF-S2-152 SS, C-A-SF-S1-872 SS+3d, C-CS-S-A-ST-562 | 27d | 0d | 30,009.05 |
| C-A-SF-S2-172 |  | Stairs finishes & ballustrades "ST-02" from L43 to L44 | 20d | 2017-02-06 | 2017-03-01 | C-A-SF-S2-162 SS, C-A-SF-S1-882 SS+3d, C-CS-S-A-ST-572 | 27d | 0d | 30,009.05 |
| C-A-SF-S2-182 |  | Stairs finishes & ballustrades "ST-02" from L44 to L45 | 20d | 2017-02-06 | 2017-03-01 | C-A-SF-S2-172 SS, C-A-SF-S1-892 SS+3d, C-CS-S-A-ST-1582 | 27d | 0d | 30,009.05 |
| C-A-SF-S2-192 |  | Stairs finishes & ballustrades "ST-02" from L45 to L46 | 20d | 2017-02-06 | 2017-03-01 | C-A-SF-S2-182 SS, C-A-SF-S1-902 SS+3d, C-CS-S-A-ST-1592 | 27d | 0d | 30,009.05 |
| C-A-SF-S2-202 |  | Stairs finishes & ballustrades "ST-02" from L46 to L47 | 20d | 2017-02-06 | 2017-03-01 | C-A-SF-S2-192 SS, C-A-SF-S1-912 SS, C-CS-S-A-ST-1602 | 27d | 0d | 30,009.05 |
| C-A-SF-S2-212 |  | Stairs finishes & ballustrades "ST-02" from L47 to L48 | 20d | 2017-02-06 | 2017-03-01 | C-A-SF-S2-202 SS, C-A-SF-S1-922 SS, C-CS-S-A-ST-1612 | 27d | 0d | 30,009.05 |
| C-A-SF-S2-222 |  | Stairs finishes & ballustrades "ST-02" from L48 to L49 | 20d | 2017-02-06 | 2017-03-01 | C-A-SF-S2-212 SS, C-A-SF-S1-932 SS, C-CS-S-A-ST-1622 | 27d | 0d | 30,009.05 |
| C-A-SF-S2-232 |  | Stairs finishes & ballustrades "ST-02" from L49 to L40 | 20d | 2017-02-06 | 2017-03-01 | C-A-SF-S2-222 SS, C-A-SF-S1-942 SS, C-CS-S-A-ST-1632 | 27d | 17d | 30,009.05 |
| C-A-SF-S2-242 |  | Stairs finishes & ballustrades "ST-02" from L50 to L51 | 20d | 2017-02-27 | 2017-03-21 | C-A-SF-S2-232 SS, C-A-SF-S1-952 SS, C-CS-S-A-ST-1642 | 10d | 4d | 30,009.05 |
| C-A-SF-S2-252 |  | Stairs finishes & ballustrades "ST-02" from L51 to Roof | 20d | 2017-03-04 | 2017-03-26 | C-A-SF-S2-242 SS, C-A-SF-S1-962 SS, C-CS-S-A-ST-1652 | 6d | 0d | 30,009.05 |

Notes:
- C-A-SF-S2-32: Expenses: 2 8719.45; 3 21289.6
- C-A-SF-S2-42: Expenses: 2 8719.45; 3 21289.6
- C-A-SF-S2-52: Expenses: 2 8719.45; 3 21289.6
- C-A-SF-S2-62: Expenses: 2 8719.45; 3 21289.6
- C-A-SF-S2-02: Expenses: 2 8719.45; 3 21289.6
- C-A-SF-S2-12: Expenses: 2 8719.45; 3 21289.6
- C-A-SF-S2-22: Expenses: 2 8719.45; 3 21289.6
- C-A-SF-S2-72: Expenses: 2 8719.45; 3 21289.6
- C-A-SF-S2-82: Expenses: 2 8719.45; 3 21289.6
- C-A-SF-S2-832: Expenses: 2 8719.45; 3 21289.6
- C-A-SF-S2-842: Expenses: 2 8719.45; 3 21289.6
- C-A-SF-S2-852: Expenses: 2 8719.45; 3 21289.6
- C-A-SF-S2-862: Expenses: 2 8719.45; 3 21289.6
- C-A-SF-S2-92: Expenses: 2 8719.45; 3 21289.6
- C-A-SF-S2-872: Expenses: 2 8719.45; 3 21289.6
- C-A-SF-S2-882: Expenses: 2 8719.45; 3 21289.6
- C-A-SF-S2-892: Expenses: 2 8719.45; 3 21289.6
- C-A-SF-S2-902: Expenses: 2 8719.45; 3 21289.6
- C-A-SF-S2-912: Expenses: 2 8719.45; 3 21289.6
- C-A-SF-S2-922: Expenses: 2 8719.45; 3 21289.6
- C-A-SF-S2-932: Expenses: 2 8719.45; 3 21289.6
- C-A-SF-S2-942: Expenses: 2 8719.45; 3 21289.6
- C-A-SF-S2-952: Expenses: 2 8719.45; 3 21289.6
- C-A-SF-S2-002: Expenses: 2 8719.45; 3 21289.6
- C-A-SF-S2-012: Expenses: 2 8719.45; 3 21289.6
- C-A-SF-S2-022: Expenses: 2 8719.45; 3 21289.6
- C-A-SF-S2-032: Expenses: 2 8719.45; 3 21289.6
- C-A-SF-S2-962: Expenses: 2 8719.45; 3 21289.6
- C-A-SF-S2-972: Expenses: 2 8719.45; 3 21289.6
- C-A-SF-S2-982: Expenses: 2 8719.45; 3 21289.6
- C-A-SF-S2-992: Expenses: 2 8719.45; 3 21289.6
- C-A-SF-S2-042: Expenses: 2 8719.45; 3 21289.6
- C-A-SF-S2-052: Expenses: 2 8719.45; 3 21289.6
- C-A-SF-S2-062: Expenses: 2 8719.45; 3 21289.6
- C-A-SF-S2-072: Expenses: 2 8719.45; 3 21289.6
- C-A-SF-S2-082: Expenses: 2 8719.45; 3 21289.6
- C-A-SF-S2-092: Expenses: 2 8719.45; 3 21289.6
- C-A-SF-S2-102: Expenses: 2 8719.45; 3 21289.6
- C-A-SF-S2-112: Expenses: 2 8719.45; 3 21289.6
- C-A-SF-S2-122: Expenses: 2 8719.45; 3 21289.6
- C-A-SF-S2-132: Expenses: 2 8719.45; 3 21289.6
- C-A-SF-S2-142: Expenses: 2 8719.45; 3 21289.6
- C-A-SF-S2-152: Expenses: 2 8719.45; 3 21289.6
- C-A-SF-S2-162: Expenses: 2 8719.45; 3 21289.6
- C-A-SF-S2-172: Expenses: 2 8719.45; 3 21289.6
- C-A-SF-S2-182: Expenses: 2 8719.45; 3 21289.6
- C-A-SF-S2-192: Expenses: 2 8719.45; 3 21289.6
- C-A-SF-S2-202: Expenses: 2 8719.45; 3 21289.6
- C-A-SF-S2-212: Expenses: 2 8719.45; 3 21289.6
- C-A-SF-S2-222: Expenses: 2 8719.45; 3 21289.6
- C-A-SF-S2-232: Expenses: 2 8719.45; 3 21289.6
- C-A-SF-S2-242: Expenses: 2 8719.45; 3 21289.6
- C-A-SF-S2-252: Expenses: 2 8719.45; 3 21289.6

| ID | WBS | Activity | Duration | Start | Finish | Predecessors | Total float | Free float | Cost |
| --- | --- | --- | --- | --- | --- | --- | --- | --- | --- |
|  | 3 | **Stair 3** |  | 2016-10-12 | 2017-01-14 |  |  |  |  |
| C-A-SF-S3-262 |  | Stairs finishes & ballustrades "ST-03" from GF level to MZ level | 20d | 2016-10-12 | 2016-11-03 | C-A-SF-S3-41, C-A-SF-S2-32, C-CS-S-A-ST-1662 | 56d | 0d | 30,009.05 |
| C-A-SF-S3-272 |  | Stairs finishes & ballustrades "ST-03" from MZ level to L1 | 20d | 2016-11-05 | 2016-11-27 | C-A-SF-S3-262, C-A-SF-S2-42, C-CS-S-A-ST-1672 | 56d | 0d | 30,009.05 |
| C-A-SF-S3-282 |  | Stairs finishes & ballustrades "ST-03" from L1 to L2 | 20d | 2016-11-28 | 2016-12-21 | C-A-SF-S3-272, C-A-SF-S2-52, C-CS-S-A-ST-1682 | 56d | 0d | 30,009.05 |
| C-A-SF-S3-292 |  | Stairs finishes & ballustrades "ST-03" from L2 to L3 | 20d | 2016-12-22 | 2017-01-14 | C-A-SF-S3-282, C-A-SF-S2-62, C-CS-S-A-ST-1692 | 56d | 50d | 30,009.05 |
|  | 4 | **Stair 9** |  | 2016-10-12 | 2017-01-14 |  |  |  |  |
| C-A-SF-S9-1002 |  | Stairs finishes & ballustrades "ST-09" from GF level to MZ level | 20d | 2016-10-12 | 2016-11-03 | C-CS-S-A-ST-1702, C-A-SF-S3-262 SS | 66d | 0d | 30,009.05 |
| C-A-SF-S9-1012 |  | Stairs finishes & ballustrades "ST-09" from MZ level to L1 | 20d | 2016-11-05 | 2016-11-27 | C-A-SF-S9-1002, C-CS-S-A-ST-1712 | 66d | 0d | 30,009.05 |
| C-A-SF-S9-1022 |  | Stairs finishes & ballustrades "ST-09" from L1 to L2 | 20d | 2016-11-28 | 2016-12-21 | C-A-SF-S9-1012, C-CS-S-A-ST-1722 | 66d | 0d | 30,009.05 |
| C-A-SF-S9-1032 |  | Stairs finishes & ballustrades "ST-09" from L2 to L3 | 20d | 2016-12-22 | 2017-01-14 | C-A-SF-S9-1022, C-CS-S-A-ST-1732 | 66d | 0d | 51,298.64 |
|  | 5 | **Stair 10** |  | 2016-12-22 | 2017-01-14 |  |  |  |  |
| C-A-SF-S10-1042 |  | Stairs finishes & ballustrades "ST-10" from GF level to level 1 | 20d | 2016-12-22 | 2017-01-14 | C-CS-S-A-ST-1742, C-A-SF-S9-1032 SS | 66d | 60d | 38,728.49 |
|  | 3 | **Tanks Finishes** |  | 2015-08-04 | 2016-05-09 |  |  |  |  |
|  | 1 | **Tanks at level 17** |  | 2015-08-04 | 2015-09-13 |  |  |  |  |
| C-CS-S-T-441 |  | Grating & Horizontal & Vertical Waterproofing & MEP final fix & Testing at 17th floor | 25d | 2015-08-04 | 2015-09-01 | C-CS-S-T-431, C-CS-L17-201 | 286d | 0d | 31,643.04 |
| C-F-T-001 |  | Installation of Tanks finishes & Ladders at level 17 | 10d | 2015-09-02 | 2015-09-13 | C-CS-S-T-441 | 305d | 166d | 34,700.44 |
|  | 2 | **Tanks at level 32** |  | 2015-11-29 | 2016-01-09 |  |  |  |  |
| C-CS-S-T-471 |  | Garting & Horizontal & Vertical Waterproofing & MEP final fix & Testing at 32nd floor | 25d | 2015-11-29 | 2015-12-28 | C-CS-S-T-461, C-CS-S-T-441, C-CS-L32-111 | 214d | 0d | 31,643.04 |
| C-F-T-1 |  | Installation of Tanks finishes & Ladders at level 17 | 10d | 2015-12-29 | 2016-01-09 | C-CS-S-T-471 | 214d | 147d | 34,700.44 |
|  | 3 | **Tanks at level 49** |  | 2016-03-30 | 2016-05-09 |  |  |  |  |
| C-CS-S-T-501 |  | Grating & Horizontal & Vertical Waterproofing & MEP final fix & Testing at 49th floor | 25d | 2016-03-30 | 2016-04-27 | C-CS-S-T-491, C-CS-S-T-471, C-CS-L49-321 | 138d | 0d | 31,643.04 |
| C-F-T-11 |  | Installation of Tanks finishes & Ladders at level 49 | 10d | 2016-04-28 | 2016-05-09 | C-CS-S-T-501 | 138d | 120d | 34,700.44 |
|  | 4 | **BOH Toilets** |  | 2015-11-15 | 2016-07-14 |  |  |  |  |
|  | 1 | **Toilet Finishes - Ground Floor** |  | 2015-11-15 | 2015-12-30 |  |  |  |  |
| C-AF-TF-001 |  | Installation of wall clading "Porcelain" - Ground floor level | 14d | 2015-11-15 | 2015-11-30 | C-F-CF-27 | 169d | 0d | 9,635.96 |
| C-AF-TF-011 |  | Installation of Sanitary FIxtures - Ground Level | 25d | 2015-12-01 | 2015-12-30 | C-AF-TF-001 | 169d | 0d | 77,531.52 |

Notes:
- C-A-SF-S3-262: Expenses: 3 8719.45; 4 21289.6
- C-A-SF-S3-272: Expenses: 3 8719.45; 4 21289.6
- C-A-SF-S3-282: Expenses: 3 8719.45; 4 21289.6
- C-A-SF-S3-292: Expenses: 3 8719.45; 4 21289.6
- C-A-SF-S9-1002: Expenses: 3 8719.45; 4 21289.6
- C-A-SF-S9-1012: Expenses: 3 8719.45; 4 21289.6
- C-A-SF-S9-1022: Expenses: 3 8719.45; 4 21289.6
- C-A-SF-S9-1032: Expenses: 3 8719.45; 4 42579.2
- C-A-SF-S10-1042: Expenses: 3 17438.9; 4 21289.6
- C-CS-S-T-441: Expenses: wt 28080.2; G 3562.87
- C-F-T-001: Expenses: TF 34700.4
- C-CS-S-T-471: Expenses: WT 28080.2; G 3562.87
- C-F-T-1: Expenses: TF 34700.4
- C-CS-S-T-501: Expenses: WT 28080.2; G 3562.87
- C-F-T-11: Expenses: TF 34700.4
- C-AF-TF-001: Expenses: 1 9635.96
- C-AF-TF-011: Expenses: 1 77531.5

| ID | WBS | Activity | Duration | Start | Finish | Predecessors | Total float | Free float | Calendar | Cost |
| --- | --- | --- | --- | --- | --- | --- | --- | --- | --- | --- |
|  | 2 | **Toilet Finishes - 1st Floor** |  | 2015-11-15 | 2016-01-28 |  |  |  |  |  |
| C-AF-TF-002 |  | Installation of wall clading "Porcelain" - level 1 | 14d | 2015-11-15 | 2015-11-30 | C-F-CF-97 | 194d | 25d |  | 9,635.96 |
| C-AF-TF-11 |  | Installation of Sanitary FIxtures - Level 1 | 25d | 2015-12-31 | 2016-01-28 | C-AF-TF-002, C-AF-TF-011 | 169d | 0d |  | 77,531.52 |
|  | 3 | **Toilet Finishes - 1st Mezz. Floor** |  | 2015-12-07 | 2016-02-28 |  |  |  |  |  |
| C-AF-TF-003 |  | Installation of wall clading "Porcelain" - level 1 Mezz | 14d | 2015-12-07 | 2015-12-23 | C-F-CF-167 | 184d | 31d |  | 9,635.96 |
| C-AF-TF-21 |  | Installation of Sanitary FIxtures - Level 1 Mezz | 25d | 2016-01-30 | 2016-02-28 | C-AF-TF-003, C-AF-TF-11 | 169d | 0d |  | 77,531.52 |
|  | 5 | **Toilet Finishes - 2nd Floor** |  | 2015-11-15 | 2016-03-28 |  |  |  |  |  |
| C-AF-TF-004 |  | Installation of wall clading "Porcelain" - level 2 | 14d | 2015-11-15 | 2015-11-30 | C-F-CF-307 | 244d | 71d |  | 9,635.96 |
| C-AF-TF-31 |  | Installation of Sanitary FIxtures - Level 2 | 25d | 2016-02-29 | 2016-03-28 | C-AF-TF-004, C-AF-TF-21 | 169d | 0d |  | 77,531.52 |
|  | 4 | **Toilet Finishes - 3rd Floor** |  | 2015-11-18 | 2016-04-26 |  |  |  |  |  |
| C-AF-TF-005 |  | Installation of wall clading "Porcelain" - level 3 | 14d | 2015-11-18 | 2015-12-03 | C-F-CF-005 | 200d | 89d |  | 9,635.96 |
| C-AF-TF-41 |  | Installation of Sanitary FIxtures - Level 3 | 25d | 2016-03-29 | 2016-04-26 | C-AF-TF-005, C-AF-TF-31 | 169d | 40d |  | 77,531.52 |
|  | 6 | **Toilet Finishes - 34th Floor** |  | 2016-05-28 | 2016-07-14 |  |  |  |  |  |
| C-AF-TF-006 |  | Installation of wall clading "Porcelain" - level 34 | 14d | 2016-05-28 | 2016-06-12 | C-F-CF-2547 | 129d | 0d |  | 9,635.96 |
| C-AF-TF-51 |  | Installation of Sanitary FIxtures - Level 34 | 25d | 2016-06-13 | 2016-07-14 | C-AF-TF-006, C-AF-TF-41 | 129d | 124d |  | 77,531.52 |
|  | 6 | **Pantry Finishes** |  | 2015-11-15 | 2016-09-14 |  |  |  |  |  |
|  | 1 | **Pantry Finishes - Ground FLoor** |  | 2015-11-15 | 2015-11-30 |  |  |  |  |  |
| C-PF-001 |  | Installation of floor finishes "Porcelain" - Ground floor | 14d | 2015-11-15 | 2015-11-30 | C-F-CF-27 | 219d | 65d | *APB - 6 D week + Qatar Holiday | 7,836.84 |
|  | 2 | **Pantry Finishes - Level 1 Mezz.** |  | 2015-12-07 | 2015-12-22 |  |  |  |  |  |
| C-PF-1 |  | Installation of floor finishes "Porcelain" - Level 1 Mezz. | 14d | 2015-12-07 | 2015-12-22 | C-F-CF-167 | 189d | 66d | *APB - 6 D week + Qatar Holiday | 7,836.84 |
|  | 3 | **Pantry Finishes - Level 2** |  | 2015-11-15 | 2015-11-30 |  |  |  |  |  |
| C-PF-11 |  | Installation of floor finishes "Porcelain" - Level 2 | 14d | 2015-11-15 | 2015-11-30 | C-F-CF-307 | 265d | 72d | *APB - 6 D week + Qatar Holiday | 7,836.84 |
|  | 4 | **Pantry Finishes - Level 44** |  | 2016-08-09 | 2016-08-24 |  |  |  |  |  |
| C-PF-21 |  | Installation of floor finishes "Porcelain" - Level 44 | 14d | 2016-08-09 | 2016-08-24 | C-F-CF-3247 | 108d | 68d | *APB - 6 D week + Qatar Holiday | 7,836.84 |

Notes:
- C-AF-TF-002: Expenses: 1 9635.96
- C-AF-TF-11: Expenses: 1 77531.5
- C-AF-TF-003: Expenses: 1 9635.96
- C-AF-TF-21: Expenses: 1 77531.5
- C-AF-TF-004: Expenses: 1 9635.96
- C-AF-TF-31: Expenses: 1 77531.5
- C-AF-TF-005: Expenses: 1 9635.96
- C-AF-TF-41: Expenses: 1 77531.5
- C-AF-TF-006: Expenses: 1 9635.96
- C-AF-TF-51: Expenses: 1 77531.5
- C-PF-001: Expenses: 1 7836.84
- C-PF-1: Expenses: 1 7836.84
- C-PF-11: Expenses: 1 7836.84
- C-PF-21: Expenses: 1 7836.84

| ID | WBS | Activity | Duration | Start | Finish | Predecessors | Total float | Free float | Calendar | Cost |
| --- | --- | --- | --- | --- | --- | --- | --- | --- | --- | --- |
|  | 5 | **Pantry Finishes - Level 47** |  | 2016-08-30 | 2016-09-14 |  |  |  |  |  |
| C-PF-31 |  | Installation of floor finishes "Porcelain" - Level 47 | 14d | 2016-08-30 | 2016-09-14 | C-F-CF-3037 | 90d | 68d | *APB - 6 D week + Qatar Holiday | 7,836.84 |
|  | 6 | **Pantry Finishes - Level 48** |  | 2016-08-23 | 2016-09-07 |  |  |  |  |  |
| C-PF-41 |  | Installation of floor finishes "Porcelain" - Level 48 | 14d | 2016-08-23 | 2016-09-07 | C-F-CF-3317 | 88d | 65d | *APB - 6 D week + Qatar Holiday | 7,836.84 |
|  | 8 | **Offices Finishes** |  | 2015-11-15 | 2016-09-18 |  |  |  |  |  |
|  | 1 | **Offices Finishes - Ground FLoor** |  | 2015-11-15 | 2015-11-30 |  |  |  |  |  |
| C-OF-001 |  | Installation of Carpet Flooring at Ground floor | 14d | 2015-11-15 | 2015-11-30 | C-F-CF-27 | 215d | 64d |  | 35,220.05 |
|  | 2 | **Offices Finishes - Level 1 Mezz.** |  | 2015-12-07 | 2015-12-23 |  |  |  |  |  |
| C-OF-1 |  | Installation of Carpet Flooring at Level 1 Mezz. | 14d | 2015-12-07 | 2015-12-23 | C-F-CF-167 | 196d | 0d |  | 35,220.05 |
|  | 3 | **Offices Finishes - Level 2** |  | 2015-12-24 | 2016-01-09 |  |  |  |  |  |
| C-OF-11 |  | Installation of Carpet Flooring at Level 2 | 14d | 2015-12-24 | 2016-01-09 | C-F-CF-307, C-OF-1 | 224d | 38d |  | 35,220.05 |
|  | 5 | **Offices Finishes - Level 47** |  | 2016-08-30 | 2016-09-18 |  |  |  |  |  |
| C-OF-21 |  | Installation of Carpet Flooring at Level 47 | 14d | 2016-08-30 | 2016-09-18 | C-F-CF-3037 | 85d | 64d |  | 35,220.05 |
|  | 6 | **Offices Finishes - Level 48** |  | 2016-08-23 | 2016-09-07 |  |  |  |  |  |
| C-OF-31 |  | Installation of Carpet Flooring at Level 48 | 14d | 2016-08-23 | 2016-09-07 | C-F-CF-3317 | 83d | 61d |  | 35,220.05 |
|  | 9 | **Refuge Areas Finishes** |  | 2016-03-13 | 2016-10-02 |  |  |  |  |  |
|  | 3 | **Refuge Finishes - Level 17** |  | 2016-03-13 | 2016-03-28 |  |  |  |  |  |
| C-RF-001 |  | Installation of Polyurethane floor finishes at level 17 | 14d | 2016-03-13 | 2016-03-28 | C-F-CF-1217 | 203d | 64d |  | 69,330.13 |
|  | 5 | **Refuge Finishes - Level 35** |  | 2016-06-13 | 2016-06-28 |  |  |  |  |  |
| C-RF-1 |  | Installation of Polyurethane floor finishes at level 35 | 14d | 2016-06-13 | 2016-06-28 | C-F-CF-2967 | 130d | 89d |  | 69,330.13 |
|  | 6 | **Refuge Finishes - Level 49** |  | 2016-09-15 | 2016-10-02 |  |  |  |  |  |
| C-RF-11 |  | Installation of Polyurethane floor finishes at level 49 | 14d | 2016-09-15 | 2016-10-02 | C-F-CF-3457 | 94d | 64d |  | 69,330.13 |
|  | 7 | **Kitchens Finishes** |  | 2015-11-15 | 2016-06-28 |  |  |  |  |  |
|  | 7 | **Kitchens Finishes - Basement 2** |  | 2016-05-21 | 2016-06-05 |  |  |  |  |  |
| C-AF-KF-66 |  | Installation of wall clading "Stanless steel" - Basement 2 | 14d | 2016-05-21 | 2016-06-05 | C-F-CF-3807 | 79d | 0d |  | 6,586.61 |

Notes:
- C-PF-31: Expenses: 1 7836.84
- C-PF-41: Expenses: 1 7836.84
- C-OF-001: Expenses: 1 35220.1
- C-OF-1: Expenses: 1 35220.1
- C-OF-11: Expenses: 1 35220.1
- C-OF-21: Expenses: 1 35220.1
- C-OF-31: Expenses: 1 35220.1
- C-RF-001: Expenses: 1 69330.1
- C-RF-1: Expenses: 1 69330.1
- C-RF-11: Expenses: 1 69330.1
- C-AF-KF-66: Expenses: 1 6586.61

| ID | WBS | Activity | Duration | Start | Finish | Predecessors | Total float | Free float | Cost |
| --- | --- | --- | --- | --- | --- | --- | --- | --- | --- |
|  | 8 | **Kitchens Finishes - Basement 1** |  | 2016-06-13 | 2016-06-28 |  |  |  |  |
| C-AF-KF-76 |  | Installation of wall clading "Stanless steel" - Basement 1 | 14d | 2016-06-13 | 2016-06-28 | C-F-CF-3877 | 84d | 0d | 13,996.54 |
|  | 1 | **Kitchens Finishes - Ground Floor** |  | 2015-11-15 | 2015-11-30 |  |  |  |  |
| C-AF-KF-6 |  | Installation of wall clading "Porcelain" - Ground floor level | 14d | 2015-11-15 | 2015-11-30 | C-F-CF-27 | 215d | 64d | 27,627.15 |
| C-AF-KF-86 |  | Installation of wall clading "Stanless steel" - Ground floor level | 14d | 2015-11-15 | 2015-11-30 | C-F-CF-27 | 215d | 64d | 219,004.66 |
|  | 2 | **Kitchens Finishes - 1st Floor** |  | 2015-11-15 | 2015-11-30 |  |  |  |  |
| C-AF-KF-16 |  | Installation of wall clading "Porcelain" - level 1 | 14d | 2015-11-15 | 2015-11-30 | C-F-CF-97 | 229d | 64d | 17,015.4 |
| C-AF-KF-96 |  | Installation of wall clading "Stanless steel" - Ground floor level | 14d | 2015-11-15 | 2015-11-30 | C-F-CF-97 | 229d | 64d | 79,862.6 |
|  | 4 | **Kitchens Finishes - 3rd Floor** |  | 2015-11-18 | 2015-12-03 |  |  |  |  |
| C-AF-KF-26 |  | Installation of wall clading "Stanless steel" - level 3 | 14d | 2015-11-18 | 2015-12-03 | C-F-CF-005 | 200d | 89d | 43,636.27 |
|  | 6 | **Kitchens Finishes - 33rd Floor** |  | 2016-05-21 | 2016-06-05 |  |  |  |  |
| C-AF-KF-36 |  | Installation of wall clading "Stanless steel"- level 33 | 14d | 2016-05-21 | 2016-06-05 | C-F-CF-2407 | 150d | 76d | 54,339.5 |
|  | 3 | **Kitchens Finishes - 34th Floor** |  | 2016-05-28 | 2016-06-12 |  |  |  |  |
| C-AF-KF-46 |  | Installation of wall clading "Stanless steel"- level 34 | 14d | 2016-05-28 | 2016-06-12 | C-F-CF-2547 | 144d | 84d | 33,756.36 |
|  | 10 | **Soft Landscaping** |  | 2016-03-09 | 2016-11-17 |  |  |  |  |
|  | 3 | **Planting in level 1 Mezz** |  | 2016-03-09 | 2016-04-06 |  |  |  |  |
| C-SL-P-1 |  | Installation of Irrigation system & Garden soil, protection & Compaction within the planters at level 1 Mezz | 25d | 2016-03-09 | 2016-04-06 | C-F-WF-104 SS | 120d | 9d | 42,957.24 |
|  | 1 | **Planting in level 3** |  | 2016-03-20 | 2016-04-17 |  |  |  |  |
| C-SL-P-001 |  | Installation of Irrigation system & Garden soil, protection & Compaction within the planters at level 3 | 25d | 2016-03-20 | 2016-04-17 | C-F-WF-004 SS, C-SL-P-1 SS | 111d | 0d | 28,778.11 |
|  | 2 | **Planting in Level 5** |  | 2016-04-18 | 2016-05-16 |  |  |  |  |
| C-SL-P-11 |  | Installation of Irrigation system & Garden soil, protection & Compaction within the planters at level 5 | 25d | 2016-04-18 | 2016-05-16 | C-F-WF-224 SS, C-SL-P-001 | 111d | 27d | 26,686.1 |
|  | 4 | **Planting in Level 9** |  | 2016-05-19 | 2016-06-16 |  |  |  |  |
| C-SL-P-21 |  | Installation of Irrigation system & Garden soil, protection & Compaction within the planters at level 9 | 25d | 2016-05-19 | 2016-06-16 | C-F-WF-424 SS, C-SL-P-11 SS | 84d | 0d | 9,862.9 |
|  | 5 | **Planting in level 10** |  | 2016-06-18 | 2016-07-19 |  |  |  |  |
| C-SL-P-31 |  | Installation of Irrigation system & Garden soil, protection & Compaction within the planters at level 10 | 25d | 2016-06-18 | 2016-07-19 | C-F-WF-504 SS, C-SL-P-21 | 84d | 0d | 9,862.9 |

Notes:
- C-AF-KF-76: Expenses: 1 13996.5
- C-AF-KF-6: Expenses: 1 27627.2
- C-AF-KF-86: Expenses: 1 219005
- C-AF-KF-16: Expenses: 1 17015.4
- C-AF-KF-96: Expenses: 1 79862.6
- C-AF-KF-26: Expenses: 1 43636.3
- C-AF-KF-36: Expenses: 1 54339.5
- C-AF-KF-46: Expenses: 1 33756.4
- C-SL-P-1: Expenses: 1 21955.3; 2 15235.8; 3 5766.06
- C-SL-P-001: Expenses: 1 13584.9; 2 9427.17; 3 5766.06
- C-SL-P-11: Expenses: 1 12349.9; 2 8570.15; 3 5766.06
- C-SL-P-21: Expenses: 1 2418.52; 2 1678.32; 3 5766.06
- C-SL-P-31: Expenses: 1 2418.52; 2 1678.32; 3 5766.06

| ID | WBS | Activity | Duration | Start | Finish | Predecessors | Total float | Free float | Cost |
| --- | --- | --- | --- | --- | --- | --- | --- | --- | --- |
|  | 6 | **Planting in Level 11** |  | 2016-06-18 | 2016-07-19 |  |  |  |  |
| C-SL-P-41 |  | Installation of Irrigation system & Garden soil, protection & Compaction within the planters at level 11 | 25d | 2016-06-18 | 2016-07-19 | C-F-WF-304 SS, C-SL-P-31 SS | 84d | 0d | 9,862.9 |
|  | 7 | **Planting in Level 12** |  | 2016-07-20 | 2016-08-17 |  |  |  |  |
| C-SL-P-51 |  | Installation of Irrigation system & Garden soil, protection & Compaction within the planters at level 12 | 25d | 2016-07-20 | 2016-08-17 | C-F-WF-464 SS, C-SL-P-41 | 84d | 0d | 9,862.9 |
|  | 8 | **Planting in Level 13** |  | 2016-07-20 | 2016-08-17 |  |  |  |  |
| C-SL-P-61 |  | Installation of Irrigation system & Garden soil, protection & Compaction within the planters at level 13 | 25d | 2016-07-20 | 2016-08-17 | C-F-WF-544 SS, C-SL-P-51 SS | 84d | 0d | 9,862.9 |
|  | 9 | **Planting in level 14** |  | 2016-08-18 | 2016-09-19 |  |  |  |  |
| C-SL-P-71 |  | Installation of Irrigation system & Garden soil, protection & Compaction within the planters at level 14 | 25d | 2016-08-18 | 2016-09-19 | C-F-WF-664 SS, C-SL-P-61 | 84d | 0d | 9,862.9 |
|  | 10 | **Planting in Level 15** |  | 2016-08-18 | 2016-09-19 |  |  |  |  |
| C-SL-P-81 |  | Installation of Irrigation system & Garden soil, protection & Compaction within the planters at level 15 | 25d | 2016-08-18 | 2016-09-19 | C-F-WF-904 SS, C-SL-P-71 SS | 84d | 0d | 9,862.9 |
|  | 11 | **Planting in Level 16** |  | 2016-09-20 | 2016-10-19 |  |  |  |  |
| C-SL-P-91 |  | Installation of Irrigation system & Garden soil, protection & Compaction within the planters at level 16 | 25d | 2016-09-20 | 2016-10-19 | C-F-WF-744 SS, C-SL-P-81 | 84d | 0d | 9,862.9 |
|  | 12 | **Planting in Level 18** |  | 2016-09-20 | 2016-10-19 |  |  |  |  |
| C-SL-P-101 |  | Installation of Irrigation system & Garden soil, protection & Compaction within the planters at level 18 | 25d | 2016-09-20 | 2016-10-19 | C-F-WF-824 SS, C-SL-P-91 SS | 84d | 0d | 63,644.84 |
|  | 14 | **Planting in level 30** |  | 2016-10-20 | 2016-11-17 |  |  |  |  |
| C-SL-P-111 |  | Installation of Irrigation system & Garden soil, protection & Compaction within the planters at level 30 | 25d | 2016-10-20 | 2016-11-17 | C-F-WF-1344 SS, C-SL-P-101 | 84d | 0d | 116,642.27 |
|  | 13 | **Planting in Level 33** |  | 2016-10-20 | 2016-11-17 |  |  |  |  |
| C-SL-P-121 |  | Installation of Irrigation system & Garden soil, protection & Compaction within the planters at level 33 | 25d | 2016-10-20 | 2016-11-17 | C-F-WF-1384 SS, C-SL-P-111 SS | 84d | 78d | 46,908.81 |
|  | 1 | **Installtion of the finishes Affected by the Hoist & Tower Crane** |  | 2016-10-10 | 2017-01-16 |  |  |  |  |
| C-CS-Su-A-CW-1662 |  | Installation of Interior Finishes Affected by the hoist & Crane at Ground Floor | 12d | 2016-10-10 | 2016-10-23 | C-F-NG4-941 SS, C-F-NG4-1261 SS | 11d | 0d |  |
| C-CS-Su-A-CW-1672 |  | Installation of Interior Finishes Affected by the hoist & Crane at Ground Mezzanine Floor | 12d | 2016-10-10 | 2016-10-23 | C-CS-Su-A-CW-1662 SS | 11d | 0d |  |
| C-CS-Su-A-CW-1682 |  | Installation of Interior Finishes Affected by the hoist & Crane at Level 1 | 12d | 2016-10-10 | 2016-10-23 | C-CS-Su-A-CW-1672 SS | 11d | 0d |  |
| C-CS-Su-A-CW-1692 |  | Installation of Interior Finishes Affected by the hoist & Crane at Level 1 Mezzanine | 12d | 2016-10-10 | 2016-10-23 | C-CS-Su-A-CW-1682 SS | 11d | 0d |  |
| C-CS-Su-A-CW-1702 |  | Installation of Interior Finishes Affected by the hoist & Crane at level 2 | 12d | 2016-10-10 | 2016-10-23 | C-CS-Su-A-CW-1692 SS | 11d | 0d |  |
| C-CS-Su-A-CW-1712 |  | Installation of Interior Finishes Affected by the hoist & Crane at level 3 | 12d | 2016-10-10 | 2016-10-23 | C-CS-Su-A-CW-1702 SS | 11d | 0d |  |
| C-CS-Su-A-CW-1722 |  | Installation of Interior Finishes Affected by the hoist & Crane at level 4 | 12d | 2016-10-10 | 2016-10-23 | C-CS-Su-A-CW-1712 SS | 11d | 0d |  |
| C-CS-Su-A-CW-1732 |  | Installation of Interior Finishes Affected by the hoist & Crane at level 5 | 12d | 2016-10-24 | 2016-11-06 | C-CS-Su-A-CW-1722 | 11d | 0d |  |
| C-CS-Su-A-CW-1742 |  | Installation of Interior Finishes Affected by the hoist & Crane at level 6 | 12d | 2016-10-24 | 2016-11-06 | C-CS-Su-A-CW-1732 SS | 11d | 0d |  |
| C-CS-Su-A-CW-1752 |  | Installation of Interior Finishes Affected by the hoist & Crane at level 7 | 12d | 2016-10-24 | 2016-11-06 | C-CS-Su-A-CW-1742 SS | 11d | 0d |  |
| C-CS-Su-A-CW-1762 |  | Installation of Interior Finishes Affected by the hoist & Crane at level 8 | 12d | 2016-10-24 | 2016-11-06 | C-CS-Su-A-CW-1752 SS | 11d | 0d |  |
| C-CS-Su-A-CW-1772 |  | Installation of Interior Finishes Affected by the hoist & Crane at level 9 | 12d | 2016-10-24 | 2016-11-06 | C-CS-Su-A-CW-1762 SS | 11d | 0d |  |
| C-CS-Su-A-CW-1782 |  | Installation of Interior Finishes Affected by the hoist & Crane at level 10 | 12d | 2016-10-24 | 2016-11-06 | C-CS-Su-A-CW-1772 SS | 11d | 0d |  |
| C-CS-Su-A-CW-1792 |  | Installation of Interior Finishes Affected by the hoist & Crane at level 11 | 12d | 2016-10-24 | 2016-11-06 | C-CS-Su-A-CW-1782 SS | 11d | 0d |  |
| C-CS-Su-A-CW-1802 |  | Installation of Interior Finishes Affected by the hoist & Crane at level 12 | 12d | 2016-11-07 | 2016-11-20 | C-CS-Su-A-CW-1792 | 11d | 0d |  |
| C-CS-Su-A-CW-1812 |  | Installation of Interior Finishes Affected by the hoist & Crane at level 13 | 12d | 2016-11-07 | 2016-11-20 | C-CS-Su-A-CW-1802 SS | 11d | 0d |  |
| C-CS-Su-A-CW-1822 |  | Installation of Interior Finishes Affected by the hoist & Crane at level 14 | 12d | 2016-11-07 | 2016-11-20 | C-CS-Su-A-CW-1812 SS | 11d | 0d |  |
| C-CS-Su-A-CW-1832 |  | Installation of Interior Finishes Affected by the hoist & Crane at level 15 | 12d | 2016-11-07 | 2016-11-20 | C-CS-Su-A-CW-1822 SS | 11d | 0d |  |
| C-CS-Su-A-CW-1842 |  | Installation of Interior Finishes Affected by the hoist & Crane at level 16 | 12d | 2016-11-07 | 2016-11-20 | C-CS-Su-A-CW-1832 SS | 11d | 0d |  |
| C-CS-Su-A-CW-1852 |  | Installation of Interior Finishes Affected by the hoist & Crane at level 17 | 12d | 2016-11-07 | 2016-11-20 | C-CS-Su-A-CW-1842 SS | 11d | 0d |  |
| C-CS-Su-A-CW-1862 |  | Installation of Interior Finishes Affected by the hoist & Crane at level 18 | 12d | 2016-11-21 | 2016-12-04 | C-CS-Su-A-CW-1852 | 11d | 0d |  |
| C-CS-Su-A-CW-1872 |  | Installation of Interior Finishes Affected by the hoist & Crane at level 19 | 12d | 2016-11-21 | 2016-12-04 | C-CS-Su-A-CW-1862 SS | 11d | 0d |  |
| C-CS-Su-A-CW-1882 |  | Installation of Interior Finishes Affected by the hoist & Crane at level 20 | 12d | 2016-11-21 | 2016-12-04 | C-CS-Su-A-CW-1872 SS | 11d | 0d |  |
| C-CS-Su-A-CW-1892 |  | Installation of Interior Finishes Affected by the hoist & Crane at level 21 | 12d | 2016-11-21 | 2016-12-04 | C-CS-Su-A-CW-1882 SS | 11d | 0d |  |
| C-CS-Su-A-CW-1902 |  | Installation of Interior Finishes Affected by the hoist & Crane at level 22 | 12d | 2016-11-21 | 2016-12-04 | C-CS-Su-A-CW-1892 SS | 11d | 0d |  |
| C-CS-Su-A-CW-1912 |  | Installation of Interior Finishes Affected by the hoist & Crane at level 23 | 12d | 2016-11-21 | 2016-12-04 | C-CS-Su-A-CW-1902 SS | 11d | 0d |  |
| C-CS-Su-A-CW-1922 |  | Installation of Interior Finishes Affected by the hoist & Crane at level 24 | 12d | 2016-12-05 | 2016-12-19 | C-CS-Su-A-CW-1912 | 16d | 0d |  |
| C-CS-Su-A-CW-1932 |  | Installation of Interior Finishes Affected by the hoist & Crane at Level 25 | 12d | 2016-12-05 | 2016-12-19 | C-CS-Su-A-CW-1922 SS | 16d | 0d |  |
| C-CS-Su-A-CW-1942 |  | Installation of Interior Finishes Affected by the hoist & Crane at Level 26 | 12d | 2016-12-05 | 2016-12-19 | C-CS-Su-A-CW-1932 SS | 16d | 0d |  |
| C-CS-Su-A-CW-1952 |  | Installation of Interior Finishes Affected by the hoist & Crane at Level 27 | 12d | 2016-12-05 | 2016-12-19 | C-CS-Su-A-CW-1942 SS | 16d | 0d |  |
| C-CS-Su-A-CW-1962 |  | Installation of Interior Finishes Affected by the hoist & Crane at Level 28 | 12d | 2016-12-05 | 2016-12-19 | C-CS-Su-A-CW-1952 SS | 16d | 0d |  |
| C-CS-Su-A-CW-1972 |  | Installation of Interior Finishes Affected by the hoist & Crane at level 29 | 12d | 2016-12-05 | 2016-12-19 | C-CS-Su-A-CW-1962 SS | 16d | 0d |  |
| C-CS-Su-A-CW-1982 |  | Installation of Interior Finishes Affected by the hoist & Crane at Level 30 | 12d | 2016-12-20 | 2017-01-02 | C-CS-Su-A-CW-1972 | 16d | 0d |  |
| C-CS-Su-A-CW-1992 |  | Installation of Interior Finishes Affected by the hoist & Crane at Level 31 | 12d | 2016-12-20 | 2017-01-02 | C-CS-Su-A-CW-1982 SS | 16d | 0d |  |
| C-CS-Su-A-CW-2002 |  | Installation of Interior Finishes Affected by the hoist & Crane at Level 32 | 12d | 2016-12-20 | 2017-01-02 | C-CS-Su-A-CW-1992 SS | 16d | 0d |  |
| C-CS-Su-A-CW-2012 |  | Installation of Interior Finishes Affected by the hoist & Crane at Level 33 | 12d | 2016-12-20 | 2017-01-02 | C-CS-Su-A-CW-2002 SS | 16d | 0d |  |
| C-CS-Su-A-CW-2022 |  | Installation of Interior Finishes Affected by the hoist & Crane at Level 34 | 12d | 2016-12-20 | 2017-01-02 | C-CS-Su-A-CW-2012 SS | 16d | 0d |  |
| C-CS-Su-A-CW-2032 |  | Installation of Interior Finishes Affected by the hoist & Crane at Level 35 | 12d | 2016-12-20 | 2017-01-02 | C-CS-Su-A-CW-2022 SS | 16d | 0d |  |
| C-CS-Su-A-CW-2042 |  | Installation of Interior Finishes Affected by the hoist & Crane at Level 36 | 12d | 2016-12-20 | 2017-01-02 | C-CS-Su-A-CW-2032 SS | 16d | 0d |  |
| C-CS-Su-A-CW-2052 |  | Installation of Interior Finishes Affected by the hoist & Crane at Level 37 | 12d | 2016-12-20 | 2017-01-02 | C-CS-Su-A-CW-2042 SS | 16d | 0d |  |
| C-CS-Su-A-CW-2062 |  | Installation of Interior Finishes Affected by the hoist & Crane at Level 38 | 12d | 2016-12-20 | 2017-01-02 | C-CS-Su-A-CW-2052 SS | 16d | 0d |  |
| C-CS-Su-A-CW-2072 |  | Installation of Interior Finishes Affected by the hoist & Crane at Level 39 | 12d | 2016-12-20 | 2017-01-02 | C-CS-Su-A-CW-2062 SS | 16d | 0d |  |
| C-CS-Su-A-CW-2082 |  | Installation of Interior Finishes Affected by the hoist & Crane at Level 40 | 12d | 2016-12-20 | 2017-01-02 | C-CS-Su-A-CW-2072 SS | 24d | 0d |  |
| C-CS-Su-A-CW-2092 |  | Installation of Interior Finishes Affected by the hoist & Crane at Level 41 | 12d | 2016-12-20 | 2017-01-02 | C-CS-Su-A-CW-2082 SS | 24d | 0d |  |
| C-CS-Su-A-CW-2102 |  | Installation of Interior Finishes Affected by the hoist & Crane at Level 42 | 12d | 2017-01-03 | 2017-01-16 | C-CS-Su-A-CW-2092 | 24d | 0d |  |
| C-CS-Su-A-CW-2112 |  | Installation of Interior Finishes Affected by the hoist & Crane at Level 43 | 12d | 2017-01-03 | 2017-01-16 | C-CS-Su-A-CW-2102 SS | 24d | 0d |  |
| C-CS-Su-A-CW-2122 |  | Installation of Interior Finishes Affected by the hoist & Crane at Level 45 | 12d | 2017-01-03 | 2017-01-16 | C-CS-Su-A-CW-2732 SS | 24d | 0d |  |
| C-CS-Su-A-CW-2132 |  | Installation of Interior Finishes Affected by the hoist & Crane at Level 46 | 12d | 2017-01-03 | 2017-01-16 | C-CS-Su-A-CW-2122 SS | 24d | 0d |  |
| C-CS-Su-A-CW-2142 |  | Installation of Interior Finishes Affected by the hoist & Crane at Level 47 | 12d | 2017-01-03 | 2017-01-16 | C-CS-Su-A-CW-2132 SS | 24d | 0d |  |
| C-CS-Su-A-CW-2152 |  | Installation of Interior Finishes Affected by the hoist & Crane at level 48 | 12d | 2017-01-03 | 2017-01-16 | C-CS-Su-A-CW-2142 SS | 24d | 0d |  |
| C-CS-Su-A-CW-2162 |  | Installation of Interior Finishes Affected by the hoist & Crane at Level 49 | 12d | 2017-01-03 | 2017-01-16 | C-CS-Su-A-CW-2152 SS | 24d | 0d |  |

Notes:
- C-SL-P-41: Expenses: 1 2418.52; 2 1678.32; 3 5766.06
- C-SL-P-51: Expenses: 1 2418.52; 2 1678.32; 3 5766.06
- C-SL-P-61: Expenses: 1 2418.52; 2 1678.32; 3 5766.06
- C-SL-P-71: Expenses: 1 2418.52; 2 1678.32; 3 5766.06
- C-SL-P-81: Expenses: 1 2418.52; 2 1678.32; 3 5766.06
- C-SL-P-91: Expenses: 1 2418.52; 2 1678.32; 3 5766.06
- C-SL-P-101: Expenses: 1 34168; 2 23710.8; 3 5766.06
- C-SL-P-111: Expenses: 1 65454.4; 2 45421.8; 3 5766.06
- C-SL-P-121: Expenses: 1 24288.1; 2 16854.6; 3 5766.06

| ID | WBS | Activity | Duration | Start | Finish | Predecessors | Total float | Free float | Cost |
| --- | --- | --- | --- | --- | --- | --- | --- | --- | --- |
| C-CS-Su-A-CW-2172 |  | Installation of Interior Finishes Affected by the hoist & Crane at Level 50 | 12d | 2017-01-03 | 2017-01-16 | C-CS-Su-A-CW-2162 SS | 24d | 0d |  |
| C-CS-Su-A-CW-2182 |  | Installation of Interior Finishes Affected by the hoist & Crane at Level 51 | 12d | 2017-01-03 | 2017-01-16 | C-CS-Su-A-CW-2172 SS | 24d | 1d |  |
| C-CS-Su-A-CW-2732 |  | Installation of Interior Finishes Affected by the hoist & Crane at Level 44 | 12d | 2017-01-03 | 2017-01-16 | C-CS-Su-A-CW-2112 SS | 24d | 0d |  |
|  | 6 | **Lifts & Escalators** |  | 2015-07-04 | 2017-05-23 |  |  |  |  |
|  | 1 | **Hotel Passenger lifts** |  | 2015-08-12 | 2016-09-20 |  |  |  |  |
|  | 1 | **Lower Hotel** |  | 2015-08-12 | 2016-01-09 |  |  |  |  |
| C-LH-L-001 |  | Alignement & Installation of the Bracket from Ground to Level 17 | 25d | 2015-08-12 | 2015-09-09 | P-AF-B-1603, PQ-CS-C-1372, C-CS-S-L18-62, C-CS-L18-211 | 121d | 0d | 154,809.27 |
| C-LH-L-002 |  | Installation of the Rails from Ground to Level 17 | 25d | 2015-09-10 | 2015-10-12 | C-LH-L-001 | 121d | 0d | 464,427.82 |
| C-LH-L-003 |  | Installation of Lifts Equipments | 25d | 2015-10-13 | 2015-11-10 | C-LH-L-002 | 182d | 0d | 1,393,283.46 |
| C-LH-L-004 |  | Installation of Lift Cabine & Doors | 25d | 2015-11-11 | 2015-12-09 | C-LH-L-003 | 226d | 0d | 619,237.09 |
| C-LH-L-005 |  | Installation of Lift Cabine Finishes | 25d | 2015-12-10 | 2016-01-09 | C-LH-L-004 | 226d | 59d | 309,618.55 |
|  | 3 | **Hotel Amenities** |  | 2015-11-22 | 2016-04-17 |  |  |  |  |
| C-HA-L-55 |  | Alignement & Installation of the Bracket from Ground to Level 33 | 25d | 2015-11-22 | 2015-12-21 | C-CS-S-L35-82, P-AF-B-1603, PQ-CS-C-1372, C-LH-L-002 | 87d | 0d | 105,852.49 |
| C-HA-L-65 |  | Installation of the Rails from Ground to Level 33 | 25d | 2015-12-22 | 2016-01-19 | C-HA-L-55 | 87d | 0d | 317,557.48 |
| C-HA-L-75 |  | Installation of Lifts Equipments | 25d | 2016-01-20 | 2016-02-18 | C-HA-L-65, C-LH-L-003 | 123d | 0d | 952,672.45 |
| C-HA-L-85 |  | Installation of Lift Cabine & Doors | 25d | 2016-02-20 | 2016-03-19 | C-HA-L-75 | 167d | 0d | 423,409.98 |
| C-HA-L-95 |  | Installation of Lift Cabine Finishes | 25d | 2016-03-20 | 2016-04-17 | C-HA-L-85, C-LH-L-005 | 167d | 103d | 211,704.99 |
|  | 2 | **Higher Hotel** |  | 2016-04-21 | 2016-09-20 |  |  |  |  |
| C-HH-L-5 |  | Alignement & Installation of the Bracket from Ground to Roof | 25d | 2016-04-21 | 2016-05-19 | C-CS-S-L44-82, P-AF-B-1603, PQ-CS-C-1372, C-HA-L-65, C-CS-L51-371 | 9d | 0d | 326,488.79 |
| C-HH-L-15 |  | Installation of the Rails from Ground to Roof | 25d | 2016-05-21 | 2016-06-18 | C-HH-L-5 | 9d | 0d | 979,466.36 |
| C-HH-L-25 |  | Installation of Lifts Equipments | 25d | 2016-06-19 | 2016-07-20 | C-HH-L-15, C-HA-L-75 | 20d | 0d | 2,938,399.08 |
| C-HH-L-35 |  | Installation of Lift Cabine & Doors | 25d | 2016-07-21 | 2016-08-18 | C-HH-L-25 | 64d | 0d | 1,305,955.15 |
| C-HH-L-45 |  | Installation of Lift Cabine Finishes | 25d | 2016-08-20 | 2016-09-20 | C-HH-L-35, C-HA-L-95 | 64d | 0d | 652,977.57 |
|  | 2 | **Apartment Passenger lifts** |  | 2016-05-21 | 2016-10-20 |  |  |  |  |
| C-AH-L-105 |  | Alignement & Installation of the Bracket from Ground to 33rd floor | 25d | 2016-05-21 | 2016-06-18 | P-AF-B-1643, C-CS-S-L33-102, C-HH-L-15 SS | 9d | 0d | 192,163.63 |
| C-AH-L-115 |  | Installation of the Rails from Ground to 33rd floor | 25d | 2016-06-19 | 2016-07-20 | C-AH-L-105 | 9d | 0d | 576,490.88 |
| C-AH-L-125 |  | Installation of Lifts Equipments | 25d | 2016-07-21 | 2016-08-18 | C-AH-L-115, C-HH-L-25 | 20d | 0d | 1,729,472.63 |
| C-AH-L-135 |  | Installation of Lift Cabine & Doors | 25d | 2016-08-20 | 2016-09-20 | C-AH-L-125 | 64d | 0d | 768,654.5 |
| C-AH-L-145 |  | Installation of Lift Cabine Finishes | 25d | 2016-09-21 | 2016-10-20 | C-AH-L-135, C-HH-L-45 | 64d | 32d | 384,327.25 |

Notes:
- C-LH-L-001: Expenses: 1 154809
- C-LH-L-002: Expenses: 1 464428
- C-LH-L-003: Expenses: 1 1393283
- C-LH-L-004: Expenses: 1 619237
- C-LH-L-005: Expenses: 1 309619
- C-HA-L-55: Expenses: 1 105852
- C-HA-L-65: Expenses: 1 317557
- C-HA-L-75: Expenses: 1 952672
- C-HA-L-85: Expenses: 1 423410
- C-HA-L-95: Expenses: 1 211705
- C-HH-L-5: Expenses: 1 326489
- C-HH-L-15: Expenses: 1 979466
- C-HH-L-25: Expenses: 1 2938399
- C-HH-L-35: Expenses: 1 1305955
- C-HH-L-45: Expenses: 1 652978
- C-AH-L-105: Expenses: 1 192164
- C-AH-L-115: Expenses: 1 576491
- C-AH-L-125: Expenses: 1 1729473
- C-AH-L-135: Expenses: 1 768654
- C-AH-L-145: Expenses: 1 384327

| ID | WBS | Activity | Duration | Start | Finish | Predecessors | Total float | Free float | Cost |
| --- | --- | --- | --- | --- | --- | --- | --- | --- | --- |
|  | 10 | **Service lifts** |  | 2015-07-04 | 2016-10-29 |  |  |  |  |
|  | 2 | **Basement 1 to Ground floor** |  | 2015-07-04 | 2016-10-29 |  |  |  |  |
| C-SL-L-245 |  | Alignement & Installation of the Bracket from Basement 3 to Ground floor | 25d | 2015-07-04 | 2015-08-03 | C-CS-L1-41, P-AF-B-1683 | 308d | 0d | 150,194.77 |
| C-SL-L-255 |  | Installation of the Rails from Basement 3 to Ground floor | 25d | 2015-08-04 | 2015-09-01 | C-SL-L-245 | 308d | 0d | 450,584.3 |
| C-SL-L-265 |  | Installation of Lifts Equipments | 25d | 2015-09-02 | 2015-10-04 | C-SL-L-255 | 308d | 0d | 1,351,752.89 |
| C-SL-L-275 |  | Installation of Lift Cabine & Doors | 25d | 2015-10-05 | 2015-11-02 | C-SL-L-265 | 308d | 276d | 600,779.06 |
| C-SL-L-285 |  | Installation of Lift Cabine Finishes | 25d | 2016-10-01 | 2016-10-29 | C-SL-L-275, C-SL-L-235 | 32d | 0d | 300,389.53 |
|  | 1 | **Basement 3 to third floor** |  | 2015-07-04 | 2016-09-29 |  |  |  |  |
| C-SL-L-195 |  | Alignement & Installation of the Bracket from Basement 3 to level 3 | 25d | 2015-07-04 | 2015-08-03 | C-CS-L4-71, P-AF-B-1683 | 283d | 0d | 49,709.32 |
| C-SL-L-205 |  | Installation of the Rails from Basement 3 to level 3 | 25d | 2015-08-04 | 2015-09-01 | C-SL-L-195 | 283d | 0d | 149,127.97 |
| C-SL-L-215 |  | Installation of Lifts Equipments | 25d | 2015-09-02 | 2015-10-04 | C-SL-L-205 | 283d | 0d | 447,383.91 |
| C-SL-L-225 |  | Installation of Lift Cabine & Doors | 25d | 2015-10-05 | 2015-11-02 | C-SL-L-215 | 283d | 251d | 198,837.29 |
| C-SL-L-235 |  | Installation of Lift Cabine Finishes | 25d | 2016-08-28 | 2016-09-29 | C-SL-L-225, C-SL-L-95 | 32d | 0d | 99,418.65 |
|  | 3 | **Basement 3 to Roof** |  | 2016-03-31 | 2016-08-27 |  |  |  |  |
| C-SL-L-155 |  | Alignement & Installation of the Bracket from Basement 3 to Roof | 25d | 2016-03-31 | 2016-04-28 | P-AF-B-1683, C-CS-S-L44-82 | 2d | 0d | 16,539.45 |
| C-SL-L-165 |  | Installation of the Rails from Basement 3 to Roof | 25d | 2016-04-30 | 2016-05-28 | C-SL-L-155 | 2d | 0d | 49,618.36 |
| C-SL-L-175 |  | Installation of Lifts Equipments | 25d | 2016-05-29 | 2016-06-26 | C-SL-L-165 | 32d | 0d | 148,855.07 |
| C-SL-L-185 |  | Installation of Lift Cabine & Doors | 25d | 2016-06-27 | 2016-07-28 | C-SL-L-175 | 32d | 0d | 66,157.81 |
| C-SL-L-95 |  | Installation of Lift Cabine Finishes | 25d | 2016-07-30 | 2016-08-27 | C-SL-L-185 | 32d | 0d | 33,078.9 |
|  | 4 | **Firemans lifts/ Freight lifts** |  | 2016-05-29 | 2016-11-27 |  |  |  |  |
| C-FL-L-205 |  | Alignement & Installation of the Bracket from Ground to Roof | 25d | 2016-05-29 | 2016-06-26 | P-AF-B-1723, C-CS-S-L44-82, C-SL-L-165 | 2d | 0d | 263,680.22 |
| C-FL-L-215 |  | Installation of the Rails from Ground to Roof | 25d | 2016-06-27 | 2016-07-28 | C-FL-L-205 | 2d | 0d | 791,040.65 |
| C-FL-L-225 |  | Installation of Lifts Equipments | 25d | 2016-07-30 | 2016-08-27 | C-FL-L-215 | 57d | 0d | 2,373,121.96 |
| C-FL-L-235 |  | Installation of Lift Cabine & Doors | 25d | 2016-08-28 | 2016-09-29 | C-FL-L-225 | 57d | 25d | 1,054,720.87 |
| C-FL-L-245 |  | Installation of Lift Cabine Finishes | 25d | 2016-10-30 | 2016-11-27 | C-FL-L-235, C-AH-L-145 FF, C-SL-L-95, C-SL-L-235, C-SL-L-285 | 32d | 0d | 527,360.43 |

Notes:
- C-SL-L-245: Expenses: 1 150195
- C-SL-L-255: Expenses: 1 450584
- C-SL-L-265: Expenses: 1 1351753
- C-SL-L-275: Expenses: 1 600779
- C-SL-L-285: Expenses: 1 300390
- C-SL-L-195: Expenses: 1 49709.3
- C-SL-L-205: Expenses: 1 149128
- C-SL-L-215: Expenses: 1 447384
- C-SL-L-225: Expenses: 1 198837
- C-SL-L-235: Expenses: 1 99418.6
- C-SL-L-155: Expenses: 1 16539.5
- C-SL-L-165: Expenses: 1 49618.4
- C-SL-L-175: Expenses: 1 148855
- C-SL-L-185: Expenses: 1 66157.8
- C-SL-L-95: Expenses: 1 33078.9
- C-FL-L-205: Expenses: 1 263680
- C-FL-L-215: Expenses: 1 791041
- C-FL-L-225: Expenses: 1 2373122
- C-FL-L-235: Expenses: 1 1054721
- C-FL-L-245: Expenses: 1 527360

| ID | WBS | Activity | Duration | Start | Finish | Predecessors | Total float | Free float | Cost |
| --- | --- | --- | --- | --- | --- | --- | --- | --- | --- |
|  | 5 | **Garbage lift** |  | 2016-07-30 | 2016-12-27 |  |  |  |  |
| C-GL-L-255 |  | Alignement & Installation of the Bracket from Basement 3 to Roof | 25d | 2016-07-30 | 2016-08-27 | P-AF-B-1763, C-CS-S-L44-82, C-FL-L-215 | 32d | 0d | 110,524.89 |
| C-GL-L-265 |  | Installation of the Rails from Ground to Roof | 25d | 2016-08-28 | 2016-09-29 | C-GL-L-255 | 32d | 0d | 331,574.67 |
| C-GL-L-275 |  | Installation of Lifts Equipments | 25d | 2016-10-01 | 2016-10-29 | C-GL-L-265 | 32d | 0d | 994,724.01 |
| C-GL-L-285 |  | Installation of Lift Cabine & Doors | 25d | 2016-10-30 | 2016-11-27 | C-GL-L-275 | 32d | 0d | 442,099.56 |
| C-GL-L-295 |  | Installation of Lift Cabine Finishes | 25d | 2016-11-28 | 2016-12-27 | C-GL-L-285, C-FL-L-245 | 32d | 0d | 221,049.78 |
|  | 6 | **Panaromic Lift** |  | 2016-07-30 | 2016-12-27 |  |  |  |  |
| C-PL-L-305 |  | Alignement & Installation of the Bracket from Ground to Level 3 | 25d | 2016-07-30 | 2016-08-27 | P-AF-B-1803, C-CS-S-L6-2, C-AH-L-115, C-FL-L-215 | 2d | 0d | 33,492.39 |
| C-PL-L-315 |  | Installation of the Rails from Ground to Level 3 | 25d | 2016-08-28 | 2016-09-29 | C-PL-L-305 | 2d | 0d | 100,477.17 |
| C-PL-L-325 |  | Installation of Lifts Equipments | 25d | 2016-10-01 | 2016-10-29 | C-PL-L-315 | 32d | 0d | 301,431.52 |
| C-PL-L-335 |  | Installation of Lift Cabine & Doors | 25d | 2016-10-30 | 2016-11-27 | C-PL-L-325 | 32d | 0d | 133,969.56 |
| C-PL-L-345 |  | Installation of Lift Cabine Finishes | 25d | 2016-11-28 | 2016-12-27 | C-PL-L-335, C-GL-L-295 FF | 32d | 25d | 66,984.78 |
|  | 3 | **Amenities Lifts** |  | 2016-10-01 | 2017-03-26 |  |  |  |  |
|  | 7 | **Basement 3 to 33rd floor** |  | 2016-10-01 | 2017-02-25 |  |  |  |  |
| C-AL-L-355 |  | Alignement & Installation of the Bracket from Ground to 33rd floor | 25d | 2016-10-01 | 2016-10-29 | P-AF-B-1843, C-PL-L-315, C-CS-L33-121 | 2d | 0d | 187,846.83 |
| C-AL-L-365 |  | Installation of the Rails from Ground to 33rd floor | 25d | 2016-10-30 | 2016-11-27 | C-AL-L-355 | 2d | 0d | 563,540.49 |
| C-AL-L-375 |  | Installation of Lifts Equipments | 25d | 2016-11-28 | 2016-12-27 | C-AL-L-365 | 7d | 0d | 1,690,621.46 |
| C-AL-L-385 |  | Installation of Lift Cabine & Doors | 25d | 2016-12-28 | 2017-01-25 | C-AL-L-375 | 7d | 0d | 751,387.32 |
| C-AL-L-395 |  | Installation of Lift Cabine Finishes | 25d | 2017-01-26 | 2017-02-25 | C-AL-L-385, C-PL-L-345 | 7d | 0d | 375,693.66 |
|  | 1 | **Basement 3 to 50th floor** |  | 2016-10-30 | 2017-03-26 |  |  |  |  |
| C-AL-L-405 |  | Alignement & Installation of the Bracket from Ground to Roof | 25d | 2016-10-30 | 2016-11-27 | C-CS-L51-371, P-AF-B-1843, C-AL-L-355 | 7d | 0d | 218,097.49 |
| C-AL-L-415 |  | Installation of the Rails from Ground to Roof | 25d | 2016-11-28 | 2016-12-27 | C-AL-L-405, C-AL-L-365 | 7d | 0d | 654,292.46 |
| C-AL-L-425 |  | Installation of Lifts Equipments | 25d | 2016-12-28 | 2017-01-25 | C-AL-L-415, C-AL-L-375 | 7d | 0d | 1,962,877.38 |
| C-AL-L-435 |  | Installation of Lift Cabine & Doors | 25d | 2017-01-26 | 2017-02-25 | C-AL-L-425, C-AL-L-385 | 7d | 0d | 872,389.95 |
| C-AL-L-445 |  | Installation of Lift Cabine Finishes | 25d | 2017-02-26 | 2017-03-26 | C-AL-L-435, C-AL-L-395 | 7d | 5d | 436,194.97 |

Notes:
- C-GL-L-255: Expenses: 1 110525
- C-GL-L-265: Expenses: 1 331575
- C-GL-L-275: Expenses: 1 994724
- C-GL-L-285: Expenses: 1 442100
- C-GL-L-295: Expenses: 1 221050
- C-PL-L-305: Expenses: 1 33492.4
- C-PL-L-315: Expenses: 1 100477
- C-PL-L-325: Expenses: 1 301432
- C-PL-L-335: Expenses: 1 133970
- C-PL-L-345: Expenses: 1 66984.8
- C-AL-L-355: Expenses: 1 187847
- C-AL-L-365: Expenses: 1 563540
- C-AL-L-375: Expenses: 1 1690621
- C-AL-L-385: Expenses: 1 751387
- C-AL-L-395: Expenses: 1 375694
- C-AL-L-405: Expenses: 1 218097
- C-AL-L-415: Expenses: 1 654292
- C-AL-L-425: Expenses: 1 1962877
- C-AL-L-435: Expenses: 1 872390
- C-AL-L-445: Expenses: 1 436195

| ID | WBS | Activity | Duration | Start | Finish | Predecessors | Total float | Free float | Cost |
| --- | --- | --- | --- | --- | --- | --- | --- | --- | --- |
|  | 8 | **Hydraulic Lift** |  | 2016-11-28 | 2017-04-24 |  |  |  |  |
| C-HL-L-405 |  | Alignement & Installation of the Bracket | 25d | 2016-11-28 | 2016-12-27 | P-AF-B-1883, C-CS-S-L1-01, C-AL-L-365, C-CS-GF-21 | 2d | 0d | 8,931.3 |
| C-HL-L-415 |  | Installation of the Rails | 25d | 2016-12-28 | 2017-01-25 | C-HL-L-405 | 2d | 0d | 26,793.91 |
| C-HL-L-425 |  | Installation of Lifts Equipments | 25d | 2017-01-26 | 2017-02-25 | C-HL-L-415 | 2d | 0d | 80,381.74 |
| C-HL-L-435 |  | Installation of Lift Cabine & Doors | 25d | 2017-02-26 | 2017-03-26 | C-HL-L-425 | 2d | 0d | 35,725.22 |
| C-HL-L-445 |  | Installation of Lift Cabine Finishes | 25d | 2017-03-27 | 2017-04-24 | C-HL-L-435, P-AF-B-1883, C-AL-L-395 | 2d | 0d | 17,862.61 |
|  | 9 | **Escalators** |  | 2017-01-26 | 2017-05-23 |  |  |  |  |
| C-E-L-455 |  | Installation of the Bracket from Ground to Level 2 | 25d | 2017-01-26 | 2017-02-25 | P-AF-B-1923, C-HL-L-415, SD-CS-B3-1032, C-CS-L3-61 | 2d | 0d | 61,055.39 |
| C-E-L-465 |  | Installation of Escalators from level 1 Mezz to level 2 | 25d | 2017-02-26 | 2017-03-26 | C-E-L-455 | 2d | 0d | 402,965.56 |
| C-E-L-475 |  | Installation of Escalators from level 1 to level 1Mezz | 25d | 2017-03-27 | 2017-04-24 | C-E-L-465 | 2d | 0d | 402,965.56 |
| C-E-L-485 |  | Installation of Escalators from Ground level to level 1 | 25d | 2017-04-25 | 2017-05-23 | C-E-L-475, C-HL-L-445 | 2d | 0d | 293,065.86 |
|  | 7 | **Specialistes & Specialist Equipments** |  | 2015-09-12 | 2016-11-26 |  |  |  |  |
|  | 1 | **Linen Chute** |  | 2016-03-31 | 2016-07-28 |  |  |  |  |
| C-LH-L-495 |  | Installation of Chute Support (Angle Bar with Anchor Bolt in all floors) | 25d | 2016-03-31 | 2016-04-28 | C-CS-S-L44-82, PQ-CS-C-1352, SD-CS-B3-1052, P-MEP-P-5283 | 24d | 0d | 31,476.47 |
| C-LH-L-515 |  | Installation of Conduits, FireFighting Pipes & wires from B2 to Upper Roof | 25d | 2016-04-12 | 2016-05-10 | C-LH-L-495 SS+10d | 39d | 15d | 31,476.43 |
| C-LH-L-505 |  | Installation of Chute Pipe in all floors | 25d | 2016-04-30 | 2016-05-28 | C-LH-L-495 | 24d | 0d | 314,764.31 |
| C-LH-L-525 |  | Installation of sprinkler head & Lights in all floors | 25d | 2016-05-29 | 2016-06-26 | C-LH-L-505, C-LH-L-515 | 24d | 0d | 31,476.43 |
| C-LH-L-545 |  | Installation of Flexible Duct from Roof till Upper Roof | 25d | 2016-05-29 | 2016-06-26 | C-LH-L-505 | 206d | 0d | 31,476.43 |
| C-LH-L-535 |  | Installation of Chute doors in all floors | 25d | 2016-06-27 | 2016-07-28 | C-LH-L-525 | 24d | 13d | 125,905.72 |
| C-LH-L-555 |  | Installation of Chute Extraction Fan | 25d | 2016-06-27 | 2016-07-28 | C-LH-L-545 | 206d | 176d | 31,476.43 |
|  | 2 | **BMU - Building Maintenance Unit** |  | 2015-09-12 | 2016-08-13 |  |  |  |  |
| C-LH-L-565 |  | Installation of BMU Rail & Hangers from ground to 4th floor | 20d | 2015-09-12 | 2015-10-07 | P-MEP-P-5323 SS+80d, PQ-CS-C-1392, SD-CS-B3-1072, C-F-NG4-011 SS, C-F-NG4-611 FF | 53d | 3d | 39,130.85 |
| C-LH-L-575 |  | Installation of BMU Rail & Hangers from 5th to 10th floor | 20d | 2015-10-14 | 2015-11-05 | C-LH-L-565, C-F-NG4-41 SS, C-F-NG4-631 FF | 53d | 3d | 39,130.85 |
| C-LH-L-585 |  | Installation of BMU Rail & Hangers from 11th to 16th floor | 20d | 2015-11-12 | 2015-12-05 | C-LH-L-575, C-F-NG4-81 SS, C-F-NG4-651 FF | 53d | 3d | 39,130.85 |
| C-LH-L-595 |  | Installation of BMU Rail & Hangers from 17th to 22nd floor | 20d | 2015-12-12 | 2016-01-04 | C-LH-L-585, C-F-NG4-121 SS, C-F-NG4-671 FF | 53d | 5d | 39,130.85 |
| C-LH-L-605 |  | Installation of BMU Rail & Hangers from 23rd to 29th floor | 20d | 2016-01-11 | 2016-02-02 | C-LH-L-595, C-F-NG4-161 SS, C-F-NG4-691 FF | 53d | 23d | 39,130.85 |
| C-LH-L-615 |  | Installation of BMU Rail & Hangers from 30th to 36th floor | 20d | 2016-03-02 | 2016-03-24 | C-LH-L-605, C-F-NG4-201 SS, C-F-NG4-721 FF | 35d | 5d | 39,130.85 |
| C-LH-L-625 |  | Installation of BMU Rail & Hangers from 37th to 43rd floor | 20d | 2016-03-31 | 2016-04-23 | C-LH-L-615, C-F-NG4-241 SS, C-F-NG4-731 FF | 35d | 10d | 39,130.85 |
| C-LH-L-635 |  | Installation of BMU Rail & Hangers from 44th to roof level | 20d | 2016-05-05 | 2016-05-28 | C-LH-L-625, C-F-NG4-271 SS, C-F-NG4-751 FF | 30d | 25d | 39,130.85 |
| C-LH-L-645 |  | Installation of BMU 01 at Top Roof | 25d | 2016-05-15 | 2016-06-12 | C-SS-RCS-414, P-MEP-P-5323 | 11d | 0d | 1,862,234.86 |
| C-LH-L-675 |  | Installation of BMU 02 at Top Roof | 25d | 2016-06-13 | 2016-07-14 | C-LH-L-645, P-MEP-P-5323 | 11d | 0d | 1,862,234.86 |
| C-LH-L-685 |  | Installation of BMU 03 at Top Roof | 25d | 2016-07-16 | 2016-08-13 | C-LH-L-675, P-MEP-P-5323 | 11d | 0d | 888,793.91 |

Notes:
- C-HL-L-405: Expenses: 1 8931.3
- C-HL-L-415: Expenses: 1 26793.9
- C-HL-L-425: Expenses: 1 80381.7
- C-HL-L-435: Expenses: 1 35725.2
- C-HL-L-445: Expenses: 1 17862.6
- C-E-L-455: Expenses: 1 61055.4
- C-E-L-465: Expenses: 1 402966
- C-E-L-475: Expenses: 1 402966
- C-E-L-485: Expenses: 1 293066
- C-LH-L-495: Expenses: 1 31476.5
- C-LH-L-515: Expenses: 1 31476.4
- C-LH-L-505: Expenses: 1 314764
- C-LH-L-525: Expenses: 1 31476.4
- C-LH-L-545: Expenses: 1 31476.4
- C-LH-L-535: Expenses: 1 125906
- C-LH-L-555: Expenses: 1 31476.4
- C-LH-L-565: Expenses: 1 39130.8
- C-LH-L-575: Expenses: 1 39130.8
- C-LH-L-585: Expenses: 1 39130.8
- C-LH-L-595: Expenses: 1 39130.8
- C-LH-L-605: Expenses: 1 39130.8
- C-LH-L-615: Expenses: 1 39130.8
- C-LH-L-625: Expenses: 1 39130.8
- C-LH-L-635: Expenses: 1 39130.8
- C-LH-L-645: Expenses: 1 1862235
- C-LH-L-675: Expenses: 1 1862235
- C-LH-L-685: Expenses: 1 888794

| ID | WBS | Activity | Duration | Start | Finish | Predecessors | Total float | Free float | Cost |
| --- | --- | --- | --- | --- | --- | --- | --- | --- | --- |
|  | 3 | **Swimming Pools** |  | 2016-03-02 | 2016-11-26 |  |  |  |  |
|  | 4 | **Main Resident Pool** |  | 2016-03-02 | 2016-08-10 |  |  |  |  |
| C-SP-MRP-031 |  | Installation of Secondary Walls & MEP first fix | 25d | 2016-03-02 | 2016-03-30 | C-SP-MRP-021 | 2d | 0d | 84,074.19 |
| C-SP-MRP-041 |  | Screed & Plaster Works | 20d | 2016-03-31 | 2016-04-23 | C-SP-MRP-031 | 99d | 0d | 16,814.84 |
| C-SP-MRP-051 |  | Installation of Waterproofing membrane at resident pool | 8d | 2016-04-24 | 2016-05-02 | C-SP-MRP-041 | 99d | 0d | 37,466.44 |
| C-SP-MRP-061 |  | Installation of MEP second fix | 25d | 2016-05-03 | 2016-05-31 | C-SP-MRP-051 | 99d | 0d | 84,074.19 |
| C-SP-MRP-071 |  | Installation of Floor & Wall Tilling | 25d | 2016-06-01 | 2016-06-29 | C-SP-MRP-061 | 99d | 0d | 168,148.37 |
| C-SP-MRP-081 |  | Installation of MEP final fix | 25d | 2016-06-30 | 2016-08-01 | C-SP-MRP-071, P-MEP-P-5363 | 99d | 0d | 168,148.37 |
| C-SP-MRP-091 |  | Installation of Ladder & Grating | 8d | 2016-08-02 | 2016-08-10 | C-SP-MRP-081 | 127d | 17d | 28,024.73 |
|  | 1 | **Children Pool & Shallow water fountain** |  | 2016-03-02 | 2016-09-08 |  |  |  |  |
| C-SP-MRP-101 |  | Installation of MEP first fix | 25d | 2016-03-02 | 2016-03-30 | C-SP-MRP-91 SS | 136d | 20d | 24,629.43 |
| C-SP-MRP-91 |  | Installation of secondary walls | 25d | 2016-03-02 | 2016-03-30 | SD-CS-B3-1112, C-SP-MRP-031 SS | 2d | 0d | 49,258.85 |
| C-SP-MRP-111 |  | Screed & Plaster Works | 8d | 2016-04-24 | 2016-05-02 | C-SP-MRP-101, C-SP-MRP-041 | 116d | 0d | 14,777.66 |
| C-SP-MRP-121 |  | Installation of Waterproofing membrane at children pool | 8d | 2016-05-03 | 2016-05-11 | C-SP-MRP-111, C-SP-MRP-051 | 116d | 17d | 18,603.95 |
| C-SP-MRP-131 |  | Installation of MEP second fix | 25d | 2016-06-01 | 2016-06-29 | C-SP-MRP-121, C-SP-MRP-061 | 99d | 0d | 73,888.28 |
| C-SP-MRP-141 |  | Installation of Floor & Wall Tilling | 25d | 2016-06-30 | 2016-08-01 | C-SP-MRP-131, C-SP-MRP-071 | 99d | 0d | 147,776.55 |
| C-SP-MRP-151 |  | Installation of MEP final fix | 25d | 2016-08-02 | 2016-08-30 | C-SP-MRP-141, P-MEP-P-5403, C-SP-MRP-081 | 99d | 0d | 147,776.55 |
| C-SP-MRP-161 |  | Installation of Ladder & Grating | 8d | 2016-08-31 | 2016-09-08 | C-SP-MRP-151, C-SP-MRP-091 | 110d | 13d | 24,629.43 |
|  | 2 | **Spa Pools** |  | 2016-03-02 | 2016-11-26 |  |  |  |  |
| C-SP-MRP-171 |  | Installation of secondary walls | 25d | 2016-03-02 | 2016-03-30 | C-CS-L3-61, SD-CS-B3-1132, C-SP-MRP-91 SS | 2d |  | 32,839.17 |
| C-SP-MRP-181 |  | Installation of MEP first fix | 12d | 2016-08-02 | 2016-08-15 | C-SP-MRP-171, C-SP-MRP-151 SS, C-SP-MRP-101 | 99d | 0d | 16,419.59 |
| C-SP-MRP-191 |  | Screed & Plaster Works | 8d | 2016-08-16 | 2016-08-24 | C-SP-MRP-181, C-SP-MRP-111 | 99d | 0d | 9,851.75 |
| C-SP-MRP-201 |  | Installation of Waterproofing material At SPA pool | 8d | 2016-08-25 | 2016-09-03 | C-SP-MRP-191, C-SP-MRP-121 | 99d | 0d | 8,600.21 |
| C-SP-MRP-211 |  | Installation of MEP second fix | 18d | 2016-09-04 | 2016-09-28 | C-SP-MRP-201, C-SP-MRP-131 | 99d | 0d | 49,258.76 |
| C-SP-MRP-221 |  | Installation of Floor & Wall Tilling | 25d | 2016-09-29 | 2016-10-27 | C-SP-MRP-211, C-SP-MRP-161, C-SP-MRP-141 | 99d | 0d | 98,517.52 |
| C-SP-MRP-231 |  | Installation of MEP final fix | 25d | 2016-10-29 | 2016-11-26 | C-SP-MRP-221, P-MEP-P-5443, C-SP-MRP-151 | 99d | 0d | 98,517.52 |
| C-SP-MRP-241 |  | Installation of Ladder & Grating | 8d | 2016-10-29 | 2016-11-06 | C-SP-MRP-231 SS, C-SP-MRP-161 | 99d | 0d | 16,419.59 |

Notes:
- C-SP-MRP-031: Expenses: 1 84074.2
- C-SP-MRP-041: Expenses: 1 16814.8
- C-SP-MRP-051: Expenses: SW 26256.5; 2 11209.9
- C-SP-MRP-061: Expenses: 1 84074.2
- C-SP-MRP-071: Expenses: 1 168148
- C-SP-MRP-081: Expenses: 1 168148
- C-SP-MRP-091: Expenses: 1 28024.7
- C-SP-MRP-101: Expenses: 1 24629.4
- C-SP-MRP-91: Expenses: 1 49258.8
- C-SP-MRP-111: Expenses: 1 14777.7
- C-SP-MRP-121: Expenses: SW 8752.18; 1 9851.77
- C-SP-MRP-131: Expenses: 1 73888.3
- C-SP-MRP-141: Expenses: 1 147777
- C-SP-MRP-151: Expenses: 1 147777
- C-SP-MRP-161: Expenses: 1 24629.4
- C-SP-MRP-171: Expenses: 1 32839.2
- C-SP-MRP-181: Expenses: 1 16419.6
- C-SP-MRP-191: Expenses: 1 9851.75
- C-SP-MRP-201: Expenses: SPW 2032.38; 1 6567.83
- C-SP-MRP-211: Expenses: 1 49258.8
- C-SP-MRP-221: Expenses: 1 98517.5
- C-SP-MRP-231: Expenses: 1 98517.5
- C-SP-MRP-241: Expenses: 1 16419.6

| ID | WBS | Activity | Duration | Start | Finish | Predecessors | Total float | Free float | Calendar | Cost |
| --- | --- | --- | --- | --- | --- | --- | --- | --- | --- | --- |
|  | 8 | **External Works & Landscaping** |  | 2015-07-29 | 2017-04-08 |  |  |  |  |  |
|  | 4 | **Guardhouse** |  | 2015-07-29 | 2016-07-12 |  |  |  |  |  |
| C-EX-G-001 |  | FRC Columns from Ground to Roof | 4d | 2015-07-29 | 2015-08-02 | C-CS-Su-B-GF-01 | 196d | 0d |  | 3,308.71 |
| C-EX-G-002 |  | FRC Roof Slab - Roof level | 8d | 2015-08-03 | 2015-08-11 | C-EX-G-001 | 196d | 143d |  | 13,234.83 |
| C-EX-G-012 |  | Block Work | 4d | 2016-04-14 | 2016-04-18 | C-EX-G-002, C-F-P-1563 | 298d | 0d |  | 13,307.19 |
| C-EX-G-022 |  | Installation of MEP first fix | 6d | 2016-04-19 | 2016-04-25 | C-EX-G-012 | 298d | 0d |  |  |
| C-EX-G-032 |  | Water proofing & Plaster Work | 3d | 2016-04-26 | 2016-04-28 | C-EX-G-022 | 298d | 0d |  | 4,600.85 |
| C-EX-G-062 |  | Installation of MEP second fix | 8d | 2016-04-30 | 2016-05-08 | C-EX-G-032 | 298d | 0d |  |  |
| C-EX-G-072 |  | Installation of Ceiling & Floor FInishes | 8d | 2016-05-09 | 2016-05-17 | C-EX-G-062 | 298d | 0d |  | 6,741.67 |
| C-EX-G-092 |  | Installation of windows and doors | 6d | 2016-05-18 | 2016-05-24 | C-EX-G-072 | 298d | 0d |  | 8,416.22 |
| C-EX-G-052 |  | Installation of Internal Wall Finishes | 8d | 2016-05-25 | 2016-06-02 | C-EX-G-092 | 298d | 28d |  | 1,623.22 |
| C-EX-G-042 |  | Installation of External Wall Finishes & Roof Canopy | 8d | 2016-06-27 | 2016-07-09 | C-EX-G-032, C-F-NG4-761 | 270d | 0d |  | 25,659.78 |
| C-EX-G-082 |  | Installation of MEP Final fix & Furniture | 3d | 2016-07-10 | 2016-07-12 | C-EX-G-052, C-EX-G-042 | 270d |  |  | 8,233.26 |
|  | 3 | **Water Fountain** |  | 2016-04-06 | 2016-07-17 |  |  |  |  |  |
| C-EX-WF-001 |  | Formwork, Reinforcement & Concrete for the fountain | 15d | 2016-04-06 | 2016-04-23 | C-CS-Su-B-GF-01, SD-CS-B3-1192, C-CS-L51-341 | 265d | 0d |  | 33,384.67 |
| C-EX-WF-002 |  | Horizontal & Vertical Waterproofing | 6d | 2016-04-24 | 2016-04-30 | C-EX-WF-001, PQ-CS-C-1472 | 265d | 0d |  | 8,419.88 |
| C-EX-WF-003 |  | Pipes, Fittings, valves, controllers & accessories for the water fountain | 25d | 2016-05-01 | 2016-05-29 | C-EX-WF-002 | 265d | 24d |  | 571,169.87 |
| C-EX-WF-004 |  | Wall & Floor finishes | 15d | 2016-06-27 | 2016-07-17 | C-EX-WF-003, C-F-NG4-761, P-MEP-P-5563 | 241d | 0d |  | 64,384.08 |
| C-EX-WF-005 |  | Installation of Handrails | 5d | 2016-07-03 | 2016-07-11 | C-EX-WF-004 SS+5d | 241d | 196d |  | 18,524.83 |
|  | 2 | **External Works** |  | 2016-06-27 | 2017-04-08 |  |  |  |  |  |
| C-EW-L-101 |  | Installation of Waterproofing & Woven geotextile membrane | 25d | 2016-06-27 | 2016-07-28 | C-F-NG4-761, C-F-B1-RR-31, SD-CS-B3-1172 | 67d | 0d |  | 660,623.72 |
| C-EW-001 |  | Screed & Filling Works | 25d | 2016-07-30 | 2016-08-27 | C-EW-L-101 | 67d | 0d |  | 174,761.19 |
| C-EW-271 |  | Installation of MEP Fisrt & Second Fix | 25d | 2016-07-30 | 2016-08-27 | C-EW-001 SS, C-EW-001 FF | 106d | 55d | *APB - 6 D week + Qatar Holiday |  |
| C-EW-301 |  | Works Outside the boundary (Scrred, FIlling, Kerbing & Paving) | 25d | 2016-08-28 | 2016-09-29 | C-EW-001 | 67d | 62d |  | 1,002,503.43 |
| C-EW-011 |  | Installation of Granite Paving | 25d | 2016-10-31 | 2016-11-28 | C-EW-001, P-MEP-P-5483, C-EW-271, C-F-B1-RR-91 FF, M-ME-41 FF | 50d | 0d |  | 3,525,728.02 |
| C-EW-021 |  | Installaion of Granite Cladding | 25d | 2016-11-29 | 2016-12-28 | C-EW-011, P-MEP-P-5523, PQ-CS-C-1452 | 50d | 0d |  | 1,078,831.22 |
| C-EW-281 |  | Installation of MEP final Fix & Lighting Fixtures | 25d | 2016-12-29 | 2017-01-26 | C-EW-021, C-EW-011, P-MEP-E-4923 | 106d | 61d | *APB - 6 D week + Qatar Holiday | 761,420.2 |
| C-EW-031 |  | Installation of Granite Kerbing | 25d | 2017-01-04 | 2017-02-01 | C-EW-021, C-F-B1-RR-80 | 45d | 0d |  | 455,573.6 |
| C-EW-31 |  | Installation of Threshold Kerbs | 25d | 2017-02-02 | 2017-03-04 | C-EW-031 | 70d | 25d |  | 2,634.64 |
| C-EW-51 |  | Installation of External Ballustrades & Railing | 25d | 2017-02-02 | 2017-03-04 | C-EW-011, C-EW-031, C-EX-WF-005 FF | 45d | 0d |  | 166,723.47 |
| C-EW-291 |  | Installation of Gartings & access panels | 25d | 2017-03-05 | 2017-04-02 | C-EW-51, C-EW-301 | 45d | 0d |  | 298,115.99 |
| C-EW-41 |  | Installation of Flag Poles | 5d | 2017-04-03 | 2017-04-08 | C-EW-31, C-EW-281 FF, C-EW-291 | 45d |  |  | 156,422.75 |

Notes:
- C-EX-G-001: Expenses: 1 3308.71
- C-EX-G-002: Expenses: 1 13234.8
- C-EX-G-012: Expenses: 1 13307.2
- C-EX-G-032: Expenses: 1 4600.85
- C-EX-G-072: Expenses: 1 6741.67
- C-EX-G-092: Expenses: 1 8416.22
- C-EX-G-052: Expenses: 1 1623.22
- C-EX-G-042: Expenses: 1 21377.1; 2 4282.67
- C-EX-G-082: Expenses: 1 8233.26
- C-EX-WF-001: Expenses: 1 33384.7
- C-EX-WF-002: Expenses: 1 8419.88
- C-EX-WF-003: Expenses: 1 313194; 2 257975
- C-EX-WF-004: Expenses: 1 64384.1
- C-EX-WF-005: Expenses: 1 18524.8
- C-EW-L-101: Expenses: W 603990; 2 56633.8
- C-EW-001: Expenses: 1 174761
- C-EW-301: Expenses: 1 1002503
- C-EW-011: Expenses: 1 3525728
- C-EW-021: Expenses: 1 1078831
- C-EW-281: Expenses: 1 761420
- C-EW-031: Expenses: 1 455574
- C-EW-31: Expenses: 1 2634.64
- C-EW-51: Expenses: 1 166723
- C-EW-291: Expenses: 1 298116
- C-EW-41: Expenses: 1 156423

| ID | WBS | Activity | Duration | Start | Finish | Predecessors | Total float | Free float | Cost |
| --- | --- | --- | --- | --- | --- | --- | --- | --- | --- |
|  | 1 | **Landscaping** |  | 2016-06-27 | 2017-01-29 |  |  |  |  |
| C-EW-L-51 |  | Installation of Planter Boxes | 25d | 2016-06-27 | 2016-07-28 | C-F-NG4-761, PQ-CS-C-1432, SD-CS-B3-1152 | 204d | 0d | 81,920.92 |
| C-EW-L-61 |  | Installation of Irrigation System | 15d | 2016-07-30 | 2016-08-15 | C-EW-L-51, P-MEP-P-5883 | 204d | 0d | 127,661.24 |
| C-EW-L-71 |  | filling Soil within the planter boxes | 10d | 2016-08-16 | 2016-08-27 | C-EW-L-61 | 204d | 101d | 228,264.33 |
| C-EW-L-81 |  | Planting Trees & Plants | 15d | 2016-12-29 | 2017-01-15 | C-EW-L-71, P-MEP-P-5683, P-MEP-P-5643, C-EW-021, C-EW-011 | 103d | 0d | 144,722.38 |
| C-EW-L-91 |  | Installation of the Grass | 12d | 2017-01-16 | 2017-01-29 | C-EW-L-81, P-MEP-P-5723 | 103d |  | 97,827.57 |
|  | 7 | **Roads & Signage** |  | 2016-06-27 | 2017-03-21 |  |  |  |  |
| C-EX-R-001 |  | Screed Works | 20d | 2016-06-27 | 2016-07-23 | C-F-NG4-761, C-F-B1-RR-31 | 146d | 136d | 58,253.73 |
| C-EX-R-002 |  | Installation of Kerbs & Pavings | 20d | 2017-01-04 | 2017-01-26 | C-EX-R-001, P-AF-B-1483, PQ-CS-C-1972, C-F-B1-RR-80 | 10d | 0d |  |
| C-EX-RS-001 |  | E-poxy paint | 10d | 2017-01-28 | 2017-02-07 | C-EX-R-002, P-AF-B-763, P-MEP-P-5763, C-F-B1-RR-70, C-CS-Su-SB-31 | 10d | 0d | 3,522 |
| C-EX-R-003 |  | Traffic Coating | 10d | 2017-02-21 | 2017-03-04 | C-EX-RS-001, PQ-CS-C-1992, C-F-B1-RR-90 | 0d |  | 7,905.03 |
| C-EX-R-004 |  | Traffic Signage | 15d | 2017-03-05 | 2017-03-21 | C-EX-R-003, P-MEP-P-5763, PQ-CS-C-1492, C-F-B1-RR-00 SS, SD-CS-B3-1212, C-EX-R-005 FF | 0d |  | 7,905.03 |
| C-EX-R-005 |  | Installation of Speed Bumps | 5d | 2017-03-16 | 2017-03-21 | C-EX-RS-001, P-AF-B-803, P-MEP-P-5603, PQ-CS-C-1952, C-F-B1-RR-10 | 0d |  | 374,508.95 |
|  | 8 | **Car Park Control Barriers & Bollards** |  | 2016-01-02 | 2017-03-09 |  |  |  |  |
| A1230 |  | Installation of Embeded plates for Hydraulic Bollards & Barriers | 5d | 2016-01-02 | 2016-01-06 | PQ-CS-C-1512, C-CS-Su-B-GF-01 SS, C-CS-Su-B-GF-01 FF, SD-CS-B3-1232 | 402d | 332d | 20,692.92 |
| A1240 |  | Installation of FIxed Bollards | 25d | 2017-02-08 | 2017-03-09 | A1230, C-EX-RS-001, SD-CS-B3-1232 | 70d |  | 62,078.76 |
| A1250 |  | Installation of Hydraulic Bollards | 25d | 2017-02-08 | 2017-03-09 | A1230, P-MEP-P-5843, P-MEP-P-5843 FF, C-EX-RS-001, SD-CS-B3-1232 | 70d |  | 206,929.21 |
| A1260 |  | Installation of Barriers | 25d | 2017-02-08 | 2017-03-09 | C-EX-RS-001, P-MEP-P-5803, SD-CS-B3-1232 | 70d |  | 124,157.53 |
|  | 5 | **External Ventilation shafts** |  | 2016-07-30 | 2016-09-29 |  |  |  |  |
| C-EX-S-001 |  | FRC Concrete for the ventilation shafts | 25d | 2016-07-30 | 2016-08-27 | C-EW-001 SS | 67d | 0d | 18,689.5 |
| C-EX-S-1 |  | Finishes for the ventilation shafts | 25d | 2016-08-28 | 2016-09-29 | C-EX-S-001 | 67d | 62d | 6,229.83 |
|  | 9 | **BOH - Furniture** |  | 2016-10-31 | 2017-04-30 |  |  |  |  |
| C-CS-Su-A-CW-1132 |  | Installation of loose furniture at Ground Floor | 8d | 2016-10-31 | 2016-11-08 | SD-CS-B1-512, P-AF-B-2083, P-AF-B-2123, P-AF-B-2163, P-AF-B-2243, P-AF-B-2203, P-AF-B-2283, PQ-CS-C-1532, C-F-DW-14 FF+3d, C-F-DW-4 FF+3d, C-F-WF-24 FF+3d, C-F-WF-14 FF+3d, C-F-WF-34 FF+3d, C-F-FF-24 FF+3d, C-F-FF-14 FF+3d, C-F-CF-37 FF+3d, C-F-CF-27 FF+3d, C-CS-Su-A-CW-1662 FF+3d, M-TF-002 FF+3d, C-F-FF-254 SF+3d, M-TF-001 FF+3d, C-E-SR-B3G-243 FF+3d, C-E-SR-B3G-253 FF+3d, C-F-P-1583 FF+3d, G-MM-003 FF+3d | 187d |  |  |
| C-CS-Su-A-CW-1142 |  | Installation of loose furniture at Ground Mezzanine Floor | 8d | 2016-10-31 | 2016-11-08 | SD-CS-GF-512, C-F-DW-254 FF+3d, C-F-DW-244 FF+3d, C-F-WF-264 FF+3d, C-F-WF-254 FF+3d, C-F-WF-274 FF+3d, C-F-FF-264 FF+3d, C-F-FF-254 FF+3d, C-F-CF-457 FF+3d, C-F-CF-447 FF+3d, C-CS-Su-A-CW-1672 FF+3d, C-F-FF-254 SF+3d, M-TF-001 FF+3d, C-E-SR-B3G-243 FF+3d, C-E-SR-B3G-253 FF+3d, C-F-P-1583 FF+3d, G-MM-003 FF+3d, M-TF-002 FF+3d | 187d |  |  |
| C-CS-Su-A-CW-1152 |  | Installation of loose furniture at Level 1 | 8d | 2016-10-31 | 2016-11-08 | SD-CS-L1-532, P-AF-B-1963, P-AF-B-2003, P-AF-B-2043, C-F-DW-54 FF+3d, C-F-DW-44 FF+3d, C-F-WF-64 FF+3d, C-F-WF-54 FF+3d, C-F-WF-74 FF+3d, C-F-FF-64 FF+3d, C-F-FF-54 FF+3d, C-F-CF-107 FF+3d, C-F-CF-97 FF+3d, C-CS-Su-A-CW-1682 FF+3d, M-TF-001 FF+3d, C-E-SR-B3G-243 FF+3d, C-E-SR-B3G-253 FF+3d, C-F-P-1583 FF+3d, G-MM-003 FF+3d, M-TF-002 FF+3d | 187d |  |  |
| C-CS-Su-A-CW-1162 |  | Installation of loose furniture at Level 1 Mezzanine | 8d | 2016-10-31 | 2016-11-08 | C-F-DW-94 FF+3d, C-F-DW-84 FF+3d, C-F-WF-104 FF+3d, C-F-WF-94 FF+3d, C-F-WF-114 FF+3d, C-F-FF-104 FF+3d, C-F-FF-94 FF+3d, C-F-CF-177 FF+3d, C-F-CF-167 FF+3d, C-CS-Su-A-CW-1692 FF+3d, M-TF-001 FF+3d, C-E-SR-B3G-243 FF+3d, C-E-SR-B3G-253 FF+3d, C-F-P-1583 FF+3d, G-MM-003 FF+3d, M-TF-002 FF+3d | 187d |  |  |
| C-CS-Su-A-CW-1172 |  | Installation of loose furniture at level 2 | 8d | 2016-10-31 | 2016-11-08 | SD-CS-L2-552, C-F-DW-174 FF+3d, C-F-DW-164 FF+3d, C-F-WF-184 FF+3d, C-F-WF-174 FF+3d, C-F-WF-194 FF+3d, C-F-FF-184 FF+3d, C-F-FF-174 FF+3d, C-F-CF-317 FF+3d, C-F-CF-307 FF+3d, C-CS-Su-A-CW-1702 FF+3d, M-TF-001 FF+3d, C-E-SR-B3G-243 FF+3d, C-E-SR-B3G-253 FF+3d, C-F-P-1583 FF+3d, G-MM-003 FF+3d, M-TF-002 FF+3d | 187d |  |  |
| C-CS-Su-A-CW-1182 |  | Installation of loose furniture at level 3 | 8d | 2016-10-31 | 2016-11-08 | SD-CS-L3-572, C-F-DW-004 FF+3d, C-F-DW-003 FF+3d, C-F-WF-004 FF+3d, C-F-WF-003 FF+3d, C-F-WF-002 FF+3d, C-F-FF-004 FF+3d, C-F-FF-003 FF+3d, C-F-CF-007 FF+3d, C-F-CF-005 FF+3d, C-CS-Su-A-CW-1712 FF+3d, M-TF-001 FF+3d, C-E-SR-B3G-243 FF+3d, C-E-SR-B3G-253 FF+3d, C-F-P-1583 FF+3d, G-MM-003 FF+3d, M-TF-002 FF+3d | 187d |  |  |
| C-CS-Su-A-CW-1202 |  | Installation of loose furniture at level 5 | 8d | 2016-11-01 | 2016-11-09 | SD-CS-L5-612, C-F-DW-214 FF+3d, C-F-DW-204 FF+3d, C-F-WF-224 FF+3d, C-F-WF-214 FF+3d, C-F-WF-234 FF+3d, C-F-FF-224 FF+3d, C-F-FF-214 FF+3d, C-F-CF-387 FF+3d, C-F-CF-377 FF+3d, C-CS-Su-A-CW-1732 FF+3d, M-TF-001 FF+3d, C-E-SR-B3G-243 FF+3d, C-E-SR-B3G-253 FF+3d, C-F-P-1583 FF+3d, G-MM-003 FF+3d, M-TF-002 FF+3d | 171d |  |  |
| C-CS-Su-A-CW-1212 |  | Installation of loose furniture at level 6 | 8d | 2016-11-01 | 2016-11-09 | SD-CS-L6-632, C-F-DW-334 FF+3d, C-F-DW-324 FF+3d, C-F-WF-344 FF+3d, C-F-WF-334 FF+3d, C-F-WF-354 FF+3d, C-F-FF-344 FF+3d, C-F-FF-334 FF+3d, C-F-CF-597 FF+3d, C-F-CF-587 FF+3d, C-CS-Su-A-CW-1742 FF+3d, M-TF-001 FF+3d, C-E-SR-B3G-243 FF+3d, C-E-SR-B3G-253 FF+3d, C-F-P-1583 FF+3d, G-MM-003 FF+3d, M-TF-002 FF+3d | 171d |  |  |
| C-CS-Su-A-CW-1222 |  | Installation of loose furniture at level 7 | 8d | 2016-11-01 | 2016-11-09 | SD-CS-L7-652, C-F-DW-574 FF+3d, C-F-DW-564 FF+3d, C-F-WF-584 FF+3d, C-F-WF-574 FF+3d, C-F-WF-594 FF+3d, C-F-FF-584 FF+3d, C-F-FF-574 FF+3d, C-F-CF-1017 FF+3d, C-F-CF-1007 FF+3d, C-CS-Su-A-CW-1752 FF+3d, M-TF-001 FF+3d, C-E-SR-B3G-243 FF+3d, C-E-SR-B3G-253 FF+3d, C-F-P-1583 FF+3d, G-MM-003 FF+3d, M-TF-002 FF+3d | 171d |  |  |
| C-CS-Su-A-CW-1232 |  | Installation of loose furniture at level 8 | 8d | 2016-11-01 | 2016-11-09 | SD-CS-L8-672, C-F-DW-374 FF+3d, C-F-DW-364 FF+3d, C-F-WF-384 FF+3d, C-F-WF-374 FF+3d, C-F-WF-394 FF+3d, C-F-FF-384 FF+3d, C-F-FF-374 FF+3d, C-F-CF-667 FF+3d, C-F-CF-657 FF+3d, C-CS-Su-A-CW-1762 FF+3d, M-TF-001 FF+3d, C-E-SR-B3G-243 FF+3d, C-E-SR-B3G-253 FF+3d, C-F-P-1583 FF+3d, G-MM-003 FF+3d, M-TF-002 FF+3d | 171d |  |  |
| C-CS-Su-A-CW-1242 |  | Installation of loose furniture at level 9 | 8d | 2016-11-01 | 2016-11-09 | SD-CS-L9-692, C-F-DW-414 FF+3d, C-F-DW-404 FF+3d, C-F-WF-424 FF+3d, C-F-WF-414 FF+3d, C-F-WF-434 FF+3d, C-F-FF-424 FF+3d, C-F-FF-414 FF+3d, C-F-CF-737 FF+3d, C-F-CF-727 FF+3d, C-CS-Su-A-CW-1772 FF+3d, M-TF-001 FF+3d, C-E-SR-B3G-243 FF+3d, C-E-SR-B3G-253 FF+3d, C-F-P-1583 FF+3d, G-MM-003 FF+3d, M-TF-002 FF+3d | 171d |  |  |
| C-CS-Su-A-CW-1252 |  | Installation of loose furniture at level 10 | 8d | 2016-11-01 | 2016-11-09 | SD-CS-L10-712, C-F-DW-494 FF+23d, C-F-DW-484 FF+3d, C-F-WF-504 FF+23d, C-F-WF-494 FF+3d, C-F-WF-514 FF+3d, C-F-FF-504 FF+23d, C-F-FF-494 FF+3d, C-F-CF-877 FF+3d, C-F-CF-867 FF+23d, C-CS-Su-A-CW-1782 FF+3d, M-TF-001 FF+3d, C-E-SR-B3G-243 FF+3d, C-E-SR-B3G-253 FF+3d, C-F-P-1583 FF+3d, G-MM-003 FF+3d, M-TF-002 FF+3d | 171d |  |  |
| C-CS-Su-A-CW-1262 |  | Installation of loose furniture at level 11 | 8d | 2016-11-01 | 2016-11-09 | SD-CS-L11-732, C-F-DW-294 FF+3d, C-F-DW-284 FF+3d, C-F-WF-304 FF+3d, C-F-WF-294 FF+3d, C-F-WF-314 FF+3d, C-F-FF-304 FF+3d, C-F-FF-294 FF+3d, C-F-CF-527 FF+3d, C-F-CF-517 FF+3d, C-CS-Su-A-CW-1792 FF+3d, M-TF-001 FF+3d, C-E-SR-B3G-243 FF+3d, C-E-SR-B3G-253 FF+3d, C-F-P-1583 FF+3d, G-MM-003 FF+3d, M-TF-002 FF+3d | 171d |  |  |
| C-CS-Su-A-CW-1192 |  | Installation of loose furniture at level 4 | 8d | 2016-11-13 | 2016-11-21 | SD-CS-L4-1592, C-F-DW-134 FF+3d, C-F-DW-124 FF+3d, C-F-WF-144 FF+3d, C-F-WF-134 FF+3d, C-F-WF-154 FF+3d, C-F-FF-144 FF+3d, C-F-FF-134 FF+3d, C-F-CF-247 FF+3d, C-F-CF-237 FF+3d, C-CS-Su-A-CW-1722 FF+3d, C-SP-MRP-241 FF+13d, M-TF-001 FF+3d, C-E-SR-B3G-243 FF+3d, C-E-SR-B3G-253 FF+3d, C-F-P-1583 FF+3d, G-MM-003 FF+3d, M-TF-002 FF+3d | 161d |  |  |
| C-CS-Su-A-CW-1272 |  | Installation of loose furniture at level 12 | 8d | 2016-11-15 | 2016-11-23 | SD-CS-L12-752, C-F-DW-454 FF+3d, C-F-DW-444 FF+3d, C-F-WF-464 FF+3d, C-F-WF-454 FF+3d, C-F-WF-474 FF+3d, C-F-FF-464 FF+3d, C-F-FF-454 FF+3d, C-F-CF-807 FF+3d, C-F-CF-797 FF+3d, C-CS-Su-A-CW-1802 FF+3d, M-TF-001 FF+3d, C-E-SR-B3G-243 FF+3d, C-E-SR-B3G-253 FF+3d, C-F-P-1583 FF+3d, G-MM-003 FF+3d, M-TF-002 FF+3d | 159d |  |  |
| C-CS-Su-A-CW-1282 |  | Installation of loose furniture at level 13 | 8d | 2016-11-15 | 2016-11-23 | SD-CS-L13-772, C-F-DW-534 FF+3d, C-F-DW-524 FF+3d, C-F-WF-544 FF+3d, C-F-WF-534 FF+3d, C-F-WF-554 FF+3d, C-F-FF-544 FF+3d, C-F-FF-534 FF+3d, C-F-CF-947 FF+3d, C-F-CF-937 FF+3d, C-CS-Su-A-CW-1812 FF+3d, M-TF-001 FF+3d, C-E-SR-B3G-243 FF+3d, C-E-SR-B3G-253 FF+3d, C-F-P-1583 FF+3d, G-MM-003 FF+3d, M-TF-002 FF+3d | 159d |  |  |
| C-CS-Su-A-CW-1292 |  | Installation of loose furniture at level 14 | 8d | 2016-11-15 | 2016-11-23 | SD-CS-L14-792, C-F-DW-654 FF+3d, C-F-DW-644 FF+3d, C-F-WF-664 FF+3d, C-F-WF-654 FF+3d, C-F-WF-674 FF+3d, C-F-FF-664 FF+3d, C-F-FF-654 FF+3d, C-F-CF-1157 FF+3d, C-F-CF-1147 FF+3d, C-CS-Su-A-CW-1822 FF+3d, M-TF-001 FF+3d, C-E-SR-B3G-243 FF+3d, C-E-SR-B3G-253 FF+3d, C-F-P-1583 FF+3d, G-MM-003 FF+3d, M-TF-002 FF+3d | 159d |  |  |
| C-CS-Su-A-CW-1302 |  | Installation of loose furniture at level 15 | 8d | 2016-11-15 | 2016-11-23 | SD-CS-L15-812, C-F-DW-894 FF+3d, C-F-DW-884 FF+3d, C-F-WF-904 FF+3d, C-F-WF-894 FF+3d, C-F-WF-914 FF+3d, C-F-FF-904 FF+3d, C-F-FF-894 FF+3d, C-F-CF-1577 FF+3d, C-F-CF-1567 FF+11d, C-CS-Su-A-CW-1832 FF+3d, M-TF-001 FF+3d, C-E-SR-B3G-243 FF+3d, C-E-SR-B3G-253 FF+3d, C-F-P-1583 FF+3d, G-MM-003 FF+3d, M-TF-002 FF+3d | 159d |  |  |
| C-CS-Su-A-CW-1312 |  | Installation of loose furniture at level 16 | 8d | 2016-11-15 | 2016-11-23 | SD-CS-L16-832, C-F-DW-734 FF+3d, C-F-DW-724 FF+3d, C-F-WF-744 FF+3d, C-F-WF-734 FF+3d, C-F-WF-754 FF+3d, C-F-FF-744 FF+3d, C-F-FF-734 FF+3d, C-F-CF-1297 FF+3d, C-F-CF-1287 FF+3d, C-CS-Su-A-CW-1842 FF+3d, M-TF-001 FF+3d, C-E-SR-B3G-243 FF+3d, C-E-SR-B3G-253 FF+3d, C-F-P-1583 FF+3d, G-MM-003 FF+3d, M-TF-002 FF+3d | 159d |  |  |
| C-CS-Su-A-CW-1322 |  | Installation of loose furniture at level 17 | 8d | 2016-11-15 | 2016-11-23 | SD-CS-L17-1612, C-F-DW-694 FF+3d, C-F-DW-684 FF+3d, C-F-WF-704 FF+3d, C-F-WF-694 FF+3d, C-F-WF-714 FF+3d, C-F-FF-704 FF+3d, C-F-FF-694 FF+3d, C-F-CF-1227 FF+3d, C-F-CF-1217 FF+3d, C-CS-Su-A-CW-1852 FF+3d, M-TF-001 FF+3d, C-E-SR-B3G-243 FF+3d, C-E-SR-B3G-253 FF+3d, C-F-P-1583 FF+3d, G-MM-003 FF+3d, M-TF-002 FF+3d | 159d |  |  |
| C-CS-Su-A-CW-1332 |  | Installation of loose furniture at level 18 | 8d | 2016-11-29 | 2016-12-07 | SD-CS-L18-872, C-F-DW-814 FF+3d, C-F-DW-804 FF+3d, C-F-WF-824 FF+3d, C-F-WF-814 FF+3d, C-F-WF-834 FF+3d, C-F-FF-824 FF+3d, C-F-FF-814 FF+3d, C-F-CF-1437 FF+3d, C-F-CF-1427 FF+3d, C-CS-Su-A-CW-1862 FF+3d, M-TF-001 FF+3d, C-E-SR-B3G-243 FF+3d, C-E-SR-B3G-253 FF+3d, C-F-P-1583 FF+3d, G-MM-003 FF+3d, M-TF-002 FF+3d | 147d |  |  |
| C-CS-Su-A-CW-1342 |  | Installation of loose furniture at level 19 | 8d | 2016-11-29 | 2016-12-07 | SD-CS-L19-892, C-F-DW-614 FF+3d, C-F-DW-604 FF+3d, C-F-WF-624 FF+3d, C-F-WF-614 FF+3d, C-F-WF-634 FF+3d, C-F-FF-624 FF+3d, C-F-FF-614 FF+3d, C-F-CF-1087 FF+3d, C-F-CF-1077 FF+3d, C-CS-Su-A-CW-1872 FF+3d, M-TF-001 FF+3d, C-E-SR-B3G-243 FF+3d, C-E-SR-B3G-253 FF+3d, C-F-P-1583 FF+3d, G-MM-003 FF+3d, M-TF-002 FF+3d | 147d |  |  |
| C-CS-Su-A-CW-1352 |  | Installation of loose furniture at level 20 | 8d | 2016-11-29 | 2016-12-07 | SD-CS-L20-912, C-F-DW-774 FF+3d, C-F-DW-764 FF+3d, C-F-WF-784 FF+3d, C-F-WF-774 FF+3d, C-F-WF-794 FF+3d, C-F-FF-784 FF+3d, C-F-FF-774 FF+3d, C-F-CF-1367 FF+3d, C-F-CF-1357 FF+3d, C-CS-Su-A-CW-1882 FF+3d, M-TF-001 FF+3d, C-E-SR-B3G-243 FF+3d, C-E-SR-B3G-253 FF+3d, C-F-P-1583 FF+3d, G-MM-003 FF+3d, M-TF-002 FF+3d | 147d |  |  |
| C-CS-Su-A-CW-1362 |  | Installation of loose furniture at level 21 | 8d | 2016-11-29 | 2016-12-07 | SD-CS-L21-932, C-F-DW-854 FF+3d, C-F-DW-844 FF+3d, C-F-WF-864 FF+3d, C-F-WF-854 FF+3d, C-F-WF-874 FF+3d, C-F-FF-864 FF+3d, C-F-FF-854 FF+3d, C-F-CF-1507 FF+3d, C-F-CF-1497 FF+3d, C-CS-Su-A-CW-1892 FF+3d, M-TF-001 FF+3d, C-E-SR-B3G-243 FF+3d, C-E-SR-B3G-253 FF+3d, C-F-P-1583 FF+3d, G-MM-003 FF+3d, M-TF-002 FF+3d | 147d |  |  |
| C-CS-Su-A-CW-1372 |  | Installation of loose furniture at level 22 | 8d | 2016-11-29 | 2016-12-07 | SD-CS-L22-952, C-F-DW-974 FF+3d, C-F-DW-964 FF+3d, C-F-WF-984 FF+3d, C-F-WF-974 FF+3d, C-F-WF-994 FF+3d, C-F-FF-984 FF+3d, C-F-FF-974 FF+3d, C-F-CF-1717 FF+3d, C-F-CF-1707 FF+3d, C-CS-Su-A-CW-1902 FF+3d, M-TF-001 FF+3d, C-E-SR-B3G-243 FF+3d, C-E-SR-B3G-253 FF+3d, C-F-P-1583 FF+3d, G-MM-003 FF+3d, M-TF-002 FF+3d | 147d |  |  |
| C-CS-Su-A-CW-1382 |  | Installation of loose furniture at level 23 | 8d | 2016-11-29 | 2016-12-07 | SD-CS-L23-972, C-F-DW-1214 FF+3d, C-F-DW-1204 FF+3d, C-F-WF-1224 FF+3d, C-F-WF-1214 FF+3d, C-F-WF-1234 FF+3d, C-F-FF-1224 FF+3d, C-F-FF-1214 FF+3d, C-F-CF-2137 FF+3d, C-F-CF-2127 FF+3d, C-CS-Su-A-CW-1912 FF+3d, M-TF-001 FF+3d, C-E-SR-B3G-243 FF+3d, C-E-SR-B3G-253 FF+3d, C-F-P-1583 FF+3d, G-MM-003 FF+3d, M-TF-002 FF+3d | 147d |  |  |
| C-CS-Su-A-CW-1392 |  | Installation of loose furniture at level 24 | 8d | 2016-12-13 | 2016-12-22 | SD-CS-L24-992, C-F-DW-1014 FF+3d, C-F-DW-1004 FF+3d, C-F-WF-1024 FF+3d, C-F-WF-1014 FF+3d, C-F-WF-1034 FF+3d, C-F-FF-1024 FF+3d, C-F-FF-1014 FF+3d, C-F-CF-1787 FF+3d, C-F-CF-1777 FF+3d, C-CS-Su-A-CW-1922 FF+3d, M-TF-001 FF+3d, C-E-SR-B3G-243 FF+3d, C-E-SR-B3G-253 FF+3d, C-F-P-1583 FF+3d, G-MM-003 FF+3d, M-TF-002 FF+3d | 135d |  |  |
| C-CS-Su-A-CW-1402 |  | Installation of loose furniture at Level 25 | 8d | 2016-12-13 | 2016-12-22 | SD-CS-L25-1012, C-F-DW-1054 FF+3d, C-F-DW-1044 FF+3d, C-F-WF-1064 FF+3d, C-F-WF-1054 FF+3d, C-F-WF-1074 FF+3d, C-F-FF-1064 FF+3d, C-F-FF-1054 FF+3d, C-F-CF-1857 FF+3d, C-F-CF-1847 FF+3d, C-CS-Su-A-CW-1932 FF+3d, M-TF-001 FF+3d, C-E-SR-B3G-243 FF+3d, C-E-SR-B3G-253 FF+3d, C-F-P-1583 FF+3d, G-MM-003 FF+3d, M-TF-002 FF+3d | 135d |  |  |
| C-CS-Su-A-CW-1412 |  | Installation of loose furniture at Level 26 | 8d | 2016-12-13 | 2016-12-22 | SD-CS-L26-1032, C-F-DW-1134 FF+3d, C-F-DW-1124 FF+3d, C-F-WF-1144 FF+3d, C-F-WF-1134 FF+3d, C-F-WF-1154 FF+3d, C-F-FF-1144 FF+3d, C-F-FF-1134 FF+3d, C-F-CF-1997 FF+3d, C-F-CF-1987 FF+3d, C-CS-Su-A-CW-1942 FF+3d, M-TF-001 FF+3d, C-E-SR-B3G-243 FF+3d, C-E-SR-B3G-253 FF+3d, C-F-P-1583 FF+3d, G-MM-003 FF+3d, M-TF-002 FF+3d | 135d |  |  |
| C-CS-Su-A-CW-1422 |  | Installation of loose furniture at Level 27 | 8d | 2016-12-13 | 2016-12-22 | SD-CS-L27-1052, C-F-DW-934 FF+3d, C-F-DW-924 FF+3d, C-F-WF-944 FF+3d, C-F-WF-934 FF+3d, C-F-WF-954 FF+3d, C-F-FF-944 FF+3d, C-F-FF-934 FF+3d, C-F-CF-1647 FF+3d, C-F-CF-1637 FF+3d, C-CS-Su-A-CW-1952 FF+3d, M-TF-001 FF+3d, C-E-SR-B3G-243 FF+3d, C-E-SR-B3G-253 FF+3d, C-F-P-1583 FF+3d, G-MM-003 FF+3d, M-TF-002 FF+3d | 135d |  |  |
| C-CS-Su-A-CW-1432 |  | Installation of loose furniture at Level 28 | 8d | 2016-12-13 | 2016-12-22 | SD-CS-L28-1072, C-F-DW-1094 FF+3d, C-F-DW-1084 FF+3d, C-F-WF-1104 FF+3d, C-F-WF-1094 FF+3d, C-F-WF-1114 FF+3d, C-F-FF-1104 FF+3d, C-F-FF-1094 FF+3d, C-F-CF-1927 FF+3d, C-F-CF-1917 FF+3d, C-CS-Su-A-CW-1962 FF+3d, M-TF-001 FF+3d, C-E-SR-B3G-243 FF+3d, C-E-SR-B3G-253 FF+3d, C-F-P-1583 FF+3d, G-MM-003 FF+3d, M-TF-002 FF+3d | 135d |  |  |
| C-CS-Su-A-CW-1442 |  | Installation of loose furniture at level 29 | 8d | 2016-12-13 | 2016-12-22 | SD-CS-L29-1092, C-F-DW-1174 FF+3d, C-F-DW-1164 FF+3d, C-F-WF-1184 FF+3d, C-F-WF-1174 FF+3d, C-F-WF-1194 FF+3d, C-F-FF-1184 FF+3d, C-F-FF-1174 FF+3d, C-F-CF-2067 FF+3d, C-F-CF-2057 FF+3d, C-CS-Su-A-CW-1972 FF+3d, M-TF-001 FF+3d, C-E-SR-B3G-243 FF+3d, C-E-SR-B3G-253 FF+3d, C-F-P-1583 FF+3d, G-MM-003 FF+3d, M-TF-002 FF+3d | 135d |  |  |
| C-CS-Su-A-CW-1452 |  | Installation of loose furniture at Level 30 | 8d | 2016-12-28 | 2017-01-05 | SD-CS-L30-1112, C-F-DW-1334 FF+3d, C-F-DW-1324 FF+3d, C-F-WF-1344 FF+3d, C-F-WF-1334 FF+3d, C-F-WF-1354 FF+3d, C-F-FF-1344 FF+3d, C-F-FF-1334 FF+3d, C-F-CF-2347 FF+3d, C-F-CF-2337 FF+3d, C-CS-Su-A-CW-1982 FF+3d, M-TF-001 FF+3d, C-E-SR-B3G-243 FF+3d, C-E-SR-B3G-253 FF+3d, C-F-P-1583 FF+3d, G-MM-003 FF+3d, M-TF-002 FF+3d | 128d |  |  |
| C-CS-Su-A-CW-1462 |  | Installation of loose furniture at Level 31 | 8d | 2016-12-28 | 2017-01-05 | SD-CS-L31-1132, C-F-DW-1254 FF+3d, C-F-DW-1244 FF+3d, C-F-WF-1264 FF+3d, C-F-WF-1254 FF+3d, C-F-WF-1274 FF+3d, C-F-FF-1264 FF+3d, C-F-FF-1254 FF+3d, C-F-CF-2207 FF+3d, C-F-CF-2197 FF+3d, C-CS-Su-A-CW-1992 FF+3d, M-TF-001 FF+3d, C-E-SR-B3G-243 FF+3d, C-E-SR-B3G-253 FF+3d, C-F-P-1583 FF+3d, G-MM-003 FF+3d, M-TF-002 FF+3d | 128d |  |  |
| C-CS-Su-A-CW-1472 |  | Installation of loose furniture at Level 32 | 8d | 2016-12-28 | 2017-01-05 | SD-CS-L32-1152, C-F-DW-1294 FF+3d, C-F-DW-1284 FF+3d, C-F-WF-1304 FF+3d, C-F-WF-1294 FF+3d, C-F-WF-1314 FF+3d, C-F-FF-1304 FF+3d, C-F-FF-1294 FF+3d, C-F-CF-2277 FF+3d, C-F-CF-2267 FF+3d, C-CS-Su-A-CW-2002 FF+3d, M-TF-001 FF+3d, C-E-SR-B3G-243 FF+3d, C-E-SR-B3G-253 FF+3d, C-F-P-1583 FF+3d, G-MM-003 FF+3d, M-TF-002 FF+3d | 128d |  |  |
| C-CS-Su-A-CW-1482 |  | Installation of loose furniture at Level 33 | 8d | 2016-12-28 | 2017-01-05 | SD-CS-L33-1172, C-F-DW-1374 FF+3d, C-F-DW-1364 FF+3d, C-F-WF-1384 FF+3d, C-F-WF-1374 FF+3d, C-F-WF-1394 FF+3d, C-F-FF-1384 FF+3d, C-F-FF-1374 FF+3d, C-F-CF-2417 FF+3d, C-F-CF-2407 FF+3d, C-CS-Su-A-CW-2012 FF+3d, C-SP-MRP-161 FF+3d, M-TF-001 FF+3d, C-E-SR-B3G-243 FF+3d, C-E-SR-B3G-253 FF+3d, C-F-P-1583 FF+3d, G-MM-003 FF+3d, M-TF-002 FF+3d | 128d |  |  |
| C-CS-Su-A-CW-1492 |  | Installation of loose furniture at Level 34 | 8d | 2016-12-28 | 2017-01-05 | SD-CS-L34-1192, C-F-DW-1454 FF+3d, C-F-DW-1444 FF+3d, C-F-WF-1464 FF+3d, C-F-WF-1454 FF+3d, C-F-WF-1474 FF+3d, C-F-FF-1464 FF+3d, C-F-FF-1454 FF+3d, C-F-CF-2557 FF+3d, C-F-CF-2547 FF+3d, C-CS-Su-A-CW-2022 FF+3d, M-TF-001 FF+3d, C-E-SR-B3G-243 FF+3d, C-E-SR-B3G-253 FF+3d, C-F-P-1583 FF+3d, G-MM-003 FF+3d, M-TF-002 FF+3d | 128d |  |  |
| C-CS-Su-A-CW-1502 |  | Installation of loose furniture at Level 35 | 8d | 2016-12-28 | 2017-01-05 | SD-CS-L35-1212, C-F-DW-1694 FF+3d, C-F-DW-1684 FF+3d, C-F-WF-1704 FF+3d, C-F-WF-1694 FF+3d, C-F-WF-1714 FF+3d, C-F-FF-1704 FF+3d, C-F-FF-1694 FF+3d, C-F-CF-2977 FF+3d, C-F-CF-2967 FF+3d, C-CS-Su-A-CW-2032 FF+3d, M-TF-001 FF+3d, C-E-SR-B3G-243 FF+3d, C-E-SR-B3G-253 FF+3d, C-F-P-1583 FF+3d, G-MM-003 FF+3d, M-TF-002 FF+3d | 128d |  |  |
| C-CS-Su-A-CW-1512 |  | Installation of loose furniture at Level 36 | 8d | 2016-12-28 | 2017-01-05 | SD-CS-L36-1232, C-F-DW-1494 FF+3d, C-F-DW-1484 FF+3d, C-F-WF-1504 FF+3d, C-F-WF-1494 FF+3d, C-F-WF-1514 FF+3d, C-F-FF-1504 FF+3d, C-F-FF-1494 FF+3d, C-F-CF-2627 FF+3d, C-F-CF-2617 FF+3d, C-CS-Su-A-CW-2042 FF+3d, M-TF-001 FF+3d, C-E-SR-B3G-243 FF+3d, C-E-SR-B3G-253 FF+3d, C-F-P-1583 FF+3d, G-MM-003 FF+3d, M-TF-002 FF+3d | 128d |  |  |
| C-CS-Su-A-CW-1522 |  | Installation of loose furniture at Level 37 | 8d | 2016-12-28 | 2017-01-05 | SD-CS-L37-1252, C-F-DW-1534 FF+3d, C-F-DW-1524 FF+3d, C-F-WF-1544 FF+3d, C-F-WF-1534 FF+3d, C-F-WF-1554 FF+3d, C-F-FF-1544 FF+3d, C-F-FF-1534 FF+3d, C-F-CF-2697 FF+3d, C-F-CF-2687 FF+3d, C-CS-Su-A-CW-2052 FF+3d, M-TF-001 FF+3d, C-E-SR-B3G-243 FF+3d, C-E-SR-B3G-253 FF+3d, C-F-P-1583 FF+3d, G-MM-003 FF+3d, M-TF-002 FF+3d | 128d |  |  |
| C-CS-Su-A-CW-1532 |  | Installation of loose furniture at Level 38 | 8d | 2016-12-28 | 2017-01-05 | SD-CS-L38-1272, C-F-DW-1614 FF+3d, C-F-DW-1604 FF+3d, C-F-WF-1624 FF+3d, C-F-WF-1614 FF+3d, C-F-WF-1634 FF+3d, C-F-FF-1624 FF+3d, C-F-FF-1614 FF+3d, C-F-CF-2837 FF+3d, C-F-CF-2827 FF+3d, C-CS-Su-A-CW-2062 FF+3d, M-TF-001 FF+3d, C-E-SR-B3G-243 FF+3d, C-E-SR-B3G-253 FF+3d, C-F-P-1583 FF+3d, G-MM-003 FF+3d, M-TF-002 FF+3d | 128d |  |  |
| C-CS-Su-A-CW-1542 |  | Installation of loose furniture at Level 39 | 8d | 2016-12-28 | 2017-01-05 | SD-CS-L39-1292, C-F-DW-1414 FF+3d, C-F-DW-1404 FF+3d, C-F-WF-1424 FF+3d, C-F-WF-1414 FF+3d, C-F-WF-1434 FF+3d, C-F-FF-1424 FF+3d, C-F-FF-1414 FF+3d, C-F-CF-2487 FF+3d, C-F-CF-2477 FF+3d, C-CS-Su-A-CW-2072 FF+3d, M-TF-001 FF+3d, C-E-SR-B3G-243 FF+3d, C-E-SR-B3G-253 FF+3d, C-F-P-1583 FF+3d, G-MM-003 FF+3d, M-TF-002 FF+3d | 128d |  |  |
| C-CS-Su-A-CW-1552 |  | Installation of loose furniture at Level 40 | 8d | 2016-12-28 | 2017-01-05 | SD-CS-L40-1312, C-F-DW-1574 FF+3d, C-F-DW-1564 FF+3d, C-F-WF-1584 FF+3d, C-F-WF-1574 FF+3d, C-F-WF-1594 FF+3d, C-F-FF-1584 FF+3d, C-F-FF-1574 FF+3d, C-F-CF-2767 FF+3d, C-F-CF-2757 FF+3d, C-CS-Su-A-CW-2082 FF+3d, M-TF-001 FF+3d, C-E-SR-B3G-243 FF+3d, C-E-SR-B3G-253 FF+3d, C-F-P-1583 FF+3d, G-MM-003 FF+3d, M-TF-002 FF+3d | 128d |  |  |
| C-CS-Su-A-CW-1562 |  | Installation of loose furniture at Level 41 | 8d | 2016-12-28 | 2017-01-05 | SD-CS-L41-1332, C-F-DW-1654 FF+3d, C-F-DW-1644 FF+3d, C-F-WF-1664 FF+3d, C-F-WF-1654 FF+3d, C-F-WF-1674 FF+3d, C-F-FF-1664 FF+3d, C-F-FF-1654 FF+3d, C-F-CF-2907 FF+3d, C-F-CF-2897 FF+3d, C-CS-Su-A-CW-2092 FF+3d, M-TF-001 FF+3d, C-E-SR-B3G-243 FF+3d, C-E-SR-B3G-253 FF+3d, C-F-P-1583 FF+3d, G-MM-003 FF+3d, M-TF-002 FF+3d | 128d |  |  |
| C-CS-Su-A-CW-1572 |  | Installation of loose furniture at Level 42 | 8d | 2017-01-11 | 2017-01-19 | SD-CS-L42-1352, C-F-DW-1774 FF+3d, C-F-DW-1764 FF+3d, C-F-WF-1784 FF+3d, C-F-WF-1774 FF+3d, C-F-WF-1794 FF+3d, C-F-FF-1784 FF+3d, C-F-FF-1774 FF+3d, C-F-CF-3117 FF+3d, C-F-CF-3107 FF+3d, C-CS-Su-A-CW-2102 FF+3d, M-TF-001 FF+3d, C-E-SR-B3G-243 FF+3d, C-E-SR-B3G-253 FF+3d, C-F-P-1583 FF+3d, G-MM-003 FF+3d, M-TF-002 FF+3d | 131d |  |  |
| C-CS-Su-A-CW-1582 |  | Installation of loose furniture at Level 43 | 8d | 2017-01-11 | 2017-01-19 | SD-CS-L43-1372, C-F-DW-2014 FF+3d, C-F-DW-2004 FF+3d, C-F-WF-2024 FF+3d, C-F-WF-2014 FF+3d, C-F-WF-2034 FF+3d, C-F-FF-2024 FF+3d, C-F-FF-2014 FF+3d, C-F-CF-3537 FF+3d, C-F-CF-3527 FF+3d, C-CS-Su-A-CW-2112 FF+3d, M-TF-001 FF+3d, C-E-SR-B3G-243 FF+3d, C-E-SR-B3G-253 FF+3d, C-F-P-1583 FF+3d, G-MM-003 FF+3d, M-TF-002 FF+3d | 131d |  |  |
| C-CS-Su-A-CW-1592 |  | Installation of loose furniture at Level 45 | 8d | 2017-01-11 | 2017-01-19 | SD-CS-L45-1412, C-F-DW-1814 FF+3d, C-F-DW-1804 FF+3d, C-F-WF-1824 FF+3d, C-F-WF-1814 FF+3d, C-F-WF-1834 FF+3d, C-F-FF-1824 FF+3d, C-F-FF-1814 FF+3d, C-F-CF-3187 FF+3d, C-F-CF-3177 FF+3d, C-CS-Su-A-CW-2122 FF+3d, M-TF-001 FF+3d, C-E-SR-B3G-243 FF+3d, C-E-SR-B3G-253 FF+3d, C-F-P-1583 FF+3d, G-MM-003 FF+3d, M-TF-002 FF+3d | 131d |  |  |
| C-CS-Su-A-CW-1602 |  | Installation of loose furniture at Level 46 | 8d | 2017-01-11 | 2017-01-19 | SD-CS-L46-1432, C-F-DW-1934 FF+3d, C-F-DW-1924 FF+3d, C-F-WF-1944 FF+3d, C-F-WF-1934 FF+3d, C-F-WF-1954 FF+3d, C-F-FF-1944 FF+3d, C-F-FF-1934 FF+3d, C-F-CF-3397 FF+3d, C-F-CF-3387 FF+3d, C-CS-Su-A-CW-2132 FF+3d, M-TF-001 FF+3d, C-E-SR-B3G-243 FF+3d, C-E-SR-B3G-253 FF+3d, C-F-P-1583 FF+3d, G-MM-003 FF+3d, M-TF-002 FF+3d | 131d |  |  |

Notes:
- C-EW-L-51: Expenses: 1 81920.9
- C-EW-L-61: Expenses: 1 127661
- C-EW-L-71: Expenses: 1 228264
- C-EW-L-81: Expenses: 1 144722
- C-EW-L-91: Expenses: 1 97827.6
- C-EX-R-001: Expenses: 1 58253.7
- C-EX-RS-001: Expenses: C 3522
- C-EX-R-003: Expenses: 1 7905.03
- C-EX-R-004: Expenses: 1 7905.03
- C-EX-R-005: Expenses: 1 374509
- A1230: Expenses: 1 20692.9
- A1240: Expenses: 1 62078.8
- A1250: Expenses: 1 206929
- A1260: Expenses: 1 124158
- C-EX-S-001: Expenses: 1 18689.5
- C-EX-S-1: Expenses: 1 6229.83

| ID | WBS | Activity | Duration | Start | Finish | Predecessors | Total float | Free float | Calendar | Cost |
| --- | --- | --- | --- | --- | --- | --- | --- | --- | --- | --- |
| C-CS-Su-A-CW-1612 |  | Installation of loose furniture at Level 47 | 8d | 2017-01-11 | 2017-01-19 | SD-CS-L47-1452, C-F-DW-1734 FF+3d, C-F-DW-1724 FF+3d, C-F-WF-1744 FF+3d, C-F-WF-1734 FF+3d, C-F-WF-1754 FF+3d, C-F-FF-1744 FF+3d, C-F-FF-1734 FF+3d, C-F-CF-3047 FF+3d, C-F-CF-3037 FF+3d, C-CS-Su-A-CW-2142 FF+3d, M-TF-001 FF+3d, C-E-SR-B3G-243 FF+3d, C-E-SR-B3G-253 FF+3d, C-F-P-1583 FF+3d, G-MM-003 FF+3d, M-TF-002 FF+3d | 131d |  |  |  |
| C-CS-Su-A-CW-1622 |  | Installation of loose furniture at level 48 | 8d | 2017-01-11 | 2017-01-19 | SD-CS-L48-1472, C-F-DW-1894 FF+3d, C-F-DW-1884 FF+3d, C-F-WF-1904 FF+3d, C-F-WF-1894 FF+3d, C-F-WF-1914 FF+3d, C-F-FF-1904 FF+3d, C-F-FF-1894 FF+3d, C-F-CF-3327 FF+3d, C-F-CF-3317 FF+3d, C-CS-Su-A-CW-2152 FF+3d, M-TF-001 FF+3d, C-E-SR-B3G-243 FF+3d, C-E-SR-B3G-253 FF+3d, C-F-P-1583 FF+3d, G-MM-003 FF+3d, M-TF-002 FF+3d | 131d |  |  |  |
| C-CS-Su-A-CW-1632 |  | Installation of loose furniture at Level 49 | 8d | 2017-01-11 | 2017-01-19 | SD-CS-L49-1492, C-F-DW-1974 FF+3d, C-F-DW-1964 FF+3d, C-F-WF-1984 FF+3d, C-F-WF-1974 FF+3d, C-F-WF-1994 FF+3d, C-F-FF-1984 FF+3d, C-F-FF-1974 FF+3d, C-F-CF-3467 FF+3d, C-F-CF-3457 FF+3d, C-CS-Su-A-CW-2162 FF+3d, M-TF-001 FF+3d, C-E-SR-B3G-243 FF+3d, C-E-SR-B3G-253 FF+3d, C-F-P-1583 FF+3d, G-MM-003 FF+3d, M-TF-002 FF+3d | 131d |  |  |  |
| C-CS-Su-A-CW-2192 |  | Installation of loose furniture at Level 44 | 8d | 2017-01-11 | 2017-01-19 | SD-CS-L44-1392, C-F-DW-1854 FF+3d, C-F-DW-1844 FF+3d, C-F-WF-1864 FF+3d, C-F-WF-1854 FF+3d, C-F-WF-1874 FF+3d, C-F-FF-1864 FF+3d, C-F-FF-1854 FF+3d, C-F-CF-3257 FF+3d, C-F-CF-3247 FF+3d, C-CS-Su-A-CW-2732 FF+3d | 131d |  |  |  |
| C-CS-Su-A-CW-1652 |  | Installation of loose furniture at Level 51 | 8d | 2017-01-12 | 2017-01-21 | SD-CS-L51-2472, C-F-DW-2094 FF+3d, C-F-DW-2084 FF+3d, C-F-WF-2104 FF+3d, C-F-WF-2094 FF+3d, C-F-WF-2114 FF+3d, C-F-FF-2104 FF+3d, C-F-FF-2094 FF+3d, C-F-CF-3677 FF+3d, C-F-CF-3667 FF+3d, C-CS-Su-A-CW-2182 FF+3d, C-E-SR-B3G-243 FF+3d, C-E-SR-B3G-253 FF+3d, C-F-P-1583 FF+3d, G-MM-003 FF+3d, M-TF-001 FF+3d, M-TF-002 FF+3d | 130d |  |  |  |
| C-CS-Su-A-CW-1642 |  | Installation of loose furniture at Level 50 | 8d | 2017-01-14 | 2017-01-22 | SD-CS-L50-1512, C-F-DW-2054 FF+3d, C-F-DW-2044 FF+3d, C-F-WF-2064 FF+3d, C-F-WF-2054 FF+3d, C-F-WF-2074 FF+3d, C-F-FF-2064 FF+3d, C-F-FF-2054 FF+3d, C-F-CF-3607 FF+3d, C-F-CF-3597 FF+3d, C-CS-Su-A-CW-2172 FF+3d, M-TF-001 FF+3d, C-E-SR-B3G-243 FF+3d, C-E-SR-B3G-253 FF+3d, C-F-P-1583 FF+3d, G-MM-003 FF+3d, M-TF-002 FF+3d | 129d |  |  |  |
|  | 4 | **Basement 2** |  | 2017-03-27 | 2017-04-30 |  |  |  |  |  |
| C-CA-FU-21 |  | Installation of Metal Locker at Basement 2 | 5d | 2017-03-27 | 2017-04-01 | P-AF-B-1963, S-001 | 26d | 0d | *APB - 6 D week + Qatar Holiday | 809,837.74 |
| C-CA-FU-31 |  | Installation of Countertop units at Basement 2 | 5d | 2017-04-02 | 2017-04-06 | P-AF-B-2003, S-001, C-CA-FU-21 | 26d | 0d | *APB - 6 D week + Qatar Holiday | 7,233.13 |
| C-CA-FU-41 |  | Instllation of Janitor's closet at Basement 2 | 5d | 2017-04-08 | 2017-04-12 | P-AF-B-2043, S-001, C-CA-FU-31 | 26d | 0d | *APB - 6 D week + Qatar Holiday | 4,859.47 |
| C-CA-FU-51 |  | Installation of toilet vanity units at basement 2 | 5d | 2017-04-13 | 2017-04-18 | P-AF-B-2003, S-001, C-CA-FU-41, P-AF-B-2043 | 26d | 0d | *APB - 6 D week + Qatar Holiday | 28,181.24 |
| C-CA-FU-61 |  | Installation of shoe racks at basement 2 | 5d | 2017-04-19 | 2017-04-24 | P-AF-B-2083, S-001, C-CA-FU-51 | 26d | 0d | *APB - 6 D week + Qatar Holiday | 3,593.5 |
| C-CA-FU-71 |  | Installation of dinning hall furnitute & fittings at basement 2 | 5d | 2017-04-25 | 2017-04-30 | P-AF-B-2123, S-001, C-CA-FU-61 | 26d |  | *APB - 6 D week + Qatar Holiday | 183,239.23 |
|  | 2 | **Ground FLoor** |  | 2017-03-27 | 2017-04-01 |  |  |  |  |  |
| C-CA-FU-001 |  | Installation of Pantry Units & Accessories at Ground Floor | 5d | 2017-03-27 | 2017-04-01 | S-001, P-AF-B-2203 | 26d | 0d | *APB - 6 D week + Qatar Holiday | 67,904.27 |
|  | 3 | **Level 1 Mezz.** |  | 2017-04-02 | 2017-04-06 |  |  |  |  |  |
| C-CA-FU-101 |  | Installation of Pantry Units & Accessories at Level 1 Mezz. | 5d | 2017-04-02 | 2017-04-06 | P-AF-B-2203, S-001, C-CA-FU-001 | 26d | 0d | *APB - 6 D week + Qatar Holiday | 63,676.66 |
|  | 5 | **Level 2** |  | 2017-03-27 | 2017-04-12 |  |  |  |  |  |
| C-CA-FU-81 |  | Installation of toilets vanity units at level 2 | 2d | 2017-03-27 | 2017-03-28 | P-AF-B-2203, S-001 | 34d | 8d | *APB - 6 D week + Qatar Holiday | 5,212.12 |
| C-CA-FU-91 |  | Installation of office furniture at level 2 | 8d | 2017-03-27 | 2017-04-04 | P-AF-B-2283, S-001 | 28d | 2d | *APB - 6 D week + Qatar Holiday | 659,531.24 |
| C-CA-FU-111 |  | Installation of Pantry Units & Accessories at level 2 | 5d | 2017-04-08 | 2017-04-12 | P-AF-B-2203, S-001, C-CA-FU-101, C-CA-FU-81, C-CA-FU-91 | 26d | 0d | *APB - 6 D week + Qatar Holiday | 94,960.97 |
|  | 1 | **Level 44** |  | 2017-04-13 | 2017-04-18 |  |  |  |  |  |
| C-CA-FU-121 |  | Installation of Pantry Units & Accessories at level 44 | 5d | 2017-04-13 | 2017-04-18 | P-AF-B-2203, S-001, C-CA-FU-111 | 26d | 0d | *APB - 6 D week + Qatar Holiday | 68,327.03 |
|  | 6 | **Level 47** |  | 2017-04-19 | 2017-04-24 |  |  |  |  |  |
| C-CA-FU-131 |  | Installation of Pantry Units & Accessories at level 47 | 5d | 2017-04-19 | 2017-04-24 | P-AF-B-2203, S-001, C-CA-FU-121 | 26d | 0d | *APB - 6 D week + Qatar Holiday | 39,156.53 |

Notes:
- C-CA-FU-21: Expenses: 1 809838
- C-CA-FU-31: Expenses: 1 7233.13
- C-CA-FU-41: Expenses: 1 4859.47
- C-CA-FU-51: Expenses: 1 28181.2
- C-CA-FU-61: Expenses: 1 3593.5
- C-CA-FU-71: Expenses: 1 183239
- C-CA-FU-001: Expenses: 1 67904.3
- C-CA-FU-101: Expenses: 1 63676.7
- C-CA-FU-81: Expenses: 1 5212.12
- C-CA-FU-91: Expenses: 1 659531
- C-CA-FU-111: Expenses: 1 94961
- C-CA-FU-121: Expenses: 1 68327
- C-CA-FU-131: Expenses: 1 39156.5

| ID | WBS | Activity | Duration | Start | Finish | Predecessors | Total float | Free float | Calendar | Cost |
| --- | --- | --- | --- | --- | --- | --- | --- | --- | --- | --- |
|  | 7 | **Level 48** |  | 2017-04-25 | 2017-04-30 |  |  |  |  |  |
| C-CA-FU-141 |  | Installation of Pantry Units & Accessories at level 48 | 5d | 2017-04-25 | 2017-04-30 | P-AF-B-2203, S-001, C-CA-FU-131 | 26d |  | *APB - 6 D week + Qatar Holiday | 41,693.1 |
|  | 1 | **Provisional Sum Works** |  | 2014-09-16 | 2017-06-11 |  |  |  |  |  |
|  | 10 | **Mock-Ups** |  | 2014-12-15 | 2015-05-07 |  |  |  |  |  |
|  | 8 | **Method of Statement** |  | 2014-12-15 | 2015-01-31 |  |  |  |  |  |
| PQ-CS-C-2162 |  | Preparation & Submittal of Mock-Ups MS | 30d | 2014-12-15 | 2015-01-19 | G-CD-003 | 107d | 0d |  |  |
| PQ-CS-C-2172 |  | Review & Approval of Mock-Ups MS | 30d | 2014-12-28 | 2015-01-31 | PQ-CS-C-2162 SS+10d, PQ-CS-C-2162 FF+10d | 107d | 0d |  |  |
|  | 9 | **Sketches** |  | 2014-12-28 | 2015-02-12 |  |  |  |  |  |
| SD-CS-B1-742 |  | Preparation & Submittals of SD of Mock-Ups | 30d | 2014-12-28 | 2015-01-31 | PQ-CS-C-2172 SS | 107d | 0d |  |  |
| SD-CS-B1-752 |  | Review & Approval of SD of Mock-Ups | 30d | 2015-01-08 | 2015-02-12 | SD-CS-B1-742 SS+10d, SD-CS-B1-742 FF+10d | 107d | 0d |  |  |
|  | 2 | **Procurement** |  | 2014-12-15 | 2015-03-14 |  |  |  |  |  |
|  | 1 | **Ceiling Finishes** |  | 2014-12-15 | 2015-02-09 |  |  |  |  |  |
| P-AF-B-3653 |  | Material Submittals of Ceiling FInishes | 7d | 2014-12-15 | 2014-12-23 | PQ-CS-C-2162 SS | 130d | 0d |  |  |
| P-AF-B-3663 |  | Material review & Approval of Ceiling FInishes | 10d | 2014-12-28 | 2015-01-07 | P-AF-B-3653 SS+10d, P-AF-B-3653 FF+10d | 130d | 0d |  |  |
| P-AF-B-3673 |  | P.O of Ceiling FInishes | 2d | 2015-01-08 | 2015-01-10 | P-AF-B-3663 | 130d | 0d |  |  |
| P-AF-B-3683 |  | Lead Time & Delivery of Ceiling FInishes | 30d | 2015-01-11 | 2015-02-09 | P-AF-B-3673 | 152d | 27d | * JWM - 7 Days per week with no holidays |  |
|  | 14 | **Floor Finishes** |  | 2014-12-24 | 2015-02-17 |  |  |  |  |  |
| P-AF-B-3493 |  | Material Submittals of Floor Finishes | 7d | 2014-12-24 | 2014-12-31 | P-AF-B-3653 | 135d | 0d |  |  |
| P-AF-B-3503 |  | Material review & Approval of Floor Finishes | 10d | 2015-01-05 | 2015-01-15 | P-AF-B-3493 SS+10d, P-AF-B-3493 FF+10d | 135d | 0d |  |  |
| P-AF-B-3513 |  | P.O of Floor Finishes | 2d | 2015-01-17 | 2015-01-18 | P-AF-B-3503 | 135d | 0d |  |  |
| P-AF-B-3523 |  | Lead Time & Delivery of Floor Finishes | 30d | 2015-01-19 | 2015-02-17 | P-AF-B-3513 | 158d | 31d | * JWM - 7 Days per week with no holidays |  |
|  | 19 | **Wall Finishes** |  | 2015-01-01 | 2015-02-25 |  |  |  |  |  |
| P-AF-B-3613 |  | Material Submittals of Wall Finishes | 7d | 2015-01-01 | 2015-01-08 | P-AF-B-3493 | 137d | 0d |  |  |
| P-AF-B-3623 |  | Material review & Approval of Wall Finishes | 10d | 2015-01-13 | 2015-01-24 | P-AF-B-3613 SS+10d, P-AF-B-3613 FF+10d | 137d | 0d |  |  |
| P-AF-B-3633 |  | P.O of Wall Finishes | 2d | 2015-01-25 | 2015-01-26 | P-AF-B-3623 | 137d | 0d |  |  |
| P-AF-B-3643 |  | Lead Time & Delivery of Wall Finishes | 30d | 2015-01-27 | 2015-02-25 | P-AF-B-3633 | 161d | 34d | * JWM - 7 Days per week with no holidays |  |

Notes:
- C-CA-FU-141: Expenses: 1 41693.1

| ID | WBS | Activity | Duration | Start | Finish | Predecessors | Total float | Free float | Calendar | Cost |
| --- | --- | --- | --- | --- | --- | --- | --- | --- | --- | --- |
|  | 15 | **Furniture** |  | 2015-01-10 | 2015-03-05 |  |  |  |  |  |
| P-AF-B-3533 |  | Material Submittals of Furniture | 7d | 2015-01-10 | 2015-01-17 | P-AF-B-3613 | 142d | 0d |  |  |
| P-AF-B-3543 |  | Material review & Approval of Furniture | 10d | 2015-01-21 | 2015-02-01 | P-AF-B-3533 SS+10d, P-AF-B-3533 FF+10d | 149d | 0d |  |  |
| P-AF-B-3553 |  | P.O of Furniture | 2d | 2015-02-02 | 2015-02-03 | P-AF-B-3543 | 149d | 0d |  |  |
| P-AF-B-3563 |  | Lead Time & Delivery of Furniture | 30d | 2015-02-04 | 2015-03-05 | P-AF-B-3553 | 177d | 50d | * JWM - 7 Days per week with no holidays |  |
|  | 17 | **Lighting Fixtures** |  | 2015-01-18 | 2015-03-14 |  |  |  |  |  |
| P-AF-B-3573 |  | Material Submittals of Lighting Fixtures | 7d | 2015-01-18 | 2015-01-25 | P-AF-B-3533 | 142d | 0d |  |  |
| P-AF-B-3583 |  | Material review & Approval of Lighting Fixtures | 10d | 2015-01-29 | 2015-02-09 | P-AF-B-3573 SS+10d, P-AF-B-3573 FF+10d | 142d | 0d |  |  |
| P-AF-B-3593 |  | P.O of Lighting Fixtures | 2d | 2015-02-11 | 2015-02-12 | P-AF-B-3583 | 142d | 0d |  |  |
| P-AF-B-3603 |  | Lead Time & Delivery of Lighting Fixtures | 30d | 2015-02-13 | 2015-03-14 | P-AF-B-3593 | 168d | 41d | * JWM - 7 Days per week with no holidays |  |
|  | 11 | **Construction** |  | 2015-02-14 | 2015-04-30 |  |  |  |  |  |
| C-F-P-3403 |  | Installation of Partition related within the Basement | 20d | 2015-02-14 | 2015-03-08 | SD-CS-B1-752, C-CS-B3-01 | 107d | 0d |  | 109,000 |
| C-F-P-3333 |  | Installation of Ceiling Finishes | 10d | 2015-03-09 | 2015-03-19 | P-AF-B-3683, SD-CS-B1-752, C-F-P-3403 | 107d | 0d |  | 163,500 |
| C-F-P-3343 |  | Installation of Floor Finishes | 10d | 2015-03-21 | 2015-03-31 | C-F-P-3333, P-AF-B-3523 | 107d | 0d |  | 163,500 |
| C-F-P-3353 |  | Installation of Wall Finishes | 10d | 2015-04-01 | 2015-04-12 | C-F-P-3343, P-AF-B-3643 | 107d | 0d |  | 163,500 |
| C-F-P-3363 |  | Installation of Windows & Doors | 10d | 2015-04-13 | 2015-04-23 | C-F-P-3353 | 107d | 0d |  | 109,000 |
| C-F-P-3383 |  | Installation of Sanitary Fixtures | 6d | 2015-04-13 | 2015-04-19 | C-F-P-3353 | 117d | 10d |  | 54,500 |
| C-F-P-3373 |  | Installation of Lighting Fixtures | 6d | 2015-04-25 | 2015-04-30 | C-F-P-3363, P-AF-B-3603 | 107d | 0d |  | 54,500 |
| C-F-P-3393 |  | Installation of Furnitures | 6d | 2015-04-25 | 2015-04-30 | C-F-P-3363, P-AF-B-3563 | 107d | 0d |  | 272,500 |
|  | 1 | **Mock-ups Approval** |  | 2015-05-02 | 2015-05-07 |  |  |  |  |  |
| A10210 |  | Client Final Approval on The Mock-ups | 6d | 2015-05-02 | 2015-05-07 | C-F-P-3393, C-F-P-3373, C-F-P-3383, C-F-P-3363, C-F-P-3353, C-F-P-3343, C-F-P-3333 | 107d | 0d |  |  |
|  | 4 | **FOH Interior Finishes and Fit-Out Design** |  | 2014-09-16 | 2017-06-03 |  |  |  |  |  |
|  | 4 | **Design** |  | 2014-11-10 | 2015-02-23 |  |  |  |  |  |
| A9660 |  | Design Preparation & Submittal | 75d | 2014-11-10 | 2015-02-05 | A9690 | 90d | 0d |  |  |
| A9670 |  | Design Review & Approval | 75d | 2014-11-26 | 2015-02-23 | A9660 SS+14d, A9660 FF+14d | 90d | 0d |  |  |

Notes:
- C-F-P-3403: Expenses: 1 109000
- C-F-P-3333: Expenses: 1 163500
- C-F-P-3343: Expenses: 1 163500
- C-F-P-3353: Expenses: 1 163500
- C-F-P-3363: Expenses: 1 109000
- C-F-P-3383: Expenses: 1 54500
- C-F-P-3373: Expenses: 1 54500
- C-F-P-3393: Expenses: 1 272500

| ID | WBS | Activity | Duration | Start | Finish | Predecessors | Total float | Free float |
| --- | --- | --- | --- | --- | --- | --- | --- | --- |
|  | 3 | **Pre-qualification** |  | 2014-09-16 | 2015-04-07 |  |  |  |
| A9680 |  | Pre-qualification submittal of the Designer | 30d | 2014-09-16 | 2014-10-23 | G-CD-001 | 78d | 0d |
| A9690 |  | Pre-qualification Approval of the Designer | 30d | 2014-10-02 | 2014-11-09 | A9680 SS+14d, A9680 FF+14d | 90d | 0d |
| A9700 |  | Pre-qualification submittal of Sub-Contractor | 30d | 2015-02-24 | 2015-03-30 | A9670 | 90d | 0d |
| A9710 |  | Pre-qualification Approval of Sub-Contractor | 30d | 2015-03-04 | 2015-04-07 | A9700 SS+7d, A9700 FF+7d | 90d | 0d |
|  | 5 | **Method of Statement** |  | 2015-04-08 | 2015-05-24 |  |  |  |
| PQ-CS-C-2002 |  | Preparation & Submittal of FOH Interior Finishes | 30d | 2015-04-08 | 2015-05-12 | A9710 | 211d | 0d |
| PQ-CS-C-2012 |  | Review & Approval ofFOH Interior Finishes | 30d | 2015-04-20 | 2015-05-24 | PQ-CS-C-2002 SS+10d, PQ-CS-C-2002 FF+10d | 211d | 119d |
|  | 1 | **Shop Drawings** |  | 2015-04-08 | 2016-08-10 |  |  |  |
|  | 1 | **Ceiling Finishes** |  | 2015-04-08 | 2016-06-19 |  |  |  |
|  | 3 | **Ground Floor level - Shop drawings** |  | 2015-04-08 | 2015-05-24 |  |  |  |
| SD-CS-B1-522 |  | Preparation & Submittals of SD of Ceiling Finishes at GF | 30d | 2015-04-08 | 2015-05-12 | A9710 | 90d | 0d |
| SD-CS-B1-532 |  | Review & Approval of SD of Ceiling Finishes at GF | 30d | 2015-04-20 | 2015-05-24 | SD-CS-B1-522 SS+10d, SD-CS-B1-522 FF+10d | 211d | 119d |
|  | 4 | **Mezzanine Floor level - Shop drawings** |  | 2015-04-16 | 2015-06-01 |  |  |  |
| SD-CS-GF-522 |  | Preparation & Submittals of SD of Ceiling Finishes at ML | 30d | 2015-04-16 | 2015-05-20 | SD-CS-B1-522 SS+7d | 102d | 0d |
| SD-CS-GF-532 |  | Review & Approval of SD of Ceiling Finishes at ML | 30d | 2015-04-28 | 2015-06-01 | SD-CS-GF-522 SS+10d, SD-CS-GF-522 FF+10d | 270d | 112d |
|  | 5 | **Level 1 Floor - Shop drawings** |  | 2015-04-25 | 2015-06-09 |  |  |  |
| SD-CS-L1-542 |  | Preparation & Submittals of SD of Ceiling Finishes at L1 | 30d | 2015-04-25 | 2015-05-28 | SD-CS-GF-522 SS+7d | 102d | 0d |
| SD-CS-L1-552 |  | Review & Approval of SD of Ceiling Finishes at L1 | 30d | 2015-05-06 | 2015-06-09 | SD-CS-L1-542 SS+10d, SD-CS-L1-542 FF+10d | 200d | 105d |
|  | 6 | **Level 2 Floor - Shop drawings** |  | 2015-05-03 | 2015-06-17 |  |  |  |
| SD-CS-L2-562 |  | Preparation & Submittals of SD of Ceiling Finishes at L2 | 30d | 2015-05-03 | 2015-06-06 | SD-CS-L1-542 SS+7d | 102d | 0d |
| SD-CS-L2-572 |  | Review & Approval of SD of Ceiling Finishes at L2 | 30d | 2015-05-14 | 2015-06-17 | SD-CS-L2-562 SS+10d, SD-CS-L2-562 FF+10d | 202d | 98d |
|  | 7 | **Level 3 Floor - Shop drawings** |  | 2015-05-11 | 2015-06-25 |  |  |  |
| SD-CS-L3-582 |  | Preparation & Submittals of SD of Ceiling Finishes at L3 | 30d | 2015-05-11 | 2015-06-14 | SD-CS-L2-562 SS+7d | 102d | 0d |
| SD-CS-L3-592 |  | Review & Approval of SD of Ceiling Finishes at L3 | 30d | 2015-05-23 | 2015-06-25 | SD-CS-L3-582 SS+10d, SD-CS-L3-582 FF+10d | 204d | 94d |

| ID | WBS | Activity | Duration | Start | Finish | Predecessors | Total float | Free float |
| --- | --- | --- | --- | --- | --- | --- | --- | --- |
|  | 8 | **Level 4 Floor - Shop drawings** |  | 2015-05-19 | 2015-07-04 |  |  |  |
| SD-CS-L4-1602 |  | Preparation & Submittals of SD of Ceiling Finishes at L4 | 30d | 2015-05-19 | 2015-06-22 | SD-CS-L3-582 SS+7d | 102d | 0d |
| SD-CS-L4-1612 |  | Review & Approval of SD of Ceiling Finishes at L4 | 30d | 2015-05-31 | 2015-07-04 | SD-CS-L4-1602 SS+10d, SD-CS-L4-1602 FF+10d | 219d | 129d |
|  | 9 | **Level 5 Floor - Shop drawings** |  | 2015-05-27 | 2015-07-12 |  |  |  |
| SD-CS-L5-622 |  | Preparation & Submittals of SD of Ceiling Finishes at L5 | 30d | 2015-05-27 | 2015-06-30 | SD-CS-L4-1602 SS+7d | 102d | 0d |
| SD-CS-L5-632 |  | Review & Approval of SD of Ceiling Finishes at L5 | 30d | 2015-06-08 | 2015-07-12 | SD-CS-L5-622 SS+10d, SD-CS-L5-622 FF+10d | 278d | 123d |
|  | 10 | **Level 6 Floor - Shop drawings** |  | 2015-06-04 | 2015-07-22 |  |  |  |
| SD-CS-L6-642 |  | Preparation & Submittals of SD of Ceiling Finishes at L6 | 30d | 2015-06-04 | 2015-07-08 | SD-CS-L5-622 SS+7d | 102d | 0d |
| SD-CS-L6-652 |  | Review & Approval of SD of Ceiling Finishes at L6 | 30d | 2015-06-16 | 2015-07-22 | SD-CS-L6-642 SS+10d, SD-CS-L6-642 FF+10d | 208d | 111d |
|  | 11 | **Level 7 Floor - Shop drawings** |  | 2015-06-13 | 2015-07-30 |  |  |  |
| SD-CS-L7-662 |  | Preparation & Submittals of SD of Ceiling Finishes at L7 | 30d | 2015-06-13 | 2015-07-19 | SD-CS-L6-642 SS+7d | 102d | 0d |
| SD-CS-L7-672 |  | Review & Approval of SD of Ceiling Finishes at L7 | 30d | 2015-06-24 | 2015-07-30 | SD-CS-L7-662 SS+10d, SD-CS-L7-662 FF+10d | 202d | 123d |
|  | 12 | **Level 8 Floor - Shop drawings** |  | 2015-06-21 | 2015-08-08 |  |  |  |
| SD-CS-L8-682 |  | Preparation & Submittals of SD of Ceiling Finishes at L8 | 30d | 2015-06-21 | 2015-07-27 | SD-CS-L7-662 SS+7d | 102d | 0d |
| SD-CS-L8-692 |  | Review & Approval of SD of Ceiling Finishes at L8 | 30d | 2015-07-02 | 2015-08-08 | SD-CS-L8-682 SS+10d, SD-CS-L8-682 FF+10d | 203d | 136d |
|  | 13 | **Level 9 Floor - Shop drawings** |  | 2015-06-29 | 2015-08-16 |  |  |  |
| SD-CS-L9-702 |  | Preparation & Submittals of SD of Ceiling Finishes at L9 | 30d | 2015-06-29 | 2015-08-04 | SD-CS-L8-682 SS+7d | 102d | 0d |
| SD-CS-L9-712 |  | Review & Approval of SD of Ceiling Finishes at L9 | 30d | 2015-07-11 | 2015-08-16 | SD-CS-L9-702 SS+10d, SD-CS-L9-702 FF+10d | 205d | 129d |
|  | 14 | **Level 10 Floor - Shop drawings** |  | 2015-07-07 | 2015-08-24 |  |  |  |
| SD-CS-L10-722 |  | Preparation & Submittals of SD of Ceiling Finishes at L10 | 30d | 2015-07-07 | 2015-08-12 | SD-CS-L9-702 SS+7d | 102d | 0d |
| SD-CS-L10-732 |  | Review & Approval of SD of Ceiling Finishes at L10 | 30d | 2015-07-21 | 2015-08-24 | SD-CS-L10-722 SS+10d, SD-CS-L10-722 FF+10d | 201d | 122d |
|  | 15 | **Level 11 Floor - Shop drawings** |  | 2015-07-18 | 2015-09-01 |  |  |  |
| SD-CS-L11-742 |  | Preparation & Submittals of SD of Ceiling Finishes at L11 | 30d | 2015-07-18 | 2015-08-20 | SD-CS-L10-722 SS+7d | 102d | 0d |
| SD-CS-L11-752 |  | Review & Approval of SD of Ceiling Finishes at L11 | 30d | 2015-07-29 | 2015-09-01 | SD-CS-L11-742 SS+10d, SD-CS-L11-742 FF+10d | 261d | 115d |

| ID | WBS | Activity | Duration | Start | Finish | Predecessors | Total float | Free float |
| --- | --- | --- | --- | --- | --- | --- | --- | --- |
|  | 16 | **Level 12 Floor - Shop drawings** |  | 2015-07-26 | 2015-09-09 |  |  |  |
| SD-CS-L12-762 |  | Preparation & Submittals of SD of Ceiling Finishes at L12 | 30d | 2015-07-26 | 2015-08-29 | SD-CS-L11-742 SS+7d | 102d | 0d |
| SD-CS-L12-772 |  | Review & Approval of SD of Ceiling Finishes at L12 | 30d | 2015-08-06 | 2015-09-09 | SD-CS-L12-762 SS+10d, SD-CS-L12-762 FF+10d | 190d | 128d |
|  | 17 | **Level 13 Floor - Shop drawings** |  | 2015-08-03 | 2015-09-17 |  |  |  |
| SD-CS-L13-782 |  | Preparation & Submittals of SD of Ceiling Finishes at L13 | 30d | 2015-08-03 | 2015-09-06 | SD-CS-L12-762 SS+7d | 102d | 0d |
| SD-CS-L13-792 |  | Review & Approval of SD of Ceiling Finishes at L13 | 30d | 2015-08-15 | 2015-09-17 | SD-CS-L13-782 SS+10d, SD-CS-L13-782 FF+10d | 184d | 121d |
|  | 18 | **Level 14 Floor - Shop drawings** |  | 2015-08-11 | 2015-09-29 |  |  |  |
| SD-CS-L14-802 |  | Preparation & Submittals of SD of Ceiling Finishes at L14 | 30d | 2015-08-11 | 2015-09-14 | SD-CS-L13-782 SS+7d | 102d | 0d |
| SD-CS-L14-812 |  | Review & Approval of SD of Ceiling Finishes at L14 | 30d | 2015-08-23 | 2015-09-29 | SD-CS-L14-802 SS+10d, SD-CS-L14-802 FF+10d | 186d | 118d |
|  | 19 | **Level 15 Floor - Shop drawings** |  | 2015-08-19 | 2015-10-07 |  |  |  |
| SD-CS-L15-822 |  | Preparation & Submittals of SD of Ceiling Finishes at L15 | 30d | 2015-08-19 | 2015-09-26 | SD-CS-L14-802 SS+7d | 102d | 0d |
| SD-CS-L15-832 |  | Review & Approval of SD of Ceiling Finishes at L15 | 30d | 2015-08-31 | 2015-10-07 | SD-CS-L15-822 SS+10d, SD-CS-L15-822 FF+10d | 187d | 111d |
|  | 20 | **Level 16 Floor - Shop drawings** |  | 2015-08-27 | 2015-10-15 |  |  |  |
| SD-CS-L16-842 |  | Preparation & Submittals of SD of Ceiling Finishes at L16 | 30d | 2015-08-27 | 2015-10-04 | SD-CS-L15-822 SS+7d | 102d | 0d |
| SD-CS-L16-852 |  | Review & Approval of SD of Ceiling Finishes C at L16 | 30d | 2015-09-08 | 2015-10-15 | SD-CS-L16-842 SS+10d, SD-CS-L16-842 FF+10d | 183d | 104d |
|  | 22 | **Level 18 Floor - Shop drawings** |  | 2015-09-05 | 2015-10-24 |  |  |  |
| SD-CS-L18-882 |  | Preparation & Submittals of SD of Ceiling Finishes at L18 | 30d | 2015-09-05 | 2015-10-12 | SD-CS-L16-842 SS+7d | 102d | 0d |
| SD-CS-L18-892 |  | Review & Approval of SD of Ceiling Finishes at L18 | 30d | 2015-09-16 | 2015-10-24 | SD-CS-L18-882 SS+10d, SD-CS-L18-882 FF+10d | 179d | 117d |
|  | 23 | **Level 19 Floor - Shop drawings** |  | 2015-09-13 | 2015-11-01 |  |  |  |
| SD-CS-L19-902 |  | Preparation & Submittals of SD of Ceiling Finishes at L19 | 30d | 2015-09-13 | 2015-10-20 | SD-CS-L18-882 SS+7d | 102d | 0d |
| SD-CS-L19-912 |  | Review & Approval of SD of Ceiling Finishes at L19 | 30d | 2015-09-28 | 2015-11-01 | SD-CS-L19-902 SS+10d, SD-CS-L19-902 FF+10d | 172d | 109d |
|  | 24 | **Level 20 Floor - Shop drawings** |  | 2015-09-24 | 2015-11-09 |  |  |  |
| SD-CS-L20-922 |  | Preparation & Submittals of SD of Ceiling Finishes at L20 | 30d | 2015-09-24 | 2015-10-28 | SD-CS-L19-902 SS+7d | 102d | 0d |
| SD-CS-L20-932 |  | Review & Approval of SD of Ceiling Finishes at L20 | 30d | 2015-10-06 | 2015-11-09 | SD-CS-L20-922 SS+10d, SD-CS-L20-922 FF+10d | 174d | 106d |

| ID | WBS | Activity | Duration | Start | Finish | Predecessors | Total float | Free float |
| --- | --- | --- | --- | --- | --- | --- | --- | --- |
|  | 25 | **Level 21 Floor - Shop drawings** |  | 2015-10-03 | 2015-11-17 |  |  |  |
| SD-CS-L21-942 |  | Preparation & Submittals of SD of Ceiling Finishes at L21 | 30d | 2015-10-03 | 2015-11-05 | SD-CS-L20-922 SS+7d | 102d | 0d |
| SD-CS-L21-952 |  | Review & Approval of SD of Ceiling Finishes at L21 | 30d | 2015-10-14 | 2015-11-17 | SD-CS-L21-942 SS+10d, SD-CS-L21-942 FF+10d | 175d | 99d |
|  | 26 | **Level 22 Floor - Shop drawings** |  | 2015-10-11 | 2015-11-25 |  |  |  |
| SD-CS-L22-962 |  | Preparation & Submittals of SD of Ceiling Finishes at L22 | 30d | 2015-10-11 | 2015-11-14 | SD-CS-L21-942 SS+7d | 102d | 0d |
| SD-CS-L22-972 |  | Review & Approval of SD of Ceiling Finishes at L22 | 30d | 2015-10-22 | 2015-11-25 | SD-CS-L22-962 SS+10d, SD-CS-L22-962 FF+10d | 171d | 92d |
|  | 27 | **Level 23 Floor - Shop drawings** |  | 2015-10-19 | 2015-12-03 |  |  |  |
| SD-CS-L23-982 |  | Preparation & Submittals of SD of Ceiling Finishes at L23 | 30d | 2015-10-19 | 2015-11-22 | SD-CS-L22-962 SS+7d | 102d | 0d |
| SD-CS-L23-992 |  | Review & Approval of SD of Ceiling Finishes at L23 | 30d | 2015-10-31 | 2015-12-03 | SD-CS-L23-982 SS+10d, SD-CS-L23-982 FF+10d | 208d | 118d |
|  | 28 | **Level 24 Floor - Shop drawings** |  | 2015-10-27 | 2015-12-12 |  |  |  |
| SD-CS-L24-1002 |  | Preparation & Submittals of SD of Ceiling Finishes at L24 | 30d | 2015-10-27 | 2015-11-30 | SD-CS-L23-982 SS+7d | 102d | 0d |
| SD-CS-L24-1012 |  | Review & Approval of SD of Ceiling Finishes at L24 | 30d | 2015-11-08 | 2015-12-12 | SD-CS-L24-1002 SS+10d, SD-CS-L24-1002 FF+10d | 160d | 98d |
|  | 29 | **Level 25 Floor - Shop drawings** |  | 2015-11-04 | 2015-12-21 |  |  |  |
| SD-CS-L25-1022 |  | Preparation & Submittals of SD of Ceiling Finishes at L25 | 30d | 2015-11-04 | 2015-12-08 | SD-CS-L24-1002 SS+7d | 102d | 0d |
| SD-CS-L25-1032 |  | Review & Approval of SD of Ceiling Finishes at L25 | 30d | 2015-11-16 | 2015-12-21 | SD-CS-L25-1022 SS+10d, SD-CS-L25-1022 FF+10d | 153d | 90d |
|  | 30 | **Level 26 Floor - Shop drawings** |  | 2015-11-12 | 2015-12-29 |  |  |  |
| SD-CS-L26-1042 |  | Preparation & Submittals of SD of Ceiling Finishes at L26 | 30d | 2015-11-12 | 2015-12-16 | SD-CS-L25-1022 SS+7d | 102d | 0d |
| SD-CS-L26-1052 |  | Review & Approval of SD of Ceiling Finishes at L26 | 30d | 2015-11-24 | 2015-12-29 | SD-CS-L26-1042 SS+10d, SD-CS-L26-1042 FF+10d | 155d | 87d |
|  | 31 | **Level 27 Floor - Shop drawings** |  | 2015-11-21 | 2016-01-06 |  |  |  |
| SD-CS-L27-1062 |  | Preparation & Submittals of SD of Ceiling Finishes at L27 | 30d | 2015-11-21 | 2015-12-26 | SD-CS-L26-1042 SS+7d | 102d | 0d |
| SD-CS-L27-1072 |  | Review & Approval of SD of Ceiling Finishes at L27 | 30d | 2015-12-02 | 2016-01-06 | SD-CS-L27-1062 SS+10d, SD-CS-L27-1062 FF+10d | 156d | 80d |
|  | 32 | **Level 28 Floor - Shop drawings** |  | 2015-11-29 | 2016-01-14 |  |  |  |
| SD-CS-L28-1082 |  | Preparation & Submittals of SD of Ceiling Finishes at L28 | 30d | 2015-11-29 | 2016-01-03 | SD-CS-L27-1062 SS+7d | 102d | 0d |
| SD-CS-L28-1092 |  | Review & Approval of SD of Ceiling Finishes at L28 | 30d | 2015-12-10 | 2016-01-14 | SD-CS-L28-1082 SS+10d, SD-CS-L28-1082 FF+10d | 152d | 73d |

| ID | WBS | Activity | Duration | Start | Finish | Predecessors | Total float | Free float |
| --- | --- | --- | --- | --- | --- | --- | --- | --- |
|  | 33 | **Level 29 Floor - Shop drawings** |  | 2015-12-07 | 2016-01-23 |  |  |  |
| SD-CS-L29-1102 |  | Preparation & Submittals of SD of Ceiling Finishes at L29 | 30d | 2015-12-07 | 2016-01-11 | SD-CS-L28-1082 SS+7d | 102d | 0d |
| SD-CS-L29-1112 |  | Review & Approval of SD of Ceiling Finishes at L29 | 30d | 2015-12-20 | 2016-01-23 | SD-CS-L29-1102 SS+10d, SD-CS-L29-1102 FF+10d | 189d | 99d |
|  | 34 | **Level 30 Floor - Shop drawings** |  | 2015-12-15 | 2016-01-31 |  |  |  |
| SD-CS-L30-1122 |  | Preparation & Submittals of SD of Ceiling Finishes at L30 | 30d | 2015-12-15 | 2016-01-19 | SD-CS-L29-1102 SS+7d | 102d | 0d |
| SD-CS-L30-1132 |  | Review & Approval of SD of Ceiling Finishes at L30 | 30d | 2015-12-28 | 2016-01-31 | SD-CS-L30-1122 SS+10d, SD-CS-L30-1122 FF+10d | 141d | 79d |
|  | 35 | **Level 31 Floor - Shop drawings** |  | 2015-12-24 | 2016-02-08 |  |  |  |
| SD-CS-L31-1142 |  | Preparation & Submittals of SD of Ceiling Finishes at L31 | 30d | 2015-12-24 | 2016-01-27 | SD-CS-L30-1122 SS+7d | 102d | 0d |
| SD-CS-L31-1152 |  | Review & Approval of SD of Ceiling Finishes at L31 | 30d | 2016-01-05 | 2016-02-08 | SD-CS-L31-1142 SS+10d, SD-CS-L31-1142 FF+10d | 134d | 79d |
|  | 36 | **Level 32 Floor - Shop drawings** |  | 2016-01-02 | 2016-02-17 |  |  |  |
| SD-CS-L32-1162 |  | Preparation & Submittals of SD of Ceiling Finishes at L32 | 30d | 2016-01-02 | 2016-02-04 | SD-CS-L31-1142 SS+7d | 102d | 0d |
| SD-CS-L32-1172 |  | Review & Approval of SD of Ceiling Finishes at L32 | 30d | 2016-01-13 | 2016-02-17 | SD-CS-L32-1162 SS+10d, SD-CS-L32-1162 FF+10d | 136d | 73d |
|  | 37 | **Level 33 Floor - Shop drawings** |  | 2016-01-10 | 2016-02-25 |  |  |  |
| SD-CS-L33-1182 |  | Preparation & Submittals of SD of Ceiling Finishes at L33 | 30d | 2016-01-10 | 2016-02-14 | SD-CS-L32-1162 SS+7d | 102d | 0d |
| SD-CS-L33-1192 |  | Review & Approval of SD of Ceiling Finishes at L33 | 30d | 2016-01-21 | 2016-02-25 | SD-CS-L33-1182 SS+10d, SD-CS-L33-1182 FF+10d | 137d | 72d |
|  | 38 | **Level 34 Floor - Shop drawings** |  | 2016-01-18 | 2016-03-05 |  |  |  |
| SD-CS-L34-1202 |  | Preparation & Submittals of SD of Ceiling Finishes at L34 | 30d | 2016-01-18 | 2016-02-22 | SD-CS-L33-1182 SS+7d | 102d | 0d |
| SD-CS-L34-1212 |  | Review & Approval of SD of Ceiling Finishes at L34 | 30d | 2016-01-30 | 2016-03-05 | SD-CS-L34-1202 SS+10d, SD-CS-L34-1202 FF+10d | 133d | 71d |
|  | 40 | **Level 36 Floor - Shop drawings** |  | 2016-01-26 | 2016-03-13 |  |  |  |
| SD-CS-L36-1242 |  | Preparation & Submittals of SD of Ceiling Finishes at L36 | 30d | 2016-01-26 | 2016-03-01 | SD-CS-L34-1202 SS+7d | 102d | 0d |
| SD-CS-L36-1252 |  | Review & Approval of SD of Ceiling Finishes at L36 | 30d | 2016-02-07 | 2016-03-13 | SD-CS-L36-1242 SS+10d, SD-CS-L36-1242 FF+10d | 129d | 78d |
|  | 41 | **Level 37 Floor - Shop drawings** |  | 2016-02-03 | 2016-03-21 |  |  |  |
| SD-CS-L37-1262 |  | Preparation & Submittals of SD of Ceiling Finishes at L37 | 30d | 2016-02-03 | 2016-03-09 | SD-CS-L36-1242 SS+7d | 102d | 0d |
| SD-CS-L37-1272 |  | Review & Approval of SD of Ceiling Finishes at L37 | 30d | 2016-02-16 | 2016-03-21 | SD-CS-L37-1262 SS+10d, SD-CS-L37-1262 FF+10d | 122d | 75d |

| ID | WBS | Activity | Duration | Start | Finish | Predecessors | Total float | Free float |
| --- | --- | --- | --- | --- | --- | --- | --- | --- |
|  | 42 | **Level 38 Floor - Shop drawings** |  | 2016-02-13 | 2016-03-29 |  |  |  |
| SD-CS-L38-1282 |  | Preparation & Submittals of SD of Ceiling Finishes at L38 | 30d | 2016-02-13 | 2016-03-17 | SD-CS-L37-1262 SS+7d | 102d | 0d |
| SD-CS-L38-1292 |  | Review & Approval of SD of Ceiling Finishes at L38 | 30d | 2016-02-24 | 2016-03-29 | SD-CS-L38-1282 SS+10d, SD-CS-L38-1282 FF+10d | 124d | 74d |
|  | 43 | **Level 39 Floor - Shop drawings** |  | 2016-02-21 | 2016-04-06 |  |  |  |
| SD-CS-L39-1302 |  | Preparation & Submittals of SD of Ceiling Finishes at L39 | 30d | 2016-02-21 | 2016-03-26 | SD-CS-L38-1282 SS+7d | 102d | 0d |
| SD-CS-L39-1312 |  | Review & Approval of SD of Ceiling Finishes at L39 | 30d | 2016-03-03 | 2016-04-06 | SD-CS-L39-1302 SS+10d, SD-CS-L39-1302 FF+10d | 125d | 81d |
|  | 44 | **Level 40 Floor - Shop drawings** |  | 2016-02-29 | 2016-04-14 |  |  |  |
| SD-CS-L40-1322 |  | Preparation & Submittals of SD of Ceiling Finishes at L40 | 30d | 2016-02-29 | 2016-04-03 | SD-CS-L39-1302 SS+7d | 102d | 0d |
| SD-CS-L40-1332 |  | Review & Approval of SD of Ceiling Finishes at L40 | 30d | 2016-03-12 | 2016-04-14 | SD-CS-L40-1322 SS+10d, SD-CS-L40-1322 FF+10d | 121d | 59d |
|  | 45 | **Level 41 Floor - Shop drawings** |  | 2016-03-08 | 2016-04-23 |  |  |  |
| SD-CS-L41-1342 |  | Preparation & Submittals of SD of Ceiling Finishes at L41 | 30d | 2016-03-08 | 2016-04-11 | SD-CS-L40-1322 SS+7d | 102d | 0d |
| SD-CS-L41-1352 |  | Review & Approval of SD of Ceiling Finishes at L41 | 30d | 2016-03-20 | 2016-04-23 | SD-CS-L41-1342 SS+10d, SD-CS-L41-1342 FF+10d | 122d | 46d |
|  | 46 | **Level 42 Floor - Shop drawings** |  | 2016-03-16 | 2016-05-01 |  |  |  |
| SD-CS-L42-1362 |  | Preparation & Submittals of SD of Ceiling Finishes at L42 | 30d | 2016-03-16 | 2016-04-19 | SD-CS-L41-1342 SS+7d | 102d | 0d |
| SD-CS-L42-1372 |  | Review & Approval of SD of Ceiling Finishes at L42 | 30d | 2016-03-28 | 2016-05-01 | SD-CS-L42-1362 SS+10d, SD-CS-L42-1362 FF+10d | 110d | 59d |
|  | 47 | **Level 43 Floor - Shop drawings** |  | 2016-03-24 | 2016-05-09 |  |  |  |
| SD-CS-L43-1382 |  | Preparation & Submittals of SD of Ceiling Finishes at L43 | 30d | 2016-03-24 | 2016-04-27 | SD-CS-L42-1362 SS+7d | 102d | 0d |
| SD-CS-L43-1392 |  | Review & Approval of SD of Ceiling Finishes at L43 | 30d | 2016-04-05 | 2016-05-09 | SD-CS-L43-1382 SS+10d, SD-CS-L43-1382 FF+10d | 103d | 56d |
|  | 48 | **Level 44 Floor - Shop drawings** |  | 2016-04-02 | 2016-05-17 |  |  |  |
| SD-CS-L44-1402 |  | Preparation & Submittals of SD of Ceiling Finishes at L44 | 30d | 2016-04-02 | 2016-05-05 | SD-CS-L43-1382 SS+7d | 102d | 0d |
| SD-CS-L44-1412 |  | Review & Approval of SD of Ceiling Finishes at L44 | 30d | 2016-04-13 | 2016-05-17 | SD-CS-L44-1402 SS+10d, SD-CS-L44-1402 FF+10d | 105d | 55d |
|  | 49 | **Level 45 Floor - Shop drawings** |  | 2016-04-10 | 2016-05-25 |  |  |  |
| SD-CS-L45-1422 |  | Preparation & Submittals of SD of Ceiling Finishes at L45 | 30d | 2016-04-10 | 2016-05-14 | SD-CS-L44-1402 SS+7d | 102d | 0d |
| SD-CS-L45-1432 |  | Review & Approval of SD of Ceiling Finishes at L45 | 30d | 2016-04-21 | 2016-05-25 | SD-CS-L45-1422 SS+10d, SD-CS-L45-1422 FF+10d | 106d | 62d |

| ID | WBS | Activity | Duration | Start | Finish | Predecessors | Total float | Free float |
| --- | --- | --- | --- | --- | --- | --- | --- | --- |
|  | 50 | **Level 46 Floor - Shop drawings** |  | 2016-04-18 | 2016-06-02 |  |  |  |
| SD-CS-L46-1442 |  | Preparation & Submittals of SD of Ceiling Finishes at L46 | 30d | 2016-04-18 | 2016-05-22 | SD-CS-L45-1422 SS+7d | 102d | 0d |
| SD-CS-L46-1452 |  | Review & Approval of SD of Ceiling Finishes at L46 | 30d | 2016-04-30 | 2016-06-02 | SD-CS-L46-1442 SS+10d, SD-CS-L46-1442 FF+10d | 102d | 43d |
|  | 54 | **Level 50 Floor - Shop drawings** |  | 2016-04-26 | 2016-06-11 |  |  |  |
| SD-CS-L50-1522 |  | Preparation & Submittals of SD of Ceiling Finishes at L50 | 30d | 2016-04-26 | 2016-05-30 | SD-CS-L46-1442 SS+7d | 107d | 0d |
| SD-CS-L50-1532 |  | Review & Approval of SD of Ceiling Finishes at L50 | 30d | 2016-05-08 | 2016-06-11 | SD-CS-L50-1522 SS+10d, SD-CS-L50-1522 FF+10d | 107d | 59d |
|  | 55 | **Level 51 Floor - Shop drawings** |  | 2016-05-04 | 2016-06-19 |  |  |  |
| SD-CS-L51-2482 |  | Preparation & Submittals of SD of Ceiling Finishes at L51 | 30d | 2016-05-04 | 2016-06-07 | SD-CS-L50-1522 SS+7d | 108d | 0d |
| SD-CS-L51-2492 |  | Review & Approval of SD of Ceiling Finishes at L51 | 30d | 2016-05-16 | 2016-06-19 | SD-CS-L51-2482 SS+10d, SD-CS-L51-2482 FF+10d | 108d | 64d |
|  | 2 | **Floor Finishes** |  | 2015-04-25 | 2016-07-12 |  |  |  |
|  | 3 | **Ground Floor level - Shop drawings** |  | 2015-04-25 | 2015-06-09 |  |  |  |
| SD-CS-B1-542 |  | Preparation & Submittals of SD of Floor Finishes at GF | 30d | 2015-04-25 | 2015-05-28 | SD-CS-B1-522 SS+14d | 90d | 0d |
| SD-CS-B1-552 |  | Review & Approval of SD of Floor Finishes at GF | 30d | 2015-05-06 | 2015-06-09 | SD-CS-B1-542 SS+10d, SD-CS-B1-542 FF+10d | 221d | 129d |
|  | 4 | **Mezzanine Floor level - Shop drawings** |  | 2015-05-03 | 2015-06-17 |  |  |  |
| SD-CS-GF-542 |  | Preparation & Submittals of SD of Floor Finishes at ML | 30d | 2015-05-03 | 2015-06-06 | SD-CS-B1-542 SS+7d | 90d | 0d |
| SD-CS-GF-552 |  | Review & Approval of SD of Floor Finishes at ML | 30d | 2015-05-14 | 2015-06-17 | SD-CS-GF-542 SS+10d, SD-CS-GF-542 FF+10d | 280d | 122d |
|  | 5 | **Level 1 Floor - Shop drawings** |  | 2015-05-11 | 2015-06-25 |  |  |  |
| SD-CS-L1-562 |  | Preparation & Submittals of SD of Floor Finishes at L1 | 30d | 2015-05-11 | 2015-06-14 | SD-CS-GF-542 SS+7d | 90d | 0d |
| SD-CS-L1-572 |  | Review & Approval of SD of Floor Finishes at L1 | 30d | 2015-05-23 | 2015-06-25 | SD-CS-L1-562 SS+10d, SD-CS-L1-562 FF+10d | 210d | 115d |
|  | 6 | **Level 2 Floor - Shop drawings** |  | 2015-05-19 | 2015-07-04 |  |  |  |
| SD-CS-L2-582 |  | Preparation & Submittals of SD of Floor Finishes at L2 | 30d | 2015-05-19 | 2015-06-22 | SD-CS-L1-562 SS+7d | 90d | 0d |
| SD-CS-L2-592 |  | Review & Approval of SD of Floor Finishes at L2 | 30d | 2015-05-31 | 2015-07-04 | SD-CS-L2-582 SS+10d, SD-CS-L2-582 FF+10d | 212d | 108d |
|  | 7 | **Level 3 Floor - Shop drawings** |  | 2015-05-27 | 2015-07-12 |  |  |  |
| SD-CS-L3-602 |  | Preparation & Submittals of SD ofFloor Finishes at L3 | 30d | 2015-05-27 | 2015-06-30 | SD-CS-L2-582 SS+7d | 90d | 0d |
| SD-CS-L3-612 |  | Review & Approval of SD of Floor Finishes at L3 | 30d | 2015-06-08 | 2015-07-12 | SD-CS-L3-602 SS+10d, SD-CS-L3-602 FF+10d | 214d | 104d |

| ID | WBS | Activity | Duration | Start | Finish | Predecessors | Total float | Free float |
| --- | --- | --- | --- | --- | --- | --- | --- | --- |
|  | 8 | **Level 4 Floor - Shop drawings** |  | 2015-06-04 | 2015-07-22 |  |  |  |
| SD-CS-L4-1622 |  | Preparation & Submittals of SD of Floor Finishes at L4 | 30d | 2015-06-04 | 2015-07-08 | SD-CS-L3-602 SS+7d | 90d | 0d |
| SD-CS-L4-1632 |  | Review & Approval of SD of Floor Finishes at L4 | 30d | 2015-06-16 | 2015-07-22 | SD-CS-L4-1622 SS+10d, SD-CS-L4-1622 FF+10d | 210d | 120d |
|  | 9 | **Level 5 Floor - Shop drawings** |  | 2015-06-13 | 2015-07-30 |  |  |  |
| SD-CS-L5-642 |  | Preparation & Submittals of SD of Floor Finishes at L5 | 30d | 2015-06-13 | 2015-07-19 | SD-CS-L4-1622 SS+7d | 90d | 0d |
| SD-CS-L5-652 |  | Review & Approval of SD of Floor Finishes at L5 | 30d | 2015-06-24 | 2015-07-30 | SD-CS-L5-642 SS+10d, SD-CS-L5-642 FF+10d | 269d | 114d |
|  | 10 | **Level 6 Floor - Shop drawings** |  | 2015-06-21 | 2015-08-08 |  |  |  |
| SD-CS-L6-662 |  | Preparation & Submittals of SD of Floor Finishes at L6 | 30d | 2015-06-21 | 2015-07-27 | SD-CS-L5-642 SS+7d | 90d | 0d |
| SD-CS-L6-672 |  | Review & Approval of SD of Floor Finishes at L6 | 30d | 2015-07-02 | 2015-08-08 | SD-CS-L6-662 SS+10d, SD-CS-L6-662 FF+10d | 199d | 104d |
|  | 11 | **Level 7 Floor - Shop drawings** |  | 2015-06-29 | 2015-08-16 |  |  |  |
| SD-CS-L7-682 |  | Preparation & Submittals of SD of Floor Finishes at L7 | 30d | 2015-06-29 | 2015-08-04 | SD-CS-L6-662 SS+7d | 90d | 0d |
| SD-CS-L7-692 |  | Review & Approval of SD of Floor Finishes at L7 | 30d | 2015-07-11 | 2015-08-16 | SD-CS-L7-682 SS+10d, SD-CS-L7-682 FF+10d | 193d | 116d |
|  | 12 | **Level 8 Floor - Shop drawings** |  | 2015-07-07 | 2015-08-24 |  |  |  |
| SD-CS-L8-702 |  | Preparation & Submittals of SD of Floor Finishes at L8 | 30d | 2015-07-07 | 2015-08-12 | SD-CS-L7-682 SS+7d | 90d | 0d |
| SD-CS-L8-712 |  | Review & Approval of SD of Floor Finishes at L8 | 30d | 2015-07-21 | 2015-08-24 | SD-CS-L8-702 SS+10d, SD-CS-L8-702 FF+10d | 194d | 127d |
|  | 13 | **Level 9 Floor - Shop drawings** |  | 2015-07-18 | 2015-09-01 |  |  |  |
| SD-CS-L9-722 |  | Preparation & Submittals of SD of Floor Finishes at L9 | 30d | 2015-07-18 | 2015-08-20 | SD-CS-L8-702 SS+7d | 90d | 0d |
| SD-CS-L9-732 |  | Review & Approval of SD of Floor Finishes at L9 | 30d | 2015-07-29 | 2015-09-01 | SD-CS-L9-722 SS+10d, SD-CS-L9-722 FF+7d | 196d | 120d |
|  | 14 | **Level 10 Floor - Shop drawings** |  | 2015-07-29 | 2015-09-13 |  |  |  |
| SD-CS-L10-742 |  | Preparation & Submittals of SD of Floor Finishes at L10 | 30d | 2015-07-29 | 2015-09-01 | SD-CS-L9-722 SS+10d | 90d | 0d |
| SD-CS-L10-752 |  | Review & Approval of SD of Floor Finishes at L10 | 30d | 2015-08-10 | 2015-09-13 | SD-CS-L10-742 SS+10d, SD-CS-L10-742 FF+10d | 189d | 110d |
|  | 15 | **Level 11 Floor - Shop drawings** |  | 2015-08-06 | 2015-09-24 |  |  |  |
| SD-CS-L11-762 |  | Preparation & Submittals of SD of Floor Finishes at L11 | 30d | 2015-08-06 | 2015-09-09 | SD-CS-L10-742 SS+7d | 90d | 0d |
| SD-CS-L11-772 |  | Review & Approval of SD of Floor Finishes at L11 | 30d | 2015-08-18 | 2015-09-24 | SD-CS-L11-762 SS+10d, SD-CS-L11-762 FF+10d | 249d | 103d |

| ID | WBS | Activity | Duration | Start | Finish | Predecessors | Total float | Free float |
| --- | --- | --- | --- | --- | --- | --- | --- | --- |
|  | 16 | **Level 12 Floor - Shop drawings** |  | 2015-08-15 | 2015-10-03 |  |  |  |
| SD-CS-L12-782 |  | Preparation & Submittals of SD of Floor Finishes at L12 | 30d | 2015-08-15 | 2015-09-17 | SD-CS-L11-762 SS+7d | 90d | 0d |
| SD-CS-L12-792 |  | Review & Approval of SD of Floor Finishes at L12 | 30d | 2015-08-26 | 2015-10-03 | SD-CS-L12-782 SS+10d, SD-CS-L12-782 FF+10d | 178d | 116d |
|  | 17 | **Level 13 Floor - Shop drawings** |  | 2015-08-23 | 2015-10-11 |  |  |  |
| SD-CS-L13-802 |  | Preparation & Submittals of SD of Floor Finishes at L13 | 30d | 2015-08-23 | 2015-09-29 | SD-CS-L12-782 SS+7d | 90d | 0d |
| SD-CS-L13-812 |  | Review & Approval of SD of Floor Finishes at L13 | 30d | 2015-09-03 | 2015-10-11 | SD-CS-L13-802 SS+10d, SD-CS-L13-802 FF+10d | 172d | 109d |
|  | 18 | **Level 14 Floor - Shop drawings** |  | 2015-08-31 | 2015-10-19 |  |  |  |
| SD-CS-L14-822 |  | Preparation & Submittals of SD of Floor Finishes at L14 | 30d | 2015-08-31 | 2015-10-07 | SD-CS-L13-802 SS+7d | 90d | 0d |
| SD-CS-L14-832 |  | Review & Approval of SD of Floor Finishes at L14 | 30d | 2015-09-12 | 2015-10-19 | SD-CS-L14-822 SS+10d, SD-CS-L14-822 FF+10d | 174d | 106d |
|  | 19 | **Level 15 Floor - Shop drawings** |  | 2015-09-08 | 2015-10-27 |  |  |  |
| SD-CS-L15-842 |  | Preparation & Submittals of SD of Floor Finishes at L15 | 30d | 2015-09-08 | 2015-10-15 | SD-CS-L14-822 SS+7d | 90d | 0d |
| SD-CS-L15-852 |  | Review & Approval of SD of Floor Finishes at L15 | 30d | 2015-09-23 | 2015-10-27 | SD-CS-L15-842 SS+10d, SD-CS-L15-842 FF+10d | 175d | 99d |
|  | 20 | **Level 16 Floor - Shop drawings** |  | 2015-09-16 | 2015-11-04 |  |  |  |
| SD-CS-L16-862 |  | Preparation & Submittals of SD of Floor Finishes at L16 | 30d | 2015-09-16 | 2015-10-24 | SD-CS-L15-842 SS+7d | 90d | 0d |
| SD-CS-L16-872 |  | Review & Approval of SD of Floor Finishes at L16 | 30d | 2015-10-01 | 2015-11-04 | SD-CS-L16-862 SS+10d, SD-CS-L16-862 FF+10d | 171d | 92d |
|  | 22 | **Level 18 Floor - Shop drawings** |  | 2015-09-28 | 2015-11-12 |  |  |  |
| SD-CS-L18-902 |  | Preparation & Submittals of SD of Floor Finishes at L18 | 30d | 2015-09-28 | 2015-11-01 | SD-CS-L16-862 SS+7d | 90d | 0d |
| SD-CS-L18-912 |  | Review & Approval of SD of Floor Finishes at L18 | 30d | 2015-10-10 | 2015-11-12 | SD-CS-L18-902 SS+10d, SD-CS-L18-902 FF+10d | 167d | 105d |
|  | 23 | **Level 19 Floor - Shop drawings** |  | 2015-10-06 | 2015-11-21 |  |  |  |
| SD-CS-L19-922 |  | Preparation & Submittals of SD of Floor Finishes at L19 | 30d | 2015-10-06 | 2015-11-09 | SD-CS-L18-902 SS+7d | 90d | 0d |
| SD-CS-L19-932 |  | Review & Approval of SD of Floor Finishes at L19 | 30d | 2015-10-18 | 2015-11-21 | SD-CS-L19-922 SS+10d, SD-CS-L19-922 FF+10d | 160d | 97d |
|  | 24 | **Level 20 Floor - Shop drawings** |  | 2015-10-14 | 2015-11-29 |  |  |  |
| SD-CS-L20-942 |  | Preparation & Submittals of SD of Floor Finishes at L20 | 30d | 2015-10-14 | 2015-11-17 | SD-CS-L19-922 SS+7d | 90d | 0d |
| SD-CS-L20-952 |  | Review & Approval of SD of Floor Finishes at L20 | 30d | 2015-10-26 | 2015-11-29 | SD-CS-L20-942 SS+10d, SD-CS-L20-942 FF+10d | 162d | 94d |

| ID | WBS | Activity | Duration | Start | Finish | Predecessors | Total float | Free float |
| --- | --- | --- | --- | --- | --- | --- | --- | --- |
|  | 25 | **Level 21 Floor - Shop drawings** |  | 2015-10-22 | 2015-12-07 |  |  |  |
| SD-CS-L21-962 |  | Preparation & Submittals of SD of Floor Finishes at L21 | 30d | 2015-10-22 | 2015-11-25 | SD-CS-L20-942 SS+7d | 90d | 0d |
| SD-CS-L21-972 |  | Review & Approval of SD of Floor Finishes at L21 | 30d | 2015-11-03 | 2015-12-07 | SD-CS-L21-962 SS+10d, SD-CS-L21-962 FF+10d | 163d | 87d |
|  | 26 | **Level 22 Floor - Shop drawings** |  | 2015-10-31 | 2015-12-15 |  |  |  |
| SD-CS-L22-982 |  | Preparation & Submittals of SD of Floor Finishes at L22 | 30d | 2015-10-31 | 2015-12-03 | SD-CS-L21-962 SS+7d | 90d | 0d |
| SD-CS-L22-992 |  | Review & Approval of SD of Floor Finishes at L22 | 30d | 2015-11-11 | 2015-12-15 | SD-CS-L22-982 SS+10d, SD-CS-L22-982 FF+10d | 159d | 80d |
|  | 27 | **Level 23 Floor - Shop drawings** |  | 2015-11-08 | 2015-12-24 |  |  |  |
| SD-CS-L23-1002 |  | Preparation & Submittals of SD of Floor Finishes at L23 | 30d | 2015-11-08 | 2015-12-12 | SD-CS-L22-982 SS+7d | 90d | 0d |
| SD-CS-L23-1012 |  | Review & Approval of SD of Floor Finishes at L23 | 30d | 2015-11-19 | 2015-12-24 | SD-CS-L23-1002 SS+10d, SD-CS-L23-1002 FF+10d | 196d | 106d |
|  | 28 | **Level 24 Floor - Shop drawings** |  | 2015-11-16 | 2016-01-02 |  |  |  |
| SD-CS-L24-1022 |  | Preparation & Submittals of SD of Floor Finishes at L24 | 30d | 2015-11-16 | 2015-12-21 | SD-CS-L23-1002 SS+7d | 90d | 0d |
| SD-CS-L24-1032 |  | Review & Approval of SD of Floor Finishes at L24 | 30d | 2015-11-28 | 2016-01-02 | SD-CS-L24-1022 SS+10d, SD-CS-L24-1022 FF+10d | 148d | 86d |
|  | 29 | **Level 25 Floor - Shop drawings** |  | 2015-11-24 | 2016-01-10 |  |  |  |
| SD-CS-L25-1042 |  | Preparation & Submittals of SD of Floor Finishes at L25 | 30d | 2015-11-24 | 2015-12-29 | SD-CS-L24-1022 SS+7d | 90d | 0d |
| SD-CS-L25-1052 |  | Review & Approval of SD of Floor Finishes at L25 | 30d | 2015-12-06 | 2016-01-10 | SD-CS-L25-1042 SS+10d, SD-CS-L25-1042 FF+10d | 141d | 78d |
|  | 30 | **Level 26 Floor - Shop drawings** |  | 2015-12-02 | 2016-01-18 |  |  |  |
| SD-CS-L26-1062 |  | Preparation & Submittals of SD of Floor Finishes at L26 | 30d | 2015-12-02 | 2016-01-06 | SD-CS-L25-1042 SS+7d | 90d | 0d |
| SD-CS-L26-1072 |  | Review & Approval of SD of Floor Finishes at L26 | 30d | 2015-12-14 | 2016-01-18 | SD-CS-L26-1062 SS+10d, SD-CS-L26-1062 FF+10d | 143d | 75d |
|  | 31 | **Level 27 Floor - Shop drawings** |  | 2015-12-10 | 2016-01-26 |  |  |  |
| SD-CS-L27-1082 |  | Preparation & Submittals of SD of Floor Finishes at L27 | 30d | 2015-12-10 | 2016-01-14 | SD-CS-L26-1062 SS+7d | 90d | 0d |
| SD-CS-L27-1092 |  | Review & Approval of SD of Floor Finishes at L27 | 30d | 2015-12-23 | 2016-01-26 | SD-CS-L27-1082 SS+10d, SD-CS-L27-1082 FF+10d | 144d | 68d |
|  | 32 | **Level 28 Floor - Shop drawings** |  | 2015-12-20 | 2016-02-03 |  |  |  |
| SD-CS-L28-1102 |  | Preparation & Submittals of SD of Floor Finishes at L28 | 30d | 2015-12-20 | 2016-01-23 | SD-CS-L27-1082 SS+7d | 90d | 0d |
| SD-CS-L28-1112 |  | Review & Approval of SD of Floor Finishes at L28 | 30d | 2015-12-31 | 2016-02-03 | SD-CS-L28-1102 SS+10d, SD-CS-L28-1102 FF+10d | 140d | 61d |

| ID | WBS | Activity | Duration | Start | Finish | Predecessors | Total float | Free float |
| --- | --- | --- | --- | --- | --- | --- | --- | --- |
|  | 33 | **Level 29 Floor - Shop drawings** |  | 2015-12-28 | 2016-02-13 |  |  |  |
| SD-CS-L29-1122 |  | Preparation & Submittals of SD of Floor Finishes at L29 | 30d | 2015-12-28 | 2016-01-31 | SD-CS-L28-1102 SS+7d | 90d | 0d |
| SD-CS-L29-1132 |  | Review & Approval of SD of Floor Finishes at L29 | 30d | 2016-01-09 | 2016-02-13 | SD-CS-L29-1122 SS+10d, SD-CS-L29-1122 FF+10d | 177d | 87d |
|  | 34 | **Level 30 Floor - Shop drawings** |  | 2016-01-05 | 2016-02-21 |  |  |  |
| SD-CS-L30-1142 |  | Preparation & Submittals of SD of Floor Finishes at L30 | 30d | 2016-01-05 | 2016-02-08 | SD-CS-L29-1122 SS+7d | 90d | 0d |
| SD-CS-L30-1152 |  | Review & Approval of SD of Floor Finishes at L30 | 30d | 2016-01-17 | 2016-02-21 | SD-CS-L30-1142 SS+10d, SD-CS-L30-1142 FF+10d | 129d | 67d |
|  | 35 | **Level 31 Floor - Shop drawings** |  | 2016-01-13 | 2016-02-29 |  |  |  |
| SD-CS-L31-1162 |  | Preparation & Submittals of SD of Floor Finishes at L31 | 30d | 2016-01-13 | 2016-02-17 | SD-CS-L30-1142 SS+7d | 90d | 0d |
| SD-CS-L31-1172 |  | Review & Approval of SD of Floor Finishes at L31 | 30d | 2016-01-25 | 2016-02-29 | SD-CS-L31-1162 SS+10d, SD-CS-L31-1162 FF+10d | 122d | 67d |
|  | 36 | **Level 32 Floor - Shop drawings** |  | 2016-01-21 | 2016-03-08 |  |  |  |
| SD-CS-L32-1182 |  | Preparation & Submittals of SD of Floor Finishes at L32 | 30d | 2016-01-21 | 2016-02-25 | SD-CS-L31-1162 SS+7d | 90d | 0d |
| SD-CS-L32-1192 |  | Review & Approval of SD of Floor Finishes at L32 | 30d | 2016-02-02 | 2016-03-08 | SD-CS-L32-1182 SS+10d, SD-CS-L32-1182 FF+10d | 124d | 61d |
|  | 37 | **Level 33 Floor - Shop drawings** |  | 2016-01-30 | 2016-03-16 |  |  |  |
| SD-CS-L33-1202 |  | Preparation & Submittals of SD of Floor Finishes at L33 | 30d | 2016-01-30 | 2016-03-05 | SD-CS-L32-1182 SS+7d | 90d | 0d |
| SD-CS-L33-1212 |  | Review & Approval of SD of Floor Finishes at L33 | 30d | 2016-02-11 | 2016-03-16 | SD-CS-L33-1202 SS+10d, SD-CS-L33-1202 FF+10d | 125d | 60d |
|  | 38 | **Level 34 Floor - Shop drawings** |  | 2016-02-07 | 2016-03-24 |  |  |  |
| SD-CS-L34-1222 |  | Preparation & Submittals of SD of Floor Finishes at L34 | 30d | 2016-02-07 | 2016-03-13 | SD-CS-L33-1202 SS+7d | 90d | 0d |
| SD-CS-L34-1232 |  | Review & Approval of SD of Floor Finishes at L34 | 30d | 2016-02-20 | 2016-03-24 | SD-CS-L34-1222 SS+10d, SD-CS-L34-1222 FF+10d | 121d | 59d |
|  | 40 | **Level 36 Floor - Shop drawings** |  | 2016-02-16 | 2016-04-02 |  |  |  |
| SD-CS-L36-1262 |  | Preparation & Submittals of SD of Floor Finishes at L36 | 30d | 2016-02-16 | 2016-03-21 | SD-CS-L34-1222 SS+7d | 90d | 0d |
| SD-CS-L36-1272 |  | Review & Approval of SD of Floor Finishes at L36 | 30d | 2016-02-28 | 2016-04-02 | SD-CS-L36-1262 SS+10d, SD-CS-L36-1262 FF+10d | 117d | 66d |
|  | 41 | **Level 37 Floor - Shop drawings** |  | 2016-02-24 | 2016-04-10 |  |  |  |
| SD-CS-L37-1282 |  | Preparation & Submittals of SD of Floor Finishes at L37 | 30d | 2016-02-24 | 2016-03-29 | SD-CS-L36-1262 SS+7d | 90d | 0d |
| SD-CS-L37-1292 |  | Review & Approval of SD of Floor Finishes at L37 | 30d | 2016-03-07 | 2016-04-10 | SD-CS-L37-1282 SS+10d, SD-CS-L37-1282 FF+10d | 110d | 63d |

| ID | WBS | Activity | Duration | Start | Finish | Predecessors | Total float | Free float |
| --- | --- | --- | --- | --- | --- | --- | --- | --- |
|  | 42 | **Level 38 Floor - Shop drawings** |  | 2016-03-03 | 2016-04-18 |  |  |  |
| SD-CS-L38-1302 |  | Preparation & Submittals of SD of Floor Finishes at L38 | 30d | 2016-03-03 | 2016-04-06 | SD-CS-L37-1282 SS+7d | 90d | 0d |
| SD-CS-L38-1312 |  | Review & Approval of SD of Floor Finishes at L38 | 30d | 2016-03-15 | 2016-04-18 | SD-CS-L38-1302 SS+10d, SD-CS-L38-1302 FF+10d | 112d | 62d |
|  | 43 | **Level 39 Floor - Shop drawings** |  | 2016-03-12 | 2016-04-26 |  |  |  |
| SD-CS-L39-1322 |  | Preparation & Submittals of SD of Floor Finishes at L39 | 30d | 2016-03-12 | 2016-04-14 | SD-CS-L38-1302 SS+7d | 90d | 0d |
| SD-CS-L39-1332 |  | Review & Approval of SD of Floor Finishes at L39 | 30d | 2016-03-23 | 2016-04-26 | SD-CS-L39-1322 SS+10d, SD-CS-L39-1322 FF+10d | 113d | 69d |
|  | 44 | **Level 40 Floor - Shop drawings** |  | 2016-03-20 | 2016-05-04 |  |  |  |
| SD-CS-L40-1342 |  | Preparation & Submittals of SD of Floor Finishes at L40 | 30d | 2016-03-20 | 2016-04-23 | SD-CS-L39-1322 SS+7d | 90d | 0d |
| SD-CS-L40-1352 |  | Review & Approval of SD of Floor Finishes at L40 | 30d | 2016-03-31 | 2016-05-04 | SD-CS-L40-1342 SS+10d, SD-CS-L40-1342 FF+10d | 109d | 47d |
|  | 45 | **Level 41 Floor - Shop drawings** |  | 2016-03-28 | 2016-05-12 |  |  |  |
| SD-CS-L41-1362 |  | Preparation & Submittals of SD of Floor Finishes at L41 | 30d | 2016-03-28 | 2016-05-01 | SD-CS-L40-1342 SS+7d | 90d | 0d |
| SD-CS-L41-1372 |  | Review & Approval of SD of Floor Finishes at L41 | 30d | 2016-04-09 | 2016-05-12 | SD-CS-L41-1362 SS+10d, SD-CS-L41-1362 FF+10d | 110d | 34d |
|  | 46 | **Level 42 Floor - Shop drawings** |  | 2016-04-05 | 2016-05-21 |  |  |  |
| SD-CS-L42-1382 |  | Preparation & Submittals of SD of Floor Finishes at L42 | 30d | 2016-04-05 | 2016-05-09 | SD-CS-L41-1362 SS+7d | 90d | 0d |
| SD-CS-L42-1392 |  | Review & Approval of SD of Floor Finishes at L42 | 30d | 2016-04-17 | 2016-05-21 | SD-CS-L42-1382 SS+10d, SD-CS-L42-1382 FF+10d | 98d | 47d |
|  | 47 | **Level 43 Floor - Shop drawings** |  | 2016-04-13 | 2016-05-29 |  |  |  |
| SD-CS-L43-1402 |  | Preparation & Submittals of SD of Floor Finishes at L43 | 30d | 2016-04-13 | 2016-05-17 | SD-CS-L42-1382 SS+7d | 90d | 0d |
| SD-CS-L43-1412 |  | Review & Approval of SD of Floor Finishes at L43 | 30d | 2016-04-25 | 2016-05-29 | SD-CS-L43-1402 SS+10d, SD-CS-L43-1402 FF+10d | 91d | 44d |
|  | 48 | **Level 44 Floor - Shop drawings** |  | 2016-04-21 | 2016-06-06 |  |  |  |
| SD-CS-L44-1422 |  | Preparation & Submittals of SD of Floor Finishes at L44 | 30d | 2016-04-21 | 2016-05-25 | SD-CS-L43-1402 SS+7d | 90d | 0d |
| SD-CS-L44-1432 |  | Review & Approval of SD of Floor Finishes at L44 | 30d | 2016-05-03 | 2016-06-06 | SD-CS-L44-1422 SS+10d, SD-CS-L44-1422 FF+10d | 93d | 43d |
|  | 49 | **Level 45 Floor - Shop drawings** |  | 2016-04-30 | 2016-06-14 |  |  |  |
| SD-CS-L45-1442 |  | Preparation & Submittals of SD of Floor Finishes at L45 | 30d | 2016-04-30 | 2016-06-02 | SD-CS-L44-1422 SS+7d | 90d | 0d |
| SD-CS-L45-1452 |  | Review & Approval of SD of Floor Finishes at L45 | 30d | 2016-05-11 | 2016-06-14 | SD-CS-L45-1442 SS+10d, SD-CS-L45-1442 FF+10d | 94d | 50d |

| ID | WBS | Activity | Duration | Start | Finish | Predecessors | Total float | Free float |
| --- | --- | --- | --- | --- | --- | --- | --- | --- |
|  | 50 | **Level 46 Floor - Shop drawings** |  | 2016-05-08 | 2016-06-22 |  |  |  |
| SD-CS-L46-1462 |  | Preparation & Submittals of SD of Floor Finishes at L46 | 30d | 2016-05-08 | 2016-06-11 | SD-CS-L45-1442 SS+7d | 90d | 0d |
| SD-CS-L46-1472 |  | Review & Approval of SD of Floor Finishes at L46 | 30d | 2016-05-19 | 2016-06-22 | SD-CS-L46-1462 SS+10d, SD-CS-L46-1462 FF+10d | 90d | 31d |
|  | 54 | **Level 50 Floor - Shop drawings** |  | 2016-05-16 | 2016-06-30 |  |  |  |
| SD-CS-L50-1542 |  | Preparation & Submittals of SD of Floor Finishes at L50 | 30d | 2016-05-16 | 2016-06-19 | SD-CS-L46-1462 SS+7d | 95d | 0d |
| SD-CS-L50-1552 |  | Review & Approval of SD of Floor Finishes at L50 | 30d | 2016-05-28 | 2016-06-30 | SD-CS-L50-1542 SS+10d, SD-CS-L50-1542 FF+10d | 95d | 47d |
|  | 55 | **Level 51 Floor - Shop drawings** |  | 2016-05-24 | 2016-07-12 |  |  |  |
| SD-CS-L51-2502 |  | Preparation & Submittals of SD of Floor Finishes at L51 | 30d | 2016-05-24 | 2016-06-27 | SD-CS-L50-1542 SS+7d | 96d | 0d |
| SD-CS-L51-2512 |  | Review & Approval of SD of Floor Finishes at L51 | 30d | 2016-06-05 | 2016-07-12 | SD-CS-L51-2502 SS+10d, SD-CS-L51-2502 FF+10d | 96d | 52d |
|  | 3 | **Wall Finishes** |  | 2015-05-11 | 2016-07-25 |  |  |  |
|  | 3 | **Ground Floor level - Shop drawings** |  | 2015-05-11 | 2015-06-25 |  |  |  |
| SD-CS-B1-562 |  | Preparation & Submittals of SD of Wall Finishes at GF | 30d | 2015-05-11 | 2015-06-14 | SD-CS-B1-542 SS+14d | 105d | 0d |
| SD-CS-B1-572 |  | Review & Approval of SD of Wall Finishes at GF | 30d | 2015-05-23 | 2015-06-25 | SD-CS-B1-562 SS+10d, SD-CS-B1-562 FF+10d | 239d | 139d |
|  | 4 | **Mezzanine Floor level - Shop drawings** |  | 2015-05-19 | 2015-07-04 |  |  |  |
| SD-CS-GF-562 |  | Preparation & Submittals of SD of Wall Finishes at ML | 30d | 2015-05-19 | 2015-06-22 | SD-CS-B1-562 SS+7d | 105d | 0d |
| SD-CS-GF-572 |  | Review & Approval of SD of Wall Finishes at ML | 30d | 2015-05-31 | 2015-07-04 | SD-CS-GF-562 SS+10d, SD-CS-GF-562 FF+10d | 323d | 132d |
|  | 5 | **Level 1 Floor - Shop drawings** |  | 2015-05-27 | 2015-07-12 |  |  |  |
| SD-CS-L1-582 |  | Preparation & Submittals of SD of Wall Finishes at L1 | 30d | 2015-05-27 | 2015-06-30 | SD-CS-GF-562 SS+7d | 105d | 0d |
| SD-CS-L1-592 |  | Review & Approval of SD of Wall Finishes at L1 | 30d | 2015-06-08 | 2015-07-12 | SD-CS-L1-582 SS+10d, SD-CS-L1-582 FF+10d | 248d | 125d |
|  | 6 | **Level 2 Floor - Shop drawings** |  | 2015-06-04 | 2015-07-22 |  |  |  |
| SD-CS-L2-602 |  | Preparation & Submittals of SD of Wall Finishes at L2 | 30d | 2015-06-04 | 2015-07-08 | SD-CS-L1-582 SS+7d | 105d | 0d |
| SD-CS-L2-612 |  | Review & Approval of SD of Wall Finishes at L2 | 30d | 2015-06-16 | 2015-07-22 | SD-CS-L2-602 SS+10d, SD-CS-L2-602 FF+10d | 222d | 118d |
|  | 7 | **Level 3 Floor - Shop drawings** |  | 2015-06-13 | 2015-07-30 |  |  |  |
| SD-CS-L3-622 |  | Preparation & Submittals of SD ofWall Finishes at L3 | 30d | 2015-06-13 | 2015-07-19 | SD-CS-L2-602 SS+7d | 105d | 0d |
| SD-CS-L3-632 |  | Review & Approval of SD of Wall Finishes at L3 | 30d | 2015-06-24 | 2015-07-30 | SD-CS-L3-622 SS+10d, SD-CS-L3-622 FF+10d | 235d | 114d |

| ID | WBS | Activity | Duration | Start | Finish | Predecessors | Total float | Free float |
| --- | --- | --- | --- | --- | --- | --- | --- | --- |
|  | 8 | **Level 4 Floor - Shop drawings** |  | 2015-06-21 | 2015-08-08 |  |  |  |
| SD-CS-L4-1642 |  | Preparation & Submittals of SD of Wall Finishes at L4 | 30d | 2015-06-21 | 2015-07-27 | SD-CS-L3-622 SS+7d | 105d | 0d |
| SD-CS-L4-1652 |  | Review & Approval of SD of Wall Finishes at L4 | 30d | 2015-07-02 | 2015-08-08 | SD-CS-L4-1642 SS+10d, SD-CS-L4-1642 FF+10d | 228d | 130d |
|  | 9 | **Level 5 Floor - Shop drawings** |  | 2015-06-29 | 2015-08-16 |  |  |  |
| SD-CS-L5-662 |  | Preparation & Submittals of SD of Wall Finishes at L5 | 30d | 2015-06-29 | 2015-08-04 | SD-CS-L4-1642 SS+7d | 105d | 0d |
| SD-CS-L5-672 |  | Review & Approval of SD of Wall Finishes at L5 | 30d | 2015-07-11 | 2015-08-16 | SD-CS-L5-662 SS+10d, SD-CS-L5-662 FF+10d | 312d | 124d |
|  | 10 | **Level 6 Floor - Shop drawings** |  | 2015-07-07 | 2015-08-24 |  |  |  |
| SD-CS-L6-682 |  | Preparation & Submittals of SD of Wall Finishes at L6 | 30d | 2015-07-07 | 2015-08-12 | SD-CS-L5-662 SS+7d | 105d | 0d |
| SD-CS-L6-692 |  | Review & Approval of SD of Wall Finishes at L6 | 30d | 2015-07-21 | 2015-08-24 | SD-CS-L6-682 SS+10d, SD-CS-L6-682 FF+10d | 237d | 114d |
|  | 11 | **Level 7 Floor - Shop drawings** |  | 2015-07-18 | 2015-09-01 |  |  |  |
| SD-CS-L7-702 |  | Preparation & Submittals of SD of Wall Finishes at L7 | 30d | 2015-07-18 | 2015-08-20 | SD-CS-L6-682 SS+7d | 105d | 0d |
| SD-CS-L7-712 |  | Review & Approval of SD of Wall Finishes at L7 | 30d | 2015-07-29 | 2015-09-01 | SD-CS-L7-702 SS+10d, SD-CS-L7-702 FF+10d | 231d | 126d |
|  | 12 | **Level 8 Floor - Shop drawings** |  | 2015-07-26 | 2015-09-09 |  |  |  |
| SD-CS-L8-722 |  | Preparation & Submittals of SD of Wall Finishes at L8 | 30d | 2015-07-26 | 2015-08-29 | SD-CS-L7-702 SS+7d | 105d | 0d |
| SD-CS-L8-732 |  | Review & Approval of SD of Wall Finishes at L8 | 30d | 2015-08-06 | 2015-09-09 | SD-CS-L8-722 SS+10d, SD-CS-L8-722 FF+10d | 204d | 137d |
|  | 13 | **Level 9 Floor - Shop drawings** |  | 2015-08-03 | 2015-09-17 |  |  |  |
| SD-CS-L9-742 |  | Preparation & Submittals of SD of Wall Finishes at L9 | 30d | 2015-08-03 | 2015-09-06 | SD-CS-L8-722 SS+7d | 105d | 0d |
| SD-CS-L9-752 |  | Review & Approval of SD of Wall Finishes at L9 | 30d | 2015-08-15 | 2015-09-17 | SD-CS-L9-742 SS+10d, SD-CS-L9-742 FF+10d | 217d | 130d |
|  | 14 | **Level 10 Floor - Shop drawings** |  | 2015-08-11 | 2015-09-29 |  |  |  |
| SD-CS-L10-762 |  | Preparation & Submittals of SD of Wall Finishes at L10 | 30d | 2015-08-11 | 2015-09-14 | SD-CS-L9-742 SS+7d | 105d | 0d |
| SD-CS-L10-772 |  | Review & Approval of SD of Wall Finishes at L10 | 30d | 2015-08-23 | 2015-09-29 | SD-CS-L10-762 SS+10d, SD-CS-L10-762 FF+10d | 210d | 123d |
|  | 15 | **Level 11 Floor - Shop drawings** |  | 2015-08-19 | 2015-10-07 |  |  |  |
| SD-CS-L11-782 |  | Preparation & Submittals of SD of Wall Finishes at L11 | 30d | 2015-08-19 | 2015-09-26 | SD-CS-L10-762 SS+7d | 105d | 0d |
| SD-CS-L11-792 |  | Review & Approval of SD of Wall Finishes at L11 | 30d | 2015-08-31 | 2015-10-07 | SD-CS-L11-782 SS+10d, SD-CS-L11-782 FF+10d | 295d | 116d |

| ID | WBS | Activity | Duration | Start | Finish | Predecessors | Total float | Free float |
| --- | --- | --- | --- | --- | --- | --- | --- | --- |
|  | 16 | **Level 12 Floor - Shop drawings** |  | 2015-08-27 | 2015-10-15 |  |  |  |
| SD-CS-L12-802 |  | Preparation & Submittals of SD of Wall Finishes at L12 | 30d | 2015-08-27 | 2015-10-04 | SD-CS-L11-782 SS+7d | 105d | 0d |
| SD-CS-L12-812 |  | Review & Approval of SD of Wall Finishes at L12 | 30d | 2015-09-08 | 2015-10-15 | SD-CS-L12-802 SS+10d, SD-CS-L12-802 FF+10d | 219d | 129d |
|  | 17 | **Level 13 Floor - Shop drawings** |  | 2015-09-05 | 2015-10-24 |  |  |  |
| SD-CS-L13-822 |  | Preparation & Submittals of SD of Wall Finishes at L13 | 30d | 2015-09-05 | 2015-10-12 | SD-CS-L12-802 SS+7d | 105d | 0d |
| SD-CS-L13-832 |  | Review & Approval of SD of Wall Finishes at L13 | 30d | 2015-09-16 | 2015-10-24 | SD-CS-L13-822 SS+10d, SD-CS-L13-822 FF+10d | 213d | 121d |
|  | 18 | **Level 14 Floor - Shop drawings** |  | 2015-09-13 | 2015-11-01 |  |  |  |
| SD-CS-L14-842 |  | Preparation & Submittals of SD of Wall Finishes at L14 | 30d | 2015-09-13 | 2015-10-20 | SD-CS-L13-822 SS+7d | 105d | 0d |
| SD-CS-L14-852 |  | Review & Approval of SD of Wall Finishes at L14 | 30d | 2015-09-28 | 2015-11-01 | SD-CS-L14-842 SS+10d, SD-CS-L14-842 FF+10d | 186d | 119d |
|  | 19 | **Level 15 Floor - Shop drawings** |  | 2015-09-24 | 2015-11-09 |  |  |  |
| SD-CS-L15-862 |  | Preparation & Submittals of SD of Wall Finishes at L15 | 30d | 2015-09-24 | 2015-10-28 | SD-CS-L14-842 SS+7d | 105d | 0d |
| SD-CS-L15-872 |  | Review & Approval of SD of Wall Finishes at L15 | 30d | 2015-10-06 | 2015-11-09 | SD-CS-L15-862 SS+10d, SD-CS-L15-862 FF+10d | 199d | 112d |
|  | 20 | **Level 16 Floor - Shop drawings** |  | 2015-10-03 | 2015-11-17 |  |  |  |
| SD-CS-L16-882 |  | Preparation & Submittals of SD of Wall Finishes at L16 | 30d | 2015-10-03 | 2015-11-05 | SD-CS-L15-862 SS+7d | 105d | 0d |
| SD-CS-L16-892 |  | Review & Approval of SD of Wall Finishes at L16 | 30d | 2015-10-14 | 2015-11-17 | SD-CS-L16-882 SS+10d, SD-CS-L16-882 FF+10d | 192d | 105d |
|  | 22 | **Level 18 Floor - Shop drawings** |  | 2015-10-11 | 2015-11-25 |  |  |  |
| SD-CS-L18-922 |  | Preparation & Submittals of SD of Wall Finishes at L18 | 30d | 2015-10-11 | 2015-11-14 | SD-CS-L16-882 SS+7d | 105d | 0d |
| SD-CS-L18-932 |  | Review & Approval of SD of Wall Finishes at L18 | 30d | 2015-10-22 | 2015-11-25 | SD-CS-L18-922 SS+10d, SD-CS-L18-922 FF+10d | 208d | 118d |
|  | 23 | **Level 19 Floor - Shop drawings** |  | 2015-10-19 | 2015-12-03 |  |  |  |
| SD-CS-L19-942 |  | Preparation & Submittals of SD of Wall Finishes at L19 | 30d | 2015-10-19 | 2015-11-22 | SD-CS-L18-922 SS+7d | 105d | 0d |
| SD-CS-L19-952 |  | Review & Approval of SD of Wall Finishes at L19 | 30d | 2015-10-31 | 2015-12-03 | SD-CS-L19-942 SS+10d, SD-CS-L19-942 FF+10d | 201d | 109d |
|  | 24 | **Level 20 Floor - Shop drawings** |  | 2015-10-27 | 2015-12-12 |  |  |  |
| SD-CS-L20-962 |  | Preparation & Submittals of SD of Wall Finishes at L20 | 30d | 2015-10-27 | 2015-11-30 | SD-CS-L19-942 SS+7d | 105d | 0d |
| SD-CS-L20-972 |  | Review & Approval of SD of Wall Finishes at L20 | 30d | 2015-11-08 | 2015-12-12 | SD-CS-L20-962 SS+10d, SD-CS-L20-962 FF+10d | 174d | 107d |

| ID | WBS | Activity | Duration | Start | Finish | Predecessors | Total float | Free float |
| --- | --- | --- | --- | --- | --- | --- | --- | --- |
|  | 25 | **Level 21 Floor - Shop drawings** |  | 2015-11-04 | 2015-12-21 |  |  |  |
| SD-CS-L21-982 |  | Preparation & Submittals of SD of Wall Finishes at L21 | 30d | 2015-11-04 | 2015-12-08 | SD-CS-L20-962 SS+7d | 105d | 0d |
| SD-CS-L21-992 |  | Review & Approval of SD of Wall Finishes at L21 | 30d | 2015-11-16 | 2015-12-21 | SD-CS-L21-982 SS+10d, SD-CS-L21-982 FF+10d | 187d | 100d |
|  | 26 | **Level 22 Floor - Shop drawings** |  | 2015-11-12 | 2015-12-29 |  |  |  |
| SD-CS-L22-1002 |  | Preparation & Submittals of SD of Wall Finishes at L22 | 30d | 2015-11-12 | 2015-12-16 | SD-CS-L21-982 SS+7d | 105d | 0d |
| SD-CS-L22-1012 |  | Review & Approval of SD of Wall Finishes at L22 | 30d | 2015-11-24 | 2015-12-29 | SD-CS-L22-1002 SS+10d, SD-CS-L22-1002 FF+10d | 180d | 93d |
|  | 27 | **Level 23 Floor - Shop drawings** |  | 2015-11-21 | 2016-01-06 |  |  |  |
| SD-CS-L23-1022 |  | Preparation & Submittals of SD of Wall Finishes at L23 | 30d | 2015-11-21 | 2015-12-26 | SD-CS-L22-1002 SS+7d | 105d | 0d |
| SD-CS-L23-1032 |  | Review & Approval of SD of Wall Finishes at L23 | 30d | 2015-12-02 | 2016-01-06 | SD-CS-L23-1022 SS+10d, SD-CS-L23-1022 FF+10d | 242d | 118d |
|  | 28 | **Level 24 Floor - Shop drawings** |  | 2015-11-29 | 2016-01-14 |  |  |  |
| SD-CS-L24-1042 |  | Preparation & Submittals of SD of Wall Finishes at L24 | 30d | 2015-11-29 | 2016-01-03 | SD-CS-L23-1022 SS+7d | 105d | 0d |
| SD-CS-L24-1052 |  | Review & Approval of SD of Wall Finishes at L24 | 30d | 2015-12-10 | 2016-01-14 | SD-CS-L24-1042 SS+10d, SD-CS-L24-1042 FF+10d | 189d | 99d |
|  | 29 | **Level 25 Floor - Shop drawings** |  | 2015-12-07 | 2016-01-23 |  |  |  |
| SD-CS-L25-1062 |  | Preparation & Submittals of SD of Wall Finishes at L25 | 30d | 2015-12-07 | 2016-01-11 | SD-CS-L24-1042 SS+7d | 105d | 0d |
| SD-CS-L25-1072 |  | Review & Approval of SD of Wall Finishes at L25 | 30d | 2015-12-20 | 2016-01-23 | SD-CS-L25-1062 SS+10d, SD-CS-L25-1062 FF+10d | 182d | 90d |
|  | 30 | **Level 26 Floor - Shop drawings** |  | 2015-12-15 | 2016-01-31 |  |  |  |
| SD-CS-L26-1082 |  | Preparation & Submittals of SD of Wall Finishes at L26 | 30d | 2015-12-15 | 2016-01-19 | SD-CS-L25-1062 SS+7d | 105d | 0d |
| SD-CS-L26-1092 |  | Review & Approval of SD of Wall Finishes at L26 | 30d | 2015-12-28 | 2016-01-31 | SD-CS-L26-1082 SS+10d, SD-CS-L26-1082 FF+10d | 155d | 88d |
|  | 31 | **Level 27 Floor - Shop drawings** |  | 2015-12-24 | 2016-02-08 |  |  |  |
| SD-CS-L27-1102 |  | Preparation & Submittals of SD of Wall Finishes at L27 | 30d | 2015-12-24 | 2016-01-27 | SD-CS-L26-1082 SS+7d | 105d | 0d |
| SD-CS-L27-1112 |  | Review & Approval of SD of Wall Finishes at L27 | 30d | 2016-01-05 | 2016-02-08 | SD-CS-L27-1102 SS+10d, SD-CS-L27-1102 FF+10d | 168d | 81d |
|  | 32 | **Level 28 Floor - Shop drawings** |  | 2016-01-02 | 2016-02-17 |  |  |  |
| SD-CS-L28-1122 |  | Preparation & Submittals of SD of Wall Finishes at L28 | 30d | 2016-01-02 | 2016-02-04 | SD-CS-L27-1102 SS+7d | 105d | 0d |
| SD-CS-L28-1132 |  | Review & Approval of SD of Wall Finishes at L28 | 30d | 2016-01-13 | 2016-02-17 | SD-CS-L28-1122 SS+10d, SD-CS-L28-1122 FF+10d | 161d | 74d |

| ID | WBS | Activity | Duration | Start | Finish | Predecessors | Total float | Free float |
| --- | --- | --- | --- | --- | --- | --- | --- | --- |
|  | 33 | **Level 29 Floor - Shop drawings** |  | 2016-01-10 | 2016-02-25 |  |  |  |
| SD-CS-L29-1142 |  | Preparation & Submittals of SD of Wall Finishes at L29 | 30d | 2016-01-10 | 2016-02-14 | SD-CS-L28-1122 SS+7d | 105d | 0d |
| SD-CS-L29-1152 |  | Review & Approval of SD of Wall Finishes at L29 | 30d | 2016-01-21 | 2016-02-25 | SD-CS-L29-1142 SS+10d, SD-CS-L29-1142 FF+10d | 223d | 99d |
|  | 34 | **Level 30 Floor - Shop drawings** |  | 2016-01-18 | 2016-03-05 |  |  |  |
| SD-CS-L30-1162 |  | Preparation & Submittals of SD of Wall Finishes at L30 | 30d | 2016-01-18 | 2016-02-22 | SD-CS-L29-1142 SS+7d | 105d | 0d |
| SD-CS-L30-1172 |  | Review & Approval of SD of Wall Finishes at L30 | 30d | 2016-01-30 | 2016-03-05 | SD-CS-L30-1162 SS+10d, SD-CS-L30-1162 FF+10d | 170d | 80d |
|  | 35 | **Level 31 Floor - Shop drawings** |  | 2016-01-26 | 2016-03-13 |  |  |  |
| SD-CS-L31-1182 |  | Preparation & Submittals of SD of Wall Finishes at L31 | 30d | 2016-01-26 | 2016-03-01 | SD-CS-L30-1162 SS+7d | 105d | 0d |
| SD-CS-L31-1192 |  | Review & Approval of SD of Wall Finishes at L31 | 30d | 2016-02-07 | 2016-03-13 | SD-CS-L31-1182 SS+10d, SD-CS-L31-1182 FF+10d | 163d | 79d |
|  | 36 | **Level 32 Floor - Shop drawings** |  | 2016-02-03 | 2016-03-21 |  |  |  |
| SD-CS-L32-1202 |  | Preparation & Submittals of SD of Wall Finishes at L32 | 30d | 2016-02-03 | 2016-03-09 | SD-CS-L31-1182 SS+7d | 105d | 0d |
| SD-CS-L32-1212 |  | Review & Approval of SD of Wall Finishes at L32 | 30d | 2016-02-16 | 2016-03-21 | SD-CS-L32-1202 SS+10d, SD-CS-L32-1202 FF+10d | 136d | 73d |
|  | 37 | **Level 33 Floor - Shop drawings** |  | 2016-02-13 | 2016-03-29 |  |  |  |
| SD-CS-L33-1222 |  | Preparation & Submittals of SD of Wall Finishes at L33 | 30d | 2016-02-13 | 2016-03-17 | SD-CS-L32-1202 SS+7d | 105d | 0d |
| SD-CS-L33-1232 |  | Review & Approval of SD of Wall Finishes at L33 | 30d | 2016-02-24 | 2016-03-29 | SD-CS-L33-1222 SS+10d, SD-CS-L33-1222 FF+10d | 149d | 72d |
|  | 38 | **Level 34 Floor - Shop drawings** |  | 2016-02-21 | 2016-04-06 |  |  |  |
| SD-CS-L34-1242 |  | Preparation & Submittals of SD of Wall Finishes at L34 | 30d | 2016-02-21 | 2016-03-26 | SD-CS-L33-1222 SS+7d | 105d | 0d |
| SD-CS-L34-1252 |  | Review & Approval of SD of Wall Finishes at L34 | 30d | 2016-03-03 | 2016-04-06 | SD-CS-L34-1242 SS+10d, SD-CS-L34-1242 FF+10d | 142d | 71d |
|  | 40 | **Level 36 Floor - Shop drawings** |  | 2016-02-29 | 2016-04-14 |  |  |  |
| SD-CS-L36-1282 |  | Preparation & Submittals of SD of Wall Finishes at L36 | 30d | 2016-02-29 | 2016-04-03 | SD-CS-L34-1242 SS+7d | 105d | 0d |
| SD-CS-L36-1292 |  | Review & Approval of SD of Wall Finishes at L36 | 30d | 2016-03-12 | 2016-04-14 | SD-CS-L36-1282 SS+10d, SD-CS-L36-1282 FF+10d | 158d | 78d |
|  | 41 | **Level 37 Floor - Shop drawings** |  | 2016-03-08 | 2016-04-23 |  |  |  |
| SD-CS-L37-1302 |  | Preparation & Submittals of SD of Wall Finishes at L37 | 30d | 2016-03-08 | 2016-04-11 | SD-CS-L36-1282 SS+7d | 105d | 0d |
| SD-CS-L37-1312 |  | Review & Approval of SD of Wall Finishes at L37 | 30d | 2016-03-20 | 2016-04-23 | SD-CS-L37-1302 SS+10d, SD-CS-L37-1302 FF+10d | 151d | 75d |

| ID | WBS | Activity | Duration | Start | Finish | Predecessors | Total float | Free float |
| --- | --- | --- | --- | --- | --- | --- | --- | --- |
|  | 42 | **Level 38 Floor - Shop drawings** |  | 2016-03-16 | 2016-05-01 |  |  |  |
| SD-CS-L38-1322 |  | Preparation & Submittals of SD of Wall Finishes at L38 | 30d | 2016-03-16 | 2016-04-19 | SD-CS-L37-1302 SS+7d | 105d | 0d |
| SD-CS-L38-1332 |  | Review & Approval of SD of Wall Finishes at L38 | 30d | 2016-03-28 | 2016-05-01 | SD-CS-L38-1322 SS+10d, SD-CS-L38-1322 FF+10d | 124d | 74d |
|  | 43 | **Level 39 Floor - Shop drawings** |  | 2016-03-24 | 2016-05-09 |  |  |  |
| SD-CS-L39-1342 |  | Preparation & Submittals of SD of Wall Finishes at L39 | 30d | 2016-03-24 | 2016-04-27 | SD-CS-L38-1322 SS+7d | 105d | 0d |
| SD-CS-L39-1352 |  | Review & Approval of SD of Wall Finishes at L39 | 30d | 2016-04-05 | 2016-05-09 | SD-CS-L39-1342 SS+10d, SD-CS-L39-1342 FF+10d | 137d | 81d |
|  | 44 | **Level 40 Floor - Shop drawings** |  | 2016-04-02 | 2016-05-17 |  |  |  |
| SD-CS-L40-1362 |  | Preparation & Submittals of SD of Wall Finishes at L40 | 30d | 2016-04-02 | 2016-05-05 | SD-CS-L39-1342 SS+7d | 105d | 0d |
| SD-CS-L40-1372 |  | Review & Approval of SD of Wall Finishes at L40 | 30d | 2016-04-13 | 2016-05-17 | SD-CS-L40-1362 SS+10d, SD-CS-L40-1362 FF+10d | 130d | 59d |
|  | 45 | **Level 41 Floor - Shop drawings** |  | 2016-04-10 | 2016-05-25 |  |  |  |
| SD-CS-L41-1382 |  | Preparation & Submittals of SD of Wall Finishes at L41 | 30d | 2016-04-10 | 2016-05-14 | SD-CS-L40-1362 SS+7d | 105d | 0d |
| SD-CS-L41-1392 |  | Review & Approval of SD of Wall Finishes at L41 | 30d | 2016-04-21 | 2016-05-25 | SD-CS-L41-1382 SS+10d, SD-CS-L41-1382 FF+10d | 146d | 46d |
|  | 46 | **Level 42 Floor - Shop drawings** |  | 2016-04-18 | 2016-06-02 |  |  |  |
| SD-CS-L42-1402 |  | Preparation & Submittals of SD of Wall Finishes at L42 | 30d | 2016-04-18 | 2016-05-22 | SD-CS-L41-1382 SS+7d | 105d | 0d |
| SD-CS-L42-1412 |  | Review & Approval of SD of Wall Finishes at L42 | 30d | 2016-04-30 | 2016-06-02 | SD-CS-L42-1402 SS+10d, SD-CS-L42-1402 FF+10d | 139d | 59d |
|  | 47 | **Level 43 Floor - Shop drawings** |  | 2016-04-26 | 2016-06-11 |  |  |  |
| SD-CS-L43-1422 |  | Preparation & Submittals of SD of Wall Finishes at L43 | 30d | 2016-04-26 | 2016-05-30 | SD-CS-L42-1402 SS+7d | 105d | 0d |
| SD-CS-L43-1432 |  | Review & Approval of SD of Wall Finishes at L43 | 30d | 2016-05-08 | 2016-06-11 | SD-CS-L43-1422 SS+10d, SD-CS-L43-1422 FF+10d | 132d | 56d |
|  | 48 | **Level 44 Floor - Shop drawings** |  | 2016-05-04 | 2016-06-19 |  |  |  |
| SD-CS-L44-1442 |  | Preparation & Submittals of SD of Wall Finishes at L44 | 30d | 2016-05-04 | 2016-06-07 | SD-CS-L43-1422 SS+7d | 105d | 0d |
| SD-CS-L44-1452 |  | Review & Approval of SD of Wall Finishes at L44 | 30d | 2016-05-16 | 2016-06-19 | SD-CS-L44-1442 SS+10d, SD-CS-L44-1442 FF+10d | 105d | 55d |
|  | 49 | **Level 45 Floor - Shop drawings** |  | 2016-05-12 | 2016-06-27 |  |  |  |
| SD-CS-L45-1462 |  | Preparation & Submittals of SD of Wall Finishes at L45 | 30d | 2016-05-12 | 2016-06-15 | SD-CS-L44-1442 SS+7d | 107d | 0d |
| SD-CS-L45-1472 |  | Review & Approval of SD of Wall Finishes at L45 | 30d | 2016-05-24 | 2016-06-27 | SD-CS-L45-1462 SS+10d, SD-CS-L45-1462 FF+10d | 118d | 62d |

| ID | WBS | Activity | Duration | Start | Finish | Predecessors | Total float | Free float |
| --- | --- | --- | --- | --- | --- | --- | --- | --- |
|  | 50 | **Level 46 Floor - Shop drawings** |  | 2016-05-21 | 2016-07-09 |  |  |  |
| SD-CS-L46-1482 |  | Preparation & Submittals of SD of Wall Finishes at L46 | 30d | 2016-05-21 | 2016-06-23 | SD-CS-L45-1462 SS+7d | 107d | 0d |
| SD-CS-L46-1492 |  | Review & Approval of SD of Wall Finishes at L46 | 30d | 2016-06-01 | 2016-07-09 | SD-CS-L46-1482 SS+10d, SD-CS-L46-1482 FF+10d | 111d | 43d |
|  | 54 | **Level 50 Floor - Shop drawings** |  | 2016-05-29 | 2016-07-17 |  |  |  |
| SD-CS-L50-1562 |  | Preparation & Submittals of SD of Wall Finishes at L50 | 30d | 2016-05-29 | 2016-07-02 | SD-CS-L46-1482 SS+7d | 107d | 0d |
| SD-CS-L50-1572 |  | Review & Approval of SD of Wall Finishes at L50 | 30d | 2016-06-09 | 2016-07-17 | SD-CS-L50-1562 SS+10d, SD-CS-L50-1562 FF+10d | 107d | 59d |
|  | 55 | **Level 51 Floor - Shop drawings** |  | 2016-06-06 | 2016-07-25 |  |  |  |
| SD-CS-L51-2522 |  | Preparation & Submittals of SD of Wall Finishes at L51 | 30d | 2016-06-06 | 2016-07-13 | SD-CS-L50-1562 SS+7d | 126d | 0d |
| SD-CS-L51-2532 |  | Review & Approval of SD of Wall Finishes at L51 | 30d | 2016-06-18 | 2016-07-25 | SD-CS-L51-2522 SS+10d, SD-CS-L51-2522 FF+10d | 126d | 64d |
|  | 4 | **Furniture** |  | 2015-05-27 | 2016-08-10 |  |  |  |
|  | 3 | **Ground Floor level - Shop drawings** |  | 2015-05-27 | 2015-07-12 |  |  |  |
| SD-CS-B1-582 |  | Preparation & Submittals of SD of Wall Finishes at GF | 30d | 2015-05-27 | 2015-06-30 | SD-CS-B1-562 SS+14d | 180d | 0d |
| SD-CS-B1-592 |  | Review & Approval of SD of Wall Finishes at GF | 30d | 2015-06-08 | 2015-07-12 | SD-CS-B1-582 SS+10d, SD-CS-B1-582 FF+10d | 509d | 487d |
|  | 4 | **Mezzanine Floor level - Shop drawings** |  | 2015-06-04 | 2015-07-22 |  |  |  |
| SD-CS-GF-582 |  | Preparation & Submittals of SD of Wall Finishes at ML | 30d | 2015-06-04 | 2015-07-08 | SD-CS-B1-582 SS+7d | 180d | 0d |
| SD-CS-GF-592 |  | Review & Approval of SD of Wall Finishes at ML | 30d | 2015-06-16 | 2015-07-22 | SD-CS-GF-582 SS+10d, SD-CS-GF-582 FF+10d | 502d | 480d |
|  | 5 | **Level 1 Floor - Shop drawings** |  | 2015-06-13 | 2015-07-30 |  |  |  |
| SD-CS-L1-602 |  | Preparation & Submittals of SD of Wall Finishes at L1 | 30d | 2015-06-13 | 2015-07-19 | SD-CS-GF-582 SS+7d | 180d | 0d |
| SD-CS-L1-612 |  | Review & Approval of SD of Wall Finishes at L1 | 30d | 2015-06-24 | 2015-07-30 | SD-CS-L1-602 SS+10d, SD-CS-L1-602 FF+10d | 495d | 473d |
|  | 6 | **Level 2 Floor - Shop drawings** |  | 2015-06-21 | 2015-08-08 |  |  |  |
| SD-CS-L2-622 |  | Preparation & Submittals of SD of Wall Finishes at L2 | 30d | 2015-06-21 | 2015-07-27 | SD-CS-L1-602 SS+7d | 180d | 0d |
| SD-CS-L2-632 |  | Review & Approval of SD of Wall Finishes at L2 | 30d | 2015-07-02 | 2015-08-08 | SD-CS-L2-622 SS+10d, SD-CS-L2-622 FF+10d | 488d | 466d |
|  | 7 | **Level 3 Floor - Shop drawings** |  | 2015-06-29 | 2015-08-16 |  |  |  |
| SD-CS-L3-642 |  | Preparation & Submittals of SD ofWall Finishes at L3 | 30d | 2015-06-29 | 2015-08-04 | SD-CS-L2-622 SS+7d | 180d | 0d |
| SD-CS-L3-652 |  | Review & Approval of SD of Wall Finishes at L3 | 30d | 2015-07-11 | 2015-08-16 | SD-CS-L3-642 SS+10d, SD-CS-L3-642 FF+10d | 481d | 459d |

| ID | WBS | Activity | Duration | Start | Finish | Predecessors | Total float | Free float |
| --- | --- | --- | --- | --- | --- | --- | --- | --- |
|  | 8 | **Level 4 Floor - Shop drawings** |  | 2015-07-07 | 2015-08-24 |  |  |  |
| SD-CS-L4-1662 |  | Preparation & Submittals of SD of Wall Finishes at L4 | 30d | 2015-07-07 | 2015-08-12 | SD-CS-L3-642 SS+7d | 180d | 0d |
| SD-CS-L4-1672 |  | Review & Approval of SD of Wall Finishes at L4 | 30d | 2015-07-21 | 2015-08-24 | SD-CS-L4-1662 SS+10d, SD-CS-L4-1662 FF+10d | 474d | 452d |
|  | 9 | **Level 5 Floor - Shop drawings** |  | 2015-07-18 | 2015-09-01 |  |  |  |
| SD-CS-L5-682 |  | Preparation & Submittals of SD of Wall Finishes at L5 | 30d | 2015-07-18 | 2015-08-20 | SD-CS-L4-1662 SS+7d | 180d | 0d |
| SD-CS-L5-692 |  | Review & Approval of SD of Wall Finishes at L5 | 30d | 2015-07-29 | 2015-09-01 | SD-CS-L5-682 SS+10d, SD-CS-L5-682 FF+10d | 467d | 445d |
|  | 10 | **Level 6 Floor - Shop drawings** |  | 2015-07-26 | 2015-09-09 |  |  |  |
| SD-CS-L6-702 |  | Preparation & Submittals of SD of Wall Finishes at L6 | 30d | 2015-07-26 | 2015-08-29 | SD-CS-L5-682 SS+7d | 180d | 0d |
| SD-CS-L6-712 |  | Review & Approval of SD of Wall Finishes at L6 | 30d | 2015-08-06 | 2015-09-09 | SD-CS-L6-702 SS+10d, SD-CS-L6-702 FF+10d | 460d | 438d |
|  | 11 | **Level 7 Floor - Shop drawings** |  | 2015-08-03 | 2015-09-17 |  |  |  |
| SD-CS-L7-722 |  | Preparation & Submittals of SD of Wall Finishes at L7 | 30d | 2015-08-03 | 2015-09-06 | SD-CS-L6-702 SS+7d | 180d | 0d |
| SD-CS-L7-732 |  | Review & Approval of SD of Wall Finishes at L7 | 30d | 2015-08-15 | 2015-09-17 | SD-CS-L7-722 SS+10d, SD-CS-L7-722 FF+10d | 453d | 431d |
|  | 12 | **Level 8 Floor - Shop drawings** |  | 2015-08-11 | 2015-09-29 |  |  |  |
| SD-CS-L8-742 |  | Preparation & Submittals of SD of Wall Finishes at L8 | 30d | 2015-08-11 | 2015-09-14 | SD-CS-L7-722 SS+7d | 180d | 0d |
| SD-CS-L8-752 |  | Review & Approval of SD of Wall Finishes at L8 | 30d | 2015-08-23 | 2015-09-29 | SD-CS-L8-742 SS+10d, SD-CS-L8-742 FF+10d | 446d | 424d |
|  | 13 | **Level 9 Floor - Shop drawings** |  | 2015-08-19 | 2015-10-07 |  |  |  |
| SD-CS-L9-762 |  | Preparation & Submittals of SD of Wall Finishes at L9 | 30d | 2015-08-19 | 2015-09-26 | SD-CS-L8-742 SS+7d | 180d | 0d |
| SD-CS-L9-772 |  | Review & Approval of SD of Wall Finishes at L9 | 30d | 2015-08-31 | 2015-10-07 | SD-CS-L9-762 SS+10d, SD-CS-L9-762 FF+10d | 439d | 417d |
|  | 14 | **Level 10 Floor - Shop drawings** |  | 2015-08-27 | 2015-10-15 |  |  |  |
| SD-CS-L10-782 |  | Preparation & Submittals of SD of Wall Finishes at L10 | 30d | 2015-08-27 | 2015-10-04 | SD-CS-L9-762 SS+7d | 180d | 0d |
| SD-CS-L10-792 |  | Review & Approval of SD of Wall Finishes at L10 | 30d | 2015-09-08 | 2015-10-15 | SD-CS-L10-782 SS+10d, SD-CS-L10-782 FF+10d | 432d | 410d |
|  | 15 | **Level 11 Floor - Shop drawings** |  | 2015-09-05 | 2015-10-24 |  |  |  |
| SD-CS-L11-802 |  | Preparation & Submittals of SD of Wall Finishes at L11 | 30d | 2015-09-05 | 2015-10-12 | SD-CS-L10-782 SS+7d | 180d | 0d |
| SD-CS-L11-812 |  | Review & Approval of SD of Wall Finishes at L11 | 30d | 2015-09-16 | 2015-10-24 | SD-CS-L11-802 SS+10d, SD-CS-L11-802 FF+10d | 425d | 403d |

| ID | WBS | Activity | Duration | Start | Finish | Predecessors | Total float | Free float |
| --- | --- | --- | --- | --- | --- | --- | --- | --- |
|  | 16 | **Level 12 Floor - Shop drawings** |  | 2015-09-13 | 2015-11-01 |  |  |  |
| SD-CS-L12-822 |  | Preparation & Submittals of SD of Wall Finishes at L12 | 30d | 2015-09-13 | 2015-10-20 | SD-CS-L11-802 SS+7d | 180d | 0d |
| SD-CS-L12-832 |  | Review & Approval of SD of Wall Finishes at L12 | 30d | 2015-09-28 | 2015-11-01 | SD-CS-L12-822 SS+10d, SD-CS-L12-822 FF+10d | 418d | 396d |
|  | 17 | **Level 13 Floor - Shop drawings** |  | 2015-09-24 | 2015-11-09 |  |  |  |
| SD-CS-L13-842 |  | Preparation & Submittals of SD of Wall Finishes at L13 | 30d | 2015-09-24 | 2015-10-28 | SD-CS-L12-822 SS+7d | 180d | 0d |
| SD-CS-L13-852 |  | Review & Approval of SD of Wall Finishes at L13 | 30d | 2015-10-06 | 2015-11-09 | SD-CS-L13-842 SS+10d, SD-CS-L13-842 FF+10d | 411d | 389d |
|  | 18 | **Level 14 Floor - Shop drawings** |  | 2015-10-03 | 2015-11-17 |  |  |  |
| SD-CS-L14-862 |  | Preparation & Submittals of SD of Wall Finishes at L14 | 30d | 2015-10-03 | 2015-11-05 | SD-CS-L13-842 SS+7d | 180d | 0d |
| SD-CS-L14-872 |  | Review & Approval of SD of Wall Finishes at L14 | 30d | 2015-10-14 | 2015-11-17 | SD-CS-L14-862 SS+10d, SD-CS-L14-862 FF+10d | 404d | 382d |
|  | 19 | **Level 15 Floor - Shop drawings** |  | 2015-10-11 | 2015-11-25 |  |  |  |
| SD-CS-L15-882 |  | Preparation & Submittals of SD of Wall Finishes at L15 | 30d | 2015-10-11 | 2015-11-14 | SD-CS-L14-862 SS+7d | 180d | 0d |
| SD-CS-L15-892 |  | Review & Approval of SD of Wall Finishes at L15 | 30d | 2015-10-22 | 2015-11-25 | SD-CS-L15-882 SS+10d, SD-CS-L15-882 FF+10d | 397d | 375d |
|  | 20 | **Level 16 Floor - Shop drawings** |  | 2015-10-19 | 2015-12-03 |  |  |  |
| SD-CS-L16-902 |  | Preparation & Submittals of SD of Wall Finishes at L16 | 30d | 2015-10-19 | 2015-11-22 | SD-CS-L15-882 SS+7d | 180d | 0d |
| SD-CS-L16-912 |  | Review & Approval of SD of Wall Finishes at L16 | 30d | 2015-10-31 | 2015-12-03 | SD-CS-L16-902 SS+10d, SD-CS-L16-902 FF+10d | 390d | 368d |
|  | 22 | **Level 18 Floor - Shop drawings** |  | 2015-10-27 | 2015-12-12 |  |  |  |
| SD-CS-L18-942 |  | Preparation & Submittals of SD of Wall Finishes at L18 | 30d | 2015-10-27 | 2015-11-30 | SD-CS-L16-902 SS+7d | 180d | 0d |
| SD-CS-L18-952 |  | Review & Approval of SD of Wall Finishes at L18 | 30d | 2015-11-08 | 2015-12-12 | SD-CS-L18-942 SS+10d, SD-CS-L18-942 FF+10d | 383d | 361d |
|  | 23 | **Level 19 Floor - Shop drawings** |  | 2015-11-04 | 2015-12-21 |  |  |  |
| SD-CS-L19-962 |  | Preparation & Submittals of SD of Wall Finishes at L19 | 30d | 2015-11-04 | 2015-12-08 | SD-CS-L18-942 SS+7d | 180d | 0d |
| SD-CS-L19-972 |  | Review & Approval of SD of Wall Finishes at L19 | 30d | 2015-11-16 | 2015-12-21 | SD-CS-L19-962 SS+10d, SD-CS-L19-962 FF+10d | 376d | 354d |
|  | 24 | **Level 20 Floor - Shop drawings** |  | 2015-11-12 | 2015-12-29 |  |  |  |
| SD-CS-L20-982 |  | Preparation & Submittals of SD of Wall Finishes at L20 | 30d | 2015-11-12 | 2015-12-16 | SD-CS-L19-962 SS+7d | 180d | 0d |
| SD-CS-L20-992 |  | Review & Approval of SD of Wall Finishes at L20 | 30d | 2015-11-24 | 2015-12-29 | SD-CS-L20-982 SS+10d, SD-CS-L20-982 FF+10d | 369d | 347d |

| ID | WBS | Activity | Duration | Start | Finish | Predecessors | Total float | Free float |
| --- | --- | --- | --- | --- | --- | --- | --- | --- |
|  | 25 | **Level 21 Floor - Shop drawings** |  | 2015-11-21 | 2016-01-06 |  |  |  |
| SD-CS-L21-1002 |  | Preparation & Submittals of SD of Wall Finishes at L21 | 30d | 2015-11-21 | 2015-12-26 | SD-CS-L20-982 SS+7d | 180d | 0d |
| SD-CS-L21-1012 |  | Review & Approval of SD of Wall Finishes at L21 | 30d | 2015-12-02 | 2016-01-06 | SD-CS-L21-1002 SS+10d, SD-CS-L21-1002 FF+10d | 362d | 340d |
|  | 26 | **Level 22 Floor - Shop drawings** |  | 2015-11-29 | 2016-01-14 |  |  |  |
| SD-CS-L22-1022 |  | Preparation & Submittals of SD of Wall Finishes at L22 | 30d | 2015-11-29 | 2016-01-03 | SD-CS-L21-1002 SS+7d | 180d | 0d |
| SD-CS-L22-1032 |  | Review & Approval of SD of Wall Finishes at L22 | 30d | 2015-12-10 | 2016-01-14 | SD-CS-L22-1022 SS+10d, SD-CS-L22-1022 FF+10d | 355d | 333d |
|  | 27 | **Level 23 Floor - Shop drawings** |  | 2015-12-07 | 2016-01-23 |  |  |  |
| SD-CS-L23-1042 |  | Preparation & Submittals of SD of Wall Finishes at L23 | 30d | 2015-12-07 | 2016-01-11 | SD-CS-L22-1022 SS+7d | 180d | 0d |
| SD-CS-L23-1052 |  | Review & Approval of SD of Wall Finishes at L23 | 30d | 2015-12-20 | 2016-01-23 | SD-CS-L23-1042 SS+10d, SD-CS-L23-1042 FF+10d | 348d | 326d |
|  | 28 | **Level 24 Floor - Shop drawings** |  | 2015-12-15 | 2016-01-31 |  |  |  |
| SD-CS-L24-1062 |  | Preparation & Submittals of SD of Wall Finishes at L24 | 30d | 2015-12-15 | 2016-01-19 | SD-CS-L23-1042 SS+7d | 180d | 0d |
| SD-CS-L24-1072 |  | Review & Approval of SD of Wall Finishes at L24 | 30d | 2015-12-28 | 2016-01-31 | SD-CS-L24-1062 SS+10d, SD-CS-L24-1062 FF+10d | 341d | 319d |
|  | 29 | **Level 25 Floor - Shop drawings** |  | 2015-12-24 | 2016-02-08 |  |  |  |
| SD-CS-L25-1082 |  | Preparation & Submittals of SD of Wall Finishes at L25 | 30d | 2015-12-24 | 2016-01-27 | SD-CS-L24-1062 SS+7d | 180d | 0d |
| SD-CS-L25-1092 |  | Review & Approval of SD of Wall Finishes at L25 | 30d | 2016-01-05 | 2016-02-08 | SD-CS-L25-1082 SS+10d, SD-CS-L25-1082 FF+10d | 334d | 312d |
|  | 30 | **Level 26 Floor - Shop drawings** |  | 2016-01-02 | 2016-02-17 |  |  |  |
| SD-CS-L26-1102 |  | Preparation & Submittals of SD of Wall Finishes at L26 | 30d | 2016-01-02 | 2016-02-04 | SD-CS-L25-1082 SS+7d | 180d | 0d |
| SD-CS-L26-1112 |  | Review & Approval of SD of Wall Finishes at L26 | 30d | 2016-01-13 | 2016-02-17 | SD-CS-L26-1102 SS+10d, SD-CS-L26-1102 FF+10d | 327d | 305d |
|  | 31 | **Level 27 Floor - Shop drawings** |  | 2016-01-10 | 2016-02-25 |  |  |  |
| SD-CS-L27-1122 |  | Preparation & Submittals of SD of Wall Finishes at L27 | 30d | 2016-01-10 | 2016-02-14 | SD-CS-L26-1102 SS+7d | 180d | 0d |
| SD-CS-L27-1132 |  | Review & Approval of SD of Wall Finishes at L27 | 30d | 2016-01-21 | 2016-02-25 | SD-CS-L27-1122 SS+10d, SD-CS-L27-1122 FF+10d | 320d | 298d |
|  | 32 | **Level 28 Floor - Shop drawings** |  | 2016-01-18 | 2016-03-05 |  |  |  |
| SD-CS-L28-1142 |  | Preparation & Submittals of SD of Wall Finishes at L28 | 30d | 2016-01-18 | 2016-02-22 | SD-CS-L27-1122 SS+7d | 180d | 0d |
| SD-CS-L28-1152 |  | Review & Approval of SD of Wall Finishes at L28 | 30d | 2016-01-30 | 2016-03-05 | SD-CS-L28-1142 SS+10d, SD-CS-L28-1142 FF+10d | 313d | 291d |

| ID | WBS | Activity | Duration | Start | Finish | Predecessors | Total float | Free float |
| --- | --- | --- | --- | --- | --- | --- | --- | --- |
|  | 33 | **Level 29 Floor - Shop drawings** |  | 2016-01-26 | 2016-03-13 |  |  |  |
| SD-CS-L29-1162 |  | Preparation & Submittals of SD of Wall Finishes at L29 | 30d | 2016-01-26 | 2016-03-01 | SD-CS-L28-1142 SS+7d | 180d | 0d |
| SD-CS-L29-1172 |  | Review & Approval of SD of Wall Finishes at L29 | 30d | 2016-02-07 | 2016-03-13 | SD-CS-L29-1162 SS+10d, SD-CS-L29-1162 FF+10d | 306d | 284d |
|  | 34 | **Level 30 Floor - Shop drawings** |  | 2016-02-03 | 2016-03-21 |  |  |  |
| SD-CS-L30-1182 |  | Preparation & Submittals of SD of Wall Finishes at L30 | 30d | 2016-02-03 | 2016-03-09 | SD-CS-L29-1162 SS+7d | 180d | 0d |
| SD-CS-L30-1192 |  | Review & Approval of SD of Wall Finishes at L30 | 30d | 2016-02-16 | 2016-03-21 | SD-CS-L30-1182 SS+10d, SD-CS-L30-1182 FF+10d | 299d | 277d |
|  | 35 | **Level 31 Floor - Shop drawings** |  | 2016-02-13 | 2016-03-29 |  |  |  |
| SD-CS-L31-1202 |  | Preparation & Submittals of SD of Wall Finishes at L31 | 30d | 2016-02-13 | 2016-03-17 | SD-CS-L30-1182 SS+7d | 180d | 0d |
| SD-CS-L31-1212 |  | Review & Approval of SD of Wall Finishes at L31 | 30d | 2016-02-24 | 2016-03-29 | SD-CS-L31-1202 SS+10d, SD-CS-L31-1202 FF+10d | 292d | 270d |
|  | 36 | **Level 32 Floor - Shop drawings** |  | 2016-02-21 | 2016-04-06 |  |  |  |
| SD-CS-L32-1222 |  | Preparation & Submittals of SD of Wall Finishes at L32 | 30d | 2016-02-21 | 2016-03-26 | SD-CS-L31-1202 SS+7d | 180d | 0d |
| SD-CS-L32-1232 |  | Review & Approval of SD of Wall Finishes at L32 | 30d | 2016-03-03 | 2016-04-06 | SD-CS-L32-1222 SS+10d, SD-CS-L32-1222 FF+10d | 285d | 263d |
|  | 37 | **Level 33 Floor - Shop drawings** |  | 2016-02-29 | 2016-04-14 |  |  |  |
| SD-CS-L33-1242 |  | Preparation & Submittals of SD of Wall Finishes at L33 | 30d | 2016-02-29 | 2016-04-03 | SD-CS-L32-1222 SS+7d | 180d | 0d |
| SD-CS-L33-1252 |  | Review & Approval of SD of Wall Finishes at L33 | 30d | 2016-03-12 | 2016-04-14 | SD-CS-L33-1242 SS+10d, SD-CS-L33-1242 FF+10d | 278d | 256d |
|  | 38 | **Level 34 Floor - Shop drawings** |  | 2016-03-08 | 2016-04-23 |  |  |  |
| SD-CS-L34-1262 |  | Preparation & Submittals of SD of Wall Finishes at L34 | 30d | 2016-03-08 | 2016-04-11 | SD-CS-L33-1242 SS+7d | 180d | 0d |
| SD-CS-L34-1272 |  | Review & Approval of SD of Wall Finishes at L34 | 30d | 2016-03-20 | 2016-04-23 | SD-CS-L34-1262 SS+10d, SD-CS-L34-1262 FF+10d | 271d | 249d |
|  | 40 | **Level 36 Floor - Shop drawings** |  | 2016-03-16 | 2016-05-01 |  |  |  |
| SD-CS-L36-1302 |  | Preparation & Submittals of SD of Wall Finishes at L36 | 30d | 2016-03-16 | 2016-04-19 | SD-CS-L34-1262 SS+7d | 180d | 0d |
| SD-CS-L36-1312 |  | Review & Approval of SD of Wall Finishes at L36 | 30d | 2016-03-28 | 2016-05-01 | SD-CS-L36-1302 SS+10d, SD-CS-L36-1302 FF+10d | 264d | 242d |
|  | 41 | **Level 37 Floor - Shop drawings** |  | 2016-03-24 | 2016-05-09 |  |  |  |
| SD-CS-L37-1322 |  | Preparation & Submittals of SD of Wall Finishes at L37 | 30d | 2016-03-24 | 2016-04-27 | SD-CS-L36-1302 SS+7d | 180d | 0d |
| SD-CS-L37-1332 |  | Review & Approval of SD of Wall Finishes at L37 | 30d | 2016-04-05 | 2016-05-09 | SD-CS-L37-1322 SS+10d, SD-CS-L37-1322 FF+10d | 257d | 235d |

| ID | WBS | Activity | Duration | Start | Finish | Predecessors | Total float | Free float |
| --- | --- | --- | --- | --- | --- | --- | --- | --- |
|  | 42 | **Level 38 Floor - Shop drawings** |  | 2016-04-02 | 2016-05-17 |  |  |  |
| SD-CS-L38-1342 |  | Preparation & Submittals of SD of Wall Finishes at L38 | 30d | 2016-04-02 | 2016-05-05 | SD-CS-L37-1322 SS+7d | 180d | 0d |
| SD-CS-L38-1352 |  | Review & Approval of SD of Wall Finishes at L38 | 30d | 2016-04-13 | 2016-05-17 | SD-CS-L38-1342 SS+10d, SD-CS-L38-1342 FF+10d | 250d | 228d |
|  | 43 | **Level 39 Floor - Shop drawings** |  | 2016-04-10 | 2016-05-25 |  |  |  |
| SD-CS-L39-1362 |  | Preparation & Submittals of SD of Wall Finishes at L39 | 30d | 2016-04-10 | 2016-05-14 | SD-CS-L38-1342 SS+7d | 180d | 0d |
| SD-CS-L39-1372 |  | Review & Approval of SD of Wall Finishes at L39 | 30d | 2016-04-21 | 2016-05-25 | SD-CS-L39-1362 SS+10d, SD-CS-L39-1362 FF+10d | 243d | 221d |
|  | 44 | **Level 40 Floor - Shop drawings** |  | 2016-04-18 | 2016-06-02 |  |  |  |
| SD-CS-L40-1382 |  | Preparation & Submittals of SD of Wall Finishes at L40 | 30d | 2016-04-18 | 2016-05-22 | SD-CS-L39-1362 SS+7d | 180d | 0d |
| SD-CS-L40-1392 |  | Review & Approval of SD of Wall Finishes at L40 | 30d | 2016-04-30 | 2016-06-02 | SD-CS-L40-1382 SS+10d, SD-CS-L40-1382 FF+10d | 236d | 214d |
|  | 45 | **Level 41 Floor - Shop drawings** |  | 2016-04-26 | 2016-06-11 |  |  |  |
| SD-CS-L41-1402 |  | Preparation & Submittals of SD of Wall Finishes at L41 | 30d | 2016-04-26 | 2016-05-30 | SD-CS-L40-1382 SS+7d | 180d | 0d |
| SD-CS-L41-1412 |  | Review & Approval of SD of Wall Finishes at L41 | 30d | 2016-05-08 | 2016-06-11 | SD-CS-L41-1402 SS+10d, SD-CS-L41-1402 FF+10d | 229d | 207d |
|  | 46 | **Level 42 Floor - Shop drawings** |  | 2016-05-04 | 2016-06-19 |  |  |  |
| SD-CS-L42-1422 |  | Preparation & Submittals of SD of Wall Finishes at L42 | 30d | 2016-05-04 | 2016-06-07 | SD-CS-L41-1402 SS+7d | 180d | 0d |
| SD-CS-L42-1432 |  | Review & Approval of SD of Wall Finishes at L42 | 30d | 2016-05-16 | 2016-06-19 | SD-CS-L42-1422 SS+10d, SD-CS-L42-1422 FF+10d | 222d | 200d |
|  | 47 | **Level 43 Floor - Shop drawings** |  | 2016-05-12 | 2016-06-27 |  |  |  |
| SD-CS-L43-1442 |  | Preparation & Submittals of SD of Wall Finishes at L43 | 30d | 2016-05-12 | 2016-06-15 | SD-CS-L42-1422 SS+7d | 180d | 0d |
| SD-CS-L43-1452 |  | Review & Approval of SD of Wall Finishes at L43 | 30d | 2016-05-24 | 2016-06-27 | SD-CS-L43-1442 SS+10d, SD-CS-L43-1442 FF+10d | 215d | 193d |
|  | 48 | **Level 44 Floor - Shop drawings** |  | 2016-05-21 | 2016-07-09 |  |  |  |
| SD-CS-L44-1462 |  | Preparation & Submittals of SD of Wall Finishes at L44 | 30d | 2016-05-21 | 2016-06-23 | SD-CS-L43-1442 SS+7d | 180d | 0d |
| SD-CS-L44-1472 |  | Review & Approval of SD of Wall Finishes at L44 | 30d | 2016-06-01 | 2016-07-09 | SD-CS-L44-1462 SS+10d, SD-CS-L44-1462 FF+10d | 208d | 186d |
|  | 49 | **Level 45 Floor - Shop drawings** |  | 2016-05-29 | 2016-07-17 |  |  |  |
| SD-CS-L45-1482 |  | Preparation & Submittals of SD of Wall Finishes at L45 | 30d | 2016-05-29 | 2016-07-02 | SD-CS-L44-1462 SS+7d | 180d | 0d |
| SD-CS-L45-1492 |  | Review & Approval of SD of Wall Finishes at L45 | 30d | 2016-06-09 | 2016-07-17 | SD-CS-L45-1482 SS+10d, SD-CS-L45-1482 FF+10d | 201d | 179d |

| ID | WBS | Activity | Duration | Start | Finish | Predecessors | Total float | Free float | Calendar |
| --- | --- | --- | --- | --- | --- | --- | --- | --- | --- |
|  | 50 | **Level 46 Floor - Shop drawings** |  | 2016-06-06 | 2016-07-25 |  |  |  |  |
| SD-CS-L46-1502 |  | Preparation & Submittals of SD of Wall Finishes at L46 | 30d | 2016-06-06 | 2016-07-13 | SD-CS-L45-1482 SS+7d | 180d | 0d |  |
| SD-CS-L46-1512 |  | Review & Approval of SD of Wall Finishes at L46 | 30d | 2016-06-18 | 2016-07-25 | SD-CS-L46-1502 SS+10d, SD-CS-L46-1502 FF+10d | 194d | 172d |  |
|  | 54 | **Level 50 Floor - Shop drawings** |  | 2016-06-14 | 2016-08-02 |  |  |  |  |
| SD-CS-L50-1582 |  | Preparation & Submittals of SD of Wall Finishes at L50 | 30d | 2016-06-14 | 2016-07-21 | SD-CS-L46-1502 SS+7d | 180d | 0d |  |
| SD-CS-L50-1592 |  | Review & Approval of SD of Wall Finishes at L50 | 30d | 2016-06-26 | 2016-08-02 | SD-CS-L50-1582 SS+10d, SD-CS-L50-1582 FF+10d | 187d | 165d |  |
|  | 55 | **Level 51 Floor - Shop drawings** |  | 2016-06-22 | 2016-08-10 |  |  |  |  |
| SD-CS-L51-2542 |  | Preparation & Submittals of SD of Wall Finishes at L51 | 30d | 2016-06-22 | 2016-07-30 | SD-CS-L50-1582 SS+7d | 180d | 0d |  |
| SD-CS-L51-2552 |  | Review & Approval of SD of Wall Finishes at L51 | 30d | 2016-07-04 | 2016-08-10 | SD-CS-L51-2542 SS+10d, SD-CS-L51-2542 FF+10d | 180d | 158d |  |
|  | 2 | **Procurement** |  | 2015-04-08 | 2016-01-11 |  |  |  |  |
|  | 1 | **Ceiling Finishes** |  | 2015-04-08 | 2015-09-27 |  |  |  |  |
| P-AF-B-3173 |  | Material Submittals of Ceiling FInishes | 14d | 2015-04-08 | 2015-04-23 | A9710 | 109d | 0d |  |
| P-AF-B-3183 |  | Material review & Approval of Ceiling FInishes | 14d | 2015-04-20 | 2015-05-05 | P-AF-B-3173 SS+10d, P-AF-B-3173 FF+10d | 109d | 2d |  |
| P-AF-B-3193 |  | P.O of Ceiling FInishes | 2d | 2015-05-09 | 2015-05-10 | P-AF-B-3183, A10210, G-MM-004 | 107d | 0d |  |
| P-AF-B-3203 |  | Lead Time & Delivery of Ceiling FInishes | 140d | 2015-05-11 | 2015-09-27 | P-AF-B-3193 | 127d | 19d | * JWM - 7 Days per week with no holidays |
|  | 14 | **Floor Finishes** |  | 2015-04-25 | 2015-10-11 |  |  |  |  |
| P-AF-B-2773 |  | Material Submittals of Floor Finishes | 14d | 2015-04-25 | 2015-05-10 | P-AF-B-3173 | 117d | 0d |  |
| P-AF-B-2783 |  | Material review & Approval of Floor Finishes | 14d | 2015-05-06 | 2015-05-21 | P-AF-B-2773 SS+10d, P-AF-B-2773 FF+10d | 117d | 0d |  |
| P-AF-B-2793 |  | P.O of Floor Finishes | 2d | 2015-05-23 | 2015-05-24 | P-AF-B-2783, A10210, G-MM-004 | 117d | 0d |  |
| P-AF-B-2803 |  | Lead Time & Delivery of Floor Finishes | 140d | 2015-05-25 | 2015-10-11 | P-AF-B-2793 | 142d | 33d | * JWM - 7 Days per week with no holidays |
|  | 19 | **Wall Finishes** |  | 2015-05-11 | 2015-10-07 |  |  |  |  |
| P-AF-B-2973 |  | Material Submittals of Wall Finishes | 14d | 2015-05-11 | 2015-05-26 | P-AF-B-2773 | 153d | 0d |  |
| P-AF-B-2983 |  | Material review & Approval of Wall Finishes | 14d | 2015-05-23 | 2015-06-07 | P-AF-B-2973 SS+10d, P-AF-B-2973 FF+10d | 153d | 0d |  |
| P-AF-B-2993 |  | P.O of Wall Finishes | 2d | 2015-06-08 | 2015-06-09 | P-AF-B-2983, A10210, G-MM-004 | 153d | 0d |  |
| P-AF-B-3003 |  | Lead Time & Delivery of Wall Finishes | 120d | 2015-06-10 | 2015-10-07 | P-AF-B-2993 | 184d | 65d | * JWM - 7 Days per week with no holidays |

| ID | WBS | Activity | Duration | Start | Finish | Predecessors | Total float | Free float | Calendar | Cost |
| --- | --- | --- | --- | --- | --- | --- | --- | --- | --- | --- |
|  | 15 | **Furniture** |  | 2015-05-27 | 2016-01-11 |  |  |  |  |  |
| P-AF-B-2813 |  | Material Submittals of Furniture | 14d | 2015-05-27 | 2015-06-11 | P-AF-B-2973 | 199d | 0d |  |  |
| P-AF-B-2823 |  | Material review & Approval of Furniture | 14d | 2015-06-08 | 2015-06-23 | P-AF-B-2813 SS+10d, P-AF-B-2813 FF+10d | 357d | 0d |  |  |
| P-AF-B-2833 |  | P.O of Furniture | 2d | 2015-06-24 | 2015-06-25 | P-AF-B-2823, A10210, G-MM-004 | 357d | 0d |  |  |
| P-AF-B-2843 |  | Lead Time & Delivery of Furniture | 200d | 2015-06-26 | 2016-01-11 | P-AF-B-2833 | 429d | 404d | * JWM - 7 Days per week with no holidays |  |
|  | 17 | **Lighting Fixtures** |  | 2015-06-13 | 2015-12-19 |  |  |  |  |  |
| P-AF-B-2893 |  | Material Submittals of Lighting Fixtures | 14d | 2015-06-13 | 2015-06-28 | P-AF-B-2813 | 199d | 0d |  |  |
| P-AF-B-2903 |  | Material review & Approval of Lighting Fixtures | 14d | 2015-06-24 | 2015-07-09 | P-AF-B-2893 SS+10d, P-AF-B-2893 FF+10d | 199d | 0d |  |  |
| P-AF-B-2913 |  | P.O of Lighting Fixtures | 2d | 2015-07-11 | 2015-07-12 | P-AF-B-2903, A10210, G-MM-004 | 199d | 0d |  |  |
| P-AF-B-2923 |  | Lead Time & Delivery of Lighting Fixtures | 160d | 2015-07-13 | 2015-12-19 | P-AF-B-2913 | 240d | 21d | * JWM - 7 Days per week with no holidays |  |
|  | 6 | **Construction** |  | 2015-10-17 | 2017-06-03 |  |  |  |  |  |
|  | 11 | **Finishes** |  | 2015-10-17 | 2016-11-08 |  |  |  |  |  |
|  | 1 | **Ground FLoor** |  | 2015-10-17 | 2016-01-09 |  |  |  |  |  |
| C-F-P-1713 |  | Installation of Ceiling Finishes at Ground Floor | 24d | 2015-10-17 | 2015-11-12 | SD-CS-B1-532, PQ-CS-C-2012, P-AF-B-3203, C-F-CF-17 SS | 92d | 0d |  | 1,341,415.93 |
| C-F-P-1723 |  | Installation of Floor Finishes at Ground Floor | 24d | 2015-11-14 | 2015-12-10 | C-F-P-1713, SD-CS-B1-552, P-AF-B-2803 | 92d | 0d |  | 1,788,554.58 |
| C-F-P-1733 |  | Installation of Wall Finishes at Ground Floor | 24d | 2015-12-12 | 2016-01-09 | SD-CS-B1-572, P-AF-B-3003, C-F-P-1723, C-F-P-DFI-822 FF | 100d | 0d |  | 894,277.29 |
|  | 3 | **Level Ground Mezzanine** |  | 2015-10-17 | 2016-01-09 |  |  |  |  |  |
| C-F-P-1893 |  | Installation of Ceiling Finishes at Ground Mezz Floor | 24d | 2015-10-17 | 2015-11-12 | SD-CS-GF-532, P-AF-B-3203, PQ-CS-C-2012, C-F-CF-437 SS | 158d | 0d |  | 166,553.35 |
| C-F-P-1903 |  | Installation of Floor Finishes at Ground Mezz. Floor | 24d | 2015-11-14 | 2015-12-10 | C-F-P-1893, SD-CS-GF-552, P-AF-B-2803 | 158d | 0d |  | 222,071.13 |
| C-F-P-1913 |  | Installation of Wall Finishes at Ground Mezz. Floor | 24d | 2015-12-12 | 2016-01-09 | SD-CS-GF-572, C-F-P-1903, P-AF-B-3003, C-F-P-DFI-832 | 191d | 0d |  | 111,035.57 |
|  | 4 | **Level 1** |  | 2015-10-17 | 2016-01-09 |  |  |  |  |  |
| C-F-P-1743 |  | Installation of Ceiling Finishes at level 1 | 24d | 2015-10-17 | 2015-11-12 | SD-CS-L1-552, P-AF-B-3203, C-F-CF-87 SS | 95d | 0d |  | 1,285,277.94 |
| C-F-P-1753 |  | Installation of Floor Finishes at level 1 | 24d | 2015-11-14 | 2015-12-10 | C-F-P-1743, SD-CS-L1-572, P-AF-B-2803 | 95d | 0d |  | 1,713,703.91 |
| C-F-P-1763 |  | Installation of Wall Finishes at level 1 | 24d | 2015-12-12 | 2016-01-09 | C-F-P-1753, SD-CS-L1-592, P-AF-B-3003, C-F-P-DFI-842 FF | 123d | 0d |  | 856,851.96 |

Notes:
- C-F-P-1713: Expenses: 1 1341416
- C-F-P-1723: Expenses: 1 1788555
- C-F-P-1733: Expenses: 1 894277
- C-F-P-1893: Expenses: 1 166553
- C-F-P-1903: Expenses: 1 222071
- C-F-P-1913: Expenses: 1 111036
- C-F-P-1743: Expenses: 1 1285278
- C-F-P-1753: Expenses: 1 1713704
- C-F-P-1763: Expenses: 1 856852

| ID | WBS | Activity | Duration | Start | Finish | Predecessors | Total float | Free float | Cost |
| --- | --- | --- | --- | --- | --- | --- | --- | --- | --- |
|  | 5 | **Level 1 -Mezzanine** |  | 2015-11-08 | 2016-01-31 |  |  |  |  |
| C-F-P-1773 |  | Installation of Ceiling Finishes at level 1 Mezz. | 24d | 2015-11-08 | 2015-12-05 | C-F-P-1743 SS, P-AF-B-3203, C-F-CF-157 SS | 77d | 0d | 697,520.68 |
| C-F-P-1783 |  | Installation of Floor Finishes at level 1 Mezz. | 24d | 2015-12-06 | 2016-01-03 | C-F-P-1773, P-AF-B-2803 | 77d | 0d | 930,027.57 |
| C-F-P-1793 |  | Installation of Wall Finishes at level 1 Mezz. | 24d | 2016-01-04 | 2016-01-31 | C-F-P-1763 SS, SD-CS-L1-592, C-F-P-1783, P-AF-B-3003, C-F-P-DFI--852 FF | 129d | 0d | 465,013.78 |
|  | 6 | **Level 2** |  | 2015-10-17 | 2016-01-09 |  |  |  |  |
| C-F-P-1833 |  | Installation of Ceiling Finishes at level 2 | 24d | 2015-10-17 | 2015-11-12 | SD-CS-L2-572, P-AF-B-3203, C-F-CF-297 SS | 104d | 0d | 1,177,165.78 |
| C-F-P-1843 |  | Installation of Floor Finishes at level 2 | 24d | 2015-11-14 | 2015-12-10 | C-F-P-1833, SD-CS-L2-592, P-AF-B-2803 | 104d | 0d | 1,569,554.37 |
| C-F-P-1853 |  | Installation of Wall Finishes at level 2 | 24d | 2015-12-12 | 2016-01-09 | SD-CS-L2-612, C-F-P-1843, P-AF-B-3003, C-F-P-DFI--862 FF | 104d | 3d | 784,777.18 |
|  | 7 | **Level 3** |  | 2015-10-20 | 2016-01-12 |  |  |  |  |
| C-F-P-1683 |  | Installation of Ceiling Finishes at level 3 | 24d | 2015-10-20 | 2015-11-16 | SD-CS-L3-592, P-AF-B-3203, C-F-CF-005 SS | 110d | 0d | 1,142,460.82 |
| C-F-P-1693 |  | Installation of Floor Finishes at level 3 | 24d | 2015-11-17 | 2015-12-14 | C-F-P-1683, SD-CS-L3-612, P-AF-B-2803 | 110d | 0d | 1,523,281.09 |
| C-F-P-1703 |  | Installation of Wall Finishes at level 3 | 24d | 2015-12-15 | 2016-01-12 | C-F-P-1853 SS, SD-CS-L3-632, C-F-P-1693, P-AF-B-3003, C-F-P-DFI--872 FF | 121d | 0d | 761,640.54 |
|  | 8 | **Level 4** |  | 2015-12-08 | 2016-02-08 |  |  |  |  |
| C-F-P-1803 |  | Installation of Ceiling Finishes at level 4 | 24d | 2015-12-08 | 2016-01-05 | SD-CS-L4-1612, C-F-P-1713, C-F-CF-237 SS, C-F-CF-227 SS | 90d | 0d | 744,798.03 |
| C-F-P-1813 |  | Installation of Floor Finishes at level 4 | 24d | 2015-12-14 | 2016-01-11 | C-F-P-1803 SS+5d, SD-CS-L4-1632, C-F-P-1723 | 90d | 0d | 993,064.05 |
| C-F-P-1823 |  | Installation of Wall Finishes at level 4 | 24d | 2016-01-12 | 2016-02-08 | SD-CS-L4-1652, C-F-P-1813, C-F-P-1733, C-F-P-DFI--882 FF | 98d | 0d | 496,532.02 |
|  | 9 | **Level 5** |  | 2015-12-09 | 2016-02-09 |  |  |  |  |
| C-F-P-1923 |  | Installation of Ceiling Finishes at level 5 | 24d | 2015-12-09 | 2016-01-06 | SD-CS-L5-632, C-F-P-1893, C-F-CF-377 SS, C-F-CF-367 SS | 155d | 0d | 745,292.94 |
| C-F-P-1933 |  | Installation of Floor Finishes at level 5 | 24d | 2015-12-15 | 2016-01-12 | C-F-P-1923 SS+5d, SD-CS-L5-652, C-F-P-1903 | 155d | 0d | 993,723.91 |
| C-F-P-1943 |  | Installation of Wall Finishes at level 5 | 24d | 2016-01-13 | 2016-02-09 | C-F-P-1933, SD-CS-L5-672, C-F-P-1913, C-F-P-DFI--892 FF | 188d | 0d | 496,861.96 |
|  | 10 | **Level 6** |  | 2015-12-03 | 2016-02-06 |  |  |  |  |
| C-F-P-1953 |  | Installation of Ceiling Finishes at level 6 | 24d | 2015-12-03 | 2015-12-31 | SD-CS-L6-642, C-F-P-1743, SD-CS-L6-652, C-F-CF-577 SS, C-F-CF-587 SS | 97d | 2d | 749,885.05 |
| C-F-P-1963 |  | Installation of Floor Finishes at level 6 | 24d | 2015-12-12 | 2016-01-09 | C-F-P-1953 SS+5d, SD-CS-L6-672, C-F-P-1753 | 95d | 0d | 999,846.73 |
| C-F-P-1973 |  | Installation of Wall Finishes at level 6 | 24d | 2016-01-10 | 2016-02-06 | C-F-P-1963, SD-CS-L6-692, C-F-P-1763, C-F-P-DFI--902 FF | 123d | 0d | 499,923.37 |

Notes:
- C-F-P-1773: Expenses: 1 697521
- C-F-P-1783: Expenses: 1 930028
- C-F-P-1793: Expenses: 1 465014
- C-F-P-1833: Expenses: 1 1177166
- C-F-P-1843: Expenses: 1 1569554
- C-F-P-1853: Expenses: 1 784777
- C-F-P-1683: Expenses: 1 1142461
- C-F-P-1693: Expenses: 1 1523281
- C-F-P-1703: Expenses: 1 761641
- C-F-P-1803: Expenses: 1 744798
- C-F-P-1813: Expenses: 1 993064
- C-F-P-1823: Expenses: 1 496532
- C-F-P-1923: Expenses: 1 745293
- C-F-P-1933: Expenses: 1 993724
- C-F-P-1943: Expenses: 1 496862
- C-F-P-1953: Expenses: 1 749885
- C-F-P-1963: Expenses: 1 999847
- C-F-P-1973: Expenses: 1 499923

| ID | WBS | Activity | Duration | Start | Finish | Predecessors | Total float | Free float | Cost |
| --- | --- | --- | --- | --- | --- | --- | --- | --- | --- |
|  | 11 | **Level 7** |  | 2015-12-27 | 2016-02-29 |  |  |  |  |
| C-F-P-1983 |  | Installation of Ceiling Finishes at level 7 | 24d | 2015-12-27 | 2016-01-23 | SD-CS-L7-672, C-F-P-1773, C-F-CF-997 SS, C-F-CF-1007 SS | 79d | 2d | 758,265.06 |
| C-F-P-1993 |  | Installation of Floor Finishes at level 7 | 24d | 2016-01-04 | 2016-01-31 | C-F-P-1983 SS+5d, SD-CS-L7-692, C-F-P-1783 | 77d | 0d | 1,011,020.08 |
| C-F-P-2003 |  | Installation of Wall Finishes at level 7 | 24d | 2016-02-01 | 2016-02-29 | C-F-P-1993, SD-CS-L7-712, C-F-P-1793 FF, C-F-P-DFI--912 FF | 105d | 0d | 505,510.04 |
|  | 12 | **Level 8** |  | 2016-01-19 | 2016-03-21 |  |  |  |  |
| C-F-P-2013 |  | Installation of Ceiling Finishes at level 8 | 24d | 2016-01-19 | 2016-02-16 | SD-CS-L8-682, C-F-P-1833, SD-CS-L8-692, C-F-CF-647 SS, C-F-CF-657 SS | 67d | 0d | 772,855.14 |
| C-F-P-2023 |  | Installation of Floor Finishes at level 8 | 24d | 2016-01-25 | 2016-02-22 | C-F-P-2013 SS+5d, SD-CS-L8-712, C-F-P-1843 | 67d | 0d | 1,030,473.52 |
| C-F-P-2033 |  | Installation of Wall Finishes at level 8 | 24d | 2016-02-23 | 2016-03-21 | C-F-P-2023, SD-CS-L8-732, C-F-P-1853, C-F-P-DFI--922 FF | 67d | 0d | 515,236.76 |
|  | 13 | **Level 9** |  | 2016-01-19 | 2016-03-21 |  |  |  |  |
| C-F-P-2043 |  | Installation of Ceiling Finishes at level 9 | 24d | 2016-01-19 | 2016-02-16 | SD-CS-L9-712, C-F-P-1683, C-F-CF-717 SS, C-F-CF-727 SS | 76d | 0d | 785,565.54 |
| C-F-P-2053 |  | Installation of Floor Finishes at level 9 | 24d | 2016-01-25 | 2016-02-22 | C-F-P-2043 SS+5d, SD-CS-L9-732, C-F-P-1693 | 76d | 0d | 1,047,420.72 |
| C-F-P-2063 |  | Installation of Wall Finishes at level 9 | 24d | 2016-02-23 | 2016-03-21 | C-F-P-2053, SD-CS-L9-752, C-F-P-1703, C-F-P-DFI--932 FF | 87d | 0d | 523,710.36 |
|  | 14 | **Level 10** |  | 2016-01-19 | 2016-03-21 |  |  |  |  |
| C-F-P-2103 |  | Installation of Ceiling Finishes at level 10 | 24d | 2016-01-19 | 2016-02-16 | SD-CS-L10-732, C-F-P-1803, C-F-CF-857 SS, C-F-CF-867 SS | 79d | 0d | 796,757.92 |
| C-F-P-2113 |  | Installation of Floor Finishes at level 10 | 24d | 2016-01-25 | 2016-02-22 | C-F-P-2103 SS+5d, SD-CS-L10-752, C-F-P-1813 | 79d | 0d | 1,062,343.9 |
| C-F-P-2123 |  | Installation of Wall Finishes at level 10 | 24d | 2016-02-23 | 2016-03-21 | C-F-P-2113, SD-CS-L10-772, C-F-P-1823, C-F-P-DFI--942 FF | 87d | 0d | 531,171.95 |
|  | 15 | **Level 11** |  | 2016-01-19 | 2016-03-21 |  |  |  |  |
| C-F-P-2073 |  | Installation of Ceiling Finishes at level 11 | 24d | 2016-01-19 | 2016-02-16 | SD-CS-L11-752, C-F-P-1923, C-F-CF-507 SS, C-F-CF-517 SS | 146d | 0d | 806,260.98 |
| C-F-P-2083 |  | Installation of Floor Finishes at level 11 | 24d | 2016-01-25 | 2016-02-22 | C-F-P-2073 SS+5d, SD-CS-L11-772, C-F-P-1933 | 146d | 0d | 1,075,014.64 |
| C-F-P-2093 |  | Installation of Wall Finishes at level 11 | 24d | 2016-02-23 | 2016-03-21 | C-F-P-2083, SD-CS-L11-792, C-F-P-1943, C-F-P-DFI-952 FF | 179d | 0d | 537,507.32 |
|  | 16 | **Level 12** |  | 2016-02-13 | 2016-04-13 |  |  |  |  |
| C-F-P-2133 |  | Installation of Ceiling Finishes at level 12 | 24d | 2016-02-13 | 2016-03-10 | SD-CS-L12-772, C-F-P-1953, C-F-CF-787 SS, C-F-CF-797 SS | 62d | 0d | 825,419.37 |
| C-F-P-2143 |  | Installation of Floor Finishes at level 12 | 24d | 2016-02-18 | 2016-03-16 | C-F-P-2133 SS+5d, SD-CS-L12-792, C-F-P-1963 | 62d | 0d | 1,100,559.17 |
| C-F-P-2153 |  | Installation of Wall Finishes at level 12 | 24d | 2016-03-17 | 2016-04-13 | C-F-P-2143, SD-CS-L12-812, C-F-P-1973, C-F-P-DFI--962 FF | 90d | 0d | 550,279.58 |

Notes:
- C-F-P-1983: Expenses: 1 758265
- C-F-P-1993: Expenses: 1 1011020
- C-F-P-2003: Expenses: 1 505510
- C-F-P-2013: Expenses: 1 772855
- C-F-P-2023: Expenses: 1 1030474
- C-F-P-2033: Expenses: 1 515237
- C-F-P-2043: Expenses: 1 785566
- C-F-P-2053: Expenses: 1 1047421
- C-F-P-2063: Expenses: 1 523710
- C-F-P-2103: Expenses: 1 796758
- C-F-P-2113: Expenses: 1 1062344
- C-F-P-2123: Expenses: 1 531172
- C-F-P-2073: Expenses: 1 806261
- C-F-P-2083: Expenses: 1 1075015
- C-F-P-2093: Expenses: 1 537507
- C-F-P-2133: Expenses: 1 825419
- C-F-P-2143: Expenses: 1 1100559
- C-F-P-2153: Expenses: 1 550280

| ID | WBS | Activity | Duration | Start | Finish | Predecessors | Total float | Free float | Cost |
| --- | --- | --- | --- | --- | --- | --- | --- | --- | --- |
|  | 17 | **Level 13** |  | 2016-02-13 | 2016-04-11 |  |  |  |  |
| C-F-P-2163 |  | Installation of Ceiling Finishes at level 13 | 23d | 2016-02-13 | 2016-03-09 | SD-CS-L13-792, C-F-P-1983, C-F-CF-927 SS, C-F-CF-937 SS | 63d | 0d | 844,558.73 |
| C-F-P-2173 |  | Installation of Floor Finishes at level 13 | 23d | 2016-02-18 | 2016-03-15 | C-F-P-2163 SS+5d, SD-CS-L13-812, C-F-P-1993 | 63d | 0d | 1,126,078.31 |
| C-F-P-2183 |  | Installation of Wall Finishes at level 13 | 23d | 2016-03-16 | 2016-04-11 | C-F-P-2173, SD-CS-L13-832, C-F-P-2003, C-F-P-DFI-972 | 92d | 0d | 563,039.16 |
|  | 18 | **Level 14** |  | 2016-02-17 | 2016-04-17 |  |  |  |  |
| C-F-P-2193 |  | Installation of Ceiling Finishes at level 14 | 23d | 2016-02-17 | 2016-03-14 | SD-CS-L14-812, C-F-P-2013, C-F-CF-1137 SS, C-F-CF-1147 SS | 68d | 0d | 861,885.04 |
| C-F-P-2203 |  | Installation of Floor Finishes at level 14 | 23d | 2016-02-23 | 2016-03-20 | C-F-P-2193 SS+5d, SD-CS-L14-832, C-F-P-2023 | 68d | 0d | 1,149,180.05 |
| C-F-P-2213 |  | Installation of Wall Finishes at level 14 | 23d | 2016-03-22 | 2016-04-17 | C-F-P-2203, SD-CS-L14-852, C-F-P-2033, C-F-P-DFI--982 FF | 67d | 0d | 574,590.03 |
|  | 19 | **Level 15** |  | 2016-02-17 | 2016-04-17 |  |  |  |  |
| C-F-P-2223 |  | Installation of Ceiling Finishes at level 15 | 23d | 2016-02-17 | 2016-03-14 | SD-CS-L15-832, C-F-P-2043, C-F-CF-1557 SS, C-F-CF-1567 SS | 76d | 0d | 945,656.62 |
| C-F-P-2233 |  | Installation of Floor Finishes at level 15 | 23d | 2016-02-23 | 2016-03-20 | C-F-P-2223 SS+5d, SD-CS-L15-852, C-F-P-2053 | 76d | 0d | 1,260,875.49 |
| C-F-P-2243 |  | Installation of Wall Finishes at level 15 | 23d | 2016-03-22 | 2016-04-17 | C-F-P-2233, SD-CS-L15-872, C-F-P-2063, C-F-P-DFI--992 FF | 87d | 0d | 630,437.74 |
|  | 20 | **Level 16** |  | 2016-02-17 | 2016-04-17 |  |  |  |  |
| C-F-P-2253 |  | Installation of Ceiling Finishes at level 16 | 23d | 2016-02-17 | 2016-03-14 | SD-CS-L16-852, C-F-P-2103, C-F-CF-1277 SS, C-F-CF-1287 SS | 79d | 0d | 961,379.25 |
| C-F-P-2263 |  | Installation of Floor Finishes at level 16 | 23d | 2016-02-23 | 2016-03-20 | C-F-P-2253 SS+5d, SD-CS-L16-872, C-F-P-2113 | 79d | 0d | 1,281,839.01 |
| C-F-P-2273 |  | Installation of Wall Finishes at level 16 | 23d | 2016-03-22 | 2016-04-17 | C-F-P-2263, SD-CS-L16-892, C-F-P-2123, C-F-P-DFI-002 FF | 87d | 0d | 640,919.5 |
|  | 22 | **Level 18** |  | 2016-03-12 | 2016-05-10 |  |  |  |  |
| C-F-P-2313 |  | Installation of Ceiling Finishes at level 18 | 23d | 2016-03-12 | 2016-04-06 | SD-CS-L18-892, C-F-P-2133, C-F-CF-1417 SS, C-F-CF-1427 SS | 62d | 0d | 987,394.89 |
| C-F-P-2323 |  | Installation of Floor Finishes at level 18 | 23d | 2016-03-17 | 2016-04-12 | C-F-P-2313 SS+5d, SD-CS-L18-912, C-F-P-2143 | 62d | 0d | 1,316,526.52 |
| C-F-P-2333 |  | Installation of Wall Finishes at level 18 | 23d | 2016-04-14 | 2016-05-10 | C-F-P-2323, SD-CS-L18-932, C-F-P-2153, C-F-P-DFI-012 FF | 90d | 0d | 658,263.26 |
|  | 23 | **Level 19** |  | 2016-03-10 | 2016-05-08 |  |  |  |  |
| C-F-P-2343 |  | Installation of Ceiling Finishes at level 19 | 23d | 2016-03-10 | 2016-04-05 | SD-CS-L19-912, C-F-P-2163, C-F-CF-1067 SS, C-F-CF-1077 SS | 63d | 0d | 997,364.3 |
| C-F-P-2353 |  | Installation of Floor Finishes at level 19 | 23d | 2016-03-16 | 2016-04-11 | C-F-P-2343 SS+5d, SD-CS-L19-932, C-F-P-2173 | 63d | 0d | 1,329,819.06 |
| C-F-P-2363 |  | Installation of Wall Finishes at level 19 | 23d | 2016-04-12 | 2016-05-08 | C-F-P-2353, SD-CS-L19-952, C-F-P-2183, C-F-P-DFI-022 FF | 92d | 0d | 664,909.53 |

Notes:
- C-F-P-2163: Expenses: 1 844559
- C-F-P-2173: Expenses: 1 1126078
- C-F-P-2183: Expenses: 1 563039
- C-F-P-2193: Expenses: 1 861885
- C-F-P-2203: Expenses: 1 1149180
- C-F-P-2213: Expenses: 1 574590
- C-F-P-2223: Expenses: 1 945657
- C-F-P-2233: Expenses: 1 1260875
- C-F-P-2243: Expenses: 1 630438
- C-F-P-2253: Expenses: 1 961379
- C-F-P-2263: Expenses: 1 1281839
- C-F-P-2273: Expenses: 1 640920
- C-F-P-2313: Expenses: 1 987395
- C-F-P-2323: Expenses: 1 1316527
- C-F-P-2333: Expenses: 1 658263
- C-F-P-2343: Expenses: 1 997364
- C-F-P-2353: Expenses: 1 1329819
- C-F-P-2363: Expenses: 1 664910

| ID | WBS | Activity | Duration | Start | Finish | Predecessors | Total float | Free float | Cost |
| --- | --- | --- | --- | --- | --- | --- | --- | --- | --- |
|  | 24 | **Level 20** |  | 2016-03-15 | 2016-05-14 |  |  |  |  |
| C-F-P-2373 |  | Installation of Ceiling Finishes at level 20 | 23d | 2016-03-15 | 2016-04-10 | SD-CS-L20-932, C-F-P-2193, C-F-CF-1347 SS, C-F-CF-1357 SS | 68d | 0d | 1,005,339.82 |
| C-F-P-2383 |  | Installation of Floor Finishes at level 20 | 23d | 2016-03-21 | 2016-04-16 | C-F-P-2373 SS+5d, SD-CS-L20-952, C-F-P-2203 | 68d | 0d | 1,340,453.09 |
| C-F-P-2393 |  | Installation of Wall Finishes at level 20 | 23d | 2016-04-18 | 2016-05-14 | C-F-P-2383, SD-CS-L20-972, C-F-P-2213, C-F-P-DFI-032 FF | 67d | 0d | 670,226.55 |
|  | 25 | **Level 21** |  | 2016-03-15 | 2016-05-14 |  |  |  |  |
| C-F-P-2403 |  | Installation of Ceiling Finishes at level 21 | 23d | 2016-03-15 | 2016-04-10 | SD-CS-L21-952, C-F-P-2223, C-F-CF-1487 SS, C-F-CF-1497 SS | 76d | 0d | 1,011,330.98 |
| C-F-P-2413 |  | Installation of Floor Finishes at level 21 | 23d | 2016-03-21 | 2016-04-16 | C-F-P-2403 SS+5d, SD-CS-L21-972, C-F-P-2233 | 76d | 0d | 1,348,441.31 |
| C-F-P-2423 |  | Installation of Wall Finishes at level 21 | 23d | 2016-04-18 | 2016-05-14 | C-F-P-2413, SD-CS-L21-992, C-F-P-2243, C-F-P-DFI-1042 FF | 87d | 0d | 674,220.66 |
|  | 26 | **Level 22** |  | 2016-03-15 | 2016-05-14 |  |  |  |  |
| C-F-P-2433 |  | Installation of Ceiling Finishes at level 22 | 23d | 2016-03-15 | 2016-04-10 | SD-CS-L22-972, C-F-P-2253, C-F-CF-1697 SS, C-F-CF-1707 SS | 79d | 0d | 1,014,938.05 |
| C-F-P-2443 |  | Installation of Floor Finishes at level 22 | 23d | 2016-03-21 | 2016-04-16 | C-F-P-2433 SS+5d, SD-CS-L22-992, C-F-P-2263 | 79d | 0d | 1,353,250.74 |
| C-F-P-2453 |  | Installation of Wall Finishes at level 22 | 23d | 2016-04-18 | 2016-05-14 | C-F-P-2443, SD-CS-L22-1012, C-F-P-2273, C-F-P-DFI-052 FF | 87d | 0d | 676,625.37 |
|  | 27 | **Level 23** |  | 2016-04-23 | 2016-06-20 |  |  |  |  |
| C-F-P-2463 |  | Installation of Ceiling Finishes at level 23 | 23d | 2016-04-23 | 2016-05-18 | SD-CS-L23-992, C-F-CF-2117, C-F-CF-2127 | 90d | 0d | 1,017,636.22 |
| C-F-P-2473 |  | Installation of Floor Finishes at level 23 | 23d | 2016-04-28 | 2016-05-24 | C-F-P-2463 SS+5d, SD-CS-L23-1012 | 90d | 0d | 1,356,848.29 |
| C-F-P-2483 |  | Installation of Wall Finishes at level 23 | 23d | 2016-05-25 | 2016-06-20 | C-F-P-2473, SD-CS-L23-1032, C-F-P-DFI-062 FF | 124d | 0d | 678,424.14 |
|  | 28 | **Level 24** |  | 2016-04-07 | 2016-06-06 |  |  |  |  |
| C-F-P-2493 |  | Installation of Ceiling Finishes at level 24 | 23d | 2016-04-07 | 2016-05-03 | SD-CS-L24-1012, C-F-P-2313, C-F-CF-1767 SS, C-F-CF-1777 SS | 62d | 0d | 1,017,474.42 |
| C-F-P-2503 |  | Installation of Floor Finishes at level 24 | 23d | 2016-04-13 | 2016-05-09 | C-F-P-2493 SS+5d, SD-CS-L24-1032, C-F-P-2323 | 62d | 0d | 1,356,632.56 |
| C-F-P-2513 |  | Installation of Wall Finishes at level 24 | 23d | 2016-05-11 | 2016-06-06 | C-F-P-2503, SD-CS-L24-1052, C-F-P-2333, C-F-P-DFI-072 FF | 90d | 0d | 678,316.28 |
|  | 29 | **Level 25** |  | 2016-04-06 | 2016-06-04 |  |  |  |  |
| C-F-P-2523 |  | Installation of Ceiling Finishes at level 25 | 23d | 2016-04-06 | 2016-05-02 | SD-CS-L25-1032, C-F-P-2343, C-F-CF-1837 SS, C-F-CF-1847 SS | 63d | 0d | 1,015,575.71 |
| C-F-P-2533 |  | Installation of Floor Finishes at level 25 | 23d | 2016-04-12 | 2016-05-08 | C-F-P-2523 SS+5d, SD-CS-L25-1052, C-F-P-2353 | 63d | 0d | 1,354,100.95 |
| C-F-P-2543 |  | Installation of Wall Finishes at level 25 | 23d | 2016-05-09 | 2016-06-04 | C-F-P-2533, SD-CS-L25-1072, C-F-P-2363, C-F-P-DFI-082 FF | 92d | 0d | 677,050.48 |

Notes:
- C-F-P-2373: Expenses: 1 1005340
- C-F-P-2383: Expenses: 1 1340453
- C-F-P-2393: Expenses: 1 670227
- C-F-P-2403: Expenses: 1 1011331
- C-F-P-2413: Expenses: 1 1348441
- C-F-P-2423: Expenses: 1 674221
- C-F-P-2433: Expenses: 1 1014938
- C-F-P-2443: Expenses: 1 1353251
- C-F-P-2453: Expenses: 1 676625
- C-F-P-2463: Expenses: 1 1017636
- C-F-P-2473: Expenses: 1 1356848
- C-F-P-2483: Expenses: 1 678424
- C-F-P-2493: Expenses: 1 1017474
- C-F-P-2503: Expenses: 1 1356633
- C-F-P-2513: Expenses: 1 678316
- C-F-P-2523: Expenses: 1 1015576
- C-F-P-2533: Expenses: 1 1354101
- C-F-P-2543: Expenses: 1 677050

| ID | WBS | Activity | Duration | Start | Finish | Predecessors | Total float | Free float | Cost |
| --- | --- | --- | --- | --- | --- | --- | --- | --- | --- |
|  | 30 | **Level 26** |  | 2016-04-11 | 2016-06-09 |  |  |  |  |
| C-F-P-2553 |  | Installation of Ceiling Finishes at level 26 | 23d | 2016-04-11 | 2016-05-07 | SD-CS-L26-1052, C-F-P-2373, C-F-CF-1977 SS, C-F-CF-1987 SS | 68d | 0d | 1,011,854.44 |
| C-F-P-2563 |  | Installation of Floor Finishes at level 26 | 23d | 2016-04-17 | 2016-05-12 | C-F-P-2553 SS+5d, SD-CS-L26-1072, C-F-P-2383 | 68d | 0d | 1,349,139.25 |
| C-F-P-2573 |  | Installation of Wall Finishes at level 26 | 23d | 2016-05-15 | 2016-06-09 | C-F-P-2563, SD-CS-L26-1092, C-F-P-2393, C-F-P-DFI-092 FF | 67d | 0d | 674,569.62 |
|  | 31 | **Level 27** |  | 2016-04-11 | 2016-06-09 |  |  |  |  |
| C-F-P-2583 |  | Installation of Ceiling Finishes at level 27 | 23d | 2016-04-11 | 2016-05-07 | SD-CS-L27-1072, C-F-P-2403, C-F-CF-1627 SS, C-F-CF-1637 SS | 76d | 0d | 1,006,048.86 |
| C-F-P-2593 |  | Installation of Floor Finishes at level 27 | 23d | 2016-04-17 | 2016-05-12 | C-F-P-2583 SS+5d, SD-CS-L27-1092, C-F-P-2413 | 76d | 0d | 1,341,398.48 |
| C-F-P-2603 |  | Installation of Wall Finishes at level 27 | 23d | 2016-05-15 | 2016-06-09 | C-F-P-2593, SD-CS-L27-1112, C-F-P-2423, C-F-P-DFI-102 FF | 87d | 0d | 670,699.24 |
|  | 32 | **Level 28** |  | 2016-04-11 | 2016-06-09 |  |  |  |  |
| C-F-P-2613 |  | Installation of Ceiling Finishes at level 28 | 23d | 2016-04-11 | 2016-05-07 | SD-CS-L28-1092, C-F-P-2433, C-F-CF-1907 SS, C-F-CF-1917 SS | 79d | 0d | 998,154.23 |
| C-F-P-2623 |  | Installation of Floor Finishes at level 28 | 23d | 2016-04-17 | 2016-05-12 | C-F-P-2613 SS+5d, SD-CS-L28-1112, C-F-P-2443 | 79d | 0d | 1,330,872.31 |
| C-F-P-2633 |  | Installation of Wall Finishes at level 28 | 23d | 2016-05-15 | 2016-06-09 | C-F-P-2623, SD-CS-L28-1132, C-F-P-2453, C-F-P-DFI-112 FF | 87d | 0d | 665,436.16 |
|  | 33 | **Level 29** |  | 2016-05-19 | 2016-07-20 |  |  |  |  |
| C-F-P-2643 |  | Installation of Ceiling Finishes at level 29 | 23d | 2016-05-19 | 2016-06-14 | SD-CS-L29-1112, C-F-P-2463, C-F-CF-2047 SS, C-F-CF-2057 SS | 90d | 0d | 949,744.31 |
| C-F-P-2653 |  | Installation of Floor Finishes at level 29 | 23d | 2016-05-25 | 2016-06-20 | C-F-P-2643 SS+5d, SD-CS-L29-1132, C-F-P-2473 | 90d | 0d | 1,266,325.75 |
| C-F-P-2663 |  | Installation of Wall Finishes at level 29 | 23d | 2016-06-21 | 2016-07-20 | C-F-P-2653, SD-CS-L29-1152, C-F-P-2483, C-F-P-DFI-122 FF | 124d | 0d | 633,162.88 |
|  | 34 | **Level 30** |  | 2016-05-04 | 2016-07-03 |  |  |  |  |
| C-F-P-2673 |  | Installation of Ceiling Finishes at level 30 | 23d | 2016-05-04 | 2016-05-30 | SD-CS-L30-1132, C-F-P-2493, C-F-CF-2337 SS, C-F-CF-2327 SS | 62d | 0d | 976,997.2 |
| C-F-P-2683 |  | Installation of Floor Finishes at level 30 | 23d | 2016-05-10 | 2016-06-05 | C-F-P-2673 SS+5d, SD-CS-L30-1152, C-F-P-2503 | 62d | 0d | 1,302,662.93 |
| C-F-P-2693 |  | Installation of Wall Finishes at level 30 | 23d | 2016-06-07 | 2016-07-03 | C-F-P-2683, SD-CS-L30-1172, C-F-P-2513, C-F-P-DFI-132 FF | 90d | 0d | 651,331.47 |
|  | 35 | **Level 31** |  | 2016-05-12 | 2016-07-13 |  |  |  |  |
| C-F-P-2703 |  | Installation of Ceiling Finishes at level 31 | 23d | 2016-05-12 | 2016-06-07 | SD-CS-L31-1152, C-F-P-2523, C-F-CF-2197 SS, C-F-CF-2187 SS | 55d | 0d | 845,220.19 |
| C-F-P-2713 |  | Installation of Floor Finishes at level 31 | 23d | 2016-05-18 | 2016-06-13 | C-F-P-2703 SS+5d, SD-CS-L31-1172, C-F-P-2533 | 55d | 0d | 1,126,960.25 |
| C-F-P-2723 |  | Installation of Wall Finishes at level 31 | 23d | 2016-06-14 | 2016-07-13 | C-F-P-2713, SD-CS-L31-1192, C-F-P-2543, C-F-P-DFI-142 FF | 84d | 0d | 563,480.13 |

Notes:
- C-F-P-2553: Expenses: 1 1011854
- C-F-P-2563: Expenses: 1 1349139
- C-F-P-2573: Expenses: 1 674570
- C-F-P-2583: Expenses: 1 1006049
- C-F-P-2593: Expenses: 1 1341398
- C-F-P-2603: Expenses: 1 670699
- C-F-P-2613: Expenses: 1 998154
- C-F-P-2623: Expenses: 1 1330872
- C-F-P-2633: Expenses: 1 665436
- C-F-P-2643: Expenses: 1 949744
- C-F-P-2653: Expenses: 1 1266326
- C-F-P-2663: Expenses: 1 633163
- C-F-P-2673: Expenses: 1 976997
- C-F-P-2683: Expenses: 1 1302663
- C-F-P-2693: Expenses: 1 651331
- C-F-P-2703: Expenses: 1 845220
- C-F-P-2713: Expenses: 1 1126960
- C-F-P-2723: Expenses: 1 563480

| ID | WBS | Activity | Duration | Start | Finish | Predecessors | Total float | Free float | Cost |
| --- | --- | --- | --- | --- | --- | --- | --- | --- | --- |
|  | 36 | **Level 32** |  | 2016-05-14 | 2016-07-14 |  |  |  |  |
| C-F-P-2733 |  | Installation of Ceiling Finishes at level 32 | 23d | 2016-05-14 | 2016-06-08 | SD-CS-L32-1172, C-F-P-2553, C-F-CF-2257 SS, C-F-CF-2267 SS | 63d | 0d | 1,090,686.52 |
| C-F-P-2743 |  | Installation of Floor Finishes at level 32 | 23d | 2016-05-19 | 2016-06-14 | C-F-P-2733 SS+5d, SD-CS-L32-1192, C-F-P-2563 | 63d | 0d | 1,454,248.69 |
| C-F-P-2753 |  | Installation of Wall Finishes at level 32 | 23d | 2016-06-15 | 2016-07-14 | C-F-P-2743, SD-CS-L32-1212, C-F-P-2573, C-F-P-DFI-152 FF | 63d | 0d | 727,124.34 |
|  | 37 | **Level 33** |  | 2016-05-21 | 2016-07-21 |  |  |  |  |
| C-F-P-2763 |  | Installation of Ceiling Finishes at level 33 | 23d | 2016-05-21 | 2016-06-15 | SD-CS-L33-1192, C-F-P-2583, C-F-CF-2397 SS, C-F-CF-2407 SS | 65d | 0d | 1,154,010.1 |
| C-F-P-2773 |  | Installation of Floor Finishes at level 33 | 23d | 2016-05-26 | 2016-06-21 | C-F-P-2763 SS+5d, SD-CS-L33-1212, C-F-P-2593 | 65d | 0d | 1,538,680.13 |
| C-F-P-2783 |  | Installation of Wall Finishes at level 33 | 23d | 2016-06-22 | 2016-07-21 | C-F-P-2773, SD-CS-L33-1232, C-F-P-2603, C-F-P-DFI-162 FF | 77d | 0d | 769,340.07 |
|  | 38 | **Level 34** |  | 2016-05-28 | 2016-07-28 |  |  |  |  |
| C-F-P-2793 |  | Installation of Ceiling Finishes at level 34 | 23d | 2016-05-28 | 2016-06-22 | SD-CS-L34-1212, C-F-P-2613, C-F-CF-2547 SS, C-F-CF-2537 SS | 62d | 0d | 656,891.18 |
| C-F-P-2803 |  | Installation of Floor Finishes at level 34 | 23d | 2016-06-02 | 2016-06-28 | C-F-P-2793 SS+5d, SD-CS-L34-1232, C-F-P-2623 | 62d | 0d | 875,854.9 |
| C-F-P-2813 |  | Installation of Wall Finishes at level 34 | 23d | 2016-06-29 | 2016-07-28 | C-F-P-2803, SD-CS-L34-1252, C-F-P-2633, C-F-P-DFI-172 FF | 71d | 0d | 437,927.45 |
|  | 40 | **Level 36** |  | 2016-06-13 | 2016-08-14 |  |  |  |  |
| C-F-P-2853 |  | Installation of Ceiling Finishes at level 36 | 23d | 2016-06-13 | 2016-07-12 | SD-CS-L36-1252, C-F-P-2673, C-F-CF-2617 SS, C-F-CF-2607 SS | 51d | 0d | 779,160.37 |
| C-F-P-2863 |  | Installation of Floor Finishes at level 36 | 23d | 2016-06-19 | 2016-07-18 | C-F-P-2853 SS+5d, SD-CS-L36-1272, C-F-P-2683 | 51d | 0d | 1,038,880.49 |
| C-F-P-2873 |  | Installation of Wall Finishes at level 36 | 23d | 2016-07-19 | 2016-08-14 | C-F-P-2863, SD-CS-L36-1292, C-F-P-2693, C-F-P-DFI-182 FF | 80d | 0d | 519,440.25 |
|  | 41 | **Level 37** |  | 2016-06-18 | 2016-08-18 |  |  |  |  |
| C-F-P-2883 |  | Installation of Ceiling Finishes at level 37 | 23d | 2016-06-18 | 2016-07-17 | SD-CS-L37-1272, C-F-P-2703, C-F-CF-2687 SS, C-F-CF-2677 SS | 47d | 0d | 758,103.27 |
| C-F-P-2893 |  | Installation of Floor Finishes at level 37 | 23d | 2016-06-23 | 2016-07-23 | C-F-P-2883 SS+5d, SD-CS-L37-1292, C-F-P-2713 | 47d | 0d | 1,010,804.36 |
| C-F-P-2903 |  | Installation of Wall Finishes at level 37 | 23d | 2016-07-24 | 2016-08-18 | C-F-P-2893, SD-CS-L37-1312, C-F-P-2723, C-F-P-DFI-92 FF | 76d | 0d | 505,402.18 |
|  | 42 | **Level 38** |  | 2016-06-25 | 2016-08-25 |  |  |  |  |
| C-F-P-2913 |  | Installation of Ceiling Finishes at level 38 | 23d | 2016-06-25 | 2016-07-24 | SD-CS-L38-1292, C-F-P-2733, C-F-CF-2827 SS, C-F-CF-2817 SS | 50d | 0d | 734,462.21 |
| C-F-P-2923 |  | Installation of Floor Finishes at level 38 | 23d | 2016-06-30 | 2016-07-30 | C-F-P-2913 SS+5d, SD-CS-L38-1312, C-F-P-2743 | 50d | 0d | 979,282.95 |
| C-F-P-2933 |  | Installation of Wall Finishes at level 38 | 23d | 2016-07-31 | 2016-08-25 | C-F-P-2923, SD-CS-L38-1332, C-F-P-2753, C-F-P-DFI-202 FF | 50d | 0d | 489,641.47 |

Notes:
- C-F-P-2733: Expenses: 1 1090687
- C-F-P-2743: Expenses: 1 1454249
- C-F-P-2753: Expenses: 1 727124
- C-F-P-2763: Expenses: 1 1154010
- C-F-P-2773: Expenses: 1 1538680
- C-F-P-2783: Expenses: 1 769340
- C-F-P-2793: Expenses: 1 656891
- C-F-P-2803: Expenses: 1 875855
- C-F-P-2813: Expenses: 1 437927
- C-F-P-2853: Expenses: 1 779160
- C-F-P-2863: Expenses: 1 1038880
- C-F-P-2873: Expenses: 1 519440
- C-F-P-2883: Expenses: 1 758103
- C-F-P-2893: Expenses: 1 1010804
- C-F-P-2903: Expenses: 1 505402
- C-F-P-2913: Expenses: 1 734462
- C-F-P-2923: Expenses: 1 979283
- C-F-P-2933: Expenses: 1 489641

| ID | WBS | Activity | Duration | Start | Finish | Predecessors | Total float | Free float | Cost |
| --- | --- | --- | --- | --- | --- | --- | --- | --- | --- |
|  | 43 | **Level 39** |  | 2016-07-14 | 2016-09-14 |  |  |  |  |
| C-F-P-2943 |  | Installation of Ceiling Finishes at level 39 | 23d | 2016-07-14 | 2016-08-09 | SD-CS-L39-1312, C-F-P-2763, C-F-CF-2477 SS, C-F-CF-2467 SS | 44d | 0d | 708,142.02 |
| C-F-P-2953 |  | Installation of Floor Finishes at level 39 | 23d | 2016-07-20 | 2016-08-15 | C-F-P-2943 SS+5d, SD-CS-L39-1332, C-F-P-2773 | 44d | 0d | 944,189.36 |
| C-F-P-2963 |  | Installation of Wall Finishes at level 39 | 23d | 2016-08-16 | 2016-09-14 | C-F-P-2953, SD-CS-L39-1352, C-F-P-2783, C-F-P-DFI-12 FF | 56d | 0d | 472,094.68 |
|  | 44 | **Level 40** |  | 2016-06-23 | 2016-08-24 |  |  |  |  |
| C-F-P-2973 |  | Installation of Ceiling Finishes at level 40 | 23d | 2016-06-23 | 2016-07-23 | SD-CS-L40-1332, C-F-P-2793, C-F-CF-2747 SS, C-F-CF-2757 SS | 62d | 0d | 678,980.91 |
| C-F-P-2983 |  | Installation of Floor Finishes at level 40 | 23d | 2016-06-29 | 2016-07-28 | C-F-P-2973 SS+5d, SD-CS-L40-1352, C-F-P-2803 | 62d | 0d | 905,307.88 |
| C-F-P-2993 |  | Installation of Wall Finishes at level 40 | 23d | 2016-07-30 | 2016-08-24 | C-F-P-2983, SD-CS-L40-1372, C-F-P-2813, C-F-P-DFI-22 FF | 71d | 0d | 452,653.94 |
|  | 45 | **Level 41** |  | 2016-06-16 | 2016-08-17 |  |  |  |  |
| C-F-P-3003 |  | Installation of Ceiling Finishes at level 41 | 23d | 2016-06-16 | 2016-07-16 | SD-CS-L41-1352, C-F-CF-2897 SS, C-F-CF-2887 SS | 76d | 0d | 647,135.91 |
| C-F-P-3013 |  | Installation of Floor Finishes at level 41 | 23d | 2016-06-22 | 2016-07-21 | C-F-P-3003 SS+5d, SD-CS-L41-1372 | 76d | 0d | 862,847.88 |
| C-F-P-3023 |  | Installation of Wall Finishes at level 41 | 23d | 2016-07-23 | 2016-08-17 | C-F-P-3013, SD-CS-L41-1392, C-F-P-DFI-232 FF | 100d | 0d | 431,423.94 |
|  | 46 | **Level 42** |  | 2016-07-13 | 2016-09-13 |  |  |  |  |
| C-F-P-3033 |  | Installation of Ceiling Finishes at level 42 | 23d | 2016-07-13 | 2016-08-08 | SD-CS-L42-1372, C-F-P-2853, C-F-CF-3107 SS, C-F-CF-3097 SS | 51d | 0d | 612,587.98 |
| C-F-P-3043 |  | Installation of Floor Finishes at level 42 | 23d | 2016-07-19 | 2016-08-14 | C-F-P-3033 SS+5d, SD-CS-L42-1392, C-F-P-2863 | 51d | 0d | 816,783.98 |
| C-F-P-3053 |  | Installation of Wall Finishes at level 42 | 23d | 2016-08-15 | 2016-09-13 | C-F-P-3043, SD-CS-L42-1412, C-F-P-2873, C-F-P-DFI-42 FF | 80d | 0d | 408,391.99 |
|  | 47 | **Level 43** |  | 2016-07-18 | 2016-09-18 |  |  |  |  |
| C-F-P-3063 |  | Installation of Ceiling Finishes at level 43 | 23d | 2016-07-18 | 2016-08-13 | SD-CS-L43-1392, C-F-P-2883, C-F-CF-3527 SS, C-F-CF-3517 SS | 47d | 0d | 575,203.9 |
| C-F-P-3073 |  | Installation of Floor Finishes at level 43 | 23d | 2016-07-24 | 2016-08-18 | C-F-P-3063 SS+5d, SD-CS-L43-1412, C-F-P-2893 | 47d | 0d | 766,938.53 |
| C-F-P-3083 |  | Installation of Wall Finishes at level 43 | 23d | 2016-08-20 | 2016-09-18 | C-F-P-3073, SD-CS-L43-1432, C-F-P-2903, C-F-P-DFI-252 FF | 76d | 0d | 383,469.26 |
|  | 48 | **Level 44** |  | 2016-07-25 | 2016-09-26 |  |  |  |  |
| C-F-P-3093 |  | Installation of Ceiling Finishes at level 44 | 23d | 2016-07-25 | 2016-08-20 | SD-CS-L44-1412, C-F-P-2913, C-F-CF-3237 SS, C-F-CF-3247 SS | 50d | 0d | 511,176.03 |
| C-F-P-3103 |  | Installation of Floor Finishes at level 44 | 23d | 2016-07-31 | 2016-08-25 | C-F-P-3093 SS+5d, SD-CS-L44-1432, C-F-P-2923 | 50d | 0d | 681,568.04 |
| C-F-P-3113 |  | Installation of Wall Finishes at level 44 | 23d | 2016-08-27 | 2016-09-26 | C-F-P-3103, SD-CS-L44-1452, C-F-P-2933, C-F-P-DFI-02 FF | 50d | 0d | 340,784.02 |

Notes:
- C-F-P-2943: Expenses: 1 708142
- C-F-P-2953: Expenses: 1 944189
- C-F-P-2963: Expenses: 1 472095
- C-F-P-2973: Expenses: 1 678981
- C-F-P-2983: Expenses: 1 905308
- C-F-P-2993: Expenses: 1 452654
- C-F-P-3003: Expenses: 1 647136
- C-F-P-3013: Expenses: 1 862848
- C-F-P-3023: Expenses: 1 431424
- C-F-P-3033: Expenses: 1 612588
- C-F-P-3043: Expenses: 1 816784
- C-F-P-3053: Expenses: 1 408392
- C-F-P-3063: Expenses: 1 575204
- C-F-P-3073: Expenses: 1 766939
- C-F-P-3083: Expenses: 1 383469
- C-F-P-3093: Expenses: 1 511176
- C-F-P-3103: Expenses: 1 681568
- C-F-P-3113: Expenses: 1 340784

| ID | WBS | Activity | Duration | Start | Finish | Predecessors | Total float | Free float | Cost |
| --- | --- | --- | --- | --- | --- | --- | --- | --- | --- |
|  | 49 | **Level 45** |  | 2016-08-10 | 2016-10-12 |  |  |  |  |
| C-F-P-3123 |  | Installation of Ceiling Finishes at level 45 | 23d | 2016-08-10 | 2016-09-05 | SD-CS-L45-1432, C-F-P-2943, C-F-CF-3167 SS, C-F-CF-3177 SS | 44d | 0d | 492,046.19 |
| C-F-P-3133 |  | Installation of Floor Finishes at level 45 | 23d | 2016-08-16 | 2016-09-14 | C-F-P-3123 SS+5d, SD-CS-L45-1452, C-F-P-2953 | 44d | 0d | 656,061.58 |
| C-F-P-3143 |  | Installation of Wall Finishes at level 45 | 23d | 2016-09-15 | 2016-10-12 | C-F-P-3133, SD-CS-L45-1472, C-F-P-2963, C-F-P-DFI-262 FF | 56d | 0d | 328,030.79 |
|  | 50 | **Level 46** |  | 2016-07-27 | 2016-09-28 |  |  |  |  |
| C-F-P-3153 |  | Installation of Ceiling Finishes at level 46 | 23d | 2016-07-27 | 2016-08-22 | SD-CS-L46-1452, C-F-P-2973, C-F-CF-3377 SS, C-F-CF-3387 SS | 59d | 0d | 446,029.87 |
| C-F-P-3163 |  | Installation of Floor Finishes at level 46 | 23d | 2016-08-02 | 2016-08-28 | C-F-P-3153 SS+5d, SD-CS-L46-1472, C-F-P-2983 | 59d | 0d | 594,706.5 |
| C-F-P-3173 |  | Installation of Wall Finishes at level 46 | 23d | 2016-08-29 | 2016-09-28 | C-F-P-3163, SD-CS-L46-1492, C-F-P-2993, C-F-P-DFI-272 FF | 68d | 0d | 297,353.25 |
|  | 107 | **Level 50** |  | 2016-08-23 | 2016-10-25 |  |  |  |  |
| C-F-P-3273 |  | Installation of Ceiling Finishes at level 50 | 23d | 2016-08-23 | 2016-09-21 | SD-CS-L50-1532, C-F-P-3093, C-F-CF-3597 SS, C-F-CF-3587 SS | 48d | 0d | 409,273.93 |
| C-F-P-3283 |  | Installation of Floor Finishes at level 50 | 23d | 2016-08-29 | 2016-09-28 | C-F-P-3273 SS+5d, SD-CS-L50-1552, C-F-P-3103 | 48d | 0d | 545,698.57 |
| C-F-P-3293 |  | Installation of Wall Finishes at level 50 | 23d | 2016-09-29 | 2016-10-25 | C-F-P-3283, SD-CS-L50-1572, C-F-P-3113, C-F-P-DFI-282 FF | 48d | 0d | 272,849.29 |
|  | 108 | **Level 51** |  | 2016-09-06 | 2016-11-08 |  |  |  |  |
| C-F-P-3303 |  | Installation of Ceiling Finishes at level 51 | 23d | 2016-09-06 | 2016-10-06 | SD-CS-L51-2492, C-F-P-3123, C-F-CF-3667 SS, C-F-CF-3657 SS | 44d | 0d | 357,061.83 |
| C-F-P-3313 |  | Installation of Floor Finishes at level 51 | 23d | 2016-09-15 | 2016-10-12 | C-F-P-3303 SS+5d, SD-CS-L51-2512, C-F-P-3133 | 44d | 0d | 476,082.44 |
| C-F-P-3323 |  | Installation of Wall Finishes at level 51 | 23d | 2016-10-13 | 2016-11-08 | C-F-P-3313, SD-CS-L51-2532, C-F-P-3143, C-F-P-DFI-292 | 62d | 0d | 238,041.22 |
|  | 2 | **FOH - Wooden doors & frame & Ironmengery** |  | 2015-11-14 | 2016-10-06 |  |  |  |  |
| C-F-P-DFI--862 |  | Installation of Wooden doors & Frames & Ironmengery at level 2 | 18d | 2015-11-14 | 2015-12-03 | C-F-P-1843 SS | 134d | 30d | 784,777.18 |
| C-F-P-DFI-822 |  | Installation of Wooden doors & Frames & Ironmengery at Ground Floor | 18d | 2015-11-14 | 2015-12-03 | C-F-P-1723 SS | 130d | 30d | 894,277.29 |
| C-F-P-DFI-832 |  | Installation of Wooden doors & Frames & Ironmengery at Ground Mezzanine Floor | 18d | 2015-11-14 | 2015-12-03 | C-F-P-1893 | 197d | 6d | 111,035.57 |
| C-F-P-DFI-842 |  | Installation of Wooden doors & Frames & Ironmengery at Level 1 | 18d | 2015-11-14 | 2015-12-03 | C-F-P-1753 SS | 153d | 30d | 856,851.96 |
| C-F-P-DFI--872 |  | Installation of Wooden doors & Frames & Ironmengery at level 3 | 18d | 2015-11-17 | 2015-12-07 | C-F-P-1693 SS | 151d | 30d | 761,640.54 |
| C-F-P-DFI--852 |  | Installation of Wooden doors & Frames & Ironmengery at Level 1 Mezzanine | 18d | 2015-12-06 | 2015-12-27 | C-F-P-1783 SS | 159d | 30d | 465,013.78 |
| C-F-P-DFI--902 |  | Installation of Wooden doors & Frames & Ironmengery at level 6 | 18d | 2015-12-12 | 2016-01-02 | C-F-P-1963 SS | 153d | 30d | 499,923.37 |
| C-F-P-DFI--882 |  | Installation of Wooden doors & Frames & Ironmengery at level 4 | 18d | 2015-12-14 | 2016-01-04 | C-F-P-1813 SS | 128d | 30d | 496,532.02 |
| C-F-P-DFI--892 |  | Installation of Wooden doors & Frames & Ironmengery at level 5 | 18d | 2015-12-15 | 2016-01-05 | C-F-P-1933 SS | 218d | 30d | 496,861.96 |
| C-F-P-DFI--912 |  | Installation of Wooden doors & Frames & Ironmengery at level 7 | 18d | 2016-01-04 | 2016-01-24 | C-F-P-1993 SS | 135d | 30d | 505,510.04 |
| C-F-P-DFI--922 |  | Installation of Wooden doors & Frames & Ironmengery at level 8 | 18d | 2016-01-25 | 2016-02-15 | C-F-P-2023 SS | 97d | 30d | 515,236.76 |
| C-F-P-DFI--932 |  | Installation of Wooden doors & Frames & Ironmengery at level 9 | 18d | 2016-01-25 | 2016-02-15 | C-F-P-2053 SS | 117d | 30d | 523,710.36 |
| C-F-P-DFI--942 |  | Installation of Wooden doors & Frames & Ironmengery at level 10 | 18d | 2016-01-25 | 2016-02-15 | C-F-P-2113 SS | 117d | 30d | 531,171.95 |
| C-F-P-DFI-952 |  | Installation of Wooden doors & Frames & Ironmengery at level 11 | 18d | 2016-01-25 | 2016-02-15 | C-F-P-2083 SS | 209d | 30d | 537,507.32 |
| C-F-P-DFI--962 |  | Installation of Wooden doors & Frames & Ironmengery at level 12 | 18d | 2016-02-18 | 2016-03-09 | C-F-P-2143 SS | 120d | 30d | 550,279.58 |
| C-F-P-DFI-972 |  | Installation of Wooden doors & Frames & Ironmengery at level 13 | 18d | 2016-02-18 | 2016-03-09 | C-F-P-2173 SS | 97d | 5d | 563,039.16 |
| C-F-P-DFI--982 |  | Installation of Wooden doors & Frames & Ironmengery at level 14 | 18d | 2016-02-23 | 2016-03-14 | C-F-P-2203 SS | 96d | 29d | 574,590.03 |
| C-F-P-DFI--992 |  | Installation of Wooden doors & Frames & Ironmengery at level 15 | 18d | 2016-02-23 | 2016-03-14 | C-F-P-2233 SS | 116d | 29d | 630,437.74 |
| C-F-P-DFI-002 |  | Installation of Wooden doors & Frames & Ironmengery at level 16 | 18d | 2016-02-23 | 2016-03-14 | C-F-P-2263 SS | 116d | 29d | 640,919.5 |
| C-F-P-DFI-022 |  | Installation of Wooden doors & Frames & Ironmengery at level 19 | 18d | 2016-03-16 | 2016-04-05 | C-F-P-2353 SS | 120d | 28d | 664,909.53 |
| C-F-P-DFI-012 |  | Installation of Wooden doors & Frames & Ironmengery at level 18 | 18d | 2016-03-17 | 2016-04-06 | C-F-P-2323 SS | 119d | 29d | 658,263.26 |
| C-F-P-DFI-032 |  | Installation of Wooden doors & Frames & Ironmengery at level 20 | 18d | 2016-03-21 | 2016-04-10 | C-F-P-2383 SS | 96d | 29d | 670,226.55 |
| C-F-P-DFI-052 |  | Installation of Wooden doors & Frames & Ironmengery at level 22 | 18d | 2016-03-21 | 2016-04-10 | C-F-P-2443 SS | 116d | 29d | 676,625.37 |
| C-F-P-DFI-1042 |  | Installation of Wooden doors & Frames & Ironmengery at level 21 | 18d | 2016-03-21 | 2016-04-10 | C-F-P-2413 SS | 116d | 29d | 674,220.66 |
| C-F-P-DFI-082 |  | Installation of Wooden doors & Frames & Ironmengery at Level 25 | 18d | 2016-04-12 | 2016-05-02 | C-F-P-2533 SS | 120d | 28d | 677,050.48 |
| C-F-P-DFI-072 |  | Installation of Wooden doors & Frames & Ironmengery at level 24 | 18d | 2016-04-13 | 2016-05-03 | C-F-P-2503 SS | 119d | 29d | 678,316.28 |
| C-F-P-DFI-092 |  | Installation of Wooden doors & Frames & Ironmengery at Level 26 | 18d | 2016-04-17 | 2016-05-07 | C-F-P-2563 SS | 96d | 29d | 674,569.62 |
| C-F-P-DFI-102 |  | Installation of Wooden doors & Frames & Ironmengery at Level 27 | 18d | 2016-04-17 | 2016-05-07 | C-F-P-2593 SS | 116d | 29d | 670,699.24 |
| C-F-P-DFI-112 |  | Installation of Wooden doors & Frames & Ironmengery at Level 28 | 18d | 2016-04-17 | 2016-05-07 | C-F-P-2623 SS | 116d | 29d | 665,436.16 |
| C-F-P-DFI-062 |  | Installation of Wooden doors & Frames & Ironmengery at level 23 | 18d | 2016-04-28 | 2016-05-18 | C-F-P-2473 SS | 152d | 28d | 678,424.14 |
| C-F-P-DFI-132 |  | Installation of Wooden doors & Frames & Ironmengery at Level 30 | 18d | 2016-05-10 | 2016-05-30 | C-F-P-2683 SS | 119d | 29d | 651,331.47 |
| C-F-P-DFI-142 |  | Installation of Wooden doors & Frames & Ironmengery at Level 31 | 18d | 2016-05-18 | 2016-06-07 | C-F-P-2713 SS | 112d | 28d | 563,480.13 |
| C-F-P-DFI-152 |  | Installation of Wooden doors & Frames & Ironmengery at Level 32 | 18d | 2016-05-19 | 2016-06-08 | C-F-P-2743 SS | 91d | 28d | 727,124.34 |
| C-F-P-DFI-122 |  | Installation of Wooden doors & Frames & Ironmengery at level 29 | 18d | 2016-05-25 | 2016-06-14 | C-F-P-2653 SS | 152d | 28d | 633,162.88 |
| C-F-P-DFI-162 |  | Installation of Wooden doors & Frames & Ironmengery at Level 33 | 18d | 2016-05-26 | 2016-06-15 | C-F-P-2773 SS | 105d | 28d | 769,340.07 |
| C-F-P-DFI-172 |  | Installation of Wooden doors & Frames & Ironmengery at Level 34 | 18d | 2016-06-02 | 2016-06-22 | C-F-P-2803 SS | 99d | 28d | 437,927.45 |
| C-F-P-DFI-182 |  | Installation of Wooden doors & Frames & Ironmengery at Level 36 | 18d | 2016-06-19 | 2016-07-12 | C-F-P-2863 SS | 108d | 28d | 519,440.25 |
| C-F-P-DFI-232 |  | Installation of Wooden doors & Frames & Ironmengery at Level 41 | 18d | 2016-06-22 | 2016-07-16 | C-F-P-3013 SS | 128d | 28d | 431,423.94 |
| C-F-P-DFI-92 |  | Installation of Wooden doors & Frames & Ironmengery at Level 37 | 18d | 2016-06-23 | 2016-07-17 | C-F-P-2893 SS | 104d | 28d | 505,402.18 |
| C-F-P-DFI-22 |  | Installation of Wooden doors & Frames & Ironmengery at Level 40 | 18d | 2016-06-29 | 2016-07-23 | C-F-P-2983 SS | 99d | 28d | 452,653.94 |
| C-F-P-DFI-202 |  | Installation of Wooden doors & Frames & Ironmengery at Level 38 | 18d | 2016-06-30 | 2016-07-24 | C-F-P-2923 SS | 78d | 28d | 489,641.47 |
| C-F-P-DFI-42 |  | Installation of Wooden doors & Frames & Ironmengery at Level 42 | 18d | 2016-07-19 | 2016-08-08 | C-F-P-3043 SS | 108d | 28d | 408,391.99 |
| C-F-P-DFI-12 |  | Installation of Wooden doors & Frames & Ironmengery at Level 39 | 18d | 2016-07-20 | 2016-08-09 | C-F-P-2953 SS | 84d | 28d | 472,094.68 |
| C-F-P-DFI-252 |  | Installation of Wooden doors & Frames & Ironmengery at Level 43 | 18d | 2016-07-24 | 2016-08-13 | C-F-P-3073 SS | 104d | 28d | 383,469.26 |
| C-F-P-DFI-02 |  | Installation of Wooden doors & Frames & Ironmengery at Level 44 | 18d | 2016-07-31 | 2016-08-20 | C-F-P-3103 SS | 78d | 28d | 340,784.02 |
| C-F-P-DFI-272 |  | Installation of Wooden doors & Frames & Ironmengery at Level 46 | 18d | 2016-08-02 | 2016-08-22 | C-F-P-3163 SS | 96d | 28d | 297,353.25 |
| C-F-P-DFI-262 |  | Installation of Wooden doors & Frames & Ironmengery at Level 45 | 18d | 2016-08-16 | 2016-09-05 | C-F-P-3133 SS | 84d | 28d | 328,030.79 |
| C-F-P-DFI-282 |  | Installation of Wooden doors & Frames & Ironmengery at Level 50 | 18d | 2016-08-29 | 2016-09-21 | C-F-P-3283 SS | 76d | 28d | 272,849.29 |
| C-F-P-DFI-292 |  | Installation of Wooden doors & Frames & Ironmengery at Level 51 | 18d | 2016-09-15 | 2016-10-06 | C-F-P-3313 SS | 67d | 5d | 238,041.22 |

Notes:
- C-F-P-3123: Expenses: 1 492046
- C-F-P-3133: Expenses: 1 656062
- C-F-P-3143: Expenses: 1 328031
- C-F-P-3153: Expenses: 1 446030
- C-F-P-3163: Expenses: 1 594706
- C-F-P-3173: Expenses: 1 297353
- C-F-P-3273: Expenses: 1 409274
- C-F-P-3283: Expenses: 1 545699
- C-F-P-3293: Expenses: 1 272849
- C-F-P-3303: Expenses: 1 357062
- C-F-P-3313: Expenses: 1 476082
- C-F-P-3323: Expenses: 1 238041
- C-F-P-DFI--862: Expenses: 1 784777
- C-F-P-DFI-822: Expenses: 1 894277
- C-F-P-DFI-832: Expenses: 1 111036
- C-F-P-DFI-842: Expenses: 1 856852
- C-F-P-DFI--872: Expenses: 1 761641
- C-F-P-DFI--852: Expenses: 1 465014
- C-F-P-DFI--902: Expenses: 1 499923
- C-F-P-DFI--882: Expenses: 1 496532
- C-F-P-DFI--892: Expenses: 1 496862
- C-F-P-DFI--912: Expenses: 1 505510
- C-F-P-DFI--922: Expenses: 1 515237
- C-F-P-DFI--932: Expenses: 1 523710
- C-F-P-DFI--942: Expenses: 1 531172
- C-F-P-DFI-952: Expenses: 1 537507
- C-F-P-DFI--962: Expenses: 1 550280
- C-F-P-DFI-972: Expenses: 1 563039
- C-F-P-DFI--982: Expenses: 1 574590
- C-F-P-DFI--992: Expenses: 1 630438
- C-F-P-DFI-002: Expenses: 1 640920
- C-F-P-DFI-022: Expenses: 1 664910
- C-F-P-DFI-012: Expenses: 1 658263
- C-F-P-DFI-032: Expenses: 1 670227
- C-F-P-DFI-052: Expenses: 1 676625
- C-F-P-DFI-1042: Expenses: 1 674221
- C-F-P-DFI-082: Expenses: 1 677050
- C-F-P-DFI-072: Expenses: 1 678316
- C-F-P-DFI-092: Expenses: 1 674570
- C-F-P-DFI-102: Expenses: 1 670699
- C-F-P-DFI-112: Expenses: 1 665436
- C-F-P-DFI-062: Expenses: 1 678424
- C-F-P-DFI-132: Expenses: 1 651331
- C-F-P-DFI-142: Expenses: 1 563480
- C-F-P-DFI-152: Expenses: 1 727124
- C-F-P-DFI-122: Expenses: 1 633163
- C-F-P-DFI-162: Expenses: 1 769340
- C-F-P-DFI-172: Expenses: 1 437927
- C-F-P-DFI-182: Expenses: 1 519440
- C-F-P-DFI-232: Expenses: 1 431424
- C-F-P-DFI-92: Expenses: 1 505402
- C-F-P-DFI-22: Expenses: 1 452654
- C-F-P-DFI-202: Expenses: 1 489641
- C-F-P-DFI-42: Expenses: 1 408392
- C-F-P-DFI-12: Expenses: 1 472095
- C-F-P-DFI-252: Expenses: 1 383469
- C-F-P-DFI-02: Expenses: 1 340784
- C-F-P-DFI-272: Expenses: 1 297353
- C-F-P-DFI-262: Expenses: 1 328031
- C-F-P-DFI-282: Expenses: 1 272849
- C-F-P-DFI-292: Expenses: 1 238041

| ID | WBS | Activity | Duration | Start | Finish | Predecessors | Total float | Free float | Cost |
| --- | --- | --- | --- | --- | --- | --- | --- | --- | --- |
|  | 1 | **FOH - Lighting & Sanitary Fixtures** |  | 2016-01-10 | 2016-11-29 |  |  |  |  |
| C-F-P-LSF-02 |  | Installation of Lighting & Sanitary Fixtures at Level 1 | 18d | 2016-01-10 | 2016-01-30 | C-F-P-1763, P-AF-B-2923 | 212d | 28d | 1,285,277.94 |
| C-F-P-LSF-82 |  | Installation of Lighting & Sanitary Fixtures at Ground Floor | 18d | 2016-01-10 | 2016-01-30 | P-AF-B-2923, C-F-P-1733, P-AF-B-2923 FF | 184d | 28d | 1,341,415.93 |
| C-F-P-LSF-92 |  | Installation of Lighting & Sanitary Fixtures at Ground Mezzanine Floor | 18d | 2016-01-10 | 2016-01-30 | C-F-P-1913, P-AF-B-2923 | 198d | 93d | 166,553.35 |
| C-F-P-LSF-32 |  | Installation of Lighting & Sanitary Fixtures at level 3 | 18d | 2016-01-13 | 2016-02-02 | C-F-P-1703, P-AF-B-2923 | 249d | 53d | 1,142,460.82 |
| C-F-P-LSF-12 |  | Installation of Lighting & Sanitary Fixtures at Level 1 Mezzanine | 18d | 2016-02-01 | 2016-02-22 | C-F-P-1793, P-AF-B-2923 | 207d | 28d | 697,520.68 |
| C-F-P-LSF-22 |  | Installation of Lighting & Sanitary Fixtures at level 2 | 18d | 2016-02-01 | 2016-02-22 | C-F-P-1793, P-AF-B-2923 | 221d | 16d | 1,177,165.78 |
| C-F-P-LSF-62 |  | Installation of Lighting & Sanitary Fixtures at level 6 | 18d | 2016-02-07 | 2016-02-28 | C-F-P-1973 | 238d | 89d | 749,885.05 |
| C-F-P-LSF-42 |  | Installation of Lighting & Sanitary Fixtures at level 4 | 18d | 2016-02-09 | 2016-03-01 | P-AF-B-2923, C-F-P-1823 | 226d | 47d | 744,798.03 |
| C-F-P-LSF-52 |  | Installation of Lighting & Sanitary Fixtures at level 5 | 18d | 2016-02-11 | 2016-03-02 | C-F-P-1943 | 235d | 47d | 745,292.94 |
| C-F-P-LSF-372 |  | Installation of Lighting & Sanitary Fixtures at level 7 | 18d | 2016-03-01 | 2016-03-21 | C-F-P-2003 | 199d | 25d | 758,265.06 |
| C-F-P-LSF-382 |  | Installation of Lighting & Sanitary Fixtures at level 8 | 18d | 2016-03-22 | 2016-04-11 | C-F-P-2033 | 191d | 47d | 772,855.14 |
| C-F-P-LSF-392 |  | Installation of Lighting & Sanitary Fixtures at level 9 | 18d | 2016-03-22 | 2016-04-11 | C-F-P-2063 | 181d | 27d | 785,565.54 |
| C-F-P-LSF-402 |  | Installation of Lighting & Sanitary Fixtures at level 10 | 18d | 2016-03-22 | 2016-04-11 | C-F-P-2123 | 211d | 47d | 796,757.92 |
| C-F-P-LSF-412 |  | Installation of Lighting & Sanitary Fixtures at level 11 | 18d | 2016-03-22 | 2016-04-11 | C-F-P-2093 | 211d | 47d | 806,260.98 |
| C-F-P-LSF-432 |  | Installation of Lighting & Sanitary Fixtures at level 13 | 18d | 2016-04-12 | 2016-05-02 | C-F-P-2183 | 203d | 54d | 844,558.73 |
| C-F-P-LSF-422 |  | Installation of Lighting & Sanitary Fixtures at level 12 | 18d | 2016-04-14 | 2016-05-04 | C-F-P-2153 | 201d | 47d | 825,419.37 |
| C-F-P-LSF-442 |  | Installation of Lighting & Sanitary Fixtures at level 14 | 18d | 2016-04-18 | 2016-05-08 | P-AF-B-2923, C-F-P-2213 | 198d | 44d | 861,885.04 |
| C-F-P-LSF-452 |  | Installation of Lighting & Sanitary Fixtures at level 15 | 18d | 2016-04-18 | 2016-05-08 | C-F-P-2243 | 188d | 44d | 945,656.62 |
| C-F-P-LSF-462 |  | Installation of Lighting & Sanitary Fixtures at level 16 | 18d | 2016-04-18 | 2016-05-08 | C-F-P-2273 | 198d | 44d | 961,379.25 |
| C-F-P-LSF-492 |  | Installation of Lighting & Sanitary Fixtures at level 19 | 18d | 2016-05-09 | 2016-05-29 | C-F-P-2363 | 198d | 46d | 997,364.3 |
| C-F-P-LSF-482 |  | Installation of Lighting & Sanitary Fixtures at level 18 | 18d | 2016-05-11 | 2016-05-31 | C-F-P-2333 | 188d | 24d | 987,394.89 |
| C-F-P-LSF-502 |  | Installation of Lighting & Sanitary Fixtures at level 20 | 18d | 2016-05-15 | 2016-06-04 | C-F-P-2393 | 195d | 46d | 1,005,339.82 |
| C-F-P-LSF-512 |  | Installation of Lighting & Sanitary Fixtures at level 21 | 18d | 2016-05-15 | 2016-06-04 | C-F-P-2423 | 195d | 41d | 1,011,330.98 |
| C-F-P-LSF-522 |  | Installation of Lighting & Sanitary Fixtures at level 22 | 18d | 2016-05-15 | 2016-06-04 | C-F-P-2453 | 185d | 48d | 1,014,938.05 |
| C-F-P-LSF-552 |  | Installation of Lighting & Sanitary Fixtures at Level 25 | 18d | 2016-06-05 | 2016-06-25 | C-F-P-2543 | 187d | 38d | 1,015,575.71 |
| C-F-P-LSF-542 |  | Installation of Lighting & Sanitary Fixtures at level 24 | 18d | 2016-06-07 | 2016-06-27 | P-AF-B-2923, C-F-P-2513 | 185d | 36d | 1,017,474.42 |
| C-F-P-LSF-562 |  | Installation of Lighting & Sanitary Fixtures at Level 26 | 18d | 2016-06-11 | 2016-06-30 | C-F-P-2573 | 190d | 38d | 1,011,854.44 |
| C-F-P-LSF-572 |  | Installation of Lighting & Sanitary Fixtures at Level 27 | 18d | 2016-06-11 | 2016-06-30 | C-F-P-2603 | 190d | 43d | 1,006,048.86 |
| C-F-P-LSF-582 |  | Installation of Lighting & Sanitary Fixtures at Level 28 | 18d | 2016-06-11 | 2016-06-30 | C-F-P-2633 | 190d | 38d | 998,154.23 |
| C-F-P-LSF-532 |  | Installation of Lighting & Sanitary Fixtures at level 23 | 18d | 2016-06-21 | 2016-07-14 | C-F-P-2483 | 163d | 24d | 1,017,636.22 |
| C-F-P-LSF-602 |  | Installation of Lighting & Sanitary Fixtures at Level 30 | 18d | 2016-07-04 | 2016-07-27 | P-AF-B-2923, C-F-P-2693 | 170d | 43d | 976,997.2 |
| C-F-P-LSF-612 |  | Installation of Lighting & Sanitary Fixtures at Level 31 | 18d | 2016-07-14 | 2016-08-03 | C-F-P-2723 | 164d | 49d | 845,220.19 |
| C-F-P-LSF-622 |  | Installation of Lighting & Sanitary Fixtures at Level 32 | 18d | 2016-07-16 | 2016-08-04 | C-F-P-2753 | 163d | 49d | 1,090,686.52 |
| C-F-P-LSF-592 |  | Installation of Lighting & Sanitary Fixtures at level 29 | 18d | 2016-07-21 | 2016-08-10 | C-F-P-2663 | 150d | 13d | 949,744.31 |
| C-F-P-LSF-632 |  | Installation of Lighting & Sanitary Fixtures at Level 33 | 18d | 2016-07-23 | 2016-08-11 | C-F-P-2783 | 157d | 64d | 1,154,010.1 |
| C-F-P-LSF-642 |  | Installation of Lighting & Sanitary Fixtures at Level 34 | 18d | 2016-07-30 | 2016-08-18 | C-F-P-2813 | 151d | 49d | 656,891.18 |
| C-F-P-LSF-662 |  | Installation of Lighting & Sanitary Fixtures at Level 36 | 18d | 2016-08-15 | 2016-09-04 | C-F-P-2873 | 137d | 49d | 779,160.37 |
| C-F-P-LSF-712 |  | Installation of Lighting & Sanitary Fixtures at Level 41 | 18d | 2016-08-18 | 2016-09-07 | C-F-P-3023 | 134d | 52d | 647,135.91 |
| C-F-P-LSF-672 |  | Installation of Lighting & Sanitary Fixtures at Level 37 | 18d | 2016-08-20 | 2016-09-08 | C-F-P-2903 | 133d | 49d | 758,103.27 |
| C-F-P-LSF-702 |  | Installation of Lighting & Sanitary Fixtures at Level 40 | 18d | 2016-08-25 | 2016-09-18 | C-F-P-2993 | 128d | 55d | 678,980.91 |
| C-F-P-LSF-682 |  | Installation of Lighting & Sanitary Fixtures at Level 38 | 18d | 2016-08-27 | 2016-09-19 | C-F-P-2933 | 127d | 49d | 734,462.21 |
| C-F-P-LSF-722 |  | Installation of Lighting & Sanitary Fixtures at Level 42 | 18d | 2016-09-14 | 2016-10-05 | P-AF-B-2923, C-F-P-3053 | 114d | 46d | 612,587.98 |
| C-F-P-LSF-692 |  | Installation of Lighting & Sanitary Fixtures at Level 39 | 18d | 2016-09-15 | 2016-10-06 | C-F-P-2963 | 113d | 49d | 708,142.02 |
| C-F-P-LSF-732 |  | Installation of Lighting & Sanitary Fixtures at Level 43 | 18d | 2016-09-19 | 2016-10-10 | C-F-P-3083 | 110d | 42d | 575,203.9 |
| C-F-P-LSF-812 |  | Installation of Lighting & Sanitary Fixtures at Level 44 | 18d | 2016-09-27 | 2016-10-17 | C-F-P-3113 | 104d | 40d | 511,176.03 |
| C-F-P-LSF-752 |  | Installation of Lighting & Sanitary Fixtures at Level 46 | 18d | 2016-09-29 | 2016-10-19 | C-F-P-3173 | 102d | 58d | 446,029.87 |
| C-F-P-LSF-742 |  | Installation of Lighting & Sanitary Fixtures at Level 45 | 18d | 2016-10-13 | 2016-11-02 | C-F-P-3143 | 90d | 36d | 492,046.19 |
| C-F-P-LSF-792 |  | Installation of Lighting & Sanitary Fixtures at Level 50 | 18d | 2016-10-26 | 2016-11-15 | C-F-P-3293 | 79d | 49d | 409,273.93 |
| C-F-P-LSF-802 |  | Installation of Lighting & Sanitary Fixtures at Level 51 | 18d | 2016-11-09 | 2016-11-29 | C-F-P-3323 | 67d | 36d | 357,061.83 |

Notes:
- C-F-P-LSF-02: Expenses: 1 1285278
- C-F-P-LSF-82: Expenses: 1 1341416
- C-F-P-LSF-92: Expenses: 1 166553
- C-F-P-LSF-32: Expenses: 1 1142461
- C-F-P-LSF-12: Expenses: 1 697521
- C-F-P-LSF-22: Expenses: 1 1177166
- C-F-P-LSF-62: Expenses: 1 749885
- C-F-P-LSF-42: Expenses: 1 744798
- C-F-P-LSF-52: Expenses: 1 745293
- C-F-P-LSF-372: Expenses: 1 758265
- C-F-P-LSF-382: Expenses: 1 772855
- C-F-P-LSF-392: Expenses: 1 785566
- C-F-P-LSF-402: Expenses: 1 796758
- C-F-P-LSF-412: Expenses: 1 806261
- C-F-P-LSF-432: Expenses: 1 844559
- C-F-P-LSF-422: Expenses: 1 825419
- C-F-P-LSF-442: Expenses: 1 861885
- C-F-P-LSF-452: Expenses: 1 945657
- C-F-P-LSF-462: Expenses: 1 961379
- C-F-P-LSF-492: Expenses: 1 997364
- C-F-P-LSF-482: Expenses: 1 987395
- C-F-P-LSF-502: Expenses: 1 1005340
- C-F-P-LSF-512: Expenses: 1 1011331
- C-F-P-LSF-522: Expenses: 1 1014938
- C-F-P-LSF-552: Expenses: 1 1015576
- C-F-P-LSF-542: Expenses: 1 1017474
- C-F-P-LSF-562: Expenses: 1 1011854
- C-F-P-LSF-572: Expenses: 1 1006049
- C-F-P-LSF-582: Expenses: 1 998154
- C-F-P-LSF-532: Expenses: 1 1017636
- C-F-P-LSF-602: Expenses: 1 976997
- C-F-P-LSF-612: Expenses: 1 845220
- C-F-P-LSF-622: Expenses: 1 1090687
- C-F-P-LSF-592: Expenses: 1 949744
- C-F-P-LSF-632: Expenses: 1 1154010
- C-F-P-LSF-642: Expenses: 1 656891
- C-F-P-LSF-662: Expenses: 1 779160
- C-F-P-LSF-712: Expenses: 1 647136
- C-F-P-LSF-672: Expenses: 1 758103
- C-F-P-LSF-702: Expenses: 1 678981
- C-F-P-LSF-682: Expenses: 1 734462
- C-F-P-LSF-722: Expenses: 1 612588
- C-F-P-LSF-692: Expenses: 1 708142
- C-F-P-LSF-732: Expenses: 1 575204
- C-F-P-LSF-812: Expenses: 1 511176
- C-F-P-LSF-752: Expenses: 1 446030
- C-F-P-LSF-742: Expenses: 1 492046
- C-F-P-LSF-792: Expenses: 1 409274
- C-F-P-LSF-802: Expenses: 1 357062

| ID | WBS | Activity | Duration | Start | Finish | Predecessors | Total float | Free float | Cost |
| --- | --- | --- | --- | --- | --- | --- | --- | --- | --- |
|  | 9 | **FOH - Furniture** |  | 2017-02-19 | 2017-06-03 |  |  |  |  |
| C-F-P-FU-002 |  | Installation of loose furniture at Level 24 | 90d | 2017-02-19 | 2017-06-03 | SD-CS-L24-1072, P-AF-B-2843, C-F-P-2513, C-F-DW-1014, C-F-DW-1004, C-F-WF-1024, C-F-WF-1014, C-F-WF-1034, C-F-FF-1024, C-F-FF-1014, C-F-CF-1787, C-F-CF-1777, C-CS-Su-A-CW-1922, M-TF-001, C-E-SR-B3G-243, C-E-SR-B3G-253, C-F-P-1583, G-MM-003, M-TF-002, G-MM-001 | 22d | 0d | 2,034,948.85 |
| C-F-P-FU-012 |  | Installation of loose furniture at Level 25 | 90d | 2017-02-19 | 2017-06-03 | SD-CS-L25-1092, C-F-P-2543, C-F-DW-1054, C-F-DW-1044, C-F-WF-1064, C-F-WF-1054, C-F-WF-1074, C-F-FF-1064, C-F-FF-1054, C-F-CF-1857, C-F-CF-1847, C-CS-Su-A-CW-1932, M-TF-001, C-E-SR-B3G-243, C-E-SR-B3G-253, C-F-P-1583, G-MM-003, M-TF-002, G-MM-001 | 22d | 0d | 2,031,151.43 |
| C-F-P-FU-02 |  | Installation of loose furniture at Level 14 | 90d | 2017-02-19 | 2017-06-03 | SD-CS-L14-872, P-AF-B-2843, C-F-P-2213, C-F-DW-654, C-F-DW-644, C-F-WF-664, C-F-WF-654, C-F-WF-674, C-F-FF-664, C-F-FF-654, C-F-CF-1157, C-F-CF-1147, C-CS-Su-A-CW-1822, M-TF-001, C-E-SR-B3G-243, C-E-SR-B3G-253, C-F-P-1583, G-MM-003, M-TF-002, G-MM-001 | 22d | 0d | 1,723,770.08 |
| C-F-P-FU-022 |  | Installation of loose furniture at Level 26 | 90d | 2017-02-19 | 2017-06-03 | SD-CS-L26-1112, C-F-P-2573, C-F-DW-1134, C-F-DW-1124, C-F-WF-1144, C-F-WF-1134, C-F-WF-1154, C-F-FF-1144, C-F-FF-1134, C-F-CF-1997, C-F-CF-1987, C-CS-Su-A-CW-1942, M-TF-001, C-E-SR-B3G-243, C-E-SR-B3G-253, C-F-P-1583, G-MM-003, M-TF-002, G-MM-001 | 22d | 0d | 2,023,708.87 |
| C-F-P-FU-032 |  | Installation of loose furniture at Level 27 | 90d | 2017-02-19 | 2017-06-03 | SD-CS-L27-1132, C-F-P-2603, C-F-DW-934, C-F-DW-924, C-F-WF-944, C-F-WF-934, C-F-WF-954, C-F-FF-944, C-F-FF-934, C-F-CF-1647, C-F-CF-1637, C-CS-Su-A-CW-1952, M-TF-001, C-E-SR-B3G-243, C-E-SR-B3G-253, C-F-P-1583, G-MM-003, M-TF-002, G-MM-001 | 22d | 0d | 2,012,097.73 |
| C-F-P-FU-042 |  | Installation of loose furniture at Level 28 | 90d | 2017-02-19 | 2017-06-03 | SD-CS-L28-1152, C-F-P-2633, C-F-DW-1094, C-F-DW-1084, C-F-WF-1104, C-F-WF-1094, C-F-WF-1114, C-F-FF-1104, C-F-FF-1094, C-F-CF-1927, C-F-CF-1917, C-CS-Su-A-CW-1962, M-TF-001, C-E-SR-B3G-243, C-E-SR-B3G-253, C-F-P-1583, G-MM-003, M-TF-002, G-MM-001 | 22d | 0d | 1,996,308.47 |
| C-F-P-FU-052 |  | Installation of loose furniture at Level 29 | 90d | 2017-02-19 | 2017-06-03 | SD-CS-L29-1172, C-F-P-2663, C-F-DW-1174, C-F-DW-1164, C-F-WF-1184, C-F-WF-1174, C-F-WF-1194, C-F-FF-1184, C-F-FF-1174, C-F-CF-2067, C-F-CF-2057, C-CS-Su-A-CW-1972, M-TF-001, C-E-SR-B3G-243, C-E-SR-B3G-253, C-F-P-1583, G-MM-003, M-TF-002, G-MM-001 | 22d | 0d | 1,899,488.63 |
| C-F-P-FU-062 |  | Installation of loose furniture at Level 30 | 90d | 2017-02-19 | 2017-06-03 | SD-CS-L30-1192, P-AF-B-2843, C-F-P-2693, C-F-DW-1334, C-F-DW-1324, C-F-WF-1344, C-F-WF-1334, C-F-WF-1354, C-F-FF-1344, C-F-FF-1334, C-F-CF-2347, C-F-CF-2337, C-CS-Su-A-CW-1982, M-TF-001, C-E-SR-B3G-243, C-E-SR-B3G-253, C-F-P-1583, G-MM-003, M-TF-002, G-MM-001 | 22d | 0d | 1,953,994.4 |
| C-F-P-FU-072 |  | Installation of loose furniture at Level 31 | 90d | 2017-02-19 | 2017-06-03 | SD-CS-L31-1212, C-F-P-2723, C-F-DW-1254, C-F-DW-1244, C-F-WF-1264, C-F-WF-1254, C-F-WF-1274, C-F-FF-1264, C-F-FF-1254, C-F-CF-2207, C-F-CF-2197, C-CS-Su-A-CW-1992, M-TF-001, C-E-SR-B3G-243, C-E-SR-B3G-253, C-F-P-1583, G-MM-003, M-TF-002, G-MM-001 | 22d | 0d | 1,690,440.38 |
| C-F-P-FU-082 |  | Installation of loose furniture at Level 32 | 90d | 2017-02-19 | 2017-06-03 | SD-CS-L32-1232, C-F-P-2753, C-F-DW-1294, C-F-DW-1284, C-F-WF-1304, C-F-WF-1294, C-F-WF-1314, C-F-FF-1304, C-F-FF-1294, C-F-CF-2277, C-F-CF-2267, C-CS-Su-A-CW-2002, M-TF-001, C-E-SR-B3G-243, C-E-SR-B3G-253, C-F-P-1583, G-MM-003, M-TF-002, G-MM-001 | 22d | 0d | 2,181,373.03 |
| C-F-P-FU-092 |  | Installation of loose furniture at Level 33 | 90d | 2017-02-19 | 2017-06-03 | SD-CS-L33-1252, C-F-P-2783, C-F-DW-1374, C-F-DW-1364, C-F-WF-1384, C-F-WF-1374, C-F-WF-1394, C-F-FF-1384, C-F-FF-1374, C-F-CF-2417, C-F-CF-2407, C-CS-Su-A-CW-2012, C-SP-MRP-161, M-TF-001, C-E-SR-B3G-243, C-E-SR-B3G-253, C-F-P-1583, G-MM-003, M-TF-002, G-MM-001 | 22d | 0d | 2,308,020.2 |
| C-F-P-FU-102 |  | Installation of loose furniture at Level 34 | 90d | 2017-02-19 | 2017-06-03 | SD-CS-L34-1272, C-F-P-2813, C-F-DW-1454, C-F-DW-1444, C-F-WF-1464, C-F-WF-1454, C-F-WF-1474, C-F-FF-1464, C-F-FF-1454, C-F-CF-2557, C-F-CF-2547, C-CS-Su-A-CW-2022, M-TF-001, C-E-SR-B3G-243, C-E-SR-B3G-253, C-F-P-1583, G-MM-003, M-TF-002, G-MM-001 | 22d | 0d | 1,313,782.35 |
| C-F-P-FU-12 |  | Installation of loose furniture at Level 15 | 90d | 2017-02-19 | 2017-06-03 | SD-CS-L15-892, C-F-P-2243, C-F-DW-894, C-F-DW-884, C-F-WF-904, C-F-WF-894, C-F-WF-914, C-F-FF-904, C-F-FF-894, C-F-CF-1577, C-F-CF-1567 FS+8d, C-CS-Su-A-CW-1832, M-TF-001, C-E-SR-B3G-243, C-E-SR-B3G-253, C-F-P-1583, G-MM-003, M-TF-002, G-MM-001 | 22d | 0d | 1,891,313.23 |
| C-F-P-FU-122 |  | Installation of loose furniture at Level 36 | 90d | 2017-02-19 | 2017-06-03 | SD-CS-L36-1312, C-F-P-2873, C-F-DW-1494, C-F-DW-1484, C-F-WF-1504, C-F-WF-1494, C-F-WF-1514, C-F-FF-1504, C-F-FF-1494, C-F-CF-2627, C-F-CF-2617, C-CS-Su-A-CW-2042, M-TF-001, C-E-SR-B3G-243, C-E-SR-B3G-253, C-F-P-1583, G-MM-003, M-TF-002, G-MM-001 | 22d | 0d | 1,558,320.74 |
| C-F-P-FU-132 |  | Installation of loose furniture at Level 37 | 90d | 2017-02-19 | 2017-06-03 | SD-CS-L37-1332, C-F-P-2903, C-F-DW-1534, C-F-DW-1524, C-F-WF-1544, C-F-WF-1534, C-F-WF-1554, C-F-FF-1544, C-F-FF-1534, C-F-CF-2697, C-F-CF-2687, C-CS-Su-A-CW-2052, M-TF-001, C-E-SR-B3G-243, C-E-SR-B3G-253, C-F-P-1583, G-MM-003, M-TF-002, G-MM-001 | 22d | 0d | 1,516,206.54 |
| C-F-P-FU-142 |  | Installation of loose furniture at Level 38 | 90d | 2017-02-19 | 2017-06-03 | SD-CS-L38-1352, C-F-P-2933, C-F-DW-1614, C-F-DW-1604, C-F-WF-1624, C-F-WF-1614, C-F-WF-1634, C-F-FF-1624, C-F-FF-1614, C-F-CF-2837, C-F-CF-2827, C-CS-Su-A-CW-2062, M-TF-001, C-E-SR-B3G-243, C-E-SR-B3G-253, C-F-P-1583, G-MM-003, M-TF-002, G-MM-001 | 22d | 0d | 1,468,924.42 |
| C-F-P-FU-152 |  | Installation of loose furniture at Level 39 | 90d | 2017-02-19 | 2017-06-03 | SD-CS-L39-1372, C-F-P-2963, C-F-DW-1414, C-F-DW-1404, C-F-WF-1424, C-F-WF-1414, C-F-WF-1434, C-F-FF-1424, C-F-FF-1414, C-F-CF-2487, C-F-CF-2477, C-CS-Su-A-CW-2072, M-TF-001, C-E-SR-B3G-243, C-E-SR-B3G-253, C-F-P-1583, G-MM-003, M-TF-002, G-MM-001 | 22d | 0d | 1,416,284.04 |
| C-F-P-FU-162 |  | Installation of loose furniture at Level 40 | 90d | 2017-02-19 | 2017-06-03 | SD-CS-L40-1392, C-F-P-2993, C-F-DW-1574, C-F-DW-1564, C-F-WF-1584, C-F-WF-1574, C-F-WF-1594, C-F-FF-1584, C-F-FF-1574, C-F-CF-2767, C-F-CF-2757, C-CS-Su-A-CW-2082, M-TF-001, C-E-SR-B3G-243, C-E-SR-B3G-253, C-F-P-1583, G-MM-003, M-TF-002, G-MM-001 | 22d | 0d | 1,357,961.82 |
| C-F-P-FU-172 |  | Installation of loose furniture at Level 41 | 90d | 2017-02-19 | 2017-06-03 | SD-CS-L41-1412, C-F-P-3023, C-F-DW-1654, C-F-DW-1644, C-F-WF-1664, C-F-WF-1654, C-F-WF-1674, C-F-FF-1664, C-F-FF-1654, C-F-CF-2907, C-F-CF-2897, C-CS-Su-A-CW-2092, M-TF-001, C-E-SR-B3G-243, C-E-SR-B3G-253, C-F-P-1583, G-MM-003, M-TF-002, G-MM-001 | 22d | 0d | 1,294,271.82 |
| C-F-P-FU-182 |  | Installation of loose furniture at Level 42 | 90d | 2017-02-19 | 2017-06-03 | SD-CS-L42-1432, P-AF-B-2843, C-F-P-3053, C-F-DW-1774, C-F-DW-1764, C-F-WF-1784, C-F-WF-1774, C-F-WF-1794, C-F-FF-1784, C-F-FF-1774, C-F-CF-3117, C-F-CF-3107, C-CS-Su-A-CW-2102, M-TF-001, C-E-SR-B3G-243, C-E-SR-B3G-253, C-F-P-1583, G-MM-003, M-TF-002, G-MM-001 | 22d | 0d | 1,225,175.97 |
| C-F-P-FU-192 |  | Installation of loose furniture at Level 43 | 90d | 2017-02-19 | 2017-06-03 | SD-CS-L43-1452, C-F-P-3083, C-F-DW-2014, C-F-DW-2004, C-F-WF-2024, C-F-WF-2014, C-F-WF-2034, C-F-FF-2024, C-F-FF-2014, C-F-CF-3537, C-F-CF-3527, C-CS-Su-A-CW-2112, M-TF-001, C-E-SR-B3G-243, C-E-SR-B3G-253, C-F-P-1583, G-MM-003, M-TF-002, G-MM-001 | 22d | 0d | 1,150,407.79 |
| C-F-P-FU-202 |  | Installation of loose furniture at Level 45 | 90d | 2017-02-19 | 2017-06-03 | SD-CS-L45-1492, C-F-P-3143, C-F-DW-1814, C-F-DW-1804, C-F-WF-1824, C-F-WF-1814, C-F-WF-1834, C-F-FF-1824, C-F-FF-1814, C-F-CF-3187, C-F-CF-3177, C-CS-Su-A-CW-2122, M-TF-001, C-E-SR-B3G-243, C-E-SR-B3G-253, C-F-P-1583, G-MM-003, M-TF-002, G-MM-001 | 22d | 0d | 984,092.37 |
| C-F-P-FU-212 |  | Installation of loose furniture at Level 46 | 90d | 2017-02-19 | 2017-06-03 | SD-CS-L46-1512, C-F-P-3173, C-F-DW-1934, C-F-DW-1924, C-F-WF-1944, C-F-WF-1934, C-F-WF-1954, C-F-FF-1944, C-F-FF-1934, C-F-CF-3397, C-F-CF-3387, C-CS-Su-A-CW-2132, M-TF-001, C-E-SR-B3G-243, C-E-SR-B3G-253, C-F-P-1583, G-MM-003, M-TF-002, G-MM-001 | 22d | 0d | 892,059.75 |
| C-F-P-FU-22 |  | Installation of loose furniture at Level 16 | 90d | 2017-02-19 | 2017-06-03 | SD-CS-L16-912, C-F-P-2273, C-F-DW-734, C-F-DW-724, C-F-WF-744, C-F-WF-734, C-F-WF-754, C-F-FF-744, C-F-FF-734, C-F-CF-1297, C-F-CF-1287, C-CS-Su-A-CW-1842, M-TF-001, C-E-SR-B3G-243, C-E-SR-B3G-253, C-F-P-1583, G-MM-003, M-TF-002, G-MM-001 | 22d | 0d | 1,922,758.51 |
| C-F-P-FU-252 |  | Installation of loose furniture at Level 50 | 90d | 2017-02-19 | 2017-06-03 | SD-CS-L50-1592, C-F-P-3293, C-F-DW-2054, C-F-DW-2044, C-F-WF-2064, C-F-WF-2054, C-F-WF-2074, C-F-FF-2064, C-F-FF-2054, C-F-CF-3607, C-F-CF-3597, C-CS-Su-A-CW-2172, M-TF-001, C-E-SR-B3G-243, C-E-SR-B3G-253, C-F-P-1583, G-MM-003, M-TF-002, G-MM-001 | 22d | 0d | 818,547.86 |
| C-F-P-FU-262 |  | Installation of loose furniture at Level 51 | 90d | 2017-02-19 | 2017-06-03 | SD-CS-L51-2552, C-F-P-3323, C-F-DW-2094, C-F-DW-2084, C-F-WF-2104, C-F-WF-2094, C-F-WF-2114, C-F-FF-2104, C-F-FF-2094, C-F-CF-3677, C-F-CF-3667, C-CS-Su-A-CW-2182, C-E-SR-B3G-243, C-E-SR-B3G-253, C-F-P-1583, G-MM-003, M-TF-001, M-TF-002, G-MM-001 | 22d | 0d | 714,123.67 |
| C-F-P-FU-272 |  | Installation of loose furniture at Level 44 | 90d | 2017-02-19 | 2017-06-03 | SD-CS-L44-1472, C-F-P-3113, C-F-DW-1854, C-F-DW-1844, C-F-WF-1864, C-F-WF-1854, C-F-WF-1874, C-F-FF-1864, C-F-FF-1854, C-F-CF-3257, C-F-CF-3247, C-CS-Su-A-CW-2732, G-MM-001 | 22d | 0d | 1,022,352.06 |
| C-F-P-FU-2752 |  | Installation of loose furniture at Ground Mezzanine Floor | 90d | 2017-02-19 | 2017-06-03 | SD-CS-GF-592, C-F-P-1913, C-F-DW-254, C-F-DW-244, C-F-WF-264, C-F-WF-254, C-F-WF-274, C-F-FF-264, C-F-FF-254, C-F-CF-457, C-F-CF-447, C-CS-Su-A-CW-1672, C-F-FF-254 SS, M-TF-001, C-E-SR-B3G-243, C-E-SR-B3G-253, C-F-P-1583, G-MM-003, M-TF-002, G-MM-001 | 22d | 0d | 333,106.7 |
| C-F-P-FU-2762 |  | Installation of loose furniture at Level 1 | 90d | 2017-02-19 | 2017-06-03 | SD-CS-L1-612, C-F-P-1763, C-F-DW-54, C-F-DW-44, C-F-WF-64, C-F-WF-54, C-F-WF-74, C-F-FF-64, C-F-FF-54, C-F-CF-107, C-F-CF-97, C-CS-Su-A-CW-1682, M-TF-001, C-E-SR-B3G-243, C-E-SR-B3G-253, C-F-P-1583, G-MM-003, M-TF-002, G-MM-001 | 22d | 0d | 2,570,555.87 |
| C-F-P-FU-2772 |  | Installation of loose furniture at Level 1 Mezzanine | 90d | 2017-02-19 | 2017-06-03 | C-F-P-1793, C-F-DW-94, C-F-DW-84, C-F-WF-104, C-F-WF-94, C-F-WF-114, C-F-FF-104, C-F-FF-94, C-F-CF-177, C-F-CF-167, C-CS-Su-A-CW-1692, M-TF-001, C-E-SR-B3G-243, C-E-SR-B3G-253, C-F-P-1583, G-MM-003, M-TF-002, G-MM-001 | 22d | 0d | 1,395,041.35 |
| C-F-P-FU-2782 |  | Installation of loose furniture at Level 2 | 90d | 2017-02-19 | 2017-06-03 | SD-CS-L2-632, C-F-P-1853, C-F-DW-174, C-F-DW-164, C-F-WF-184, C-F-WF-174, C-F-WF-194, C-F-FF-184, C-F-FF-174, C-F-CF-317, C-F-CF-307, C-CS-Su-A-CW-1702, M-TF-001, C-E-SR-B3G-243, C-E-SR-B3G-253, C-F-P-1583, G-MM-003, M-TF-002, G-MM-001 | 22d | 0d | 2,354,331.55 |
| C-F-P-FU-2792 |  | Installation of loose furniture at Level 3 | 90d | 2017-02-19 | 2017-06-03 | SD-CS-L3-652, C-F-P-1703, C-F-DW-004, C-F-DW-003, C-F-WF-004, C-F-WF-003, C-F-WF-002, C-F-FF-004, C-F-FF-003, C-F-CF-007, C-F-CF-005, C-CS-Su-A-CW-1712, M-TF-001, C-E-SR-B3G-243, C-E-SR-B3G-253, C-F-P-1583, G-MM-003, M-TF-002, G-MM-001 | 22d | 0d | 2,284,921.63 |
| C-F-P-FU-2802 |  | Installation of loose furniture at Level 4 | 90d | 2017-02-19 | 2017-06-03 | SD-CS-L4-1672, P-AF-B-2843, C-F-P-1823, C-F-DW-134, C-F-DW-124, C-F-WF-144, C-F-WF-134, C-F-WF-154, C-F-FF-144, C-F-FF-134, C-F-CF-247, C-F-CF-237, C-CS-Su-A-CW-1722, C-SP-MRP-241 FF+10d, M-TF-001, C-E-SR-B3G-243, C-E-SR-B3G-253, C-F-P-1583, G-MM-003, M-TF-002, G-MM-001 | 22d | 0d | 1,489,596.07 |
| C-F-P-FU-3323 |  | Installation of loose furniture at Ground Floor | 90d | 2017-02-19 | 2017-06-03 | SD-CS-B1-592, P-AF-B-2843, C-F-P-1733, C-F-DW-14, C-F-DW-4, C-F-WF-24, C-F-WF-14, C-F-WF-34, C-F-FF-24, C-F-FF-14, C-F-CF-37, C-F-CF-27, C-CS-Su-A-CW-1662, M-TF-002, C-F-FF-254 SS, M-TF-001, C-E-SR-B3G-243, C-E-SR-B3G-253, C-F-P-1583, G-MM-003, G-MM-001 | 22d | 0d | 2,682,831.86 |
| C-F-P-FU-42 |  | Installation of loose furniture at Level 18 | 90d | 2017-02-19 | 2017-06-03 | SD-CS-L18-952, C-F-P-2333, C-F-DW-814, C-F-DW-804, C-F-WF-824, C-F-WF-814, C-F-WF-834, C-F-FF-824, C-F-FF-814, C-F-CF-1437, C-F-CF-1427, C-CS-Su-A-CW-1862, M-TF-001, C-E-SR-B3G-243, C-E-SR-B3G-253, C-F-P-1583, G-MM-003, M-TF-002, G-MM-001 | 22d | 0d | 1,974,789.77 |
| C-F-P-FU-62 |  | Installation of loose furniture at Level 10 | 90d | 2017-02-19 | 2017-06-03 | SD-CS-L10-792, C-F-P-2123, C-F-DW-494 FS+20d, C-F-DW-484, C-F-WF-504 FS+20d, C-F-WF-494, C-F-WF-514, C-F-FF-504 FS+20d, C-F-FF-494, C-F-CF-877, C-F-CF-867 FS+20d, C-CS-Su-A-CW-1782, M-TF-001, C-E-SR-B3G-243, C-E-SR-B3G-253, C-F-P-1583, G-MM-003, M-TF-002, G-MM-001 | 22d | 0d | 1,593,515.84 |
| C-F-P-FU-72 |  | Installation of loose furniture at Level 11 | 90d | 2017-02-19 | 2017-06-03 | SD-CS-L11-812, C-F-P-2093, C-F-DW-294, C-F-DW-284, C-F-WF-304, C-F-WF-294, C-F-WF-314, C-F-FF-304, C-F-FF-294, C-F-CF-527, C-F-CF-517, C-CS-Su-A-CW-1792, M-TF-001, C-E-SR-B3G-243, C-E-SR-B3G-253, C-F-P-1583, G-MM-003, M-TF-002, G-MM-001 | 22d | 0d | 1,612,521.96 |
| C-F-P-FU-812 |  | Installation of loose furniture at Level 5 | 90d | 2017-02-19 | 2017-06-03 | SD-CS-L5-692, C-F-P-1943, C-F-DW-214, C-F-DW-204, C-F-WF-224, C-F-WF-214, C-F-WF-234, C-F-FF-224, C-F-FF-214, C-F-CF-387, C-F-CF-377, C-CS-Su-A-CW-1732, M-TF-001, C-E-SR-B3G-243, C-E-SR-B3G-253, C-F-P-1583, G-MM-003, M-TF-002, G-MM-001 | 22d | 0d | 1,490,585.87 |
| C-F-P-FU-82 |  | Installation of loose furniture at Level 12 | 90d | 2017-02-19 | 2017-06-03 | SD-CS-L12-832, C-F-P-2153, C-F-DW-454, C-F-DW-444, C-F-WF-464, C-F-WF-454, C-F-WF-474, C-F-FF-464, C-F-FF-454, C-F-CF-807, C-F-CF-797, C-CS-Su-A-CW-1802, M-TF-001, C-E-SR-B3G-243, C-E-SR-B3G-253, C-F-P-1583, G-MM-003, M-TF-002, G-MM-001 | 22d | 0d | 1,650,838.75 |
| C-F-P-FU-822 |  | Installation of loose furniture at Level 6 | 90d | 2017-02-19 | 2017-06-03 | SD-CS-L6-712, C-F-P-1973, C-F-DW-334, C-F-DW-324, C-F-WF-344, C-F-WF-334, C-F-WF-354, C-F-FF-344, C-F-FF-334, C-F-CF-597, C-F-CF-587, C-CS-Su-A-CW-1742, M-TF-001, C-E-SR-B3G-243, C-E-SR-B3G-253, C-F-P-1583, G-MM-003, M-TF-002, G-MM-001 | 22d | 0d | 1,499,770.1 |
| C-F-P-FU-832 |  | Installation of loose furniture at Level 7 | 90d | 2017-02-19 | 2017-06-03 | SD-CS-L7-732, C-F-P-2003, C-F-DW-574, C-F-DW-564, C-F-WF-584, C-F-WF-574, C-F-WF-594, C-F-FF-584, C-F-FF-574, C-F-CF-1017, C-F-CF-1007, C-CS-Su-A-CW-1752, M-TF-001, C-E-SR-B3G-243, C-E-SR-B3G-253, C-F-P-1583, G-MM-003, M-TF-002, G-MM-001 | 22d | 0d | 1,516,530.13 |
| C-F-P-FU-842 |  | Installation of loose furniture at Level 8 | 90d | 2017-02-19 | 2017-06-03 | SD-CS-L8-752, C-F-P-2033, C-F-DW-374, C-F-DW-364, C-F-WF-384, C-F-WF-374, C-F-WF-394, C-F-FF-384, C-F-FF-374, C-F-CF-667, C-F-CF-657, C-CS-Su-A-CW-1762, M-TF-001, C-E-SR-B3G-243, C-E-SR-B3G-253, C-F-P-1583, G-MM-003, M-TF-002, G-MM-001 | 22d | 0d | 1,545,710.27 |
| C-F-P-FU-852 |  | Installation of loose furniture at Level 9 | 90d | 2017-02-19 | 2017-06-03 | SD-CS-L9-772, C-F-P-2063, C-F-DW-414, C-F-DW-404, C-F-WF-424, C-F-WF-414, C-F-WF-434, C-F-FF-424, C-F-FF-414, C-F-CF-737, C-F-CF-727, C-CS-Su-A-CW-1772, M-TF-001, C-E-SR-B3G-243, C-E-SR-B3G-253, C-F-P-1583, G-MM-003, M-TF-002, G-MM-001 | 22d | 0d | 1,571,131.07 |
| C-F-P-FU-92 |  | Installation of loose furniture at Level 13 | 90d | 2017-02-19 | 2017-06-03 | SD-CS-L13-852, C-F-P-2183, C-F-DW-534, C-F-DW-524, C-F-WF-544, C-F-WF-534, C-F-WF-554, C-F-FF-544, C-F-FF-534, C-F-CF-947, C-F-CF-937, C-CS-Su-A-CW-1812, M-TF-001, C-E-SR-B3G-243, C-E-SR-B3G-253, C-F-P-1583, G-MM-003, M-TF-002, G-MM-001 | 22d | 0d | 1,689,117.47 |
| C-F-P-FU-952 |  | Installation of loose furniture at Level 19 | 90d | 2017-02-19 | 2017-06-03 | SD-CS-L19-972, C-F-P-2363, C-F-DW-614, C-F-DW-604, C-F-WF-624, C-F-WF-614, C-F-WF-634, C-F-FF-624, C-F-FF-614, C-F-CF-1087, C-F-CF-1077, C-CS-Su-A-CW-1872, M-TF-001, C-E-SR-B3G-243, C-E-SR-B3G-253, C-F-P-1583, G-MM-003, M-TF-002, G-MM-001 | 22d | 0d | 1,994,728.59 |
| C-F-P-FU-962 |  | Installation of loose furniture at Level 20 | 90d | 2017-02-19 | 2017-06-03 | SD-CS-L20-992, C-F-P-2393, C-F-DW-774, C-F-DW-764, C-F-WF-784, C-F-WF-774, C-F-WF-794, C-F-FF-784, C-F-FF-774, C-F-CF-1367, C-F-CF-1357, C-CS-Su-A-CW-1882, M-TF-001, C-E-SR-B3G-243, C-E-SR-B3G-253, C-F-P-1583, G-MM-003, M-TF-002, G-MM-001 | 22d | 0d | 2,010,679.64 |
| C-F-P-FU-972 |  | Installation of loose furniture at Level 21 | 90d | 2017-02-19 | 2017-06-03 | SD-CS-L21-1012, C-F-P-2423, C-F-DW-854, C-F-DW-844, C-F-WF-864, C-F-WF-854, C-F-WF-874, C-F-FF-864, C-F-FF-854, C-F-CF-1507, C-F-CF-1497, C-CS-Su-A-CW-1892, M-TF-001, C-E-SR-B3G-243, C-E-SR-B3G-253, C-F-P-1583, G-MM-003, M-TF-002, G-MM-001 | 22d | 0d | 2,022,661.97 |
| C-F-P-FU-982 |  | Installation of loose furniture at Level 22 | 90d | 2017-02-19 | 2017-06-03 | SD-CS-L22-1032, C-F-P-2453, C-F-DW-974, C-F-DW-964, C-F-WF-984, C-F-WF-974, C-F-WF-994, C-F-FF-984, C-F-FF-974, C-F-CF-1717, C-F-CF-1707, C-CS-Su-A-CW-1902, M-TF-001, C-E-SR-B3G-243, C-E-SR-B3G-253, C-F-P-1583, G-MM-003, M-TF-002, G-MM-001 | 22d | 0d | 2,029,876.11 |
| C-F-P-FU-992 |  | Installation of loose furniture at Level 23 | 90d | 2017-02-19 | 2017-06-03 | SD-CS-L23-1052, C-F-P-2483, C-F-DW-1214, C-F-DW-1204, C-F-WF-1224, C-F-WF-1214, C-F-WF-1234, C-F-FF-1224, C-F-FF-1214, C-F-CF-2137, C-F-CF-2127, C-CS-Su-A-CW-1912, M-TF-001, C-E-SR-B3G-243, C-E-SR-B3G-253, C-F-P-1583, G-MM-003, M-TF-002, G-MM-001 | 22d | 0d | 2,035,272.43 |

Notes:
- C-F-P-FU-002: Expenses: 1 2034949
- C-F-P-FU-012: Expenses: 1 2031151
- C-F-P-FU-02: Expenses: 1 1723770
- C-F-P-FU-022: Expenses: 1 2023709
- C-F-P-FU-032: Expenses: 1 2012098
- C-F-P-FU-042: Expenses: 1 1996308
- C-F-P-FU-052: Expenses: 1 1899489
- C-F-P-FU-062: Expenses: 1 1953994
- C-F-P-FU-072: Expenses: 1 1690440
- C-F-P-FU-082: Expenses: 1 2181373
- C-F-P-FU-092: Expenses: 1 2308020
- C-F-P-FU-102: Expenses: 1 1313782
- C-F-P-FU-12: Expenses: 1 1891313
- C-F-P-FU-122: Expenses: 1 1558321
- C-F-P-FU-132: Expenses: 1 1516207
- C-F-P-FU-142: Expenses: 1 1468924
- C-F-P-FU-152: Expenses: 1 1416284
- C-F-P-FU-162: Expenses: 1 1357962
- C-F-P-FU-172: Expenses: 1 1294272
- C-F-P-FU-182: Expenses: 1 1225176
- C-F-P-FU-192: Expenses: 1 1150408
- C-F-P-FU-202: Expenses: 1 984092
- C-F-P-FU-212: Expenses: 1 892060
- C-F-P-FU-22: Expenses: 1 1922759
- C-F-P-FU-252: Expenses: 1 818548
- C-F-P-FU-262: Expenses: 1 714124
- C-F-P-FU-272: Expenses: 1 1022352
- C-F-P-FU-2752: Expenses: 1 333107
- C-F-P-FU-2762: Expenses: 1 2570556
- C-F-P-FU-2772: Expenses: 1 1395041
- C-F-P-FU-2782: Expenses: 1 2354332
- C-F-P-FU-2792: Expenses: 1 2284922
- C-F-P-FU-2802: Expenses: 1 1489596
- C-F-P-FU-3323: Expenses: 1 2682832
- C-F-P-FU-42: Expenses: 1 1974790
- C-F-P-FU-62: Expenses: 1 1593516
- C-F-P-FU-72: Expenses: 1 1612522
- C-F-P-FU-812: Expenses: 1 1490586
- C-F-P-FU-82: Expenses: 1 1650839
- C-F-P-FU-822: Expenses: 1 1499770
- C-F-P-FU-832: Expenses: 1 1516530
- C-F-P-FU-842: Expenses: 1 1545710
- C-F-P-FU-852: Expenses: 1 1571131
- C-F-P-FU-92: Expenses: 1 1689117
- C-F-P-FU-952: Expenses: 1 1994729
- C-F-P-FU-962: Expenses: 1 2010680
- C-F-P-FU-972: Expenses: 1 2022662
- C-F-P-FU-982: Expenses: 1 2029876
- C-F-P-FU-992: Expenses: 1 2035272

| ID | WBS | Activity | Duration | Start | Finish | Predecessors | Total float | Free float | Calendar | Cost |
| --- | --- | --- | --- | --- | --- | --- | --- | --- | --- | --- |
|  | 2 | **Kitchens & Food Service Areas Internal Space MEP** |  | 2014-10-25 | 2017-03-20 |  |  |  |  |  |
|  | 6 | **Design** |  | 2014-12-15 | 2015-06-09 |  |  |  |  |  |
| A9810 |  | Design Preparation & Submittal | 120d | 2014-12-15 | 2015-05-05 | A9840 | 203d | 0d |  |  |
| A9820 |  | Design Review & Approval | 90d | 2015-02-25 | 2015-06-09 | A9810 SS+30d, A9810 FF+30d | 203d | 0d |  |  |
|  | 7 | **Pre-qualification** |  | 2014-10-25 | 2015-08-02 |  |  |  |  |  |
| A9830 |  | Pre-qualification submittal of the Designer | 30d | 2014-10-25 | 2014-11-27 | A9680 | 115d | 0d |  |  |
| A9840 |  | Pre-qualification Approval of the Designer | 30d | 2014-11-10 | 2014-12-14 | A9830 SS+14d, A9830 FF+14d | 203d | 0d |  |  |
| A9850 |  | Pre-qualification submittal of Sub-Contractor | 30d | 2015-06-10 | 2015-07-14 | A9820 | 203d | 0d |  |  |
| A9860 |  | Pre-qualification Approval of Sub-Contractor | 30d | 2015-06-27 | 2015-08-02 | A9850 SS+14d, A9850 FF+14d | 203d | 0d |  |  |
|  | 8 | **Method of Statement** |  | 2015-08-03 | 2015-09-26 |  |  |  |  |  |
| PQ-CS-C-2042 |  | Preparation & Submittal of MEP items for Kitchen & Food Services | 30d | 2015-08-03 | 2015-09-06 | A9860 | 289d | 0d |  |  |
| PQ-CS-C-2052 |  | Review & Approval of MEP items for Kitchen & Food Services | 30d | 2015-08-19 | 2015-09-26 | PQ-CS-C-2042 SS+14d, PQ-CS-C-2042 FF+14d | 289d | 140d |  |  |
|  | 9 | **Shop drawings** |  | 2015-08-03 | 2015-09-26 |  |  |  |  |  |
| SD-CS-B1-622 |  | Preparation & Submittals of SD of MEP items for Kitchen & Food Services | 30d | 2015-08-03 | 2015-09-06 | A9860 | 289d | 0d |  |  |
| SD-CS-B1-632 |  | Review & Approval of SD of MEP items for Kitchen & Food Services | 30d | 2015-08-19 | 2015-09-26 | SD-CS-B1-622 SS+14d, SD-CS-B1-622 FF+14d | 289d | 140d |  |  |
|  | 10 | **Procurement** |  | 2015-08-03 | 2016-01-04 |  |  |  |  |  |
| P-AF-B-3253 |  | Material Submittals of MEP items for Kitchen & Food Services | 14d | 2015-08-03 | 2015-08-18 | A9860 | 203d | 0d |  |  |
| P-AF-B-3263 |  | Material review & Approval of MEP items for Kitchen & Food Services | 14d | 2015-08-19 | 2015-09-03 | P-AF-B-3253 SS+14d, P-AF-B-3253 FF+14d | 203d | 0d |  |  |
| P-AF-B-3273 |  | P.O of MEP items for Kitchen & Food Services | 2d | 2015-09-05 | 2015-09-06 | P-AF-B-3263 | 203d | 0d |  |  |
| P-AF-B-3283 |  | Lead Time & Delivery of MEP items for Kitchen & Food Services | 120d | 2015-09-07 | 2016-01-04 | P-AF-B-3273 | 243d | 65d | * JWM - 7 Days per week with no holidays |  |
|  | 11 | **Construction** |  | 2016-03-10 | 2017-03-20 |  |  |  |  |  |
| C-KF-IS-001 |  | Installation of MEP Services for K&FS in the internal Spaces at basement 2 | 25d | 2016-03-10 | 2016-04-07 | P-AF-B-3283, SD-CS-B1-632, PQ-CS-C-2052, C-MEP-PD-2705 SS, C-MEP-PD-2715 SS, C-MEP-E-3256 SS, C-MEP-FF-2184 SS, C-MEP-FF-2174 SS, C-MEP-Gas-2805 SS, C-MEP-BMS-2715 SS | 149d | 0d |  | 968,888.89 |
| C-KF-IS-1 |  | Installation of MEP Services for K&FS in the internal Spaces at basement 1 | 25d | 2016-04-09 | 2016-05-07 | C-KF-IS-001, SD-CS-B1-632, PQ-CS-C-2052, C-MEP-E-3316 SS, C-MEP-AC-4408 SS, C-MEP-AC-4428 SS, C-MEP-FF-2224 SS, C-MEP-PD-2765 SS, C-MEP-PD-2755 SS, C-MEP-Gas-2855 SS, C-MEP-BMS-2795 SS | 149d | 0d |  | 968,888.89 |
| C-KF-IS-11 |  | Installation of MEP Services for K&FS in the internal Spaces at Ground Floor level | 25d | 2016-05-08 | 2016-06-05 | C-KF-IS-1, SD-CS-B1-632, PQ-CS-C-2052, C-MEP-E-16, C-MEP-AC-8, C-MEP-AC-28, C-MEP-FF-4 | 149d | 43d |  | 968,888.89 |
| C-KF-IS-111 |  | Installation of MEP Services for K&FS in the internal Spaces at First Floor | 25d | 2016-07-30 | 2016-08-27 | C-KF-IS-11, C-MEP-E-76, C-MEP-AC-88, C-MEP-AC-108, C-MEP-FF-44, C-MEP-PD-65, C-MEP-PD-55, C-MEP-BMS-65, C-MEP-Gas-2895 | 106d | 15d |  | 968,888.89 |
| C-KF-IS-121 |  | Installation of MEP Services for K&FS in the internal Spaces at 3rd Floor | 25d | 2016-09-18 | 2016-10-17 | C-KF-IS-111, C-MEP-E-003, C-MEP-AC-001, C-MEP-AC-002, C-MEP-FF-001, C-MEP-PD-001, C-MEP-PD-002, C-MEP-Gas-2915 | 91d | 15d |  | 968,888.89 |
| C-KF-IS-131 |  | Installation of MEP Services for K&FS in the internal Spaces at 33rd Floor | 25d | 2016-11-05 | 2016-12-03 | C-KF-IS-121, C-MEP-E-2056, C-MEP-AC-2728, C-MEP-AC-2748, C-MEP-FF-1364, C-MEP-PD-1705, C-MEP-PD-1715, C-MEP-BMS-1715, C-MEP-Gas-2935 | 76d | 15d |  | 968,888.89 |
| C-KF-IS-141 |  | Installation of MEP Services for K&FS in the internal Spaces at 34th Floor | 25d | 2016-12-22 | 2017-01-19 | C-KF-IS-131, C-MEP-E-2176, C-MEP-AC-2888, C-MEP-AC-2908, C-MEP-FF-1444, C-MEP-PD-1805, C-MEP-PD-1815, C-MEP-BMS-1815, C-MEP-Gas-2955 | 61d | 0d |  | 968,888.89 |
| C-KF-IS-151 |  | Installation of MEP Services for K&FS in the internal Spaces at 50th Floor | 25d | 2017-01-21 | 2017-02-19 | C-KF-IS-141, C-MEP-E-3076, C-MEP-AC-4088, C-MEP-AC-4108, C-MEP-FF-2044, C-MEP-PD-2555, C-MEP-PD-2565, C-MEP-BMS-2565, C-MEP-Gas-2995 | 61d | 0d |  | 968,888.89 |
| C-KF-IS-161 |  | Installation of MEP Services for K&FS in the internal Spaces at 51st Floor | 25d | 2017-02-20 | 2017-03-20 | C-KF-IS-151, C-MEP-E-3136, C-MEP-AC-4188, C-MEP-AC-4168, C-MEP-FF-2084, C-MEP-PD-2615, C-MEP-PD-2605, C-MEP-BMS-2615, C-MEP-Gas-975 | 61d | 46d |  | 968,888.89 |

Notes:
- C-KF-IS-001: Expenses: 1 968889
- C-KF-IS-1: Expenses: 1 968889
- C-KF-IS-11: Expenses: 1 968889
- C-KF-IS-111: Expenses: 1 968889
- C-KF-IS-121: Expenses: 1 968889
- C-KF-IS-131: Expenses: 1 968889
- C-KF-IS-141: Expenses: 1 968889
- C-KF-IS-151: Expenses: 1 968889
- C-KF-IS-161: Expenses: 1 968889

| ID | WBS | Activity | Duration | Start | Finish | Predecessors | Total float | Free float | Calendar | Cost |
| --- | --- | --- | --- | --- | --- | --- | --- | --- | --- | --- |
|  | 1 | **Kitchens & Food Service** |  | 2014-11-29 | 2017-06-11 |  |  |  |  |  |
|  | 6 | **Design** |  | 2015-01-20 | 2015-07-14 |  |  |  |  |  |
| A9750 |  | Design Preparation & Submittal | 120d | 2015-01-20 | 2015-06-09 | A9780 | 185d | 0d |  |  |
| A9760 |  | Design Review & Approval | 90d | 2015-04-01 | 2015-07-14 | A9750 SS+30d, A9750 FF+30d | 185d | 0d |  |  |
|  | 7 | **Pre-qualification** |  | 2014-11-29 | 2015-09-06 |  |  |  |  |  |
| A9770 |  | Pre-qualification submittal of the Designer | 30d | 2014-11-29 | 2015-01-03 | A9830 | 115d | 0d |  |  |
| A9780 |  | Pre-qualification Approval of the Designer | 30d | 2014-12-15 | 2015-01-19 | A9770 SS+14d, A9770 FF+14d | 185d | 0d |  |  |
| A9790 |  | Pre-qualification submittal of Sub-Contractor | 30d | 2015-07-18 | 2015-08-20 | A9760 | 185d | 0d |  |  |
| A9800 |  | Pre-qualification Approval of Sub-Contractor | 30d | 2015-08-03 | 2015-09-06 | A9790 SS+14d, A9790 FF+14d | 185d | 0d |  |  |
|  | 8 | **Method of Statement** |  | 2015-09-07 | 2015-10-31 |  |  |  |  |  |
| PQ-CS-C-2022 |  | Preparation & Submittal of the MS for the installation of Kitchen & Food Services | 30d | 2015-09-07 | 2015-10-14 | A9800 | 284d | 0d |  |  |
| PQ-CS-C-2032 |  | Review & Approval of the MS for the installation of Kitchen & Food Services | 30d | 2015-09-27 | 2015-10-31 | PQ-CS-C-2022 SS+14d, PQ-CS-C-2022 FF+14d | 284d | 269d |  |  |
|  | 9 | **Shop drawings** |  | 2015-09-07 | 2015-10-31 |  |  |  |  |  |
| SD-CS-B1-602 |  | Preparation & Submittals of SD of Kitchen & Food Services | 30d | 2015-09-07 | 2015-10-14 | A9800 | 284d | 0d |  |  |
| SD-CS-B1-612 |  | Review & Approval of SD of Kitchen & Food Services | 30d | 2015-09-27 | 2015-10-31 | SD-CS-B1-602 SS+14d, SD-CS-B1-602 FF+14d | 284d | 269d |  |  |
|  | 10 | **Procurement** |  | 2015-09-07 | 2016-03-02 |  |  |  |  |  |
| P-AF-B-3213 |  | Material Submittals of Kitchen & Food Services | 14d | 2015-09-07 | 2015-09-26 | A9800 | 185d | 0d |  |  |
| P-AF-B-3223 |  | Material review & Approval of Kitchen & Food Services | 14d | 2015-09-27 | 2015-10-12 | P-AF-B-3213 SS+14d, P-AF-B-3213 FF+14d | 185d | 0d |  |  |
| P-AF-B-3233 |  | P.O of Kitcchen & Food Services | 2d | 2015-10-13 | 2015-10-14 | P-AF-B-3223 | 185d | 0d |  |  |
| P-AF-B-3243 |  | Lead Time & Delivery of Kitchen & Food Services | 140d | 2015-10-15 | 2016-03-02 | P-AF-B-3233 | 219d | 200d | * JWM - 7 Days per week with no holidays |  |
|  | 11 | **Construction** |  | 2016-09-19 | 2017-06-11 |  |  |  |  |  |
| C-KFS-21 |  | Installation of K&FS Equipments at basement 2 | 25d | 2016-09-19 | 2016-10-18 | P-AF-B-3243, SD-CS-B1-612, PQ-CS-C-2032, C-F-FF-2174, C-F-WF-2174, C-F-WF-2184, C-F-DW-2174, C-F-DW-2164, C-KF-IS-001, C-AF-KF-216 | 15d | 0d |  | 3,633,333.33 |
| C-KFS-31 |  | Installation of K&FS Equipments at basement 1 | 25d | 2016-10-19 | 2016-11-16 | C-KFS-21, PQ-CS-C-2032, C-F-FF-2214, C-F-WF-2214, C-F-WF-2224, C-F-DW-2204, C-F-DW-2214, C-KF-IS-1, C-AF-KF-226 | 15d | 0d |  | 3,633,333.33 |
| C-KFS-41 |  | Installation of K&FS Equipments at Ground FLoor | 25d | 2016-11-17 | 2016-12-15 | C-KFS-31, PQ-CS-C-2032, C-F-WF-24, C-F-WF-14, C-F-DW-14, C-F-DW-4, C-F-FF-14, A10400, C-KF-IS-11, C-AF-KF-236 | 15d | 0d |  | 3,633,333.33 |
| C-KFS-51 |  | Installation of K&FS Equipments at First Floor | 25d | 2016-12-17 | 2017-01-15 | C-KFS-41, C-F-DW-44, C-F-DW-54, C-F-WF-64, C-F-WF-54, C-F-FF-54, A10410, C-KF-IS-111, C-AF-KF-246 | 15d | 0d |  | 3,633,333.33 |
| C-KFS-61 |  | Installation of K&FS Equipments at 3rd Floor | 25d | 2017-01-16 | 2017-02-13 | C-KFS-51, C-F-FF-003, C-F-WF-003, C-F-WF-004, C-F-DW-004, C-F-DW-003, A10420, C-KF-IS-121, C-AF-KF-256 | 15d | 0d |  | 3,633,333.33 |
| C-KFS-71 |  | Installation of K&FS Equipments at 33rd Floor | 25d | 2017-02-14 | 2017-03-15 | C-KFS-61, C-F-FF-1374, C-F-WF-1374, C-F-WF-1384, C-F-DW-1374, C-F-DW-1364, A10430, C-KF-IS-131, C-AF-KF-266 | 15d | 0d |  | 3,633,333.33 |
| C-KFS-81 |  | Installation of K&FS Equipments at 34th Floor | 25d | 2017-03-16 | 2017-04-13 | C-KFS-71, C-F-FF-1454, C-F-WF-1454, C-F-WF-1464, C-F-DW-1454, C-F-DW-1444, A10440, C-KF-IS-141, C-AF-KF-276 | 15d | 0d |  | 3,633,333.33 |
| C-KFS-91 |  | Installation of K&FS Equipments at 50th Floor | 25d | 2017-04-15 | 2017-05-13 | C-KFS-81, C-F-DW-2044, C-F-DW-2054, C-F-WF-2054, C-F-WF-2064, C-F-FF-2054, A10450, C-KF-IS-151, C-AF-KF-286 | 15d | 0d |  | 3,633,333.33 |
| C-KFS-101 |  | Installation of K&FS Equipments at 51st Floor | 25d | 2017-05-14 | 2017-06-11 | C-KFS-91, C-F-DW-2094, C-F-DW-2084, C-F-WF-2104, C-F-WF-2094, C-F-FF-2094, C-F-CF-3667, A10460, C-KF-IS-161, C-AF-KF-296 | 15d |  |  | 3,633,333.33 |

Notes:
- C-KFS-21: Expenses: 1 3633333
- C-KFS-31: Expenses: 1 3633333
- C-KFS-41: Expenses: 1 3633333
- C-KFS-51: Expenses: 1 3633333
- C-KFS-61: Expenses: 1 3633333
- C-KFS-71: Expenses: 1 3633333
- C-KFS-81: Expenses: 1 3633333
- C-KFS-91: Expenses: 1 3633333
- C-KFS-101: Expenses: 1 3633333

| ID | WBS | Activity | Duration | Start | Finish | Predecessors | Total float | Free float | Calendar | Cost |
| --- | --- | --- | --- | --- | --- | --- | --- | --- | --- | --- |
|  | 3 | **Cleaning & Waste Disposal** |  | 2015-01-04 | 2017-04-25 |  |  |  |  |  |
|  | 6 | **Design** |  | 2015-02-25 | 2015-08-20 |  |  |  |  |  |
| A10540 |  | Design Preparation & Submittal | 120d | 2015-02-25 | 2015-07-14 | A10570 | 300d | 0d |  |  |
| A10550 |  | Design Review & Approval | 90d | 2015-05-06 | 2015-08-20 | A10540 SS+30d, A10540 FF+30d | 300d | 0d |  |  |
|  | 7 | **Pre-qualification** |  | 2015-01-04 | 2015-10-14 |  |  |  |  |  |
| A10560 |  | Pre-qualification submittal of the Designer | 30d | 2015-01-04 | 2015-02-07 | A9770 | 115d | 0d |  |  |
| A10570 |  | Pre-qualification Approval of the Designer | 30d | 2015-01-20 | 2015-02-24 | A10560 SS+14d, A10560 FF+14d | 300d | 0d |  |  |
| A10580 |  | Pre-qualification submittal of Sub-Contractor | 30d | 2015-08-22 | 2015-09-28 | A10550 | 300d | 0d |  |  |
| A10590 |  | Pre-qualification Approval of Sub-Contractor | 30d | 2015-09-07 | 2015-10-14 | A10580 SS+14d, A10580 FF+14d | 300d | 0d |  |  |
|  | 8 | **Method of Statement** |  | 2015-10-15 | 2015-12-05 |  |  |  |  |  |
| PQ-CS-C-2182 |  | Preparation & Submittal of the MS for the installation of Laundry furniture, fittings & Equipments | 30d | 2015-10-15 | 2015-11-18 | A10590 | 404d | 0d |  |  |
| PQ-CS-C-2192 |  | Review & Approval of the MS for the installationof Laundry furniture, fittings & Equipments | 30d | 2015-11-01 | 2015-12-05 | PQ-CS-C-2182 SS+14d, PQ-CS-C-2182 FF+14d | 404d | 374d |  |  |
|  | 9 | **Shop drawings** |  | 2015-10-15 | 2015-11-26 |  |  |  |  |  |
| SD-CS-B1-762 |  | Preparation & Submittals of SD of of Laundry furniture, fittings & Equipments | 30d | 2015-10-15 | 2015-11-18 | A10590 | 411d | 0d |  |  |
| SD-CS-B1-772 |  | Review & Approval of SD of of Laundry furniture, fittings & Equipments | 30d | 2015-10-24 | 2015-11-26 | SD-CS-B1-762 SS+7d, SD-CS-B1-762 FF+7d | 411d | 381d |  |  |
|  | 10 | **Procurement** |  | 2015-10-15 | 2016-04-06 |  |  |  |  |  |
| P-AF-B-3693 |  | Material Submittals of Laundry furniture, fittings & Equipments | 14d | 2015-10-15 | 2015-10-31 | A10590 | 300d | 0d |  |  |
| P-AF-B-3703 |  | Material review & Approval of Laundry furniture, fittings & Equipments | 14d | 2015-11-01 | 2015-11-16 | P-AF-B-3693 SS+14d, P-AF-B-3693 FF+14d | 300d | 0d |  |  |
| P-AF-B-3713 |  | P.O of of Laundry furniture, fittings & Equipments | 2d | 2015-11-17 | 2015-11-18 | P-AF-B-3703 | 300d | 0d |  |  |
| P-AF-B-3723 |  | Lead Time & Delivery of Laundry furniture, fittings & Equipments | 140d | 2015-11-19 | 2016-04-06 | P-AF-B-3713 | 361d | 326d | * JWM - 7 Days per week with no holidays |  |
|  | 11 | **Construction** |  | 2017-02-27 | 2017-04-25 |  |  |  |  |  |
| C-CWD-171 |  | Installation of of Laundry fittings & Equipments | 25d | 2017-02-27 | 2017-03-27 | P-AF-B-3723, SD-CS-B1-772, PQ-CS-C-2192, C-LH-L-665 FF | 30d | 0d |  | 1,395,200 |
| C-CWD-181 |  | Installation of of Laundry furniture | 25d | 2017-03-28 | 2017-04-25 | C-CWD-171, PQ-CS-C-2192 | 30d |  |  | 348,800 |
|  | 5 | **Health, Sports & Leisure** |  | 2015-02-08 | 2017-03-22 |  |  |  |  |  |
|  | 6 | **Design** |  | 2015-05-30 | 2015-11-25 |  |  |  |  |  |
| A9930 |  | Design Preparation & Submittal | 120d | 2015-05-30 | 2015-10-21 | A9960 | 148d | 0d |  |  |
| A9940 |  | Design Review & Approval | 90d | 2015-08-10 | 2015-11-25 | A9930 SS+30d, A9930 FF+30d | 148d | 0d |  |  |

Notes:
- C-CWD-171: Expenses: 1 1395200
- C-CWD-181: Expenses: 1 348800

| ID | WBS | Activity | Duration | Start | Finish | Predecessors | Total float | Free float | Calendar | Cost |
| --- | --- | --- | --- | --- | --- | --- | --- | --- | --- | --- |
|  | 7 | **Pre-qualification** |  | 2015-02-08 | 2016-01-17 |  |  |  |  |  |
| A9950 |  | Pre-qualification submittal of the Designer | 80d | 2015-02-08 | 2015-05-12 | A10560 | 115d | 0d |  |  |
| A9960 |  | Pre-qualification Approval of the Designer | 30d | 2015-04-25 | 2015-05-28 | A9950 SS+14d, A9950 FF+14d | 148d | 0d |  |  |
| A9970 |  | Pre-qualification submittal of Sub-Contractor | 30d | 2015-11-26 | 2015-12-31 | A9940 | 148d | 0d |  |  |
| A9980 |  | Pre-qualification Approval of Sub-Contractor | 30d | 2015-12-13 | 2016-01-17 | A9970 SS+14d, A9970 FF+14d | 148d | 0d |  |  |
|  | 8 | **Method of Statement** |  | 2016-01-18 | 2016-03-09 |  |  |  |  |  |
| PQ-CS-C-2082 |  | Preparation & Submittal of Health, Sport & Leisure Equipments Installation MS | 30d | 2016-01-18 | 2016-02-22 | A9980 | 249d | 0d |  |  |
| PQ-CS-C-2092 |  | Review & Approval of Health, Sport & Leisure Equipments Installation MS | 30d | 2016-02-03 | 2016-03-09 | PQ-CS-C-2082 SS+14d, PQ-CS-C-2082 FF+14d | 249d | 149d |  |  |
|  | 9 | **Shop drawings** |  | 2016-01-18 | 2016-03-09 |  |  |  |  |  |
| SD-CS-B1-662 |  | Preparation & Submittals of SD of Health, Sport & Leisure Equipments | 30d | 2016-01-18 | 2016-02-22 | A9980 | 249d | 0d |  |  |
| SD-CS-B1-672 |  | Review & Approval of SD of Health, Sport & Leisure Equipments | 30d | 2016-02-03 | 2016-03-09 | SD-CS-B1-662 SS+14d, SD-CS-B1-662 FF+14d | 249d | 149d |  |  |
|  | 10 | **Procurement** |  | 2016-01-18 | 2016-07-11 |  |  |  |  |  |
| P-AF-B-3333 |  | Material Submittals of Health, Sport & Leisure Equipments | 14d | 2016-01-18 | 2016-02-02 | A9980 | 148d | 0d |  |  |
| P-AF-B-3343 |  | Material review & Approval of Health, Sport & Leisure Equipments | 14d | 2016-02-03 | 2016-02-20 | P-AF-B-3333 SS+14d, P-AF-B-3333 FF+14d | 148d | 0d |  |  |
| P-AF-B-3353 |  | P.O of Health, Sport & Leisure Equipments | 2d | 2016-02-21 | 2016-02-22 | P-AF-B-3343 | 148d | 0d |  |  |
| P-AF-B-3363 |  | Lead Time & Delivery of Health, Sport & Leisure Equipments | 140d | 2016-02-23 | 2016-07-11 | P-AF-B-3353 | 176d | 54d | * JWM - 7 Days per week with no holidays |  |
|  | 11 | **Construction** |  | 2016-09-04 | 2017-03-22 |  |  |  |  |  |
|  | 1 | **SPA & Swimming Pool related** |  | 2016-09-04 | 2017-03-04 |  |  |  |  |  |
| C-HSL-SSP-001 |  | Installation of SPA MEP equipments (including swimming pool) | 25d | 2016-09-04 | 2016-10-06 | P-AF-B-3363, PQ-CS-C-2092, SD-CS-B1-672, C-F-P-93, C-F-P-103, C-SP-MRP-211 SS | 100d | 0d |  | 1,144,500 |
| C-HSL-SSP-002 |  | Connection & Testing of the MEP equipments for the SPA & Swimming Pool | 25d | 2016-10-08 | 2016-11-05 | C-HSL-SSP-001 | 100d | 0d |  | 286,125 |
| C-HSL-SSP-003 |  | Installation of SPA Pods (Special insulated walls for the Jaccuzi & Sauna) | 25d | 2016-11-06 | 2016-12-04 | P-AF-B-3363, SD-CS-B1-672, PQ-CS-C-2092, C-HSL-SSP-002 | 100d | 0d |  | 858,375 |
| C-HSL-SSP-004 |  | Installation of SPA finishes | 25d | 2016-12-05 | 2017-01-03 | C-F-WF-144 FF, C-HSL-SSP-003, C-SP-MRP-241 FF | 100d | 0d |  | 1,430,625 |
| C-HSL-SSP-005 |  | Installation of SPA loose funiture | 25d | 2017-01-04 | 2017-02-01 | C-HSL-SSP-004 | 100d | 0d |  | 1,716,750 |
| C-HSL-SSP-006 |  | Testing & Snagging of the SPA | 25d | 2017-02-02 | 2017-03-04 | C-HSL-SSP-005 | 100d |  |  | 286,125 |

Notes:
- C-HSL-SSP-001: Expenses: 1 1144500
- C-HSL-SSP-002: Expenses: 1 286125
- C-HSL-SSP-003: Expenses: 1 858375
- C-HSL-SSP-004: Expenses: 1 1430625
- C-HSL-SSP-005: Expenses: 1 1716750
- C-HSL-SSP-006: Expenses: 1 286125

| ID | WBS | Activity | Duration | Start | Finish | Predecessors | Total float | Free float | Cost |
| --- | --- | --- | --- | --- | --- | --- | --- | --- | --- |
|  | 2 | **Swimming Pools at Level 33** |  | 2016-10-08 | 2017-03-04 |  |  |  |  |
| C-HSL-SP-001 |  | Installation of swimming pools MEP equipments at level 33 | 25d | 2016-10-08 | 2016-11-05 | C-HSL-SSP-001, C-SP-MRP-061 SS, P-AF-B-3363, SD-CS-B1-672, PQ-CS-C-2092 | 100d | 0d | 735,750 |
| C-HSL-SP-002 |  | Connection & Testing of the MEP equipments | 25d | 2016-11-06 | 2016-12-04 | C-HSL-SP-001 | 100d | 0d | 122,625 |
| C-HSL-SP-003 |  | Installation of swimming pools finishes | 25d | 2016-12-05 | 2017-01-03 | C-HSL-SP-002 | 100d | 0d | 735,750 |
| C-HSL-SP-004 |  | Installation of swimming pools loose funiture | 25d | 2017-01-04 | 2017-02-01 | C-HSL-SP-003 | 100d | 0d | 735,750 |
| C-HSL-SP-005 |  | Testing & Snagging of the swimming pool | 25d | 2017-02-02 | 2017-03-04 | C-HSL-SP-004 | 100d |  | 122,625 |
|  | 3 | **Gymnasium** |  | 2016-10-12 | 2017-03-08 |  |  |  |  |
| C-HSL-G-001 |  | Installation of Gymnasium Finishes at level 32 | 25d | 2016-10-12 | 2016-11-09 | C-HSL-SSP-001 SS, C-F-WF-1304, C-F-WF-1294, C-F-DW-1284, C-F-DW-1304, P-AF-B-3363, SD-CS-B1-672, PQ-CS-C-2092 | 71d | 0d | 981,000 |
| C-HSL-G-002 |  | Instllation of Gymnasium Equipments | 25d | 2016-11-10 | 2016-12-08 | C-HSL-G-001 | 71d | 0d | 2,943,000 |
| C-HSL-G-003 |  | Connection of Gymnasium Finishes | 25d | 2016-12-10 | 2017-01-08 | C-HSL-G-002 | 71d | 0d | 245,250 |
| C-HSL-G-004 |  | Installation of Gymnasium loose funiture | 25d | 2017-01-09 | 2017-02-06 | C-HSL-G-003 | 71d | 0d | 490,500 |
| C-HSL-G-005 |  | Testing & Snagging of the Gymnasium | 25d | 2017-02-07 | 2017-03-08 | C-HSL-G-004 | 71d |  | 245,250 |
|  | 4 | **Night Club** |  | 2016-10-26 | 2017-03-22 |  |  |  |  |
| C-HSL-NC-001 |  | Installation of Night Club Finishes at level 34 | 25d | 2016-10-26 | 2016-11-23 | C-HSL-G-001 SS, C-F-WF-1464, C-F-DW-1464, C-F-DW-1444, P-AF-B-3363, SD-CS-B1-672, PQ-CS-C-2092 | 59d | 0d | 654,000 |
| C-HSL-NC-002 |  | Instllation of Night Club Equipments | 25d | 2016-11-24 | 2016-12-24 | C-HSL-NC-001 | 59d | 0d | 654,000 |
| C-HSL-NC-003 |  | Connection of Night Club Finishes | 25d | 2016-12-25 | 2017-01-22 | C-HSL-NC-002 | 59d | 0d | 163,500 |
| C-HSL-NC-004 |  | Installation of Nigt Club loose funiture | 25d | 2017-01-23 | 2017-02-21 | C-HSL-NC-003 | 59d | 0d | 1,635,000 |
| C-HSL-NC-005 |  | Testing & Snagging of the Night Club | 25d | 2017-02-22 | 2017-03-22 | C-HSL-NC-004 | 59d |  | 163,500 |
|  | 11 | **Audio Visual** |  | 2014-10-25 | 2016-08-25 |  |  |  |  |
|  | 6 | **Design** |  | 2014-11-26 | 2015-03-12 |  |  |  |  |
| A10660 |  | Design Preparation & Submittal | 60d | 2014-11-26 | 2015-02-04 | A10690 | 78d | 0d |  |
| A10670 |  | Design Review & Approval | 30d | 2015-02-05 | 2015-03-12 | A10660 SS+30d, A10660 FF+30d | 78d | 0d |  |
|  | 7 | **Pre-qualification** |  | 2014-10-25 | 2015-04-14 |  |  |  |  |
| A10680 |  | Pre-qualification submittal of the Designer | 14d | 2014-10-25 | 2014-11-09 | A9680 | 78d | 0d |  |
| A10690 |  | Pre-qualification Approval of the Designer | 14d | 2014-11-10 | 2014-11-25 | A10680 SS+14d, A10680 FF+14d | 78d | 0d |  |
| A10700 |  | Pre-qualification submittal of Sub-Contractor | 14d | 2015-03-14 | 2015-03-29 | A10670 | 78d | 0d |  |
| A10710 |  | Pre-qualification Approval of Sub-Contractor | 14d | 2015-03-30 | 2015-04-14 | A10700 SS+14d, A10700 FF+14d | 78d | 0d |  |

Notes:
- C-HSL-SP-001: Expenses: 1 735750
- C-HSL-SP-002: Expenses: 1 122625
- C-HSL-SP-003: Expenses: 1 735750
- C-HSL-SP-004: Expenses: 1 735750
- C-HSL-SP-005: Expenses: 1 122625
- C-HSL-G-001: Expenses: 1 981000
- C-HSL-G-002: Expenses: 1 2943000
- C-HSL-G-003: Expenses: 1 245250
- C-HSL-G-004: Expenses: 1 490500
- C-HSL-G-005: Expenses: 1 245250
- C-HSL-NC-001: Expenses: 1 654000
- C-HSL-NC-002: Expenses: 1 654000
- C-HSL-NC-003: Expenses: 1 163500
- C-HSL-NC-004: Expenses: 1 1635000
- C-HSL-NC-005: Expenses: 1 163500

| ID | WBS | Activity | Duration | Start | Finish | Predecessors | Total float | Free float | Calendar | Cost | AREA |
| --- | --- | --- | --- | --- | --- | --- | --- | --- | --- | --- | --- |
|  | 8 | **Method of Statement** |  | 2015-04-15 | 2015-06-04 |  |  |  |  |  |  |
| PQ-CS-C-2222 |  | Preparation & Submittal of the MS for the installation of Audio Visual System | 30d | 2015-04-15 | 2015-05-19 | A10710 | 130d | 0d |  |  |  |
| PQ-CS-C-2232 |  | Review & Approval of the MS for the installationof Audio Visual System | 30d | 2015-05-02 | 2015-06-04 | PQ-CS-C-2222 SS+14d, PQ-CS-C-2222 FF+14d | 130d | 0d |  |  |  |
|  | 9 | **Shop drawings** |  | 2015-04-15 | 2015-06-04 |  |  |  |  |  |  |
| SD-CS-B1-802 |  | Preparation & Submittals of SD of Audio Visual System | 30d | 2015-04-15 | 2015-05-19 | A10710 | 130d | 0d |  |  |  |
| SD-CS-B1-812 |  | Review & Approval of SD of Audio Visual System | 30d | 2015-05-02 | 2015-06-04 | SD-CS-B1-802 SS+14d, SD-CS-B1-802 FF+14d | 130d | 0d |  |  |  |
|  | 10 | **Procurement** |  | 2015-04-15 | 2015-09-06 |  |  |  |  |  |  |
| P-AF-B-3773 |  | Material Submittals of of Audio Visual System | 14d | 2015-04-15 | 2015-04-30 | A10710 | 78d | 0d |  |  |  |
| P-AF-B-3783 |  | Material review & Approval of of Audio Visual System | 14d | 2015-05-02 | 2015-05-17 | P-AF-B-3773 SS+14d, P-AF-B-3773 FF+14d | 78d | 0d |  |  |  |
| P-AF-B-3793 |  | P.O of of Audio Visual System | 2d | 2015-05-18 | 2015-05-19 | P-AF-B-3783 | 78d | 0d |  |  |  |
| P-AF-B-3803 |  | Lead Time & Delivery of of Audio Visual System | 110d | 2015-05-20 | 2015-09-06 | P-AF-B-3793 | 93d | 0d | * JWM - 7 Days per week with no holidays |  |  |
|  | 11 | **Construction** |  | 2015-06-06 | 2016-08-25 |  |  |  |  |  |  |
|  | 1 | **Ball Room - First FLoor** |  | 2015-06-06 | 2016-01-05 |  |  |  |  |  |  |
| C-P-AV-BR-001 |  | Installation of AV first fix (Conduits, Boxes within block work , Gypsum Boards & Raised FLooring | 20d | 2015-06-06 | 2015-06-28 | C-ELV-MSPA-55 SS, C-ELV-MSPA-55 FF, SD-CS-B1-812, PQ-CS-C-2232 | 159d | 48d |  | 436,000 | GEN |
| C-P-AV-BR-002 |  | Installation of Cable Trays & Truncking | 25d | 2015-06-06 | 2015-07-04 | C-ELV-MSPA-95 SS, C-ELV-MSPA-95 FF, SD-CS-B1-812, PQ-CS-C-2232 | 154d | 53d |  | 436,000 |  |
| C-P-AV-BR-003 |  | Installation of AV second fix (Cabling & Wirring etc..) | 25d | 2015-09-07 | 2015-10-08 | C-P-AV-BR-001, C-P-AV-BR-002, C-ELV-MSPA-65 SS, C-ELV-MSPA-65 FF, P-AF-B-3803 | 101d | 0d |  | 654,000 | GEN |
| C-P-AV-BR-004 |  | Installtion & Connection of speakers, Amplifier & Controller | 25d | 2015-10-10 | 2015-11-07 | C-P-AV-BR-003, C-ELV-MSPA-75 SS, C-ELV-MSPA-75 FF, P-AF-B-3803 | 101d | 0d |  | 1,308,000 |  |
| C-P-AV-BR-005 |  | Installation & Connection of Media hub, panels & processor | 25d | 2015-11-08 | 2015-12-07 | C-P-AV-BR-004, C-P-AV-BR-003, SD-CS-B1-812, PQ-CS-C-2232 | 173d | 0d | *APB - 6 D week + Qatar Holiday | 1,308,000 |  |
| C-P-AV-BR-006 |  | Testing of AV System | 25d | 2015-12-08 | 2016-01-05 | C-P-AV-BR-005 | 173d | 0d | *APB - 6 D week + Qatar Holiday | 218,000 |  |
|  | 2 | **Closing Room and Meeting room - Level 1 Mezzanine** |  | 2015-06-06 | 2016-03-03 |  |  |  |  |  |  |
| C-P-AV-MR-001 |  | Installation of AV first fix (Conduits, Boxes within block work , Gypsum Boards & Raised FLooring | 20d | 2015-06-06 | 2015-06-28 | C-ELV-MSPA-105 SS, C-ELV-MSPA-105 FF, SD-CS-B1-812, PQ-CS-C-2232 | 135d | 58d |  | 436,000 | GEN |
| C-P-AV-MR-002 |  | Installation of Cable Trays & Truncking | 25d | 2015-06-06 | 2015-07-04 | C-ELV-MSPA-145 SS, C-ELV-MSPA-145 FF, SD-CS-B1-812, PQ-CS-C-2232 | 130d | 53d |  | 436,000 |  |
| C-P-AV-MR-003 |  | Installation of AV second fix (Cabling & Wirring etc..) | 25d | 2015-09-07 | 2015-10-08 | C-P-AV-MR-001, C-P-AV-MR-002, C-ELV-MSPA-115 SS, C-ELV-MSPA-115 FF, P-AF-B-3803 | 77d | 0d |  | 654,000 | GEN |
| C-P-AV-MR-004 |  | Installtion & Connection of speakers, Amplifier & Controller | 25d | 2015-10-10 | 2015-11-07 | C-P-AV-MR-003, C-ELV-MSPA-125 SS, C-ELV-MSPA-125 FF, P-AF-B-3803 | 77d | 0d |  | 1,308,000 |  |
| C-P-AV-MR-005 |  | Installation & Connection of Media hub, panels & processor | 25d | 2016-01-06 | 2016-02-03 | C-P-AV-MR-004, C-P-AV-MR-003, C-ELV-MSPA-135 SS, C-ELV-MSPA-135 FF, C-P-AV-BR-006 | 173d | 0d | *APB - 6 D week + Qatar Holiday | 1,308,000 |  |
| C-P-AV-MR-006 |  | Testing of AV System | 25d | 2016-02-04 | 2016-03-03 | C-P-AV-MR-005 | 173d | 0d | *APB - 6 D week + Qatar Holiday | 218,000 |  |

Notes:
- C-P-AV-BR-001: Expenses: 1 436000
- C-P-AV-BR-002: Expenses: 1 436000
- C-P-AV-BR-003: Expenses: 1 654000
- C-P-AV-BR-004: Expenses: 1 1308000
- C-P-AV-BR-005: Expenses: 1 1308000
- C-P-AV-BR-006: Expenses: 1 218000
- C-P-AV-MR-001: Expenses: 1 436000
- C-P-AV-MR-002: Expenses: 1 436000
- C-P-AV-MR-003: Expenses: 1 654000
- C-P-AV-MR-004: Expenses: 1 1308000
- C-P-AV-MR-005: Expenses: 1 1308000
- C-P-AV-MR-006: Expenses: 1 218000

| ID | WBS | Activity | Duration | Start | Finish | Predecessors | Total float | Free float | Calendar | Cost | AREA |
| --- | --- | --- | --- | --- | --- | --- | --- | --- | --- | --- | --- |
|  | 3 | **Meeting Rooms, Board Rooms & Conference Rooms at 2nd floor** |  | 2015-06-18 | 2016-05-01 |  |  |  |  |  |  |
| C-P-AV-CR-002 |  | Installation of Cable Trays & Truncking | 25d | 2015-06-18 | 2015-07-19 | C-ELV-MSPA-245 SS, C-ELV-MSPA-245 FF, PQ-CS-C-2232, SD-CS-B1-812 | 127d | 3d |  | 436,000 |  |
| C-P-AV-CR-001 |  | Installation of AV first fix (Conduits, Boxes within block work , Gypsum Boards & Raised FLooring | 20d | 2015-06-28 | 2015-07-22 | C-ELV-MSPA-205 SS, C-ELV-MSPA-205 FF, SD-CS-B1-812, PQ-CS-C-2232 | 124d | 0d |  | 436,000 | GEN |
| C-P-AV-CR-003 |  | Installation of AV second fix (Cabling & Wirring etc..) | 25d | 2015-07-23 | 2015-08-20 | C-P-AV-CR-001, C-P-AV-CR-002, C-ELV-MSPA-215 SS, C-ELV-MSPA-215 FF | 124d | 14d |  | 654,000 | GEN |
| C-P-AV-CR-004 |  | Installtion & Connection of speakers, Amplifier & Controller | 25d | 2015-09-07 | 2015-10-08 | C-P-AV-CR-003, C-ELV-MSPA-225 SS, C-ELV-MSPA-225 FF, P-AF-B-3803 | 110d | 6d |  | 1,308,000 |  |
| C-P-AV-CR-005 |  | Installation & Connection of Media hub, panels & processor | 25d | 2016-03-05 | 2016-04-02 | C-P-AV-CR-004, C-P-AV-CR-003, C-ELV-MSPA-235 SS, C-ELV-MSPA-235 FF, P-AF-B-3803, C-P-AV-MR-006 | 173d | 0d | *APB - 6 D week + Qatar Holiday | 1,308,000 |  |
| C-P-AV-CR-006 |  | Testing of AV System | 25d | 2016-04-03 | 2016-05-01 | C-P-AV-CR-005 | 173d | 0d | *APB - 6 D week + Qatar Holiday | 218,000 |  |
|  | 4 | **SPA & Pool at 4th Floor** |  | 2015-07-01 | 2016-06-28 |  |  |  |  |  |  |
| C-P-AV-SPA-001 |  | Installation of Cable Trays & Truncking | 25d | 2015-07-01 | 2015-08-01 | C-ELV-MSPA-195 SS, C-ELV-MSPA-195 FF, PQ-CS-C-2232, SD-CS-B1-812 | 122d | 32d |  | 436,000 |  |
| C-P-AV-SPA-002 |  | Installation of AV first fix (Conduits, Boxes within block work , Gypsum Boards & Raised FLooring | 20d | 2015-08-16 | 2015-09-07 | C-ELV-MSPA-155 SS, C-ELV-MSPA-155 FF, SD-CS-B1-812, PQ-CS-C-2232 | 90d | 0d |  | 436,000 | GEN |
| C-P-AV-SPA-003 |  | Installation of AV second fix (Cabling & Wirring etc..) | 25d | 2015-09-08 | 2015-10-10 | C-P-AV-SPA-002, C-P-AV-SPA-001, C-ELV-MSPA-165 SS, C-ELV-MSPA-165 FF | 90d | 0d |  | 654,000 | GEN |
| C-P-AV-SPA-004 |  | Installtion & Connection of speakers, Amplifier & Controller | 25d | 2015-10-11 | 2015-11-08 | C-P-AV-SPA-003, C-ELV-MSPA-175 SS, C-ELV-MSPA-175 FF, P-AF-B-3803 | 90d | 0d |  | 1,308,000 |  |
| C-P-AV-SPA-005 |  | Installation & Connection of Media hub, panels & processor | 25d | 2016-05-02 | 2016-05-30 | C-P-AV-SPA-004, C-P-AV-SPA-003, C-ELV-MSPA-185 SS, C-ELV-MSPA-185 FF, P-AF-B-3803, C-P-AV-CR-006 | 173d | 0d | *APB - 6 D week + Qatar Holiday | 1,308,000 |  |
| C-P-AV-SPA-006 |  | Testing of AV System | 25d | 2016-05-31 | 2016-06-28 | C-P-AV-SPA-005 | 173d | 0d | *APB - 6 D week + Qatar Holiday | 218,000 |  |
|  | 5 | **Night Club at 34th floor** |  | 2016-01-12 | 2016-08-25 |  |  |  |  |  |  |
| C-P-AV-NC-002 |  | Installation of AV first fix (Conduits, Boxes within block work , Gypsum Boards & Raised FLooring | 20d | 2016-01-12 | 2016-02-03 | C-ELV-MSPA-1805 SS, C-ELV-MSPA-1805 FF, SD-CS-B1-812, PQ-CS-C-2232 | 76d | 16d |  | 436,000 | GEN |
| C-P-AV-NC-001 |  | Installation of Cable Trays & Truncking | 25d | 2016-01-30 | 2016-02-28 | C-ELV-MSPA-1845 SS, C-ELV-MSPA-1845 FF, SD-CS-B1-812, PQ-CS-C-2232 | 56d | 0d |  | 436,000 |  |
| C-P-AV-NC-003 |  | Installation of AV second fix (Cabling & Wirring etc..) | 25d | 2016-02-29 | 2016-03-28 | C-P-AV-NC-002, C-P-AV-NC-001, C-ELV-MSPA-1815 SS, C-ELV-MSPA-1815 FF | 56d | 0d |  | 654,000 | GEN |
| C-P-AV-NC-004 |  | Installtion & Connection of speakers, Amplifier & Controller | 25d | 2016-03-29 | 2016-04-26 | C-P-AV-NC-003, C-ELV-MSPA-1825 SS, C-ELV-MSPA-1825 FF, P-AF-B-3803 | 56d | 1d |  | 1,308,000 |  |
| C-P-AV-NC-005 |  | Installation & Connection of Media hub, panels & processor | 25d | 2016-06-29 | 2016-07-27 | C-P-AV-NC-004, C-P-AV-NC-003, C-ELV-MSPA-1835 SS, C-ELV-MSPA-1835 FF, C-P-AV-SPA-006 | 173d | 0d | *APB - 6 D week + Qatar Holiday | 1,308,000 |  |
| C-P-AV-NC-006 |  | Testing of AV System | 25d | 2016-07-28 | 2016-08-25 | C-P-AV-NC-005 | 173d | 155d | *APB - 6 D week + Qatar Holiday | 218,000 |  |
|  | 6 | **Signage & Graphics** |  | 2014-10-25 | 2017-04-18 |  |  |  |  |  |  |
|  | 6 | **Design** |  | 2014-12-15 | 2015-03-31 |  |  |  |  |  |  |
| A9990 |  | Design Preparation & Submittal | 60d | 2014-12-15 | 2015-02-24 | A10020 | 133d | 0d |  |  |  |
| A10000 |  | Design Review & Approval | 30d | 2015-02-25 | 2015-03-31 | A9990 SS+30d, A9990 FF+30d | 133d | 0d |  |  |  |

Notes:
- C-P-AV-CR-002: Expenses: 1 436000
- C-P-AV-CR-001: Expenses: 1 436000
- C-P-AV-CR-003: Expenses: 1 654000
- C-P-AV-CR-004: Expenses: 1 1308000
- C-P-AV-CR-005: Expenses: 1 1308000
- C-P-AV-CR-006: Expenses: 1 218000
- C-P-AV-SPA-001: Expenses: 1 436000
- C-P-AV-SPA-002: Expenses: 1 436000
- C-P-AV-SPA-003: Expenses: 1 654000
- C-P-AV-SPA-004: Expenses: 1 1308000
- C-P-AV-SPA-005: Expenses: 1 1308000
- C-P-AV-SPA-006: Expenses: 1 218000
- C-P-AV-NC-002: Expenses: 1 436000
- C-P-AV-NC-001: Expenses: 1 436000
- C-P-AV-NC-003: Expenses: 1 654000
- C-P-AV-NC-004: Expenses: 1 1308000
- C-P-AV-NC-005: Expenses: 1 1308000
- C-P-AV-NC-006: Expenses: 1 218000

| ID | WBS | Activity | Duration | Start | Finish | Predecessors | Total float | Free float | Calendar | Cost |
| --- | --- | --- | --- | --- | --- | --- | --- | --- | --- | --- |
|  | 7 | **Pre-qualification** |  | 2014-10-25 | 2015-05-03 |  |  |  |  |  |
| A10010 |  | Pre-qualification submittal of the Designer | 30d | 2014-10-25 | 2014-11-27 | A9680 | 133d | 0d |  |  |
| A10020 |  | Pre-qualification Approval of the Designer | 30d | 2014-11-10 | 2014-12-14 | A10010 SS+14d, A10010 FF+14d | 133d | 0d |  |  |
| A10030 |  | Pre-qualification submittal of Sub-Contractor | 14d | 2015-04-01 | 2015-04-16 | A10000 | 133d | 0d |  |  |
| A10040 |  | Pre-qualification Approval of Sub-Contractor | 14d | 2015-04-18 | 2015-05-03 | A10030 SS+14d, A10030 FF+14d | 133d | 0d |  |  |
|  | 8 | **Method of Statement** |  | 2015-05-04 | 2015-06-23 |  |  |  |  |  |
| PQ-CS-C-2102 |  | Preparation & Submittal of Signage & Graphics Installation MS | 30d | 2015-05-04 | 2015-06-07 | A10040 | 133d | 0d |  |  |
| PQ-CS-C-2112 |  | Review & Approval of Signage & Graphics Installation MS | 30d | 2015-05-20 | 2015-06-23 | PQ-CS-C-2102 SS+14d, PQ-CS-C-2102 FF+14d | 133d | 0d |  |  |
|  | 9 | **Shop drawings** |  | 2015-05-04 | 2015-06-23 |  |  |  |  |  |
| SD-CS-B1-682 |  | Preparation & Submittals of SD of Signage & Graphics | 30d | 2015-05-04 | 2015-06-07 | A10040 | 133d | 0d |  |  |
| SD-CS-B1-692 |  | Review & Approval of SD of Signage & Graphics | 30d | 2015-05-20 | 2015-06-23 | SD-CS-B1-682 SS+14d, SD-CS-B1-682 FF+14d | 133d | 0d |  |  |
|  | 10 | **Procurement** |  | 2015-05-04 | 2015-12-04 |  |  |  |  |  |
| P-AF-B-3373 |  | Material Submittals of Signage & Graphics | 14d | 2015-05-04 | 2015-05-19 | A10040 | 347d | 0d |  |  |
| P-AF-B-3383 |  | Material review & Approval of Signage & Graphics | 14d | 2015-05-20 | 2015-06-04 | P-AF-B-3373 SS+14d, P-AF-B-3373 FF+14d | 347d | 0d |  |  |
| P-AF-B-3393 |  | P.O of Signage & Graphics | 2d | 2015-06-06 | 2015-06-07 | P-AF-B-3383 | 347d | 0d |  |  |
| P-AF-B-3403 |  | Lead Time & Delivery of Signage & Graphics | 180d | 2015-06-08 | 2015-12-04 | P-AF-B-3393 | 416d | 373d | * JWM - 7 Days per week with no holidays |  |
|  | 2 | **Installation of the Brackets of the Signage & Graphics within the ceiling / Walls** |  | 2015-06-24 | 2016-05-09 |  |  |  |  |  |
| C-P-SG-B-001 |  | Installation of brackets of graphics & Signage at Ground Floor | 2d | 2015-06-24 | 2015-06-25 | C-F-CF-67, C-F-P-13, PQ-CS-C-2112, SD-CS-B1-692 | 133d | 0d |  | 22,708.33 |
| C-P-SG-B-002 |  | Installation of brackets of graphics & Signage at Ground Mezzanine Floor | 2d | 2015-06-27 | 2015-06-28 | C-P-SG-B-001, C-F-P-193, C-F-CF-487 | 156d | 0d |  | 22,708.33 |
| C-P-SG-B-082 |  | Installation of brackets of graphics & Signage at Level 1 | 2d | 2015-06-29 | 2015-06-30 | C-P-SG-B-002, C-F-CF-77, C-F-P-43 | 179d | 0d |  | 22,708.33 |
| C-P-SG-B-092 |  | Installation of brackets of graphics & Signage at Level 1 Mezzanine | 2d | 2015-07-01 | 2015-07-02 | C-P-SG-B-082, C-F-P-73, C-F-CF-147 | 181d | 0d |  | 22,708.33 |
| C-P-SG-B-0402 |  | Installation of brackets of graphics & Signage at Level 2 | 2d | 2015-07-04 | 2015-07-05 | C-P-SG-B-092, C-F-CF-287, C-F-P-133 | 187d | 0d |  | 22,708.33 |
| C-P-SG-B-012 |  | Installation of brackets of graphics & Signage at Level 3 | 2d | 2015-07-06 | 2015-07-07 | C-P-SG-B-0402, C-F-P-002, C-F-CF-001 | 189d | 0d |  | 22,708.33 |
| C-P-SG-B-022 |  | Installation of brackets of graphics & Signage at Level 4 | 2d | 2015-07-08 | 2015-07-09 | C-P-SG-B-012, C-F-CF-217, C-F-P-103 | 189d | 0d |  | 22,708.33 |
| C-P-SG-B-032 |  | Installation of brackets of graphics & Signage at Level 5 | 2d | 2015-07-11 | 2015-07-12 | C-P-SG-B-022, C-F-CF-357, C-F-P-163 | 212d | 10d |  | 22,708.33 |
| C-P-SG-B-042 |  | Installation of brackets of graphics & Signage at Level 6 | 2d | 2015-07-27 | 2015-07-28 | C-P-SG-B-032, C-F-CF-567 FF | 202d | 15d |  | 22,708.33 |
| C-P-SG-B-052 |  | Installation of brackets of graphics & Signage at Level 7 | 2d | 2015-08-16 | 2015-08-17 | C-P-SG-B-042, C-F-P-433, C-F-CF-987 | 187d | 13d |  | 22,708.33 |
| C-P-SG-B-062 |  | Installation of brackets of graphics & Signage at Level 8 | 2d | 2015-09-02 | 2015-09-03 | C-P-SG-B-052, C-F-P-283, C-F-CF-637 | 180d | 13d |  | 22,708.33 |
| C-P-SG-B-072 |  | Installation of brackets of graphics & Signage at Level 9 | 2d | 2015-09-23 | 2015-09-24 | C-P-SG-B-062, C-F-CF-707, C-F-P-313 | 173d | 13d |  | 22,708.33 |
| C-P-SG-B-182 |  | Installation of brackets of graphics & Signage at Level 10 | 2d | 2015-10-11 | 2015-10-12 | C-P-SG-B-072, C-F-P-373, C-F-CF-847 | 160d | 13d |  | 22,708.33 |
| C-P-SG-B-192 |  | Installation of brackets of graphics & Signage at Level 11 | 2d | 2015-10-28 | 2015-10-29 | C-P-SG-B-182, C-F-P-223, C-F-CF-497 | 147d | 13d |  | 22,708.33 |
| C-P-SG-B-102 |  | Installation of brackets of graphics & Signage at Level 12 | 2d | 2015-11-15 | 2015-11-16 | C-P-SG-B-192, C-F-CF-777, C-F-P-343 | 134d | 13d |  | 22,708.33 |
| C-P-SG-B-112 |  | Installation of brackets of graphics & Signage at Level 13 | 2d | 2015-12-02 | 2015-12-03 | C-P-SG-B-102, C-F-CF-917, C-F-P-403 | 121d | 8d |  | 22,708.33 |
| C-P-SG-B-122 |  | Installation of brackets of graphics & Signage at Level 14 | 2d | 2015-12-21 | 2015-12-22 | C-P-SG-B-112, C-F-P-493, C-F-CF-1127 | 110d | 0d |  | 22,708.33 |
| C-P-SG-B-132 |  | Installation of brackets of graphics & Signage at Level 15 | 2d | 2016-01-07 | 2016-01-09 | C-P-SG-B-122, C-F-P-673, C-F-CF-1547 | 97d | 0d |  | 22,708.33 |
| C-P-SG-B-142 |  | Installation of brackets of graphics & Signage at Level 16 | 2d | 2016-01-10 | 2016-01-11 | C-P-SG-B-132, C-F-P-553, C-F-CF-1267 | 97d | 0d |  | 22,708.33 |
| C-P-SG-B-152 |  | Installation of brackets of graphics & Signage at Level 17 | 2d | 2016-01-12 | 2016-01-13 | C-P-SG-B-142, C-F-CF-1197, C-F-P-523 | 97d | 0d |  | 22,708.33 |
| C-P-SG-B-162 |  | Installation of brackets of graphics & Signage at Level 18 | 2d | 2016-01-14 | 2016-01-16 | C-P-SG-B-152, C-F-P-613, C-F-CF-1407 | 97d | 0d |  | 22,708.33 |
| C-P-SG-B-172 |  | Installation of brackets of graphics & Signage at Level 19 | 2d | 2016-01-17 | 2016-01-18 | C-P-SG-B-162, C-F-P-463, C-F-CF-1057 | 97d | 0d |  | 22,708.33 |
| C-P-SG-B-282 |  | Installation of brackets of graphics & Signage at Level 20 | 2d | 2016-01-19 | 2016-01-20 | C-P-SG-B-172, C-F-P-583, C-F-CF-1337 | 97d | 0d |  | 22,708.33 |
| C-P-SG-B-292 |  | Installation of brackets of graphics & Signage at Level 21 | 2d | 2016-01-21 | 2016-01-23 | C-P-SG-B-282, C-F-CF-1477, C-F-P-643 | 97d | 0d |  | 22,708.33 |
| C-P-SG-B-202 |  | Installation of brackets of graphics & Signage at Level 22 | 2d | 2016-01-24 | 2016-01-25 | C-P-SG-B-292, C-F-P-733, C-F-CF-1687 | 97d | 0d |  | 22,708.33 |
| C-P-SG-B-212 |  | Installation of brackets of graphics & Signage at Level 23 | 2d | 2016-01-26 | 2016-01-27 | C-P-SG-B-202, C-F-CF-2107, C-F-P-913 | 97d | 0d |  | 22,708.33 |
| C-P-SG-B-222 |  | Installation of brackets of graphics & Signage at Level 24 | 2d | 2016-01-28 | 2016-01-30 | C-P-SG-B-212, C-F-CF-1757, C-F-P-763 | 97d | 0d |  | 22,708.33 |
| C-P-SG-B-232 |  | Installation of brackets of graphics & Signage at Level 25 | 2d | 2016-01-31 | 2016-02-01 | C-P-SG-B-222, C-F-P-793, C-F-CF-1827 | 97d | 0d |  | 22,708.33 |
| C-P-SG-B-242 |  | Installation of brackets of graphics & Signage at Level 26 | 2d | 2016-02-02 | 2016-02-03 | C-P-SG-B-232, C-F-P-853, C-F-CF-1967 | 97d | 0d |  | 22,708.33 |
| C-P-SG-B-252 |  | Installation of brackets of graphics & Signage at Level 27 | 2d | 2016-02-04 | 2016-02-06 | C-P-SG-B-242, C-F-CF-1617, C-F-P-703 | 97d | 0d |  | 22,708.33 |
| C-P-SG-B-262 |  | Installation of brackets of graphics & Signage at Level 28 | 2d | 2016-02-07 | 2016-02-08 | C-P-SG-B-252, C-F-P-823, C-F-CF-1897 | 97d | 0d |  | 22,708.33 |
| C-P-SG-B-272 |  | Installation of brackets of graphics & Signage at Level 29 | 2d | 2016-02-09 | 2016-02-11 | C-P-SG-B-262, C-F-P-883, C-F-CF-2037 | 97d | 0d |  | 22,708.33 |
| C-P-SG-B-382 |  | Installation of brackets of graphics & Signage at Level 30 | 2d | 2016-02-13 | 2016-02-14 | C-P-SG-B-272, C-F-CF-2317, C-F-P-1003 | 97d | 0d |  | 22,708.33 |
| C-P-SG-B-392 |  | Installation of brackets of graphics & Signage at Level 31 | 2d | 2016-02-15 | 2016-02-16 | C-P-SG-B-382, C-F-CF-2177, C-F-P-943 | 97d | 0d |  | 22,708.33 |
| C-P-SG-B-302 |  | Installation of brackets of graphics & Signage at Level 32 | 2d | 2016-02-17 | 2016-02-18 | C-P-SG-B-392, C-F-P-973, C-F-CF-2247 | 97d | 0d |  | 22,708.33 |
| C-P-SG-B-312 |  | Installation of brackets of graphics & Signage at Level 33 | 2d | 2016-02-20 | 2016-02-21 | C-P-SG-B-302, C-F-P-1033, C-F-CF-2387 | 97d | 0d |  | 22,708.33 |
| C-P-SG-B-322 |  | Installation of brackets of graphics & Signage at Level 34 | 2d | 2016-02-22 | 2016-02-23 | C-P-SG-B-312, C-F-CF-2527, C-F-P-1093 | 106d | 0d |  | 22,708.33 |
| C-P-SG-B-332 |  | Installation of brackets of graphics & Signage at Level 35 | 2d | 2016-02-24 | 2016-02-25 | C-P-SG-B-322, C-F-P-1273, C-F-CF-2947 | 106d | 0d |  | 22,708.33 |
| C-P-SG-B-342 |  | Installation of brackets of graphics & Signage at Level 36 | 2d | 2016-02-27 | 2016-02-28 | C-P-SG-B-332, C-F-CF-2597, C-F-P-1123 | 106d | 0d |  | 22,708.33 |
| C-P-SG-B-352 |  | Installation of brackets of graphics & Signage at Level 37 | 2d | 2016-02-29 | 2016-03-01 | C-P-SG-B-342, C-F-CF-2667, C-F-P-1153 | 112d | 0d |  | 22,708.33 |
| C-P-SG-B-362 |  | Installation of brackets of graphics & Signage at Level 38 | 2d | 2016-03-02 | 2016-03-03 | C-P-SG-B-352, C-F-CF-2807, C-F-P-1213 | 112d | 0d |  | 22,708.33 |
| C-P-SG-B-372 |  | Installation of brackets of graphics & Signage at Level 39 | 2d | 2016-03-05 | 2016-03-06 | C-P-SG-B-362, C-F-CF-2457, C-F-P-1063 | 112d | 0d |  | 22,708.33 |
| C-P-SG-B-482 |  | Installation of brackets of graphics & Signage at Level 40 | 2d | 2016-03-07 | 2016-03-08 | C-P-SG-B-372, C-F-CF-2737, C-F-P-1183 | 112d | 0d |  | 22,708.33 |
| C-P-SG-B-492 |  | Installation of brackets of graphics & Signage at Level 41 | 2d | 2016-03-09 | 2016-03-10 | C-P-SG-B-482, C-F-CF-2877, C-F-P-1243 | 112d | 6d |  | 22,708.33 |
| C-P-SG-B-402 |  | Installation of brackets of graphics & Signage at Level 42 | 2d | 2016-03-19 | 2016-03-20 | C-P-SG-B-492, C-F-P-1333, C-F-CF-3087 | 106d | 0d |  | 22,708.33 |
| C-P-SG-B-412 |  | Installation of brackets of graphics & Signage at Level 43 | 2d | 2016-03-21 | 2016-03-22 | C-P-SG-B-402, C-F-P-1513, C-F-CF-3507 | 106d | 0d |  | 22,708.33 |
| C-P-SG-B-422 |  | Installation of brackets of graphics & Signage at Level 44 | 2d | 2016-03-23 | 2016-03-24 | C-P-SG-B-412, C-F-CF-3227, C-F-P-1393 | 118d | 11d |  | 22,708.33 |
| C-P-SG-B-426 |  | Installation of brackets of graphics & Signage at Level 45 | 2d | 2016-04-07 | 2016-04-09 | C-P-SG-B-422, C-F-P-1363, C-F-CF-3157 | 107d | 0d |  | 22,708.33 |
| C-P-SG-B-432 |  | Installation of brackets of graphics & Signage at Level 46 | 2d | 2016-04-10 | 2016-04-11 | C-P-SG-B-426, C-F-P-1453, C-F-CF-3367 | 107d | 1d |  | 22,708.33 |
| C-P-SG-B-442 |  | Installation of brackets of graphics & Signage at Level 47 | 2d | 2016-04-13 | 2016-04-14 | C-P-SG-B-432, C-F-P-1303, C-F-CF-3017 | 106d | 0d |  | 22,708.33 |
| C-P-SG-B-452 |  | Installation of brackets of graphics & Signage at level 48 | 2d | 2016-04-16 | 2016-04-17 | C-P-SG-B-442, C-F-P-1423, C-F-CF-3297 | 110d | 9d |  | 22,708.33 |
| C-P-SG-B-462 |  | Installation of brackets of graphics & Signage at Level 49 | 2d | 2016-04-28 | 2016-04-30 | C-P-SG-B-452, C-F-P-1483, C-F-CF-3437 | 101d | 4d |  | 22,708.33 |
| C-P-SG-B-472 |  | Installation of brackets of graphics & Signage at Level 50 | 2d | 2016-05-05 | 2016-05-07 | C-P-SG-B-462, C-F-CF-3577, C-F-P-1543 | 97d | 0d |  | 22,708.33 |

Notes:
- C-P-SG-B-001: Expenses: 1 22708.3
- C-P-SG-B-002: Expenses: 1 22708.3
- C-P-SG-B-082: Expenses: 1 22708.3
- C-P-SG-B-092: Expenses: 1 22708.3
- C-P-SG-B-0402: Expenses: 1 22708.3
- C-P-SG-B-012: Expenses: 1 22708.3
- C-P-SG-B-022: Expenses: 1 22708.3
- C-P-SG-B-032: Expenses: 1 22708.3
- C-P-SG-B-042: Expenses: 1 22708.3
- C-P-SG-B-052: Expenses: 1 22708.3
- C-P-SG-B-062: Expenses: 1 22708.3
- C-P-SG-B-072: Expenses: 1 22708.3
- C-P-SG-B-182: Expenses: 1 22708.3
- C-P-SG-B-192: Expenses: 1 22708.3
- C-P-SG-B-102: Expenses: 1 22708.3
- C-P-SG-B-112: Expenses: 1 22708.3
- C-P-SG-B-122: Expenses: 1 22708.3
- C-P-SG-B-132: Expenses: 1 22708.3
- C-P-SG-B-142: Expenses: 1 22708.3
- C-P-SG-B-152: Expenses: 1 22708.3
- C-P-SG-B-162: Expenses: 1 22708.3
- C-P-SG-B-172: Expenses: 1 22708.3
- C-P-SG-B-282: Expenses: 1 22708.3
- C-P-SG-B-292: Expenses: 1 22708.3
- C-P-SG-B-202: Expenses: 1 22708.3
- C-P-SG-B-212: Expenses: 1 22708.3
- C-P-SG-B-222: Expenses: 1 22708.3
- C-P-SG-B-232: Expenses: 1 22708.3
- C-P-SG-B-242: Expenses: 1 22708.3
- C-P-SG-B-252: Expenses: 1 22708.3
- C-P-SG-B-262: Expenses: 1 22708.3
- C-P-SG-B-272: Expenses: 1 22708.3
- C-P-SG-B-382: Expenses: 1 22708.3
- C-P-SG-B-392: Expenses: 1 22708.3
- C-P-SG-B-302: Expenses: 1 22708.3
- C-P-SG-B-312: Expenses: 1 22708.3
- C-P-SG-B-322: Expenses: 1 22708.3
- C-P-SG-B-332: Expenses: 1 22708.3
- C-P-SG-B-342: Expenses: 1 22708.3
- C-P-SG-B-352: Expenses: 1 22708.3
- C-P-SG-B-362: Expenses: 1 22708.3
- C-P-SG-B-372: Expenses: 1 22708.3
- C-P-SG-B-482: Expenses: 1 22708.3
- C-P-SG-B-492: Expenses: 1 22708.3
- C-P-SG-B-402: Expenses: 1 22708.3
- C-P-SG-B-412: Expenses: 1 22708.3
- C-P-SG-B-422: Expenses: 1 22708.3
- C-P-SG-B-426: Expenses: 1 22708.3
- C-P-SG-B-432: Expenses: 1 22708.3
- C-P-SG-B-442: Expenses: 1 22708.3
- C-P-SG-B-452: Expenses: 1 22708.3
- C-P-SG-B-462: Expenses: 1 22708.3
- C-P-SG-B-472: Expenses: 1 22708.3

| ID | WBS | Activity | Duration | Start | Finish | Predecessors | Total float | Free float | Cost |
| --- | --- | --- | --- | --- | --- | --- | --- | --- | --- |
| C-P-SG-B-475 |  | Installation of brackets of graphics & Signage at Level 51 | 2d | 2016-05-08 | 2016-05-09 | C-P-SG-B-472, C-F-P-1573, C-F-CF-3647 | 97d | 36d | 22,708.33 |
|  | 11 | **Installation of Signage** |  | 2016-12-12 | 2017-04-18 |  |  |  |  |
| C-P-SG-S-002 |  | Installation of graphic & Signage at Ground Floor | 2d | 2016-12-12 | 2016-12-13 | P-AF-B-3403, PQ-CS-C-2112, SD-CS-B1-692, S-001 SS | 36d | 0d | 68,125 |
| C-P-SG-S-032 |  | Installation of graphic & Signage at Ground Mezzanine Floor | 2d | 2016-12-14 | 2016-12-15 | C-P-SG-S-002 | 36d | 0d | 68,125 |
| C-P-SG-S-042 |  | Installation of graphic & Signage at Level 1 | 2d | 2016-12-17 | 2016-12-19 | C-P-SG-S-032 | 36d | 0d | 68,125 |
| C-P-SG-S-052 |  | Installation of graphic & Signage at Level 1 Mezzanine | 2d | 2016-12-20 | 2016-12-21 | C-P-SG-S-042 | 36d | 0d | 68,125 |
| C-P-SG-S-062 |  | Installation of graphic & Signage at Level 2 | 2d | 2016-12-22 | 2016-12-24 | C-P-SG-S-052 | 36d | 0d | 68,125 |
| C-P-SG-S-072 |  | Installation of graphic & Signage at Level 3 | 2d | 2016-12-25 | 2016-12-26 | C-P-SG-S-062 | 36d | 0d | 68,125 |
| C-P-SG-S-082 |  | Installation of graphic & Signage at Level 4 | 2d | 2016-12-27 | 2016-12-28 | C-P-SG-S-072 | 36d | 0d | 68,125 |
| C-P-SG-S-092 |  | Installation of graphic & Signage at Level 5 | 2d | 2016-12-29 | 2016-12-31 | C-P-SG-S-082 | 36d | 0d | 68,125 |
| C-P-SG-S-102 |  | Installation of graphic & Signage at Level 6 | 2d | 2017-01-01 | 2017-01-02 | C-P-SG-S-092 | 36d | 0d | 68,125 |
| C-P-SG-S-112 |  | Installation of graphic & Signage at Level 7 | 2d | 2017-01-03 | 2017-01-04 | C-P-SG-S-102 | 36d | 0d | 68,125 |
| C-P-SG-S-122 |  | Installation of graphic & Signage at Level 8 | 2d | 2017-01-05 | 2017-01-07 | C-P-SG-S-112 | 36d | 0d | 68,125 |
| C-P-SG-S-132 |  | Installation of graphic & Signage at Level 9 | 2d | 2017-01-08 | 2017-01-09 | C-P-SG-S-122 | 36d | 0d | 68,125 |
| C-P-SG-S-142 |  | Installation of graphic & Signage at Level 10 | 2d | 2017-01-10 | 2017-01-11 | C-P-SG-S-132 | 36d | 0d | 68,125 |
| C-P-SG-S-152 |  | Installation of graphic & Signage at Level 11 | 2d | 2017-01-12 | 2017-01-14 | C-P-SG-S-142 | 36d | 0d | 68,125 |
| C-P-SG-S-162 |  | Installation of graphic & Signage at Level 12 | 2d | 2017-01-15 | 2017-01-16 | C-P-SG-S-152 | 36d | 0d | 68,125 |
| C-P-SG-S-172 |  | Installation of graphic & Signage at Level 13 | 2d | 2017-01-17 | 2017-01-18 | C-P-SG-S-162 | 36d | 0d | 68,125 |
| C-P-SG-S-182 |  | Installation of graphic & Signage at Level 14 | 2d | 2017-01-19 | 2017-01-21 | C-P-SG-S-172 | 36d | 0d | 68,125 |
| C-P-SG-S-192 |  | Installation of graphic & Signage at Level 15 | 2d | 2017-01-22 | 2017-01-23 | C-P-SG-S-182 | 36d | 0d | 68,125 |
| C-P-SG-S-202 |  | Installation of graphic & Signage at Level 16 | 2d | 2017-01-24 | 2017-01-25 | C-P-SG-S-192 | 36d | 0d | 68,125 |
| C-P-SG-S-212 |  | Installation of graphic & Signage at Level 17 | 2d | 2017-01-26 | 2017-01-28 | C-P-SG-S-202 | 36d | 0d | 68,125 |
| C-P-SG-S-222 |  | Installation of graphic & Signage at Level 18 | 2d | 2017-01-29 | 2017-01-30 | C-P-SG-S-212 | 36d | 0d | 68,125 |
| C-P-SG-S-232 |  | Installation of graphic & Signage at Level 19 | 2d | 2017-01-31 | 2017-02-01 | C-P-SG-S-222 | 36d | 0d | 68,125 |
| C-P-SG-S-242 |  | Installation of graphic & Signage at Level 20 | 2d | 2017-02-02 | 2017-02-04 | C-P-SG-S-232 | 36d | 0d | 68,125 |
| C-P-SG-S-252 |  | Installation of graphic & Signage at Level 21 | 2d | 2017-02-05 | 2017-02-06 | C-P-SG-S-242 | 36d | 0d | 68,125 |
| C-P-SG-S-262 |  | Installation of graphic & Signage at Level 22 | 2d | 2017-02-07 | 2017-02-08 | C-P-SG-S-252 | 36d | 0d | 68,125 |
| C-P-SG-S-272 |  | Installation of graphic & Signage at Level 23 | 2d | 2017-02-09 | 2017-02-11 | C-P-SG-S-262 | 36d | 0d | 68,125 |
| C-P-SG-S-282 |  | Installation of graphic & Signage at Level 24 | 2d | 2017-02-12 | 2017-02-13 | C-P-SG-S-272 | 36d | 0d | 68,125 |
| C-P-SG-S-292 |  | Installation of graphic & Signage at Level 25 | 2d | 2017-02-14 | 2017-02-15 | C-P-SG-S-282 | 36d | 0d | 68,125 |
| C-P-SG-S-302 |  | Installation of graphic & Signage at Level 26 | 2d | 2017-02-16 | 2017-02-19 | C-P-SG-S-292 | 36d | 0d | 68,125 |
| C-P-SG-S-312 |  | Installation of graphic & Signage at Level 27 | 2d | 2017-02-20 | 2017-02-21 | C-P-SG-S-302 | 36d | 0d | 68,125 |
| C-P-SG-S-322 |  | Installation of graphic & Signage at Level 28 | 2d | 2017-02-22 | 2017-02-23 | C-P-SG-S-312 | 36d | 0d | 68,125 |
| C-P-SG-S-332 |  | Installation of graphic & Signage at Level 29 | 2d | 2017-02-25 | 2017-02-26 | C-P-SG-S-322 | 36d | 0d | 68,125 |
| C-P-SG-S-342 |  | Installation of graphic & Signage at Level 30 | 2d | 2017-02-27 | 2017-02-28 | C-P-SG-S-332 | 36d | 0d | 68,125 |
| C-P-SG-S-352 |  | Installation of graphic & Signage at Level 31 | 2d | 2017-03-01 | 2017-03-02 | C-P-SG-S-342 | 36d | 0d | 68,125 |
| C-P-SG-S-362 |  | Installation of graphic & Signage at Level 32 | 2d | 2017-03-04 | 2017-03-05 | C-P-SG-S-352 | 36d | 0d | 68,125 |
| C-P-SG-S-372 |  | Installation of graphic & Signage at Level 33 | 2d | 2017-03-06 | 2017-03-07 | C-P-SG-S-362 | 36d | 0d | 68,125 |
| C-P-SG-S-382 |  | Installation of graphic & Signage at Level 34 | 2d | 2017-03-08 | 2017-03-09 | C-P-SG-S-372 | 36d | 0d | 68,125 |
| C-P-SG-S-392 |  | Installation of graphic & Signage at Level 35 | 2d | 2017-03-11 | 2017-03-12 | C-P-SG-S-382 | 36d | 0d | 68,125 |
| C-P-SG-S-402 |  | Installation of graphic & Signage at Level 36 | 2d | 2017-03-13 | 2017-03-14 | C-P-SG-S-392 | 36d | 0d | 68,125 |
| C-P-SG-S-412 |  | Installation of graphic & Signage at Level 37 | 2d | 2017-03-15 | 2017-03-16 | C-P-SG-S-402 | 36d | 0d | 68,125 |
| C-P-SG-S-422 |  | Installation of graphic & Signage at Level 38 | 2d | 2017-03-18 | 2017-03-19 | C-P-SG-S-412 | 36d | 0d | 68,125 |
| C-P-SG-S-432 |  | Installation of graphic & Signage at Level 39 | 2d | 2017-03-20 | 2017-03-21 | C-P-SG-S-422 | 36d | 0d | 68,125 |
| C-P-SG-S-442 |  | Installation of graphic & Signage at Level 40 | 2d | 2017-03-22 | 2017-03-23 | C-P-SG-S-432 | 36d | 0d | 68,125 |
| C-P-SG-S-452 |  | Installation of graphic & Signage at Level 41 | 2d | 2017-03-25 | 2017-03-26 | C-P-SG-S-442 | 36d | 0d | 68,125 |
| C-P-SG-S-462 |  | Installation of graphic & Signage at Level 42 | 2d | 2017-03-27 | 2017-03-28 | C-P-SG-S-452 | 36d | 0d | 68,125 |
| C-P-SG-S-472 |  | Installation of graphic & Signage at Level 43 | 2d | 2017-03-29 | 2017-03-30 | C-P-SG-S-462 | 36d | 0d | 68,125 |
| C-P-SG-S-475 |  | Installation of graphic & Signage at Level 44 | 2d | 2017-04-01 | 2017-04-02 | C-P-SG-S-472 | 36d | 0d | 68,125 |
| C-P-SG-S-482 |  | Installation of graphic & Signage at Level 45 | 2d | 2017-04-03 | 2017-04-04 | C-P-SG-S-475 | 36d | 0d | 68,125 |
| C-P-SG-S-492 |  | Installation of graphic & Signage at Level 46 | 2d | 2017-04-05 | 2017-04-06 | C-P-SG-S-482 | 36d | 0d | 68,125 |
| C-P-SG-S-502 |  | Installation of graphic & Signage at Level 47 | 2d | 2017-04-08 | 2017-04-09 | C-P-SG-S-492 | 36d | 0d | 68,125 |
| C-P-SG-S-512 |  | Installation of graphic & Signage at level 48 | 2d | 2017-04-10 | 2017-04-11 | C-P-SG-S-502 | 36d | 0d | 68,125 |
| C-P-SG-S-522 |  | Installation of graphic & Signage at Level 49 | 2d | 2017-04-12 | 2017-04-13 | C-P-SG-S-512 | 36d | 0d | 68,125 |
| C-P-SG-S-532 |  | Installation of graphic & Signage at Level 50 | 2d | 2017-04-15 | 2017-04-16 | C-P-SG-S-522 | 36d | 0d | 68,125 |
| C-P-SG-S-542 |  | Installation of graphic & Signage at Level 51 | 2d | 2017-04-17 | 2017-04-18 | C-P-SG-S-532 | 36d |  | 68,125 |

Notes:
- C-P-SG-B-475: Expenses: 1 22708.3
- C-P-SG-S-002: Expenses: 2 68125
- C-P-SG-S-032: Expenses: 2 68125
- C-P-SG-S-042: Expenses: 2 68125
- C-P-SG-S-052: Expenses: 2 68125
- C-P-SG-S-062: Expenses: 2 68125
- C-P-SG-S-072: Expenses: 2 68125
- C-P-SG-S-082: Expenses: 2 68125
- C-P-SG-S-092: Expenses: 2 68125
- C-P-SG-S-102: Expenses: 2 68125
- C-P-SG-S-112: Expenses: 2 68125
- C-P-SG-S-122: Expenses: 2 68125
- C-P-SG-S-132: Expenses: 2 68125
- C-P-SG-S-142: Expenses: 2 68125
- C-P-SG-S-152: Expenses: 2 68125
- C-P-SG-S-162: Expenses: 2 68125
- C-P-SG-S-172: Expenses: 2 68125
- C-P-SG-S-182: Expenses: 2 68125
- C-P-SG-S-192: Expenses: 2 68125
- C-P-SG-S-202: Expenses: 2 68125
- C-P-SG-S-212: Expenses: 2 68125
- C-P-SG-S-222: Expenses: 2 68125
- C-P-SG-S-232: Expenses: 2 68125
- C-P-SG-S-242: Expenses: 2 68125
- C-P-SG-S-252: Expenses: 2 68125
- C-P-SG-S-262: Expenses: 2 68125
- C-P-SG-S-272: Expenses: 2 68125
- C-P-SG-S-282: Expenses: 2 68125
- C-P-SG-S-292: Expenses: 2 68125
- C-P-SG-S-302: Expenses: 2 68125
- C-P-SG-S-312: Expenses: 2 68125
- C-P-SG-S-322: Expenses: 2 68125
- C-P-SG-S-332: Expenses: 2 68125
- C-P-SG-S-342: Expenses: 2 68125
- C-P-SG-S-352: Expenses: 2 68125
- C-P-SG-S-362: Expenses: 2 68125
- C-P-SG-S-372: Expenses: 2 68125
- C-P-SG-S-382: Expenses: 2 68125
- C-P-SG-S-392: Expenses: 2 68125
- C-P-SG-S-402: Expenses: 2 68125
- C-P-SG-S-412: Expenses: 2 68125
- C-P-SG-S-422: Expenses: 2 68125
- C-P-SG-S-432: Expenses: 2 68125
- C-P-SG-S-442: Expenses: 2 68125
- C-P-SG-S-452: Expenses: 2 68125
- C-P-SG-S-462: Expenses: 2 68125
- C-P-SG-S-472: Expenses: 2 68125
- C-P-SG-S-475: Expenses: 2 68125
- C-P-SG-S-482: Expenses: 2 68125
- C-P-SG-S-492: Expenses: 2 68125
- C-P-SG-S-502: Expenses: 2 68125
- C-P-SG-S-512: Expenses: 2 68125
- C-P-SG-S-522: Expenses: 2 68125
- C-P-SG-S-532: Expenses: 2 68125
- C-P-SG-S-542: Expenses: 2 68125

| ID | WBS | Activity | Duration | Start | Finish | Predecessors | Total float | Free float | Calendar | Cost |
| --- | --- | --- | --- | --- | --- | --- | --- | --- | --- | --- |
|  | 7 | **Specialist Systems** |  | 2015-05-13 | 2016-12-07 |  |  |  |  |  |
|  | 6 | **Design** |  | 2015-07-04 | 2015-09-27 |  |  |  |  |  |
| A10050 |  | Design Preparation & Submittal | 55d | 2015-07-04 | 2015-09-07 | A10080 | 168d | 0d |  |  |
| A10060 |  | Design Review & Approval | 55d | 2015-07-22 | 2015-09-27 | A10050 SS+14d, A10050 FF+14d | 168d | 0d |  |  |
|  | 7 | **Pre-qualification** |  | 2015-05-13 | 2015-11-17 |  |  |  |  |  |
| A10070 |  | Pre-qualification submittal of the Designer | 30d | 2015-05-13 | 2015-06-16 | A9950 | 115d | 0d |  |  |
| A10080 |  | Pre-qualification Approval of the Designer | 30d | 2015-05-30 | 2015-07-02 | A10070 SS+14d, A10070 FF+14d | 168d | 0d |  |  |
| A10090 |  | Pre-qualification submittal of Sub-Contractor | 30d | 2015-09-28 | 2015-11-01 | A10060 | 168d | 0d |  |  |
| A10100 |  | Pre-qualification Approval of Sub-Contractor | 30d | 2015-10-14 | 2015-11-17 | A10090 SS+14d, A10090 FF+14d | 168d | 0d |  |  |
|  | 8 | **Method of Statement** |  | 2015-11-18 | 2016-01-09 |  |  |  |  |  |
| PQ-CS-C-2122 |  | Preparation & Submittal of Specialist System | 30d | 2015-11-18 | 2015-12-23 | A10100 | 270d | 0d |  |  |
| PQ-CS-C-2132 |  | Review & Approval of Specialist System | 30d | 2015-12-05 | 2016-01-09 | PQ-CS-C-2122 SS+14d, PQ-CS-C-2122 FF+14d | 270d | 105d |  |  |
|  | 9 | **Shop drawings** |  | 2015-11-18 | 2016-01-09 |  |  |  |  |  |
| SD-CS-B1-702 |  | Preparation & Submittals of SD of Specialist System | 30d | 2015-11-18 | 2015-12-23 | A10100 | 270d | 0d |  |  |
| SD-CS-B1-712 |  | Review & Approval of SD of Specialist System | 30d | 2015-12-05 | 2016-01-09 | SD-CS-B1-702 SS+14d, SD-CS-B1-702 FF+14d | 270d | 105d |  |  |
|  | 10 | **Procurement** |  | 2015-11-18 | 2016-05-11 |  |  |  |  |  |
| P-AF-B-3413 |  | Material Submittals of Specialist System | 14d | 2015-11-18 | 2015-12-03 | A10100 | 168d | 0d |  |  |
| P-AF-B-3423 |  | Material review & Approval of Specialist System | 14d | 2015-12-05 | 2015-12-21 | P-AF-B-3413 SS+14d, P-AF-B-3413 FF+14d | 168d | 0d |  |  |
| P-AF-B-3433 |  | P.O of Specialist System | 2d | 2015-12-22 | 2015-12-23 | P-AF-B-3423 | 168d | 0d |  |  |
| P-AF-B-3443 |  | Lead Time & Delivery of Specialist System | 140d | 2015-12-24 | 2016-05-11 | P-AF-B-3433 | 201d | 0d | * JWM - 7 Days per week with no holidays |  |
|  | 11 | **Construction** |  | 2016-05-12 | 2016-12-07 |  |  |  |  |  |
| C-P-SS-001 |  | Installation & Testing of Specialist System | 180d | 2016-05-12 | 2016-12-07 | P-AF-B-3443, SD-CS-B1-712, PQ-CS-C-2132 | 172d |  | *APB - 6 D week + Qatar Holiday | 14,170,000 |
|  | 8 | **Two Way Radio Equipment** |  | 2015-05-13 | 2017-01-24 |  |  |  |  |  |
|  | 6 | **Design** |  | 2015-07-04 | 2015-10-21 |  |  |  |  |  |
| A10110 |  | Design Preparation & Submittal | 60d | 2015-07-04 | 2015-09-13 | A9950, A10140 | 115d | 0d |  |  |
| A10120 |  | Design Review & Approval | 60d | 2015-08-10 | 2015-10-21 | A10110 SS+30d, A10110 FF+30d | 115d | 0d |  |  |

Notes:
- C-P-SS-001: Expenses: 1 14170000

| ID | WBS | Activity | Duration | Start | Finish | Predecessors | Total float | Free float | Calendar | Cost |
| --- | --- | --- | --- | --- | --- | --- | --- | --- | --- | --- |
|  | 7 | **Pre-qualification** |  | 2015-05-13 | 2015-12-12 |  |  |  |  |  |
| A10130 |  | Pre-qualification submittal of the Designer | 30d | 2015-05-13 | 2015-06-16 | A10070 SS | 115d | 0d |  |  |
| A10140 |  | Pre-qualification Approval of the Designer | 30d | 2015-05-30 | 2015-07-02 | A10130 SS+14d, A10130 FF+14d | 115d | 0d |  |  |
| A10150 |  | Pre-qualification submittal of Sub-Contractor | 30d | 2015-10-22 | 2015-11-25 | A10120 | 115d | 0d |  |  |
| A10160 |  | Pre-qualification Approval of Sub-Contractor | 30d | 2015-11-08 | 2015-12-12 | A10150 SS+14d, A10150 FF+14d | 115d | 0d |  |  |
|  | 8 | **Method of Statement** |  | 2015-12-13 | 2016-02-02 |  |  |  |  |  |
| PQ-CS-C-2142 |  | Preparation & Submittal of Two Way Radio Equipments installation MS | 30d | 2015-12-13 | 2016-01-17 | A10160 | 214d | 0d |  |  |
| PQ-CS-C-2152 |  | Review & Approval of Two Way Radio Equipments installation MS | 30d | 2015-12-30 | 2016-02-02 | PQ-CS-C-2142 SS+14d, PQ-CS-C-2142 FF+14d | 214d | 105d |  |  |
|  | 9 | **Shop drawings** |  | 2015-12-13 | 2016-02-02 |  |  |  |  |  |
| SD-CS-B1-722 |  | Preparation & Submittals of SD of Two Way Radio Equipments | 30d | 2015-12-13 | 2016-01-17 | A10160 | 214d | 0d |  |  |
| SD-CS-B1-732 |  | Review & Approval of SD of Two Way Radio Equipments | 30d | 2015-12-30 | 2016-02-02 | SD-CS-B1-722 SS+14d, SD-CS-B1-722 FF+14d | 214d | 105d |  |  |
|  | 10 | **Procurement** |  | 2015-12-13 | 2016-06-05 |  |  |  |  |  |
| P-AF-B-3453 |  | Material Submittals of Two Way Radio Equipments | 14d | 2015-12-13 | 2015-12-29 | A10160 | 115d | 0d |  |  |
| P-AF-B-3463 |  | Material review & Approval of Two Way Radio Equipments | 14d | 2015-12-30 | 2016-01-14 | P-AF-B-3453 SS+14d, P-AF-B-3453 FF+14d | 115d | 0d |  |  |
| P-AF-B-3473 |  | P.O of Two Way Radio Equipments | 2d | 2016-01-16 | 2016-01-17 | P-AF-B-3463 | 115d | 0d |  |  |
| P-AF-B-3483 |  | Lead Time & Delivery of Two Way Radio Equipments | 140d | 2016-01-18 | 2016-06-05 | P-AF-B-3473 | 135d | 0d | * JWM - 7 Days per week with no holidays |  |
|  | 11 | **Construction** |  | 2016-06-06 | 2017-01-24 |  |  |  |  |  |
| C-P-TWR-001 |  | Installation & Testing of Two Way Radio Equipments | 200d | 2016-06-06 | 2017-01-24 | P-AF-B-3483, SD-CS-B1-732, PQ-CS-C-2152 | 116d |  | *APB - 6 D week + Qatar Holiday | 708,500 |
|  | 9 | **Operational Support** |  | 2015-06-17 | 2017-06-03 |  |  |  |  |  |
|  | 6 | **Design** |  | 2015-08-10 | 2016-02-04 |  |  |  |  |  |
| A10600 |  | Design Preparation & Submittal | 120d | 2015-08-10 | 2015-12-31 | A10630 | 204d | 0d |  |  |
| A10610 |  | Design Review & Approval | 90d | 2015-10-22 | 2016-02-04 | A10600 SS+30d, A10600 FF+30d | 204d | 0d |  |  |
|  | 7 | **Pre-qualification** |  | 2015-06-17 | 2016-03-28 |  |  |  |  |  |
| A10620 |  | Pre-qualification submittal of the Designer | 30d | 2015-06-17 | 2015-07-23 | A10130 | 204d | 0d |  |  |
| A10630 |  | Pre-qualification Approval of the Designer | 30d | 2015-07-04 | 2015-08-09 | A10620 SS+14d, A10620 FF+14d | 204d | 0d |  |  |
| A10640 |  | Pre-qualification submittal of Sub-Contractor | 30d | 2016-02-06 | 2016-03-12 | A10610 | 204d | 0d |  |  |
| A10650 |  | Pre-qualification Approval of Sub-Contractor | 30d | 2016-02-23 | 2016-03-28 | A10640 SS+14d, A10640 FF+14d | 204d | 0d |  |  |

Notes:
- C-P-TWR-001: Expenses: 1 708500

| ID | WBS | Activity | Duration | Start | Finish | Predecessors | Total float | Free float | Calendar | Cost |
| --- | --- | --- | --- | --- | --- | --- | --- | --- | --- | --- |
|  | 8 | **Method of Statement** |  | 2016-03-29 | 2016-05-18 |  |  |  |  |  |
| PQ-CS-C-2202 |  | Preparation & Submittal of the MS for the installation of Soft furnishing & Accessories etc.. | 30d | 2016-03-29 | 2016-05-02 | A10650 | 309d | 0d |  |  |
| PQ-CS-C-2212 |  | Review & Approval of the MS for the installation of Soft furnishing & Accessories etc.. | 30d | 2016-04-14 | 2016-05-18 | PQ-CS-C-2202 SS+14d, PQ-CS-C-2202 FF+14d | 309d | 287d |  |  |
|  | 9 | **Shop drawings** |  | 2016-03-29 | 2016-05-18 |  |  |  |  |  |
| SD-CS-B1-782 |  | Preparation & Submittals of Soft furnishing & Accessories etc.. | 30d | 2016-03-29 | 2016-05-02 | A10650 | 309d | 0d |  |  |
| SD-CS-B1-792 |  | Review & Approval of Soft furnishing & Accessories etc.. | 30d | 2016-04-14 | 2016-05-18 | SD-CS-B1-782 SS+14d, SD-CS-B1-782 FF+14d | 309d | 287d |  |  |
|  | 10 | **Procurement** |  | 2016-03-29 | 2016-09-19 |  |  |  |  |  |
| P-AF-B-3733 |  | Material Submittals of Soft furnishing & Accessories etc.. | 14d | 2016-03-29 | 2016-04-13 | A10650 | 204d | 0d |  |  |
| P-AF-B-3743 |  | Material review & Approval of Soft furnishing & Accessories etc.. | 14d | 2016-04-14 | 2016-04-30 | P-AF-B-3733 SS+14d, P-AF-B-3733 FF+14d | 204d | 0d |  |  |
| P-AF-B-3753 |  | P.O of Soft furnishing & Accessories etc.. | 2d | 2016-05-01 | 2016-05-02 | P-AF-B-3743 | 204d | 0d |  |  |
| P-AF-B-3763 |  | Lead Time & Delivery of Soft furnishing & Accessories etc.. | 140d | 2016-05-03 | 2016-09-19 | P-AF-B-3753 | 247d | 222d | * JWM - 7 Days per week with no holidays |  |
|  | 1 | **Installation of soft furnishing. bed & table linen accessories & equipments etc...** |  | 2017-04-30 | 2017-06-03 |  |  |  |  |  |
| C-P-OS-001 |  | Installation of Soft furnishing & Accessories etc.. at Ground Floor | 30d | 2017-04-30 | 2017-06-03 | P-AF-B-3763, SD-CS-B1-792, PQ-CS-C-2212, C-F-P-FU-3323 FF | 22d |  |  | 894,277.29 |
| C-P-OS-002 |  | Installation of Soft furnishing & Accessories etc.. at Ground Mezzanine Floor | 30d | 2017-04-30 | 2017-06-03 | C-F-P-FU-2752 FF | 22d |  |  | 111,035.57 |
| C-P-OS-0022 |  | Installation of Soft furnishing & Accessories etc.. at Level 1 | 30d | 2017-04-30 | 2017-06-03 | C-F-P-FU-2762 FF | 22d |  |  | 856,851.96 |
| C-P-OS-0032 |  | Installation of Soft furnishing & Accessories etc.. at Level 1 Mezzanine | 30d | 2017-04-30 | 2017-06-03 | C-F-P-FU-2772 FF | 22d |  |  | 465,013.78 |
| C-P-OS-0042 |  | Installation of Soft furnishing & Accessories etc.. at Level 2 | 30d | 2017-04-30 | 2017-06-03 | C-F-P-FU-2782 FF | 22d |  |  | 784,777.18 |
| C-P-OS-0052 |  | Installation of Soft furnishing & Accessories etc.. at Level 3 | 30d | 2017-04-30 | 2017-06-03 | C-F-P-FU-2792 FF | 22d |  |  | 761,640.54 |
| C-P-OS-0062 |  | Installation of Soft furnishing & Accessories etc.. at Level 4 | 30d | 2017-04-30 | 2017-06-03 | C-F-P-FU-2802 FF | 22d |  |  | 496,532.02 |
| C-P-OS-0072 |  | Installation of Soft furnishing & Accessories etc.. at Level 5 | 30d | 2017-04-30 | 2017-06-03 | C-F-P-FU-812 FF | 22d |  |  | 496,861.96 |
| C-P-OS-0082 |  | Installation of Soft furnishing & Accessories etc.. at Level 6 | 30d | 2017-04-30 | 2017-06-03 | C-F-P-FU-822 FF | 22d |  |  | 499,923.37 |
| C-P-OS-0092 |  | Installation of Soft furnishing & Accessories etc.. at Level 7 | 30d | 2017-04-30 | 2017-06-03 | C-F-P-FU-832 FF | 22d |  |  | 505,510.04 |
| C-P-OS-0102 |  | Installation of Soft furnishing & Accessories etc.. at Level 8 | 30d | 2017-04-30 | 2017-06-03 | C-F-P-FU-842 FF | 22d |  |  | 515,236.76 |
| C-P-OS-0112 |  | Installation of Soft furnishing & Accessories etc.. at Level 9 | 30d | 2017-04-30 | 2017-06-03 | C-F-P-FU-852 FF | 22d |  |  | 523,710.36 |
| C-P-OS-0122 |  | Installation of Soft furnishing & Accessories etc.. at Level 10 | 30d | 2017-04-30 | 2017-06-03 | C-F-P-FU-62 FF | 22d |  |  | 531,171.95 |
| C-P-OS-0132 |  | Installation of Soft furnishing & Accessories etc.. at Level 11 | 30d | 2017-04-30 | 2017-06-03 | C-F-P-FU-72 FF | 22d |  |  | 537,507.32 |
| C-P-OS-0142 |  | Installation of Soft furnishing & Accessories etc.. at Level 12 | 30d | 2017-04-30 | 2017-06-03 | C-F-P-FU-82 FF | 22d |  |  | 550,279.58 |
| C-P-OS-0152 |  | Installation of Soft furnishing & Accessories etc.. at Level 13 | 30d | 2017-04-30 | 2017-06-03 | C-F-P-FU-92 FF | 22d |  |  | 563,039.16 |
| C-P-OS-0162 |  | Installation of Soft furnishing & Accessories etc.. at Level 14 | 30d | 2017-04-30 | 2017-06-03 | C-F-P-FU-02 FF | 22d |  |  | 574,590.03 |
| C-P-OS-0172 |  | Installation of Soft furnishing & Accessories etc.. at Level 15 | 30d | 2017-04-30 | 2017-06-03 | C-F-P-FU-12 FF | 22d |  |  | 630,437.74 |
| C-P-OS-0182 |  | Installation of Soft furnishing & Accessories etc.. at Level 16 | 30d | 2017-04-30 | 2017-06-03 | C-F-P-FU-22 FF | 22d |  |  | 640,919.5 |
| C-P-OS-0202 |  | Installation of Soft furnishing & Accessories etc.. at Level 18 | 30d | 2017-04-30 | 2017-06-03 | C-F-P-FU-42 FF | 22d |  |  | 658,263.26 |
| C-P-OS-0212 |  | Installation of Soft furnishing & Accessories etc.. at Level 19 | 30d | 2017-04-30 | 2017-06-03 | C-F-P-FU-952 FF | 22d |  |  | 664,909.53 |
| C-P-OS-0222 |  | Installation of Soft furnishing & Accessories etc.. at Level 20 | 30d | 2017-04-30 | 2017-06-03 | C-F-P-FU-962 FF | 22d |  |  | 670,226.55 |
| C-P-OS-0232 |  | Installation of Soft furnishing & Accessories etc.. at Level 21 | 30d | 2017-04-30 | 2017-06-03 | C-F-P-FU-972 FF | 22d |  |  | 674,220.66 |
| C-P-OS-0242 |  | Installation of Soft furnishing & Accessories etc.. at Level 22 | 30d | 2017-04-30 | 2017-06-03 | C-F-P-FU-982 FF | 22d |  |  | 676,625.37 |
| C-P-OS-0252 |  | Installation of Soft furnishing & Accessories etc.. at Level 23 | 30d | 2017-04-30 | 2017-06-03 | C-F-P-FU-992 FF | 22d |  |  | 678,424.14 |
| C-P-OS-0262 |  | Installation of Soft furnishing & Accessories etc.. at Level 24 | 30d | 2017-04-30 | 2017-06-03 | C-F-P-FU-002 FF | 22d |  |  | 678,316.28 |
| C-P-OS-0272 |  | Installation of Soft furnishing & Accessories etc.. at Level 25 | 30d | 2017-04-30 | 2017-06-03 | C-F-P-FU-012 FF | 22d |  |  | 677,050.48 |
| C-P-OS-0282 |  | Installation of Soft furnishing & Accessories etc.. at Level 26 | 30d | 2017-04-30 | 2017-06-03 | C-F-P-FU-022 FF | 22d |  |  | 674,569.62 |
| C-P-OS-0292 |  | Installation of Soft furnishing & Accessories etc.. at Level 27 | 30d | 2017-04-30 | 2017-06-03 | C-F-P-FU-032 FF | 22d |  |  | 670,699.24 |
| C-P-OS-0302 |  | Installation of Soft furnishing & Accessories etc.. at Level 28 | 30d | 2017-04-30 | 2017-06-03 | C-F-P-FU-042 FF | 22d |  |  | 665,436.16 |
| C-P-OS-0312 |  | Installation of Soft furnishing & Accessories etc.. at Level 29 | 30d | 2017-04-30 | 2017-06-03 | C-F-P-FU-052 FF | 22d |  |  | 633,162.88 |
| C-P-OS-0322 |  | Installation of Soft furnishing & Accessories etc.. at Level 30 | 30d | 2017-04-30 | 2017-06-03 | C-F-P-FU-062 FF | 22d |  |  | 651,331.47 |
| C-P-OS-0332 |  | Installation of Soft furnishing & Accessories etc.. at Level 31 | 30d | 2017-04-30 | 2017-06-03 | C-F-P-FU-072 FF | 22d |  |  | 563,480.13 |
| C-P-OS-0342 |  | Installation of Soft furnishing & Accessories etc.. at Level 32 | 30d | 2017-04-30 | 2017-06-03 | C-F-P-FU-082 FF | 22d |  |  | 727,124.34 |
| C-P-OS-0352 |  | Installation of Soft furnishing & Accessories etc.. at Level 33 | 30d | 2017-04-30 | 2017-06-03 | C-F-P-FU-092 FF | 22d |  |  | 769,340.07 |
| C-P-OS-0362 |  | Installation of Soft furnishing & Accessories etc.. at Level 34 | 30d | 2017-04-30 | 2017-06-03 | C-F-P-FU-102 FF | 22d |  |  | 437,927.45 |
| C-P-OS-0382 |  | Installation of Soft furnishing & Accessories etc.. at Level 36 | 30d | 2017-04-30 | 2017-06-03 | C-F-P-FU-122 FF | 22d |  |  | 519,440.25 |
| C-P-OS-0392 |  | Installation of Soft furnishing & Accessories etc.. at Level 37 | 30d | 2017-04-30 | 2017-06-03 | C-F-P-FU-132 FF | 22d |  |  | 505,402.18 |
| C-P-OS-0402 |  | Installation of Soft furnishing & Accessories etc.. at Level 38 | 30d | 2017-04-30 | 2017-06-03 | C-F-P-FU-142 FF | 22d |  |  | 489,641.47 |
| C-P-OS-0412 |  | Installation of Soft furnishing & Accessories etc.. at Level 39 | 30d | 2017-04-30 | 2017-06-03 | C-F-P-FU-152 FF | 22d |  |  | 472,094.68 |
| C-P-OS-0422 |  | Installation of Soft furnishing & Accessories etc.. at Level 40 | 30d | 2017-04-30 | 2017-06-03 | C-F-P-FU-162 FF | 22d |  |  | 452,653.94 |
| C-P-OS-0432 |  | Installation of Soft furnishing & Accessories etc.. at Level 41 | 30d | 2017-04-30 | 2017-06-03 | C-F-P-FU-172 FF | 22d |  |  | 431,423.94 |
| C-P-OS-0442 |  | Installation of Soft furnishing & Accessories etc.. at Level 42 | 30d | 2017-04-30 | 2017-06-03 | C-F-P-FU-182 FF | 22d |  |  | 408,391.99 |
| C-P-OS-0452 |  | Installation of Soft furnishing & Accessories etc.. at Level 43 | 30d | 2017-04-30 | 2017-06-03 | C-F-P-FU-192 FF | 22d |  |  | 383,469.26 |
| C-P-OS-0462 |  | Installation of Soft furnishing & Accessories etc.. at Level 45 | 30d | 2017-04-30 | 2017-06-03 | C-F-P-FU-202 FF | 22d |  |  | 328,030.79 |
| C-P-OS-0472 |  | Installation of Soft furnishing & Accessories etc.. at Level 46 | 30d | 2017-04-30 | 2017-06-03 | C-F-P-FU-212 FF | 22d |  |  | 297,353.25 |
| C-P-OS-0512 |  | Installation of Soft furnishing & Accessories etc.. at Level 50 | 30d | 2017-04-30 | 2017-06-03 | C-F-P-FU-252 FF | 22d |  |  | 272,849.29 |
| C-P-OS-0522 |  | Installation of Soft furnishing & Accessories etc.. at Level 51 | 30d | 2017-04-30 | 2017-06-03 | C-F-P-FU-262 FF | 22d |  |  | 238,041.22 |
| C-P-OS-0532 |  | Installation of Soft furnishing & Accessories etc.. at Level 44 | 30d | 2017-04-30 | 2017-06-03 | C-F-P-FU-272 FF | 22d |  |  | 340,784.02 |

Notes:
- C-P-OS-001: Expenses: 1 894277
- C-P-OS-002: Expenses: 1 111036
- C-P-OS-0022: Expenses: 1 856852
- C-P-OS-0032: Expenses: 1 465014
- C-P-OS-0042: Expenses: 1 784777
- C-P-OS-0052: Expenses: 1 761641
- C-P-OS-0062: Expenses: 1 496532
- C-P-OS-0072: Expenses: 1 496862
- C-P-OS-0082: Expenses: 1 499923
- C-P-OS-0092: Expenses: 1 505510
- C-P-OS-0102: Expenses: 1 515237
- C-P-OS-0112: Expenses: 1 523710
- C-P-OS-0122: Expenses: 1 531172
- C-P-OS-0132: Expenses: 1 537507
- C-P-OS-0142: Expenses: 1 550280
- C-P-OS-0152: Expenses: 1 563039
- C-P-OS-0162: Expenses: 1 574590
- C-P-OS-0172: Expenses: 1 630438
- C-P-OS-0182: Expenses: 1 640920
- C-P-OS-0202: Expenses: 1 658263
- C-P-OS-0212: Expenses: 1 664910
- C-P-OS-0222: Expenses: 1 670227
- C-P-OS-0232: Expenses: 1 674221
- C-P-OS-0242: Expenses: 1 676625
- C-P-OS-0252: Expenses: 1 678424
- C-P-OS-0262: Expenses: 1 678316
- C-P-OS-0272: Expenses: 1 677050
- C-P-OS-0282: Expenses: 1 674570
- C-P-OS-0292: Expenses: 1 670699
- C-P-OS-0302: Expenses: 1 665436
- C-P-OS-0312: Expenses: 1 633163
- C-P-OS-0322: Expenses: 1 651331
- C-P-OS-0332: Expenses: 1 563480
- C-P-OS-0342: Expenses: 1 727124
- C-P-OS-0352: Expenses: 1 769340
- C-P-OS-0362: Expenses: 1 437927
- C-P-OS-0382: Expenses: 1 519440
- C-P-OS-0392: Expenses: 1 505402
- C-P-OS-0402: Expenses: 1 489641
- C-P-OS-0412: Expenses: 1 472095
- C-P-OS-0422: Expenses: 1 452654
- C-P-OS-0432: Expenses: 1 431424
- C-P-OS-0442: Expenses: 1 408392
- C-P-OS-0452: Expenses: 1 383469
- C-P-OS-0462: Expenses: 1 328031
- C-P-OS-0472: Expenses: 1 297353
- C-P-OS-0512: Expenses: 1 272849
- C-P-OS-0522: Expenses: 1 238041
- C-P-OS-0532: Expenses: 1 340784

| ID | WBS | Activity | Duration | Start | Finish | Predecessors | Total float | Free float | Calendar | Resources | Cost |
| --- | --- | --- | --- | --- | --- | --- | --- | --- | --- | --- | --- |
|  | 55 | **Testing & Commissioning** |  | 2016-12-24 | 2017-06-21 |  |  |  |  |  |  |
| TC-BMS-001 |  | Testing & Commissioning of BMS System | 90d | 2016-12-24 | 2017-04-08 | A4610 FF+28d, A4540 FF+28d, A4750 FF+20d, A4400 FF+20d, A4680 FF+20d, A4820 FF+20d, A4960 FF+20d, A5030 FF+20d, G-MM-003, A11240 FF+70d, A11310 FF | 15d | 0d |  |  | 40,000 |
| TC-E-001 |  | Testing & Commissioning of Electrical "Power" System | 90d | 2017-01-28 | 2017-05-13 | C-MEP-E-2926 FF+40d, C-MEP-E-2626 FF+30d, C-MEP-E-2866 FF+30d, C-MEP-E-2986 FF+40d, C-MEP-E-3106 FF+30d, C-MEP-E-3166 FF+30d, A4580, A4510, A4720, A4370, A4650, A4790, A4930, A5000 FF, C-UR-PR-3141, G-MM-003, C-F-P-LSF-802, C-F-P-LSF-792, C-F-P-LSF-752, C-F-P-LSF-742, C-F-P-LSF-812, C-F-P-LSF-732, C-F-P-LSF-722, C-F-P-LSF-712, C-F-P-LSF-702, C-F-P-LSF-692, C-F-P-LSF-662, C-F-P-LSF-642, C-F-P-LSF-682, C-F-P-LSF-672, C-F-P-LSF-602, C-F-P-LSF-592, C-F-P-LSF-582, C-F-P-LSF-632, C-F-P-LSF-622, C-F-P-LSF-612, C-F-P-LSF-542, C-F-P-LSF-532, C-F-P-LSF-522, C-F-P-LSF-572, C-F-P-LSF-562, C-F-P-LSF-552, C-F-P-LSF-482, C-F-P-LSF-462, C-F-P-LSF-512, C-F-P-LSF-502, C-F-P-LSF-492, C-F-P-LSF-422, C-F-P-LSF-412, C-F-P-LSF-402, C-F-P-LSF-452, C-F-P-LSF-442, C-F-P-LSF-432, C-F-P-LSF-392, C-F-P-LSF-382, C-F-P-LSF-372, C-F-P-LSF-62, C-F-P-LSF-52, C-F-P-LSF-42, C-F-P-LSF-32, C-F-P-LSF-22, C-F-P-LSF-12, C-F-P-LSF-02, C-F-P-LSF-92, C-F-P-LSF-82, A11210, A11280, C-MEP-E-3396, C-MEP-E-3456, C-MEP-E-3476 | 18d | 0d |  |  | 1,500,000 |
| TC-G-001 |  | Testing & Commissioning of Gas System | 90d | 2017-02-04 | 2017-05-18 | A10460 FF+50d, TC-BMS-001 FF+25d | 10d |  | *APB - 6 D week + Qatar Holiday |  | 20,775.77 |
| TC-ELV-001 |  | Testing & Commissioning of ELV System | 90d | 2017-02-23 | 2017-06-07 | A4630 FF+40d, A4560 FF+40d, A4770 FF+30d, A4420 FF+30d, A4700 FF+30d, A4840 FF+30d, A4980 FF+30d, A5050 FF+30d, A5260, G-MM-003, TC-E-001 FF+22d, C-P-AV-NC-006, A11260, A11330, C-ELV-CS-2835 | 18d | 0d |  |  | 873,423.6 |
| C-LH-L-665 |  | Testing & Commissioning of the Linen Chute | 25d | 2017-02-27 | 2017-03-27 | C-LH-L-535, C-LH-L-555, TC-FF-001 SS, TC-E-001 SS, TC-BMS-001 SS | 30d | 0d |  |  | 31,476.43 |
| TC-FF-001 |  | Testing & Commissioning of Fire Fighting system | 90d | 2017-02-27 | 2017-06-11 | A4620, A4550, A4760 FF+60d, A4410, A4690, A4830, A4970, A5040, G-MM-003, TC-BMS-001 FF+55d, TC-E-001 FF+22d, A11250, A11320, C-AF-KF-296 | 15d | 0d |  |  | 1,090,584.49 |
| TC-HVAC-001 |  | Testing & Commissioning of HVAC System | 90d | 2017-02-27 | 2017-06-11 | G-MM-001, A4590, A4520, A4730 FF+10d, A4380 FF+80d, A4660 FF+70d, A4800 FF+80d, A4940 FF+80d, A5010 FF+80d, C-MEP-AC-3918, C-MEP-AC-3518, C-MEP-AC-3838 FF+70d, C-MEP-AC-3998, C-MEP-AC-4158, C-MEP-AC-4238, G-MM-003, TC-BMS-001 FF+55d, TC-E-001 FF+22d, C-MEP-AC-4478, A11220, A11290, C-MEP-AC-4558, C-MEP-AC-4638 | 15d | 0d |  |  | 232,907.11 |
| TC-PD-001 |  | Testing & Commissioning of Plumbing & Drainage System | 90d | 2017-02-27 | 2017-06-11 | C-PW-CT-001 FF+60d, A4530 FF+80d, A4740 FF+80d, A4390 FF+70d, A4670 FF+60d, A4810 FF+60d, A4950 FF+60d, A5020 FF+60d, A5230, C-MEP-PD-2795, C-MEP-PD-2295 FF+60d, C-MEP-PD-2445 FF+60d, C-MEP-PD-2195 FF+50d, C-MEP-PD-2395 FF+50d, C-MEP-PD-2495 FF+50d, C-MEP-PD-2595 FF+60d, C-MEP-PD-2645 FF+50d, G-MM-003, G-MM-006, G-MM-005, C-F-P-LSF-802, C-F-P-LSF-792, C-F-P-LSF-752, C-F-P-LSF-742, C-F-P-LSF-812, C-F-P-LSF-732, C-F-P-LSF-722, C-F-P-LSF-712, C-F-P-LSF-702, C-F-P-LSF-692, C-F-P-LSF-662, C-F-P-LSF-642, C-F-P-LSF-682, C-F-P-LSF-672, C-F-P-LSF-602, C-F-P-LSF-592, C-F-P-LSF-582, C-F-P-LSF-632, C-F-P-LSF-622, C-F-P-LSF-612, C-F-P-LSF-542, C-F-P-LSF-532, C-F-P-LSF-522, C-F-P-LSF-572, C-F-P-LSF-562, C-F-P-LSF-552, C-F-P-LSF-482, C-F-P-LSF-462, C-F-P-LSF-512, C-F-P-LSF-502, C-F-P-LSF-422, C-F-P-LSF-412, C-F-P-LSF-402, C-F-P-LSF-452, C-F-P-LSF-442, C-F-P-LSF-432, C-F-P-LSF-392, C-F-P-LSF-382, C-F-P-LSF-372, C-F-P-LSF-62, C-F-P-LSF-52, C-F-P-LSF-42, C-F-P-LSF-32, C-F-P-LSF-22, C-F-P-LSF-12, C-F-P-LSF-02, C-F-P-LSF-92, C-F-P-LSF-82, TC-BMS-001 FF+55d, TC-E-001 FF+22d, C-CS-S-T-501, A11230, A11300, C-MEP-PD-2845, C-MEP-PD-2895, C-AF-KF-146, C-AF-TF-51 | 15d | 0d |  |  | 90,273.8 |
| TC-LE-001 |  | Testing & commissioning of Lifts & Escalators | 90d | 2017-03-09 | 2017-06-21 | TC-E-001 SS+10d, C-LH-L-005, C-HA-L-95, C-HH-L-45, C-AH-L-145, C-AH-L-125, C-AH-L-145 FF, C-SL-L-265, C-SL-L-285 FF+70d, C-SL-L-215, C-SL-L-225, C-SL-L-275, C-SL-L-265 FF, C-AH-L-125 FF, C-LH-L-003, C-LH-L-004, C-HA-L-75, C-HA-L-85, C-HH-L-25, C-HH-L-35, C-FL-L-225, C-FL-L-235, C-FL-L-245 FF+70d, C-GL-L-275 FF+70d, C-GL-L-285 FF+70d, C-GL-L-295 FF+70d, C-PL-L-325 FF+70d, C-PL-L-335 FF+70d, C-PL-L-345 FF+70d, C-AL-L-375 FF+40d, C-AL-L-385 FF+40d, C-AL-L-395 FF+40d, C-AL-L-425 FF+70d, C-AL-L-435 FF+70d, C-AL-L-445 FF+70d, C-HL-L-425 FF+25d, C-HL-L-435 FF+25d, C-HL-L-445 FF+25d, C-E-L-485 FF+25d, C-E-L-475 FF+25d, C-E-L-465 FF+25d | 4d |  | *APB - 6 D week + Qatar Holiday |  | 1,879,386.23 |
| C-LH-L-705 |  | Testing & Commissioning of Irrigation System | 30d | 2017-03-11 | 2017-04-13 | C-SL-P-121, C-SL-P-111, C-SL-P-101, C-SL-P-91, C-SL-P-81, TC-PD-001 SS+10d, TC-E-001 SS+10d | 40d |  |  |  | 220,016.1 |
| C-LH-L-655 |  | Testing & Commisioning of the BMU's | 40d | 2017-04-20 | 2017-06-05 | C-LH-L-645, C-LH-L-635, C-LH-L-685, C-LH-L-675, TC-E-001 FF+20d | 20d |  |  |  | 242,803.31 |
| C-LH-L-695 |  | Testing & Commissioning of Swimming Pools | 40d | 2017-04-26 | 2017-06-11 | TC-E-001 FF, TC-PD-001 FF, C-SP-MRP-081, C-SP-MRP-091, C-SP-MRP-151, C-SP-MRP-161, C-SP-MRP-231, C-SP-MRP-241 | 15d |  |  |  | 35,888.77 |
|  | 5 | **As-built Drawings** |  | 2016-04-03 | 2017-06-11 |  |  |  |  |  |  |
|  | 1 | **Civil & Structural As-buildt drawings** |  | 2016-04-03 | 2016-07-31 |  |  |  |  |  |  |
| DS-C-PQ-CS-3 |  | Preperation & Submittal of Civil & Structural As-Built Drawings | 90d | 2016-04-03 | 2016-07-19 | G-CM-002 | 254d | 0d |  | Pre-qualification Submittals [60 h] |  |
| DS-C-PQ-CS-13 |  | Review & Approval of Civil & Structural As-Built Drawings | 90d | 2016-04-14 | 2016-07-31 | DS-C-PQ-CS-3 SS+10d, DS-C-PQ-CS-3 FF+10d | 254d |  |  | Pre-qualification Approval [40 h] |  |
|  | 2 | **Architectural As-buildt drawings** |  | 2016-12-12 | 2017-04-09 |  |  |  |  |  |  |
| DS-C-PQ-CS-23 |  | Preperation & Submittal of Architectural & FInishes As-Built Drawings | 90d | 2016-12-12 | 2017-03-28 | S-001 SS | 69d | 0d |  | Pre-qualification Submittals [60 h] |  |
| PQ-CS-C-2262 |  | Review & Approval of Architectural & FInishes As-Built Drawings | 90d | 2016-12-25 | 2017-04-09 | DS-C-PQ-CS-23 SS+10d, DS-C-PQ-CS-23 FF+10d | 69d |  |  | Pre-qualification Approval [40 h] |  |
|  | 3 | **HVAC As-buildt drawings** |  | 2017-02-27 | 2017-06-11 |  |  |  |  |  |  |
| PQ-CS-C-2272 |  | Preperation & Submittal of HVAC As-Built Drawings | 80d | 2017-02-27 | 2017-05-30 | TC-HVAC-001 SS | 15d | 0d |  | Pre-qualification Submittals [60 h] |  |
| PQ-CS-C-2282 |  | Review & Approval of HVAC As-Built Drawings | 80d | 2017-03-11 | 2017-06-11 | PQ-CS-C-2272 SS+10d, PQ-CS-C-2272 FF+10d | 15d |  |  | Pre-qualification Approval [40 h] |  |
|  | 6 | **Plumbing & Drainage As-buildt drawings** |  | 2017-02-27 | 2017-06-11 |  |  |  |  |  |  |
| PQ-CS-C-2352 |  | Preperation & Submittal of Plumbing & Drainage As-Built Drawings | 80d | 2017-02-27 | 2017-05-30 | TC-PD-001 SS | 15d | 0d |  | Pre-qualification Submittals [60 h] |  |
| PQ-CS-C-2362 |  | Review & Approval of Plumbing & Drainage As-Built Drawings | 80d | 2017-03-11 | 2017-06-11 | PQ-CS-C-2352 SS+10d, PQ-CS-C-2352 FF+10d | 15d |  |  | Pre-qualification Approval [40 h] |  |

Notes:
- TC-BMS-001: Expenses: 1 40000
- TC-E-001: Expenses: 1 1500000
- TC-G-001: Expenses: 1 20775.8
- TC-ELV-001: Expenses: 1 873424
- C-LH-L-665: Expenses: 1 31476.4
- TC-FF-001: Expenses: 1 1090584
- TC-HVAC-001: Expenses: 1 115907; 2 117000
- TC-PD-001: Expenses: 1 26243.1; 2 64030.7
- TC-LE-001: Expenses: 1 1879386
- C-LH-L-705: Expenses: 1 114813; 2 105203
- C-LH-L-655: Expenses: 1 242803
- C-LH-L-695: Expenses: 1 35888.8

| ID | WBS | Activity | Duration | Start | Finish | Predecessors | Total float | Free float | Calendar | Resources | Cost |
| --- | --- | --- | --- | --- | --- | --- | --- | --- | --- | --- | --- |
|  | 4 | **Electrical As-buildt drawings** |  | 2017-01-28 | 2017-05-13 |  |  |  |  |  |  |
| PQ-CS-C-2292 |  | Preperation & Submittal of Electrical As-Built Drawings | 80d | 2017-01-28 | 2017-05-01 | TC-E-001 SS | 40d | 0d |  | Pre-qualification Submittals [60 h] |  |
| PQ-CS-C-2302 |  | Review & Approval of Electrical As-Built Drawings | 80d | 2017-02-08 | 2017-05-13 | PQ-CS-C-2292 SS+10d, PQ-CS-C-2292 FF+10d | 40d |  |  | Pre-qualification Approval [40 h] |  |
|  | 5 | **Fire fighting As-buildt drawings** |  | 2017-02-27 | 2017-06-11 |  |  |  |  |  |  |
| PQ-CS-C-2312 |  | Preperation & Submittal of Fire FightingAs-Built Drawings | 80d | 2017-02-27 | 2017-05-30 | TC-FF-001 SS | 15d | 0d |  | Pre-qualification Submittals [60 h] |  |
| PQ-CS-C-2322 |  | Review & Approval of Fire Fighting As-Built Drawings | 80d | 2017-03-11 | 2017-06-11 | PQ-CS-C-2312 SS+10d, PQ-CS-C-2312 FF+10d | 15d |  |  | Pre-qualification Approval [40 h] |  |
|  | 7 | **ELV As-buildt drawings** |  | 2017-02-23 | 2017-06-07 |  |  |  |  |  |  |
| PQ-CS-C-2332 |  | Preperation & Submittal of ELV As-Built Drawings | 80d | 2017-02-23 | 2017-05-27 | TC-ELV-001 SS | 18d | 0d |  | Pre-qualification Submittals [60 h] |  |
| PQ-CS-C-2342 |  | Review & Approval of ELV As-Built Drawings | 80d | 2017-03-07 | 2017-06-07 | PQ-CS-C-2332 SS+10d, PQ-CS-C-2332 FF+10d | 18d |  |  | Pre-qualification Approval [40 h] |  |
|  | 8 | **BMS As-buildt drawings** |  | 2016-12-24 | 2017-04-08 |  |  |  |  |  |  |
| PQ-CS-C-2372 |  | TPreperation & Submittal of BMS As-Built Drawings | 80d | 2016-12-24 | 2017-03-27 | TC-BMS-001 SS | 70d | 0d |  | Pre-qualification Submittals [60 h] |  |
| PQ-CS-C-2382 |  | Review & Approval of BMS As-Built Drawings | 80d | 2017-01-04 | 2017-04-08 | PQ-CS-C-2372 SS+10d, PQ-CS-C-2372 FF+10d | 70d |  |  | Pre-qualification Approval [40 h] |  |
|  | 2 | **Snagging** |  | 2016-12-12 | 2017-03-26 |  |  |  |  |  |  |
| S-001 |  | Snagging Works | 90d | 2016-12-12 | 2017-03-26 | C-F-DW-2174, C-F-DW-2164, C-F-WF-2184, C-F-WF-2174, C-F-WF-2194, C-F-FF-2184, C-F-FF-2174, C-F-CF-3817, C-F-CF-3807, C-F-DW-2214, C-F-DW-2204, C-F-WF-2224, C-F-WF-2214, C-F-WF-2234, C-F-FF-2224, C-F-FF-2214, C-F-CF-3887, C-F-CF-3877, C-F-DW-2134, C-F-DW-2124, C-F-WF-2144, C-F-WF-2134, C-F-FF-2144, C-F-FF-2134, C-F-CF-3747, C-F-CF-3737, C-F-DW-004, C-F-DW-003, C-F-WF-004, C-F-WF-003, C-F-WF-002, C-F-FF-004, C-F-FF-003, C-F-CF-007, C-F-CF-005, C-CS-Su-A-CW-1712, M-TF-001, C-E-SR-B3G-243, C-E-SR-B3G-253, C-F-P-1583, G-MM-003, M-TF-002, C-F-DW-14, C-F-DW-4, C-F-WF-24, C-F-WF-14, C-F-WF-34, C-F-FF-24, C-F-FF-14, C-F-CF-37, C-F-CF-27, C-CS-Su-A-CW-1662, C-F-FF-254 SS, C-F-DW-54, C-F-DW-44, C-F-WF-64, C-F-WF-54, C-F-WF-74, C-F-FF-64, C-F-FF-54, C-F-CF-107, C-F-CF-97, C-CS-Su-A-CW-1682, C-F-DW-94, C-F-DW-84, C-F-WF-104, C-F-WF-94, C-F-WF-114, C-F-FF-104, C-F-FF-94, C-F-CF-177, C-F-CF-167, C-CS-Su-A-CW-1692, C-F-DW-174, C-F-DW-164, C-F-WF-184, C-F-WF-174, C-F-WF-194, C-F-FF-184, C-F-FF-174, C-F-CF-317, C-F-CF-307, C-CS-Su-A-CW-1702, C-F-DW-254, C-F-DW-244, C-F-WF-264, C-F-WF-254, C-F-WF-274, C-F-FF-264, C-F-FF-254, C-F-CF-457, C-F-CF-447, C-CS-Su-A-CW-1672, C-F-DW-294, C-F-DW-284, C-F-WF-304, C-F-WF-294, C-F-WF-314, C-F-FF-304, C-F-FF-294, C-F-CF-527, C-F-CF-517, C-CS-Su-A-CW-1792, C-F-DW-334, C-F-DW-324, C-F-WF-344, C-F-WF-334, C-F-WF-354, C-F-FF-344, C-F-FF-334, C-F-CF-597, C-F-CF-587, C-CS-Su-A-CW-1742, C-F-DW-374, C-F-DW-374 FF, C-F-DW-364, C-F-DW-364 FF, C-F-WF-384, C-F-WF-384 FF, C-F-WF-374, C-F-WF-374 FF, C-F-WF-394, C-F-WF-394 FF, C-F-FF-384, C-F-FF-384 FF, C-F-FF-374, C-F-FF-374 FF, C-F-CF-667, C-F-CF-667 FF, C-F-CF-657, C-F-CF-657 FF, C-CS-Su-A-CW-1762, C-CS-Su-A-CW-1762 FF, M-TF-001 FF, C-E-SR-B3G-243 FF, C-E-SR-B3G-253 FF, C-F-P-1583 FF, G-MM-003 FF, M-TF-002 FF, C-F-DW-414, C-F-DW-404, C-F-WF-424, C-F-WF-414, C-F-WF-434, C-F-FF-424, C-F-FF-414, C-F-CF-737, C-F-CF-727, C-CS-Su-A-CW-1772, C-F-DW-494 FS+20d, C-F-DW-484, C-F-WF-504 FS+20d, C-F-WF-494, C-F-WF-514, C-F-FF-504 FS+20d, C-F-FF-494, C-F-CF-877, C-F-CF-867 FS+20d, C-CS-Su-A-CW-1782, C-F-DW-574, C-F-DW-564, C-F-WF-584, C-F-WF-574, C-F-WF-594, C-F-FF-584, C-F-FF-574, C-F-CF-1017, C-F-CF-1007, C-CS-Su-A-CW-1752, C-F-DW-214, C-F-DW-204, C-F-WF-224, C-F-WF-214, C-F-WF-234, C-F-FF-224, C-F-FF-214, C-F-CF-387, C-F-CF-377, C-CS-Su-A-CW-1732, C-F-DW-454, C-F-DW-444, C-F-WF-464, C-F-WF-454, C-F-WF-474, C-F-FF-464, C-F-FF-454, C-F-CF-807, C-F-CF-797, C-CS-Su-A-CW-1802, C-F-DW-534, C-F-DW-524, C-F-WF-544, C-F-WF-534, C-F-WF-554, C-F-FF-544, C-F-FF-534, C-F-CF-947, C-F-CF-937, C-CS-Su-A-CW-1812, C-F-DW-654, C-F-DW-644, C-F-WF-664, C-F-WF-654, C-F-WF-674, C-F-FF-664, C-F-FF-654, C-F-CF-1157, C-F-CF-1147, C-CS-Su-A-CW-1822, C-F-DW-894, C-F-DW-884, C-F-WF-904, C-F-WF-894, C-F-WF-914, C-F-FF-904, C-F-FF-894, C-F-CF-1577, C-F-CF-1567 FS+8d, C-CS-Su-A-CW-1832, C-F-DW-734, C-F-DW-724, C-F-WF-744, C-F-WF-734, C-F-WF-754, C-F-FF-744, C-F-FF-734, C-F-CF-1297, C-F-CF-1287, C-CS-Su-A-CW-1842, C-F-DW-974, C-F-DW-964, C-F-WF-984, C-F-WF-974, C-F-WF-994, C-F-FF-984, C-F-FF-974, C-F-CF-1717, C-F-CF-1707, C-CS-Su-A-CW-1902, C-F-DW-1214, C-F-DW-1204, C-F-WF-1224, C-F-WF-1214, C-F-WF-1234, C-F-FF-1224, C-F-FF-1214, C-F-CF-2137, C-F-CF-2127, C-CS-Su-A-CW-1912, C-F-DW-614, C-F-DW-604, C-F-WF-624 FF+85d, C-F-WF-614, C-F-WF-634, C-F-FF-624, C-F-FF-614, C-F-CF-1087, C-F-CF-1077, C-CS-Su-A-CW-1872, C-F-DW-694, C-F-DW-684, C-F-WF-704 FF+85d, C-F-WF-694, C-F-WF-714, C-F-FF-704, C-F-FF-694, C-F-CF-1227, C-F-CF-1217, C-CS-Su-A-CW-1852, C-F-DW-774, C-F-DW-764, C-F-WF-784 FF+85d, C-F-WF-774, C-F-WF-794, C-F-FF-784, C-F-FF-774, C-F-CF-1367, C-F-CF-1357, C-CS-Su-A-CW-1882, C-F-DW-814, C-F-DW-804, C-F-WF-824 FF+85d, C-F-WF-814, C-F-WF-834, C-F-FF-824, C-F-FF-814, C-F-CF-1437, C-F-CF-1427, C-CS-Su-A-CW-1862, C-F-DW-854, C-F-DW-844, C-F-WF-864 FF+85d, C-F-WF-854, C-F-WF-874, C-F-FF-864, C-F-FF-854, C-F-CF-1507, C-F-CF-1497, C-CS-Su-A-CW-1892, C-F-DW-934, C-F-DW-924, C-F-WF-944, C-F-WF-934, C-F-WF-954, C-F-FF-944, C-F-FF-934, C-F-CF-1647, C-F-CF-1637, C-CS-Su-A-CW-1952 FF+60d, C-F-DW-1014, C-F-DW-1004, C-F-WF-1024, C-F-WF-1014, C-F-WF-1034, C-F-FF-1024, C-F-FF-1014, C-F-CF-1787, C-F-CF-1777, C-CS-Su-A-CW-1922 FF, C-F-DW-1054, C-F-DW-1044, C-F-WF-1064, C-F-WF-1054, C-F-WF-1074, C-F-FF-1064, C-F-FF-1054, C-F-CF-1857, C-F-CF-1847, C-CS-Su-A-CW-1932 FF, C-F-DW-1094, C-F-DW-1084, C-F-WF-1104, C-F-WF-1094, C-F-WF-1114, C-F-FF-1104, C-F-FF-1094, C-F-CF-1927, C-F-CF-1917, C-CS-Su-A-CW-1962 FF, C-F-DW-1134, C-F-DW-1124, C-F-WF-1144, C-F-WF-1134, C-F-WF-1154, C-F-FF-1144, C-F-FF-1134, C-F-CF-1997, C-F-CF-1987, C-CS-Su-A-CW-1942 FF, C-F-DW-1174, C-F-DW-1164, C-F-WF-1184, C-F-WF-1174, C-F-WF-1194, C-F-FF-1184, C-F-FF-1174, C-F-CF-2067, C-F-CF-2057, C-CS-Su-A-CW-1972 FF, C-F-DW-1254 FF+79d, C-F-DW-1244, C-F-WF-1264 FF+79d, C-F-WF-1254, C-F-WF-1274, C-F-FF-1264 FF+79d, C-F-FF-1254 FF+79d, C-F-CF-2207, C-F-CF-2197 FF+79d, C-CS-Su-A-CW-1992 FF+60d, C-F-DW-1294 FF+79d, C-F-DW-1284, C-F-WF-1304 FF+79d, C-F-WF-1294, C-F-WF-1314, C-F-FF-1304 FF+79d, C-F-FF-1294 FF+79d, C-F-CF-2277, C-F-CF-2267 FF+79d, C-CS-Su-A-CW-2002 FF+60d, C-F-DW-1334 FF+79d, C-F-DW-1324, C-F-WF-1344 FF+79d, C-F-WF-1334, C-F-WF-1354, C-F-FF-1344 FF+79d, C-F-FF-1334 FF+79d, C-F-CF-2347, C-F-CF-2337 FF+79d, C-CS-Su-A-CW-1982 FF+60d, C-F-DW-1374 FF+79d, C-F-DW-1364, C-F-WF-1384 FF+79d, C-F-WF-1374, C-F-WF-1394, C-F-FF-1384 FF+79d, C-F-FF-1374 FF+79d, C-F-CF-2417, C-F-CF-2407 FF+79d, C-CS-Su-A-CW-2012 FF+60d, C-SP-MRP-161 FF+60d, C-F-DW-1414 FF+67d, C-F-DW-1404, C-F-WF-1424 FF+57d, C-F-WF-1414, C-F-WF-1434, C-F-FF-1424 FF+67d, C-F-FF-1414 FF+67d, C-F-CF-2487, C-F-CF-2477 FF+67d, C-CS-Su-A-CW-2072 FF+60d, C-F-DW-1454 FF+79d, C-F-DW-1444, C-F-WF-1464 FF+79d, C-F-WF-1454, C-F-WF-1474, C-F-FF-1464 FF+79d, C-F-FF-1454 FF+79d, C-F-CF-2557, C-F-CF-2547 FF+79d, C-CS-Su-A-CW-2022 FF+60d, C-F-DW-1494 FF+79d, C-F-DW-1484, C-F-WF-1504 FF+79d, C-F-WF-1494, C-F-WF-1514, C-F-FF-1504 FF+79d, C-F-FF-1494 FF+79d, C-F-CF-2627, C-F-CF-2617 FF+79d, C-CS-Su-A-CW-2042 FF+50d, C-F-DW-1534 FF+69d, C-F-DW-1524, C-F-WF-1544 FF+59d, C-F-WF-1534, C-F-WF-1554, C-F-FF-1544 FF+69d, C-F-FF-1534 FF+69d, C-F-CF-2697, C-F-CF-2687 FF+69d, C-CS-Su-A-CW-2052 FF+50d, C-F-DW-1574 FF+79d, C-F-DW-1564, C-F-WF-1584 FF+79d, C-F-WF-1574, C-F-WF-1594, C-F-FF-1584 FF+79d, C-F-FF-1574 FF+79d, C-F-CF-2767, C-F-CF-2757 FF+79d, C-CS-Su-A-CW-2082 FF+50d, C-F-DW-1614 FF+79d, C-F-DW-1604, C-F-WF-1624 FF+59d, C-F-WF-1614, C-F-WF-1634, C-F-FF-1624 FF+79d, C-F-FF-1614 FF+79d, C-F-CF-2837, C-F-CF-2827 FF+79d, C-CS-Su-A-CW-2062 FF+50d, C-F-DW-1654 FF+79d, C-F-DW-1644, C-F-WF-1664 FF+79d, C-F-WF-1654, C-F-WF-1674, C-F-FF-1664 FF+79d, C-F-FF-1654 FF+79d, C-F-CF-2907, C-F-CF-2897 FF+79d, C-CS-Su-A-CW-2092 FF+50d, C-F-DW-1694 FF+79d, C-F-DW-1684, C-F-WF-1704 FF+79d, C-F-WF-1694, C-F-WF-1714, C-F-FF-1704 FF+79d, C-F-FF-1694 FF+79d, C-F-CF-2977, C-F-CF-2967 FF+84d, C-CS-Su-A-CW-2032 FF+50d, C-F-DW-1734, C-F-DW-1724, C-F-WF-1744 FF+60d, C-F-WF-1734, C-F-WF-1754, C-F-FF-1744, C-F-FF-1734, C-F-CF-3047, C-F-CF-3037, C-CS-Su-A-CW-2142 FF+40d, C-F-DW-1774 FF+84d, C-F-DW-1764, C-F-WF-1784 FF+84d, C-F-WF-1774, C-F-WF-1794, C-F-FF-1784 FF+84d, C-F-FF-1774 FF+84d, C-F-CF-3117, C-F-CF-3107 FF+84d, C-CS-Su-A-CW-2102 FF+40d, C-F-DW-1814, C-F-DW-1804, C-F-WF-1824 FF+60d, C-F-WF-1814, C-F-WF-1834, C-F-FF-1824, C-F-FF-1814, C-F-CF-3187, C-F-CF-3177, C-CS-Su-A-CW-2122 FF+40d, C-F-DW-1854, C-F-DW-1844, C-F-WF-1864 FF+60d, C-F-WF-1854, C-F-WF-1874, C-F-FF-1864, C-F-FF-1854, C-F-CF-3257, C-F-CF-3247, C-CS-Su-A-CW-2732 FF+40d, C-F-DW-1894, C-F-DW-1884, C-F-WF-1904 FF+60d, C-F-WF-1894, C-F-WF-1914, C-F-FF-1904, C-F-FF-1894, C-F-CF-3327, C-F-CF-3317, C-CS-Su-A-CW-2152 FF+40d, C-F-DW-1934, C-F-DW-1924, C-F-WF-1944 FF+60d, C-F-WF-1934, C-F-WF-1954, C-F-FF-1944, C-F-FF-1934, C-F-CF-3397, C-F-CF-3387, C-CS-Su-A-CW-2132 FF+40d, C-F-DW-1974 FF+70d, C-F-DW-1964, C-F-WF-1984 FF+40d, C-F-WF-1974, C-F-WF-1994, C-F-FF-1984, C-F-FF-1974, C-F-CF-3467, C-F-CF-3457, C-CS-Su-A-CW-2162 FF+40d, C-F-DW-2014 FF+84d, C-F-DW-2004, C-F-WF-2024 FF+84d, C-F-WF-2014, C-F-WF-2034, C-F-FF-2024 FF+84d, C-F-FF-2014 FF+84d, C-F-CF-3537, C-F-CF-3527 FF+84d, C-CS-Su-A-CW-2112 FF+40d, C-F-DW-2054 FF+60d, C-F-DW-2044 FF+86d, C-F-WF-2064 FF+40d, C-F-WF-2054 FF+86d, C-F-WF-2074, C-F-FF-2064, C-F-FF-2054, C-F-CF-3607, C-F-CF-3597, C-CS-Su-A-CW-2172 FF+40d, C-F-DW-2094 FF+60d, C-F-DW-2084 FF+70d, C-F-WF-2104 FF+30d, C-F-WF-2094 FF+60d, C-F-WF-2114, C-F-FF-2104, C-F-FF-2094, C-F-CF-3677, C-F-CF-3667, C-CS-Su-A-CW-2182 FF+40d, C-F-DW-134, C-F-DW-124, C-F-WF-144, C-F-WF-134, C-F-WF-154, C-F-FF-144, C-F-FF-134, C-F-CF-247, C-F-CF-237, C-CS-Su-A-CW-1722, C-SP-MRP-241 FF+25d, C-A-SF-S2-252 FF, C-A-SF-S1-962 FF, C-A-SF-S3-292 FF+10d, C-A-SF-S8-221 FF, C-F-WF-2124, P-AF-B-1123, C-F-EC-003, C-A-SF-S10-1042 FF, C-SL-P-121 FF+30d, C-AF-TF-006, C-AF-TF-51, C-EX-S-1, C-EW-301 | 6d | 0d | *APB - 6 D week + Qatar Holiday |  | 114,350.8 |
|  | 9 | **Handover** |  | 2017-05-31 | 2017-07-02 |  |  |  |  |  |  |
| HO-001 |  | Project Handover & Issue O&M Manual | 25d | 2017-05-31 | 2017-07-02 | TC-E-001 FF, TC-HVAC-001 FF, TC-PD-001 FF, TC-ELV-001 FF, TC-BMS-001 FF, TC-FF-001 FF, C-CS-Su-A-CW-2192 FF+5d, C-CS-Su-A-CW-1292, C-CS-Su-A-CW-1302, C-CS-Su-A-CW-1312, C-CS-Su-A-CW-1322, C-CS-Su-A-CW-1332, C-CS-Su-A-CW-1342, C-CS-Su-A-CW-1352, C-CS-Su-A-CW-1362, C-CS-Su-A-CW-1372, C-CS-Su-A-CW-1382, C-CS-Su-A-CW-1192, C-CS-Su-A-CW-1202, C-CS-Su-A-CW-1212, C-CS-Su-A-CW-1222, C-CS-Su-A-CW-1232, C-CS-Su-A-CW-1242, C-CS-Su-A-CW-1252, C-CS-Su-A-CW-1262, C-CS-Su-A-CW-1272, C-CS-Su-A-CW-1282, C-CS-Su-A-CW-1392, C-CS-Su-A-CW-1402, C-CS-Su-A-CW-1412, C-CS-Su-A-CW-1422, C-CS-Su-A-CW-1432, C-CS-Su-A-CW-1442, C-CS-Su-A-CW-1132 FF+10d, C-CS-Su-A-CW-1142 FF+10d, C-CS-Su-A-CW-1152 FF+10d, C-CS-Su-A-CW-1162 FF+10d, C-CS-Su-A-CW-1172 FF+10d, C-CS-Su-A-CW-1182 FF+10d, C-CS-Su-A-CW-1452 FF+20d, C-CS-Su-A-CW-1462 FF+20d, C-CS-Su-A-CW-1472 FF+20d, C-CS-Su-A-CW-1482 FF+20d, C-CS-Su-A-CW-1492 FF+20d, C-CS-Su-A-CW-1502 FF+20d, C-CS-Su-A-CW-1512 FF+20d, C-CS-Su-A-CW-1522 FF+20d, C-CS-Su-A-CW-1532 FF+20d, C-CS-Su-A-CW-1542 FF+20d, C-CS-Su-A-CW-1552 FF+20d, C-CS-Su-A-CW-1562 FF+20d, C-CS-Su-A-CW-1572 FF+5d, C-CS-Su-A-CW-1582 FF+5d, C-CS-Su-A-CW-1592 FF+5d, C-CS-Su-A-CW-1602 FF+5d, C-CS-Su-A-CW-1612 FF+5d, C-CS-Su-A-CW-1622 FF+5d, C-CS-Su-A-CW-1632 FF+5d, C-CS-Su-A-CW-1642 FF+5d, C-CS-Su-A-CW-1652 FF+5d, C-P-SS-001 FF+5d, C-P-TWR-001 FF+20d, C-F-P-FU-212 FF, C-F-P-FU-262 FF, C-F-P-FU-252 FF, C-F-P-FU-182 FF, C-F-P-FU-172 FF, C-F-P-FU-162 FF, C-F-P-FU-272 FF, C-F-P-FU-202 FF, C-F-P-FU-192 FF, C-F-P-FU-122 FF, C-F-P-FU-102 FF, C-F-P-FU-152 FF, C-F-P-FU-142 FF, C-F-P-FU-132 FF, C-F-P-FU-062 FF, C-F-P-FU-052 FF, C-F-P-FU-042 FF, C-F-P-FU-092 FF, C-F-P-FU-082 FF, C-F-P-FU-072 FF, C-F-P-FU-002 FF, C-F-P-FU-992 FF, C-F-P-FU-982 FF, C-F-P-FU-032 FF, C-F-P-FU-022 FF, C-F-P-FU-012 FF, C-F-P-FU-42 FF, C-F-P-FU-22 FF, C-F-P-FU-972 FF, C-F-P-FU-962 FF, C-F-P-FU-952 FF, C-F-P-FU-82 FF, C-F-P-FU-72 FF, C-F-P-FU-62 FF, C-F-P-FU-12 FF, C-F-P-FU-02 FF, C-F-P-FU-92 FF, C-F-P-FU-852 FF, C-F-P-FU-842 FF, C-F-P-FU-832 FF, C-F-P-FU-822 FF, C-F-P-FU-812 FF, C-F-P-FU-2802 FF, C-F-P-FU-2792 FF, C-F-P-FU-2782 FF, C-F-P-FU-2772 FF, C-F-P-FU-2762 FF, C-F-P-FU-2752 FF, C-F-P-FU-3323 FF, C-F-P-LSF-82, C-F-P-LSF-92, C-F-P-LSF-02, C-F-P-LSF-12, C-F-P-LSF-22, C-F-P-LSF-32, C-F-P-LSF-42, C-F-P-LSF-52, C-F-P-LSF-62, C-F-P-LSF-372, C-F-P-LSF-382, C-F-P-LSF-392, C-F-P-LSF-432, C-F-P-LSF-442, C-F-P-LSF-452, C-F-P-LSF-402, C-F-P-LSF-412, C-F-P-LSF-422, C-F-P-LSF-492, C-F-P-LSF-502, C-F-P-LSF-512, C-F-P-LSF-462, C-F-P-LSF-482, C-F-P-LSF-552, C-F-P-LSF-562, C-F-P-LSF-572, C-F-P-LSF-522, C-F-P-LSF-532, C-F-P-LSF-542, C-F-P-LSF-612, C-F-P-LSF-622, C-F-P-LSF-632, C-F-P-LSF-582, C-F-P-LSF-592, C-F-P-LSF-602, C-F-P-LSF-672, C-F-P-LSF-682, C-F-P-LSF-692, C-F-P-LSF-642, C-F-P-LSF-662, C-F-P-LSF-732 FF+20d, C-F-P-LSF-742 FF+20d, C-F-P-LSF-812 FF+24d, C-F-P-LSF-702 FF+20d, C-F-P-LSF-712 FF+20d, C-F-P-LSF-722 FF+20d, C-F-P-LSF-792 FF, C-F-P-LSF-802 FF, C-F-P-LSF-752 FF, C-F-B1-RR-00, A1240, A1250, A1260, C-EW-41, C-EW-51, C-EX-R-004 FF+10d, C-EW-L-91, C-EX-G-082, C-F-NG4-1081 FF, C-F-NG4-1401 FF, C-E-L-485, C-LH-L-665 FF, C-LH-L-655 FF, G-AI-MD-003, C-MEP-E-3346, TC-G-001, A5240, C-F-DW-2214, C-F-DW-2204, C-F-WF-2224, C-F-WF-2214, C-F-WF-2234, C-F-FF-2224, C-F-FF-2214, C-F-CF-3887, C-F-CF-3877, C-F-DW-2134, C-F-DW-2124, C-F-WF-2144, C-F-WF-2134, C-F-FF-2144, C-F-FF-2134, C-F-CF-3747, C-F-CF-3737, C-F-DW-004 FF+10d, C-F-DW-003 FF+10d, C-F-WF-004 FF+10d, C-F-WF-003 FF+10d, C-F-WF-002 FF+10d, C-F-FF-004 FF+10d, C-F-FF-003 FF+10d, C-F-CF-007 FF+10d, C-F-CF-005 FF+10d, C-CS-Su-A-CW-1712 FF+10d, M-TF-001 FF+10d, C-E-SR-B3G-243 FF+10d, C-E-SR-B3G-253 FF+10d, C-F-P-1583 FF+10d, G-MM-003 FF+10d, M-TF-002 FF+10d, C-F-DW-14 FF+15d, C-F-DW-4 FF+15d, C-F-WF-24 FF+15d, C-F-WF-14 FF+15d, C-F-WF-34 FF+15d, C-F-FF-24 FF+15d, C-F-FF-14 FF+15d, C-F-CF-37 FF+15d, C-F-CF-27 FF+15d, C-CS-Su-A-CW-1662 FF+15d, C-F-FF-254 SF+15d, C-F-DW-54 FF+15d, C-F-DW-44 FF+15d, C-F-WF-64 FF+15d, C-F-WF-54 FF+15d, C-F-WF-74 FF+15d, C-F-FF-64 FF+15d, C-F-FF-54 FF+15d, C-F-CF-107 FF+15d, C-F-CF-97 FF+15d, C-CS-Su-A-CW-1682 FF+15d, C-F-DW-94 FF+15d, C-F-DW-84 FF+15d, C-F-WF-104 FF+15d, C-F-WF-94 FF+15d, C-F-WF-114 FF+15d, C-F-FF-104 FF+15d, C-F-FF-94 FF+15d, C-F-CF-177 FF+15d, C-F-CF-167 FF+15d, C-CS-Su-A-CW-1692 FF+15d, C-F-DW-174 FF+15d, C-F-DW-164 FF+15d, C-F-WF-184 FF+15d, C-F-WF-174 FF+15d, C-F-WF-194 FF+15d, C-F-FF-184 FF+15d, C-F-FF-174 FF+15d, C-F-CF-317 FF+15d, C-F-CF-307 FF+15d, C-CS-Su-A-CW-1702 FF+15d, C-F-DW-254 FF+15d, C-F-DW-244 FF+15d, C-F-WF-264 FF+15d, C-F-WF-254 FF+15d, C-F-WF-274 FF+15d, C-F-FF-264 FF+15d, C-F-FF-254 FF+15d, C-F-CF-457 FF+15d, C-F-CF-447 FF+15d, C-CS-Su-A-CW-1672 FF+15d, C-F-DW-294, C-F-DW-284, C-F-WF-304, C-F-WF-294, C-F-WF-314, C-F-FF-304, C-F-FF-294, C-F-CF-527, C-F-CF-517, C-CS-Su-A-CW-1792, M-TF-001, C-E-SR-B3G-243, C-E-SR-B3G-253, C-F-P-1583, G-MM-003, M-TF-002, C-F-DW-334, C-F-DW-324, C-F-WF-344, C-F-WF-334, C-F-WF-354, C-F-FF-344, C-F-FF-334, C-F-CF-597, C-F-CF-587, C-CS-Su-A-CW-1742, C-F-DW-374, C-F-DW-364, C-F-WF-384, C-F-WF-374, C-F-WF-394, C-F-FF-384, C-F-FF-374, C-F-CF-667, C-F-CF-657, C-CS-Su-A-CW-1762, C-F-DW-414, C-F-DW-404, C-F-WF-424, C-F-WF-414, C-F-WF-434, C-F-FF-424, C-F-FF-414, C-F-CF-737, C-F-CF-727, C-CS-Su-A-CW-1772, C-F-DW-494 FS+20d, C-F-DW-484, C-F-WF-504 FS+20d, C-F-WF-494, C-F-WF-514, C-F-FF-504 FS+20d, C-F-FF-494, C-F-CF-877, C-F-CF-867 FS+20d, C-CS-Su-A-CW-1782, C-F-DW-574, C-F-DW-564, C-F-WF-584, C-F-WF-574, C-F-WF-594, C-F-FF-584, C-F-FF-574, C-F-CF-1017, C-F-CF-1007, C-CS-Su-A-CW-1752, C-F-DW-214, C-F-DW-204, C-F-WF-224, C-F-WF-214, C-F-WF-234, C-F-FF-224, C-F-FF-214, C-F-CF-387, C-F-CF-377, C-CS-Su-A-CW-1732, C-F-DW-454, C-F-DW-444, C-F-WF-464, C-F-WF-454, C-F-WF-474, C-F-FF-464, C-F-FF-454, C-F-CF-807, C-F-CF-797, C-CS-Su-A-CW-1802, C-F-DW-534, C-F-DW-524, C-F-WF-544, C-F-WF-534, C-F-WF-554, C-F-FF-544, C-F-FF-534, C-F-CF-947, C-F-CF-937, C-CS-Su-A-CW-1812, C-F-DW-654, C-F-DW-644, C-F-WF-664, C-F-WF-654, C-F-WF-674, C-F-FF-664, C-F-FF-654, C-F-CF-1157, C-F-CF-1147, C-CS-Su-A-CW-1822, C-F-DW-894, C-F-DW-884, C-F-WF-904, C-F-WF-894, C-F-WF-914, C-F-FF-904, C-F-FF-894, C-F-CF-1577, C-F-CF-1567 FS+8d, C-CS-Su-A-CW-1832, C-F-DW-734, C-F-DW-724, C-F-WF-744, C-F-WF-734, C-F-WF-754, C-F-FF-744, C-F-FF-734, C-F-CF-1297, C-F-CF-1287, C-CS-Su-A-CW-1842, C-F-DW-974, C-F-DW-964, C-F-WF-984, C-F-WF-974, C-F-WF-994, C-F-FF-984, C-F-FF-974, C-F-CF-1717, C-F-CF-1707, C-CS-Su-A-CW-1902, C-F-DW-1214, C-F-DW-1204, C-F-WF-1224, C-F-WF-1214, C-F-WF-1234, C-F-FF-1224, C-F-FF-1214, C-F-CF-2137, C-F-CF-2127, C-CS-Su-A-CW-1912, C-F-DW-614, C-F-DW-604, C-F-WF-624, C-F-WF-614, C-F-WF-634, C-F-FF-624, C-F-FF-614, C-F-CF-1087, C-F-CF-1077, C-CS-Su-A-CW-1872, C-F-DW-694, C-F-DW-684, C-F-WF-704, C-F-WF-694, C-F-WF-714, C-F-FF-704, C-F-FF-694, C-F-CF-1227, C-F-CF-1217, C-CS-Su-A-CW-1852, C-F-DW-814 FF, C-F-DW-804, C-F-WF-824 FF, C-F-WF-814, C-F-WF-834, C-F-FF-824 FF, C-F-FF-814 FF, C-F-CF-1437, C-F-CF-1427 FF, C-CS-Su-A-CW-1862, C-F-DW-854, C-F-DW-844, C-F-WF-864, C-F-WF-854, C-F-WF-874, C-F-FF-864, C-F-FF-854, C-F-CF-1507, C-F-CF-1497, C-CS-Su-A-CW-1892, C-F-DW-934, C-F-DW-924, C-F-WF-944, C-F-WF-934, C-F-WF-954, C-F-FF-944, C-F-FF-934, C-F-CF-1647, C-F-CF-1637, C-CS-Su-A-CW-1952, C-F-DW-1014, C-F-DW-1004, C-F-WF-1024, C-F-WF-1014, C-F-WF-1034, C-F-FF-1024, C-F-FF-1014, C-F-CF-1787, C-F-CF-1777, C-CS-Su-A-CW-1922, C-F-DW-1054, C-F-DW-1044, C-F-WF-1064, C-F-WF-1054, C-F-WF-1074, C-F-FF-1064, C-F-FF-1054, C-F-CF-1857, C-F-CF-1847, C-CS-Su-A-CW-1932, C-F-DW-1094, C-F-DW-1084, C-F-WF-1104, C-F-WF-1094, C-F-WF-1114, C-F-FF-1104, C-F-FF-1094, C-F-CF-1927, C-F-CF-1917, C-CS-Su-A-CW-1962, C-F-DW-1134, C-F-DW-1124, C-F-WF-1144, C-F-WF-1134, C-F-WF-1154, C-F-FF-1144, C-F-FF-1134, C-F-CF-1997, C-F-CF-1987, C-CS-Su-A-CW-1942, C-F-DW-1174, C-F-DW-1164, C-F-WF-1184, C-F-WF-1174, C-F-WF-1194, C-F-FF-1184, C-F-FF-1174, C-F-CF-2067, C-F-CF-2057, C-CS-Su-A-CW-1972, C-F-DW-1254 FF+22d, C-F-DW-1244 FF+22d, C-F-WF-1264 FF+22d, C-F-WF-1254 FF+22d, C-F-WF-1274 FF+22d, C-F-FF-1264 FF+22d, C-F-FF-1254 FF+22d, C-F-CF-2207 FF+22d, C-F-CF-2197 FF+22d, C-CS-Su-A-CW-1992 FF+22d, C-F-DW-1334 FF+22d, C-F-DW-1324 FF+22d, C-F-WF-1344 FF+22d, C-F-WF-1334 FF+22d, C-F-WF-1354 FF+22d, C-F-FF-1344 FF+22d, C-F-FF-1334 FF+22d, C-F-CF-2347 FF+22d, C-F-CF-2337 FF+22d, C-CS-Su-A-CW-1982 FF+22d, C-F-DW-1414 FF+22d, C-F-DW-1404 FF+22d, C-F-WF-1424 FF+22d, C-F-WF-1414 FF+22d, C-F-WF-1434 FF+22d, C-F-FF-1424 FF+22d, C-F-FF-1414 FF+22d, C-F-CF-2487 FF+22d, C-F-CF-2477 FF+22d, C-CS-Su-A-CW-2072 FF+22d, C-F-DW-1454 FF+22d, C-F-DW-1444 FF+22d, C-F-WF-1464 FF+22d, C-F-WF-1454 FF+22d, C-F-WF-1474 FF+22d, C-F-FF-1464 FF+22d, C-F-FF-1454 FF+22d, C-F-CF-2557 FF+22d, C-F-CF-2547 FF+22d, C-CS-Su-A-CW-2022 FF+22d, C-F-DW-1614 FF+22d, C-F-DW-1604 FF+22d, C-F-WF-1624 FF+22d, C-F-WF-1614 FF+22d, C-F-WF-1634 FF+22d, C-F-FF-1624 FF+22d, C-F-FF-1614 FF+22d, C-F-CF-2837 FF+22d, C-F-CF-2827 FF+22d, C-CS-Su-A-CW-2062 FF+22d, C-F-DW-1654 FF+22d, C-F-DW-1644 FF+22d, C-F-WF-1664 FF+22d, C-F-WF-1654 FF+22d, C-F-WF-1674 FF+22d, C-F-FF-1664 FF+22d, C-F-FF-1654 FF+22d, C-F-CF-2907 FF+22d, C-F-CF-2897 FF+22d, C-CS-Su-A-CW-2092 FF+22d, C-F-DW-1734 FF+8d, C-F-DW-1724 FF+8d, C-F-WF-1744 FF+8d, C-F-WF-1734 FF+8d, C-F-WF-1754 FF+8d, C-F-FF-1744 FF+8d, C-F-FF-1734 FF+8d, C-F-CF-3047 FF+8d, C-F-CF-3037 FF+8d, C-CS-Su-A-CW-2142 FF+8d, C-F-DW-1774 FF+2d, C-F-DW-1764 FF+8d, C-F-WF-1784 FF+2d, C-F-WF-1774 FF+8d, C-F-WF-1794 FF+8d, C-F-FF-1784 FF+2d, C-F-FF-1774 FF+2d, C-F-CF-3117 FF+8d, C-F-CF-3107 FF+2d, C-CS-Su-A-CW-2102 FF+8d, C-F-DW-1814 FF+8d, C-F-DW-1804 FF+8d, C-F-WF-1824 FF+8d, C-F-WF-1814 FF+8d, C-F-WF-1834 FF+8d, C-F-FF-1824 FF+8d, C-F-FF-1814 FF+8d, C-F-CF-3187 FF+8d, C-F-CF-3177 FF+8d, C-CS-Su-A-CW-2122 FF+8d, C-F-DW-1854 FF+8d, C-F-DW-1844 FF+8d, C-F-WF-1864 FF+8d, C-F-WF-1854 FF+8d, C-F-WF-1874 FF+8d, C-F-FF-1864 FF+8d, C-F-FF-1854 FF+8d, C-F-CF-3257 FF+8d, C-F-CF-3247 FF+8d, C-CS-Su-A-CW-2732 FF+8d, C-F-DW-1894 FF, C-F-DW-1884 FF+8d, C-F-WF-1904 FF, C-F-WF-1894 FF+8d, C-F-WF-1914 FF+8d, C-F-FF-1904 FF, C-F-FF-1894 FF, C-F-CF-3327 FF+8d, C-F-CF-3317 FF, C-CS-Su-A-CW-2152 FF+8d, C-F-DW-1934 FF+8d, C-F-DW-1924 FF+8d, C-F-WF-1944 FF+8d, C-F-WF-1934 FF+8d, C-F-WF-1954 FF+8d, C-F-FF-1944 FF+8d, C-F-FF-1934 FF+8d, C-F-CF-3397 FF+8d, C-F-CF-3387 FF+8d, C-CS-Su-A-CW-2132 FF+8d, C-F-DW-1974 FF, C-F-DW-1964 FF, C-F-WF-1984 FF, C-F-WF-1974 FF, C-F-WF-1994 FF, C-F-FF-1984 FF, C-F-FF-1974 FF, C-F-CF-3467 FF, C-F-CF-3457 FF, C-CS-Su-A-CW-2162 FF, C-F-DW-2014 FF+8d, C-F-DW-2004 FF+8d, C-F-WF-2024 FF+8d, C-F-WF-2014 FF+8d, C-F-WF-2034 FF+8d, C-F-FF-2024 FF+8d, C-F-FF-2014 FF+8d, C-F-CF-3537 FF+8d, C-F-CF-3527 FF+8d, C-CS-Su-A-CW-2112 FF+8d, C-F-DW-2054 FF+5d, C-F-DW-2044 FF+5d, C-F-WF-2064 FF+5d, C-F-WF-2054 FF+5d, C-F-WF-2074 FF+5d, C-F-FF-2064 FF+5d, C-F-FF-2054 FF+5d, C-F-CF-3607 FF+5d, C-F-CF-3597 FF+5d, C-CS-Su-A-CW-2172 FF+5d, C-F-DW-134, C-F-DW-124, C-F-WF-144, C-F-WF-134, C-F-WF-154, C-F-FF-144, C-F-FF-134, C-F-CF-247, C-F-CF-237, C-CS-Su-A-CW-1722, C-SP-MRP-241 FS+10d, S-001, C-KFS-101 FF, C-CWD-181, C-HSL-SSP-006 FF, C-HSL-SP-005 FF, C-HSL-G-005, C-HSL-NC-005, C-P-SG-S-542, C-P-OS-0522 FF, C-P-OS-001 FF, C-P-OS-002 FF, C-P-OS-0022 FF, C-P-OS-0032 FF, C-P-OS-0042 FF, C-P-OS-0052 FF, C-P-OS-0062 FF, C-P-OS-0072 FF, C-P-OS-0082 FF, C-P-OS-0092 FF, C-P-OS-0102 FF, C-P-OS-0112 FF, C-P-OS-0122 FF, C-P-OS-0132 FF, C-P-OS-0142 FF, C-P-OS-0152 FF, C-P-OS-0162 FF, C-P-OS-0172 FF, C-P-OS-0182 FF, C-P-OS-0202 FF, C-P-OS-0212 FF, C-P-OS-0222 FF, C-P-OS-0232 FF, C-P-OS-0242 FF, C-P-OS-0252 FF, C-P-OS-0262 FF, C-P-OS-0272 FF, C-P-OS-0282 FF, C-P-OS-0292 FF, C-P-OS-0302 FF, C-P-OS-0312 FF, C-P-OS-0322 FF, C-P-OS-0332 FF, C-P-OS-0342 FF, C-P-OS-0352 FF, C-P-OS-0362 FF, C-P-OS-0382 FF, C-P-OS-0392 FF, C-P-OS-0402 FF, C-P-OS-0412 FF, C-P-OS-0422 FF, C-P-OS-0432 FF, C-P-OS-0442 FF, C-P-OS-0452 FF, C-P-OS-0462 FF, C-P-OS-0472 FF, C-P-OS-0512 FF, C-P-OS-0532 FF, C-F-WF-2124, P-AF-B-1123, C-CA-FU-71, TC-LE-001 FF+5d, C-LH-L-695 FF, C-CA-FU-141, C-LH-L-705, G-P-001 FF, PQ-CS-C-2382 FF, PQ-CS-C-2342 FF, PQ-CS-C-2322 FF, PQ-CS-C-2302 FF, PQ-CS-C-2362 FF, PQ-CS-C-2282 FF, PQ-CS-C-2262 FF, DS-C-PQ-CS-13 | 0d |  |  |  |  |

Notes:
- S-001: Expenses: 1 114351

## Activity codes

| Code | Value | Meaning |
| --- | --- | --- |
| AREA | GEN | General |
| AREA | S | Summary |
