# DUKHAN HOUSING PROJECT PHASE IX

Schedule from Primavera P6, 2012-11-01 to 2015-03-31, data date 2012-11-01, costs in QR.
Must finish by 2015-03-31

| ID | WBS | Activity | Duration | Start | Finish | Predecessors | Total float | Free float | Resources | Cost | CODE | P3 ACTID | P6 ID (old) | NP61D | PROJECT | PHASES | PACKAGE | PART | ELEMENTS | STEP | FLOORS | BILL NOS | BILL DIVISION | RES PACK | rem |
| --- | --- | --- | --- | --- | --- | --- | --- | --- | --- | --- | --- | --- | --- | --- | --- | --- | --- | --- | --- | --- | --- | --- | --- | --- | --- |
|  | 15 | **EXTERNAL FINISHES** |  | 2013-09-30 | 2013-12-31 |  |  |  |  |  |  |  |  |  |  |  |  |  |  |  |  |  |  |  |  |
|  | 10 | **ROOF** |  | 2013-09-30 | 2013-12-02 |  |  |  |  |  |  |  |  |  |  |  |  |  |  |  |  |  |  |  |  |
| DUKHCONP2AZ2ARRF3625 |  | Laying of Pitched Roof | 25d | 2013-09-30 | 2013-10-30 | DUKHCONP2AZ2STRF2060 FF+10d, DUKHCONP2AZ2STRF2060 SS+10d, DUKHCONP2AZ2STRF2065 SS+10d, DUKHCONP2AZ2STRF2065 FF+10d, DUKHCONP2AZ1ARRF3630 | 30d | 0d | INTERLOCK MASON SK [184 h]; LABOR- SUBCONTRACTOR [72 h]; ROOF TILES QTY [234 Sqm] | 120,042 | 10 | 2AP2EFRF05 | DUKHCON2AP2ARRF3625 | DUKHCONP2AZ2ARRF3625 | DH | CON | 2A | Z2 | FIN | EF | RF | B06 | B06-D04 | RSE-2A |  |
| DUKHCONP2AZ2ARRF3630 |  | Leveling Screed for Waterproofing | 18d | 2013-10-14 | 2013-11-05 | DUKHCONP2AZ2ARRF3625 SS+5d, DUKHCONP2AZ2ARRF3625 FF+5d | 30d | 0d | SCREED MASON SK [125 h]; LABOR- SUBCONTRACTOR [70.5 h]; ROOF WP SCREED QTY [312 Sqm] | 16,134 | 15 | 2AP2EFRF10 | DUKHCON2AP2ARRF3630 | DUKHCONP2AZ2ARRF3630 | DH | CON | 2A | Z2 | FIN | EF | RF | B06 | B06-D04 | RSE-2A | REM |
| DUKHCONP2AZ2ARRF3635 |  | Laying of Waterproofing Membrane | 18d | 2013-10-22 | 2013-11-11 | DUKHCONP2AZ2ARRF3630 FF+5d, DUKHCONP2AZ2ARRF3630 SS+5d | 30d | 0d | LABOR- SUBCONTRACTOR [197.25 h]; ROOF WP MEMBRANE QTY [984 Sqm]; WATERPROOFING SPECIALIST SK [525 h] | 25,318 | 20 | 2AP2EFRF15 | DUKHCON2AP2ARRF3635 | DUKHCONP2AZ2ARRF3635 | DH | CON | 2A | Z2 | FIN | EF | RF | B06 | B06-D04 | RSE-2A | REM |
| DUKHCONP2AZ2ARRF3640 |  | Installation of Insulation & Protection | 18d | 2013-10-27 | 2013-11-16 | DUKHCONP2AZ2ARRF3635 FF+4d, DUKHCONP2AZ2ARRF3635 SS+4d, DUKHCONP2AZ1ARRF3645 | 30d | 0d | LABOR- SUBCONTRACTOR [93.75 h]; ROOF WP INSULATION QTY [624 Sqm]; WATERPROOFING SPECIALIST SK [250 h] | 15,264 | 25 | 2AP2EFRF20 | DUKHCON2AP2ARRF3640 | DUKHCONP2AZ2ARRF3640 | DH | CON | 2A | Z2 | FIN | EF | RF | B06 | B06-D04 | RSE-2A | REM |
| DUKHCONP2AZ2ARRF3645 |  | Lime Stone Chips & Paving slab Installation | 18d | 2013-11-04 | 2013-11-24 | DUKHCONP2AZ2ARRF3640 FF+7d, DUKHCONP2AZ2ARRF3640 SS+7d | 30d | 0d | TILE MASON SK [125 h]; LABOR- SUBCONTRACTOR [94.5 h]; LIME STONE QTY [312 Sqm]; PRECAST PAVING SLAB QTY [312 Sqm]; PRE CAST CONCRETE SK [125 h] | 29,640 | 35 | 2AP2EFRF25 | DUKHCON2AP2ARRF3645 | DUKHCONP2AZ2ARRF3645 | DH | CON | 2A | Z2 | FIN | EF | RF | B06 | B06-D04 | RSE-2A | REM |
| DUKHCONP2AZ2ARRF3660 |  | Installation of Access Ladder | 20d | 2013-11-10 | 2013-12-02 | DUKHCONP2AZ2ARRF3645 SS+5d, DUKHCONP2AZ1ARRF3660, DUKHCONP2AZ2ARRF3645 FF+5d | 69d | 5d | LABOR- SUBCONTRACTOR [36 h]; LADDER QTY [12 ea]; LADDER ERECTOR SK [96 h] | 14,364 | 40 | 2AP2EFRF40 | DUKHCON2AP2ARRF3660 | DUKHCONP2AZ2ARRF3660 | DH | CON | 2A | Z2 | FIN | EF | RF | B06 | B06-D06 | RSE-2A | REM |
|  | 15 | **ELEVATION** |  | 2013-11-16 | 2013-12-31 |  |  |  |  |  |  |  |  |  |  |  |  |  |  |  |  |  |  |  |  |
| DUKHCONP2AZ2AREL3665 |  | External Plastering | 25d | 2013-11-16 | 2013-12-14 | DUKHCONP2AZ2STRF2065 FF+7d, DUKHCONP2AZ2ARRF3645 FF+10d, DUKHCONP2AZ2STRF2065 SS+7d, DUKHCONP2AZ1AREL3665, DUKHCONP2AZ2ARRF3645 SS+10d | 30d | 0d | PLASTER MASON SK [2568 h]; LABOR - CIVIL [1444.5 h]; EXTERNAL PLASTER QTY [1284 Sqm] | 30,816 | 10 | 2AP2EFEL10 | DUKHCON2AP2AREL3665 | DUKHCONP2AZ2AREL3665 | DH | CON | 2A | Z2 | FIN | EF | EL | B06 | B06-D10 | RSE-2A | REM |
| DUKHCONP2AZ2AREL3680 |  | External Painting | 20d | 2013-12-08 | 2013-12-31 | DUKHCONP2AZ2AREL3665 FF+14d, DUKHCONP2AZ2ARRF3660 FF+10d, DUKHCONP2AZ1AREL3680, DUKHCONP2AZ2AREL3665 SS+14d | 55d | 5d | LABOR- SUBCONTRACTOR [384 h]; PAINT QTY [1284 Sqm]; PAINTERS SK [1024 h] | 30,274 | 20 | 2AP2EFEL20 | DUKHCON2AP2AREL3680 | DUKHCONP2AZ2AREL3680 | DH | CON | 2A | Z2 | FIN | EF | EL | B06 | B06-D11 | RSE-2A |  |
|  | 20 | **MEP WORKS** |  | 2013-06-17 | 2014-03-31 |  |  |  |  |  |  |  |  |  |  |  |  |  |  |  |  |  |  |  |  |
|  | 10 | **ELECTRICAL WORKS** |  | 2013-09-28 | 2014-03-20 |  |  |  |  |  |  |  |  |  |  |  |  |  |  |  |  |  |  |  |  |
|  | 10 | **GROUND FLOOR** |  | 2013-09-28 | 2014-02-23 |  |  |  |  |  |  |  |  |  |  |  |  |  |  |  |  |  |  |  |  |
| DUKHCONP2AZ2ELGF4000 |  | Fixing of wall conduits & switch socket boxes | 20d | 2013-09-28 | 2013-10-22 | DUKHCONP2AZ2ARGF3000 FF+7d, DUKHCONP2AZ2ARGF3000 SS+7d | 13d | 0d | LABOR- SUBCONTRACTOR [102 h]; ELECTRICIANS SK [492.8 h]; SOCKET BOXES QTY [222 ea]; CODUITS QTY [222 lm] | 23,814 | 10 | 2AP2EWGF10 | DUKHCON2AP2ELGF4000 | DUKHCONP2AZ2ELGF4000 | DH | CON | 2A | Z2 | MEP | EW | GF | B06 | B06-D09 | RSE-2A |  |
| DUKHCONP2AZ2ELGF4005 |  | Cable tray & trunking installation | 20d | 2013-10-13 | 2013-11-06 | DUKHCONP2AZ1ELGF4005, DUKHCONP2AZ2ELGF4000 FF+7d, DUKHCONP2AZ2ELGF4000 SS+7d | 13d | 0d | LABOR- SUBCONTRACTOR [432 h]; ELECTRICIANS SK [1612.8 h]; CABLE TRAY QTY [288 lm] | 9,900 | 15 | 2AP2EWGF15 | DUKHCON2AP2ELGF4005 | DUKHCONP2AZ2ELGF4005 | DH | CON | 2A | Z2 | MEP | EW | GF | B06 | B06-D09 | RSE-2A |  |
| DUKHCONP2AZ2ELGF4010 |  | Installation of wiring & Main Cabling | 20d | 2013-10-23 | 2013-11-14 | DUKHCONP2AZ2ELGF4005 FF+7d, DUKHCONP2AZ2ELGF4005 SS+7d | 41d | 34d | LABOR- SUBCONTRACTOR [90 h]; ELECTRICIANS SK [324.8 h]; CABLE QTY [288 lm] | 71,442 | 20 | 2AP2EWGF20 | DUKHCON2AP2ELGF4010 | DUKHCONP2AZ2ELGF4010 | DH | CON | 2A | Z2 | MEP | EW | GF | B06 | B06-D09 | RSE-2A |  |
| DUKHCONP2AZ2ELGF4020 |  | Installation of DBS,MCCB Accessories. | 20d | 2014-01-19 | 2014-02-10 | DUKHCONP2AZ2ELGF4010 FF+5d, DUKHCONP2AZ2ELGF4010 SS+5d, DUKHCONP2AZ2ARGF3060 FF+7d, DUKHCONP2AZ1ELGF4020, DUKHCONP2AZ2ARGF3060 SS+7d | 48d | 0d | LABOR- SUBCONTRACTOR [36 h]; ELECTRICIANS SK [134.4 h]; MCCB QTY [60 ea]; DB QTY [6 ea] | 38,607 | 25 | 2AP2EWGF25 | DUKHCON2AP2ELGF4020 | DUKHCONP2AZ2ELGF4020 | DH | CON | 2A | Z2 | MEP | EW | GF | B06 | B06-D09 | RSE-2A |  |
| DUKHCONP2AZ2ELGF4015 |  | Install. of CAMS & Fire Fighting Accessories | 20d | 2014-01-27 | 2014-02-19 | DUKHCONP2AZ1ELGF4015, DUKHCONP2AZ2ARGF3060 SS+14d, DUKHCONP2AZ2ARGF3060 FF+14d | 13d | 0d | LABOR- SUBCONTRACTOR [396 h]; MECHANICALS SK [712.8 h]; SMOKE DETECTOR POINTS QTY [126 ea]; FIRE EXTINGUISHER QTY [6 ea] | 53,272 | 35 | 2AP2EWGF35 | DUKHCON2AP2ELGF4015 | DUKHCONP2AZ2ELGF4015 | DH | CON | 2A | Z2 | MEP | EW | GF | B06 | B06-D09 | RSE-2A |  |
| DUKHCONP2AZ2ELGF4025 |  | Installation of Lighting fixtures & Accessories | 20d | 2014-01-30 | 2014-02-23 | DUKHCONP2AZ2ELGF4020 SS+10d, DUKHCONP2AZ2ELGF4020 FF+10d, DUKHCONP2AZ2ARGF3060 FF+10d, DUKHCONP2AZ2ARGF3060 SS+10d | 48d | 0d | LABOR- SUBCONTRACTOR [138 h]; ELECTRICIANS SK [257.6 h]; LIGHTS QTY [114 ea] | 99,288 | 30 | 2AP2EWGF30 | DUKHCON2AP2ELGF4025 | DUKHCONP2AZ2ELGF4025 | DH | CON | 2A | Z2 | MEP | EW | GF | B06 | B06-D09 | RSE-2A |  |
| DUKHCONP2AZ2ELGF4030 |  | Installation of Telephone System | 20d | 2014-01-30 | 2014-02-23 | DUKHCONP2AZ2MSEX5010, DUKHCONP2AZ1ELGF4030, DUKHCONP2AZ2ELGF4020 FF+10d, DUKHCONP2AZ2ELGF4020 SS+10d, DUKHCONP2AZ2ARGF3060 FF+5d, DUKHCONP2AZ2ARGF3060 SS+5d | 51d | 3d | LABOR- SUBCONTRACTOR [18 h]; ELECTRICIANS SK [134.4 h]; TELEPHONE SOCKETS QTY [12 ea] | 43,206 | 40 | 2AP2EWGF40 | DUKHCON2AP2ELGF4030 | DUKHCONP2AZ2ELGF4030 | DH | CON | 2A | Z2 | MEP | EW | GF | B06 | B06-D09 | RSE-2A |  |
|  | 20 | **ROOF** |  | 2014-02-15 | 2014-03-20 |  |  |  |  |  |  |  |  |  |  |  |  |  |  |  |  |  |  |  |  |
| DUKHCONP2AZ2ELRF4070 |  | Installation of Isolator | 18d | 2014-02-15 | 2014-03-06 | DUKHCONP2AZ2ELGF4010 SS+10d, DUKHCONP2AZ2ELGF4010 FF+10d, DUKHCONP2AZ2ELGF4025 SS+10d, DUKHCONP2AZ2ELGF4030 SS+5d, DUKHCONP2AZ2ARRF3645 SS+7d, DUKHCONP2AZ2ELGF4025 FF+10d, DUKHCONP2AZ2ARRF3645 FF+7d, DUKHCONP2AZ2ELGF4030 FF+7d | 48d | 0d | ELECTRICIANS SK [235.2 h]; ISOLATOR QTY [42 ea]; LABOR- SUBCONTRACTOR [126 h] | 22,378 | 10 | 2AP2EWRF10 | DUKHCON2AP2ELRF4070 | DUKHCONP2AZ2ELRF4070 | DH | CON | 2A | Z2 | MEP | EW | RF | B06 | B06-D09 | RSE-2A |  |
| DUKHCONP2AZ2ELRF4075 |  | Installation of TV Dish Antenna | 20d | 2014-02-26 | 2014-03-20 | DUKHCONP2AZ1ELRF4075, DUKHCONP2AZ2ELRF4070 SS+10d, DUKHCONP2AZ2ELRF4070 FF+10d | 48d | 14d | LABOR- SUBCONTRACTOR [54 h]; ELECTRICIANS SK [134.4 h]; CONTROL BOX QTY [6 ea]; SWITCHING BOX QTY [6 ea] | 23,716 | 15 | 2AP2EWRF15 | DUKHCON2AP2ELRF4075 | DUKHCONP2AZ2ELRF4075 | DH | CON | 2A | Z2 | MEP | EW | RF | B06 | B06-D09 | RSE-2A |  |

Notes:
- DUKHCONP2AZ2ARRF3625: Expenses: P2A-Roofing 120042
- DUKHCONP2AZ2ARRF3630: Expenses: P2A-Roofing 16134
- DUKHCONP2AZ2ARRF3635: Expenses: P2A-Roofing 25318
- DUKHCONP2AZ2ARRF3640: Expenses: P2A-Roofing 15264
- DUKHCONP2AZ2ARRF3645: Expenses: P2A-Roofing 29640
- DUKHCONP2AZ2ARRF3660: Expenses: P2A-Metal work 14364
- DUKHCONP2AZ2AREL3665: Expenses: P2A-Finishes 30816
- DUKHCONP2AZ2AREL3680: Expenses: P2A-Painting and Decorating 30274
- DUKHCONP2AZ2ELGF4000: Expenses: P2A-Electrical Installations 23814
- DUKHCONP2AZ2ELGF4005: Expenses: P2A-Electrical Installations 9900
- DUKHCONP2AZ2ELGF4010: Expenses: P2A-Electrical Installations 71442
- DUKHCONP2AZ2ELGF4020: Expenses: P2A-Electrical Installations 38607
- DUKHCONP2AZ2ELGF4015: Expenses: P2A-Electrical Installations 53272
- DUKHCONP2AZ2ELGF4025: Expenses: P2A-Electrical Installations 99288
- DUKHCONP2AZ2ELGF4030: Expenses: P2A-Electrical Installations 43206
- DUKHCONP2AZ2ELRF4070: Expenses: P2A-Electrical Installations 22378
- DUKHCONP2AZ2ELRF4075: Expenses: P2A-Electrical Installations 23716

| ID | WBS | Activity | Duration | Start | Finish | Predecessors | Total float | Free float | Resources | Cost | CODE | P3 ACTID | P6 ID (old) | NP61D | PROJECT | PHASES | PACKAGE | PART | ELEMENTS | STEP | FLOORS | BILL NOS | BILL DIVISION | RES PACK |
| --- | --- | --- | --- | --- | --- | --- | --- | --- | --- | --- | --- | --- | --- | --- | --- | --- | --- | --- | --- | --- | --- | --- | --- | --- |
|  | 15 | **PLUMBING, DRAINAGE & FIRE FIGHTING WORKS** |  | 2013-06-17 | 2014-03-04 |  |  |  |  |  |  |  |  |  |  |  |  |  |  |  |  |  |  |  |
|  | 10 | **GROUND FLOOR** |  | 2013-06-17 | 2014-03-04 |  |  |  |  |  |  |  |  |  |  |  |  |  |  |  |  |  |  |  |
| DUKHCONP2AZ2PLUG4300 |  | Drainage / Storm Pipes in Grade Slab | 20d | 2013-06-17 | 2013-07-09 | DUKHCONP2AZ2STUG1040 FF+7d, DUKHCONP2AZ2STUG1040 SS+7d | 13d | 0d | LABOR- SUBCONTRACTOR [42 h]; MECHANICALS SK [140.4 h]; DRAINAGE PIPES QTY [252 lm] | 10,110 | 10 | 2AP2PLUG10 | DUKHCON2AP2PLUG4300 | DUKHCONP2AZ2PLUG4300 | DH | CON | 2A | Z2 | ST | SB | UG | B06 | B06-D07 | RSE-2A |
| DUKHCONP2AZ2PLGF4305 |  | Installation of Plumbing pipes & testing | 20d | 2013-09-28 | 2013-10-22 | DUKHCONP2AZ2ARGF3000 FF+7d, DUKHCONP2AZ2ARGF3000 SS+7d | 13d | 0d | LABOR- SUBCONTRACTOR [312 h]; MECHANICALS SK [1123.2 h]; PLUMB PIPES QTY [1038 lm] | 64,872 | 10 | 2AP2PLGF10 | DUKHCON2AP2PLGF4305 | DUKHCONP2AZ2PLGF4305 | DH | CON | 2A | Z2 | MEP | PL | GF | B06 | B06-D07 | RSE-2A |
| DUKHCONP2AZ2PLGF4310 |  | Installation of Drainage pipes &testing | 18d | 2013-10-06 | 2013-10-28 | DUKHCONP2AZ2ARGF3000 FF+7d, DUKHCONP2AZ2PLGF4305 SS, DUKHCONP2AZ1PLGF4310, DUKHCONP2AZ2PLGF4305 FF, DUKHCONP2AZ2ARGF3000 SS+7d | 32d | 9d | LABOR- SUBCONTRACTOR [18 h]; MECHANICALS SK [54 h]; DRAINAGE PIPES QTY [102 lm] | 2,533 | 15 | 2AP2PLGF15 | DUKHCON2AP2PLGF4310 | DUKHCONP2AZ2PLGF4310 | DH | CON | 2A | Z2 | MEP | PL | GF | B06 | B06-D07 | RSE-2A |
| DUKHCONP2AZ2PLGF4315 |  | Sanitary Fittings & Accessories | 20d | 2014-01-28 | 2014-02-20 | DUKHCONP2AZ2ARGF3065 FF+5d, DUKHCONP2AZ2PLGF4310 SS+5d, DUKHCONP2AZ1PLGF4315, DUKHCONP2AZ2PLGF4310 FF+5d, DUKHCONP2AZ2ARGF3065 SS+5d | 7d | 0d | LABOR- SUBCONTRACTOR [78 h]; MECHANICALS SK [140.4 h]; SANITARY ACC QTY [132 ea] | 59,278 | 20 | 2AP2PLGF20 | DUKHCON2AP2PLGF4315 | DUKHCONP2AZ2PLGF4315 | DH | CON | 2A | Z2 | MEP | PL | GF | B06 | B06-D07 | RSE-2A |
| DUKHCONP2AZ2PLGF4320 |  | Installation of Water Heater | 15d | 2014-02-16 | 2014-03-04 | DUKHCONP2AZ2PLGF4315 FF+5d, DUKHCONP2AZ1PLGF4320, DUKHCONP2AZ2PLGF4315 SS+5d, DUKHCONP2AZ2ARGF3060 SS+5d, DUKHCONP2AZ2ARGF3060 FF+5d | 62d | 28d | LABOR- SUBCONTRACTOR [54 h]; MECHANICALS SK [97.2 h]; WATER HEATER QTY [18 ea] | 6,502 | 25 | 2AP2PLGF25 | DUKHCON2AP2PLGF4320 | DUKHCONP2AZ2PLGF4320 | DH | CON | 2A | Z2 | MEP | PL | GF | B06 | B06-D07 | RSE-2A |
|  | 20 | **ROOF** |  | 2013-12-24 | 2014-01-09 |  |  |  |  |  |  |  |  |  |  |  |  |  |  |  |  |  |  |  |
| DUKHCONP2AZ2PLRF4350 |  | Installation of Rain water Pipes | 15d | 2013-12-24 | 2014-01-09 | DUKHCONP2AZ2PLGF4310 FF+5d, DUKHCONP2AZ2PLGF4310 SS+5d, DUKHCONP2AZ1PLRF4350, DUKHCONP2AZ2ARRF3645 SS+5d, DUKHCONP2AZ2ARRF3645 FF+5d, DUKHCONP2AZ2AREL3665 SS+7d, DUKHCONP2AZ2PLGF4305 SS+5d, DUKHCONP2AZ2AREL3665 FF+7d, DUKHCONP2AZ2PLGF4305 FF+5d | 25d | 0d | LABOR- SUBCONTRACTOR [60 h]; MECHANICALS SK [205.2 h]; RAINWATER PIPES QTY [96 lm] | 55,496 | 15 | 2AP2PLRF15 | DUKHCON2AP2PLRF4350 | DUKHCONP2AZ2PLRF4350 | DH | CON | 2A | Z2 | MEP | PL | RF | B06 | B06-D07 | RSE-2A |
|  | 20 | **AC WORKS** |  | 2013-10-28 | 2014-03-31 |  |  |  |  |  |  |  |  |  |  |  |  |  |  |  |  |  |  |  |
|  | 10 | **GROUND FLOOR** |  | 2013-10-28 | 2014-03-13 |  |  |  |  |  |  |  |  |  |  |  |  |  |  |  |  |  |  |  |
| DUKHCONP2AZ2ACGF4600 |  | Installation AC Pipes | 20d | 2013-10-28 | 2013-11-19 | DUKHCONP2AZ1ACGF4600, DUKHCONP2AZ2ARGF3005 FF+7d, DUKHCONP2AZ2ARGF3005 SS+7d | 28d | 0d | LABOR- SUBCONTRACTOR [120 h]; AC TECHNICIAN SK [436.8 h]; AC PIPES QTY [1182 lm] | 4,313 | 10 | 2AP2ACGF10 | DUKHCON2AP2ACGF4600 | DUKHCONP2AZ2ACGF4600 | DH | CON | 2A | Z2 | MEP | AC | GF | B06 | B06-D08 | RSE-2A |
| DUKHCONP2AZ2ACGF4605 |  | Fixing of Ventilation Equipments | 25d | 2014-01-27 | 2014-02-25 | DUKHCONP2AZ2ACGF4600 SS+10d, DUKHCONP2AZ2ARGF3060 SS+14d, DUKHCONP2AZ2ARGF3060 FF+14d, DUKHCONP2AZ2ACGF4600 FF+10d | 39d | 0d | LABOR- SUBCONTRACTOR [18 h]; AC TECHNICIAN SK [67.2 h]; VENTILIATION EQP QTY [24 ea] | 14,750 | 15 | 2AP2ACGF15 | DUKHCON2AP2ACGF4605 | DUKHCONP2AZ2ACGF4605 | DH | CON | 2A | Z2 | MEP | AC | GF | B06 | B06-D08 | RSE-2A |
| DUKHCONP2AZ2ACGF4610 |  | Fixing of Split AC | 20d | 2014-02-19 | 2014-03-13 | DUKHCONP2AZ2ACGF4605 SS+14d, DUKHCONP2AZ2ACGF4605 FF+14d | 39d | 5d | LABOR- SUBCONTRACTOR [54 h]; AC TECHNICIAN SK [100.8 h]; SPILIT UNIT QTY [18 ea] | 18,875 | 20 | 2AP2ACGF20 | DUKHCON2AP2ACGF4610 | DUKHCONP2AZ2ACGF4610 | DH | CON | 2A | Z2 | MEP | AC | GF | B06 | B06-D08 | RSE-2A |
|  | 20 | **ROOF** |  | 2013-11-20 | 2014-03-31 |  |  |  |  |  |  |  |  |  |  |  |  |  |  |  |  |  |  |  |
| DUKHCONP2AZ2ACRF4630 |  | Installation of Refrigerant Pipes | 20d | 2013-11-20 | 2013-12-12 | DUKHCONP2AZ2ARRF3645 FF+14d, DUKHCONP2AZ2ACGF4600 FF+14d, DUKHCONP2AZ2ARRF3645 SS+14d, DUKHCONP2AZ2ACGF4600 SS+14d, DUKHCONP2AZ1ACRF4630 | 60d | 5d | LABOR- SUBCONTRACTOR [6 h]; AC TECHNICIAN SK [11.2 h]; AC PIPES QTY [42 lm] | 3,348 | 10 | 2AP2ACRF10 | DUKHCON2AP2ACRF4630 | DUKHCONP2AZ2ACRF4630 | DH | CON | 2A | Z2 | MEP | AC | RF | B06 | B06-D08 | RSE-2A |
| DUKHCONP2AZ2ACRF4635 |  | Installation of Condensing Unit | 25d | 2014-03-03 | 2014-03-31 | DUKHCONP2AZ1ACRF4635, DUKHCONP2AZ2ACRF4630 SS+10d, DUKHCONP2AZ2ACGF4610 FF+5d, DUKHCONP2AZ2ACRF4630 FF+10d, DUKHCONP2AZ2ACGF4610 SS+5d | 39d | 5d | LABOR- SUBCONTRACTOR [30 h]; AC TECHNICIAN SK [100.8 h]; AC UNITS QTY [18 ea] | 24,635 | 15 | 2AP2ACRF15 | DUKHCON2AP2ACRF4635 | DUKHCONP2AZ2ACRF4635 | DH | CON | 2A | Z2 | MEP | AC | RF | B06 | B06-D08 | RSE-2A |
|  | 25 | **EXTERNAL WORKS** |  | 2013-10-14 | 2014-05-13 |  |  |  |  |  |  |  |  |  |  |  |  |  |  |  |  |  |  |  |
|  | 10 | **MISCELLANEOUS** |  | 2013-10-14 | 2014-05-13 |  |  |  |  |  |  |  |  |  |  |  |  |  |  |  |  |  |  |  |
| DUKHCONP2AZ2MSEX5020 |  | Construction Entrance Ramp | 20d | 2013-10-14 | 2013-11-07 | DUKHCONP2AZ2STRF2065 FF, DUKHCONP2AZ2STRF2065 SS, DUKHCONP2AZ1MSEX5020 | 30d | 0d | SCREED MASON SK [136 h]; CONCRETE MASON SK [32 h]; INTERLOCK MASON SK [136 h]; LABOR - CIVIL [78 h]; LABOR- SUBCONTRACTOR [54 h]; SCREED QTY [168 Sqm]; INTERLOCK QTY [168 Sqm]; CONCRETE QTY [16.8 Cum] | 43,008 | 10 | 2AP2MSEX10 | DUKHCON2AP2MS005020 | DUKHCONP2AZ2MSEX5020 | DH | CON | 2A | Z2 | EX | MS |  | B06 | B06-D12 | RSE-2A |
| DUKHCONP2AZ2MSEX5055 |  | Installation Steel Door | 20d | 2013-10-28 | 2013-11-19 | DUKHCONP2AZ2MSEX5020 SS+10d | 30d | 0d | GATE QTY [6 ea]; GATE ERECTOR SK [100 h]; LABOR- SUBCONTRACTOR [80 h] | 23,090 | 20 | 2AP2MSEX35 | DUKHCON2AP2MS005055 | DUKHCONP2AZ2MSEX5055 | DH | CON | 2A | Z2 | EX | MS |  | B06 | B06-D06 | RSE-2A |
| DUKHCONP2AZ2MSEX5000 |  | Construction of Manholes | 25d | 2013-10-30 | 2013-11-27 | DUKHCONP2AZ2STRF2065 FF+5d, DUKHCONP2AZ2STRF2065 SS+5d, DUKHCONP2AZ1MSEX5000, DUKHCONP2AZ2PLGF4310 SS+10d, DUKHCONP2AZ2PLGF4310 FF+10d | 42d | 0d | MANHOLES SK [96 h]; LABOR - CIVIL [36 h]; MANHOLES QTY [12 ea] | 14,040 | 25 | 2AP2MSEX25 | DUKHCON2AP2MS005000 | DUKHCONP2AZ2MSEX5000 | DH | CON | 2A | Z2 | EX | MS |  | B06 | B06-D12 | RSE-2A |
| DUKHCONP2AZ2MSEX5025 |  | SS.Handrails and Balustrades | 20d | 2013-11-09 | 2013-12-01 | DUKHCONP2AZ2MSEX5020 FF+10d, DUKHCONP2AZ1MSEX5025, DUKHCONP2AZ2MSEX5020 SS+10d, DUKHCONP2AZ2MSEX5055 SS+10d | 30d | 0d | LABOR- SUBCONTRACTOR [48 h]; S.S.BALUSTRADE QTY [42 lm]; HANDRAIL ERECTOR SKILLED [88 h] | 42,745 | 15 | 2AP2MSEX15 | DUKHCON2AP2MS005025 | DUKHCONP2AZ2MSEX5025 | DH | CON | 2A | Z2 | EX | MS |  | B06 | B06-D12 | RSE-2A |
| DUKHCONP2AZ2MSEX5005 |  | Construction of Soak pit, Chambers | 25d | 2013-11-13 | 2013-12-11 | DUKHCONP2AZ2MSEX5000 FF+12d, DUKHCONP2AZ2MSEX5000 SS+12d | 42d | 0d | MANHOLES SK [48 h]; LABOR - CIVIL [18 h]; SOAKPIT QTY [6 ea] | 22,506 | 30 | 2AP2MSEX30 | DUKHCON2AP2MS005005 | DUKHCONP2AZ2MSEX5005 | DH | CON | 2A | Z2 | EX | MS |  | B06 | B06-D12 | RSE-2A |
| DUKHCONP2AZ2MSEX5015 |  | Construction of grease Trap | 20d | 2013-12-03 | 2013-12-26 | DUKHCONP2AZ2MSEX5005 FF+12d, DUKHCONP2AZ2MSEX5005 SS+12d | 42d | 0d | LABOR- SUBCONTRACTOR [48 h]; GREASE TRAP QTY [60 lm]; HANDRAIL ERECTOR SKILLED [120 h] | 17,022 | 20 | 2AP2MSEX20 | DUKHCON2AP2MS005015 | DUKHCONP2AZ2MSEX5015 | DH | CON | 2A | Z2 | EX | MS |  | B06 | B06-D07 | RSE-2A |
| DUKHCONP2AZ2MSEX5010 |  | Telephone cable laying | 25d | 2013-12-28 | 2014-01-25 | DUKHCONP2AZ2MSEX5015 | 55d | 4d | LABOR - CIVIL [125 h]; LABOR- SUBCONTRACTOR [125 h]; ELECTRICIANS SK [125 h]; CONCRETE MASON SK [125 h] | 992 |  | 2AP2MSEX40 | DUKHCON2AP2MS005010 | DUKHCONP2AZ2MSEX5010 | DH | CON | 2A | Z2 | EX | MS |  | B06 | B06-D12 | RSE-2A |
| DUKHCONP2AZ2MSEX5335 |  | Aluminum Roll-up Shutter with 2m Wall | 25d | 2014-04-15 | 2014-05-13 | DUKHCONI2AZ2BWGL5325 SS+10d, DUKHCONP2AZ1MSEX5335 | 27d |  | LABOR- SUBCONTRACTOR [200 h]; DOOR ERECTOR SK [200 h]; ROLLING SHUTTER QTY [6 ea] | 25,259 | 25 | 2AP2BWFR25 | DUKHCON2AP2MS005335 | DUKHCONP2AZ2MSEX5335 | DH | CON | 2A | Z2 | EX | MS |  | B06 | B06-D12 | RSE-2A |

Notes:
- DUKHCONP2AZ2PLUG4300: Expenses: P2A-Plumbing and Drainage works 10110
- DUKHCONP2AZ2PLGF4305: Expenses: P2A-Plumbing and Drainage works 64872
- DUKHCONP2AZ2PLGF4310: Expenses: P2A-Plumbing and Drainage works 2533
- DUKHCONP2AZ2PLGF4315: Expenses: P2A-Plumbing and Drainage works 59278
- DUKHCONP2AZ2PLGF4320: Expenses: P2A-Plumbing and Drainage works 6502
- DUKHCONP2AZ2PLRF4350: Expenses: P2A-Plumbing and Drainage works 55496
- DUKHCONP2AZ2ACGF4600: Expenses: P2A-Air-conditioning and Ventilation works 4313
- DUKHCONP2AZ2ACGF4605: Expenses: P2A-Air-conditioning and Ventilation works 14750
- DUKHCONP2AZ2ACGF4610: Expenses: P2A-Air-conditioning and Ventilation works 18875
- DUKHCONP2AZ2ACRF4630: Expenses: P2A-Air-conditioning and Ventilation works 3348
- DUKHCONP2AZ2ACRF4635: Expenses: P2A-Air-conditioning and Ventilation works 24635
- DUKHCONP2AZ2MSEX5020: Expenses: P2A-External works within the Plot Curtilage 43008
- DUKHCONP2AZ2MSEX5055: Expenses: P2A-Metal work 23090
- DUKHCONP2AZ2MSEX5000: Expenses: P2A-External works within the Plot Curtilage 14040
- DUKHCONP2AZ2MSEX5025: Expenses: P2A-External works within the Plot Curtilage 42745
- DUKHCONP2AZ2MSEX5005: Expenses: P2A-External works within the Plot Curtilage 22506
- DUKHCONP2AZ2MSEX5015: Expenses: P2A-Plumbing and Drainage works 17022
- DUKHCONP2AZ2MSEX5010: Expenses: P2A-External works within the Plot Curtilage 992
- DUKHCONP2AZ2MSEX5335: Expenses: P2A-External works within the Plot Curtilage 25259

| ID | WBS | Activity | Duration | Start | Finish | Predecessors | Total float | Free float | Resources | Cost | CODE | P3 ACTID | P6 ID (old) | NP61D | PROJECT | PHASES | PACKAGE | PART | ELEMENTS | STEP | BILL NOS | BILL DIVISION | RES PACK |
| --- | --- | --- | --- | --- | --- | --- | --- | --- | --- | --- | --- | --- | --- | --- | --- | --- | --- | --- | --- | --- | --- | --- | --- |
|  | 15 | **WATER TANK ENCLOSURE** |  | 2013-10-20 | 2014-02-17 |  |  |  |  |  |  |  |  |  |  |  |  |  |  |  |  |  |  |
| DUKHCONP2AZ2WEEX5030 |  | Excavation | 20d | 2013-10-20 | 2013-11-11 | DUKHCONP2AZ1WEEX5030, DUKHCONP2AZ2STRF2060 FF+5d, DUKHCONP2AZ2STRF2060 SS+5d | 15d | 0d | LABOR - CIVIL [36 h]; EXCAVATION QTY [60 Cum]; LOADER [20 h]; POCLAIN [40 h]; EQUIP OPERATORS [80 h]; TRUCK [20 h] | 672 | 10 | 2AP2WEEX10 | DUKHCON2AP2WE005030 | DUKHCONP2AZ2WEEX5030 | DH | CON | 2A | Z2 | EX | WE | B06 | B06-D12 | RSE-2A |
| DUKHCONP2AZ2WEEX5035 |  | Construction of Raft | 25d | 2013-10-26 | 2013-11-23 | DUKHCONP2AZ2WEEX5030 SS+5d, DUKHCONP2AZ2WEEX5030 FF+10d | 32d | 0d | CONCRETE MASON SK [120 h]; LABOR - CIVIL [90 h]; CONCRETE QTY [60 Cum] | 10,260 | 15 | 2AP2WEEX15 | DUKHCON2AP2WE005035 | DUKHCONP2AZ2WEEX5035 | DH | CON | 2A | Z2 | EX | WE | B06 | B06-D12 | RSE-2A |
| DUKHCONP2AZ2WEEX5040 |  | Block works & Plastering | 25d | 2013-11-04 | 2013-12-02 | DUKHCONP2AZ2WEEX5035 FF+8d, DUKHCONP2AZ2WEEX5035 SS+8d | 32d | 0d | BLOCK MASON SK [168 h]; PLASTER MASON SK [272 h]; LABOR - CIVIL [252 h]; BLOCK QTY [84 Sqm]; PLASTER QTY [168 Sqm] | 11,503 | 20 | 2AP2WEEX20 | DUKHCON2AP2WE005040 | DUKHCONP2AZ2WEEX5040 | DH | CON | 2A | Z2 | EX | WE | B06 | B06-D12 | RSE-2A |
| DUKHCONP2AZ2WEEX5045 |  | Flooring & Painting | 25d | 2013-11-16 | 2013-12-14 | DUKHCONP2AZ2WEEX5040 SS+10d, DUKHCONP2AZ2WEEX5040 FF+10d | 32d | 2d | SCREED MASON SK [56 h]; LABOR - CIVIL [24 h]; LABOR- SUBCONTRACTOR [72 h]; SCREED QTY [66 Sqm]; PAINT QTY [234 Sqm]; PAINTERS SK [184 h] | 9,558 | 25 | 2AP2WEEX25 | DUKHCON2AP2WE005045 | DUKHCONP2AZ2WEEX5045 | DH | CON | 2A | Z2 | EX | WE | B06 | B06-D12 | RSE-2A |
| DUKHCONP2AZ2WEEX5050 |  | Installation of Steel Gate | 20d | 2013-12-05 | 2013-12-29 | DUKHCONP2AZ2WEEX5045 FF+10d, DUKHCONP2AZ2MSEX5025 SS+10d, DUKHCONP2AZ1WEEX5050, DUKHCONP2AZ2MSEX5025 FF+10d, DUKHCONP2AZ2WEEX5045 SS+5d | 30d | 0d | LABOR- SUBCONTRACTOR [54 h]; LADDER QTY [6 ea]; GATE QTY [6 ea]; LADDER ERECTOR SK [48 h]; GATE ERECTOR SK [48 h] | 32,436 | 30 | 2AP2WEEX30 | DUKHCON2AP2WE005050 | DUKHCONP2AZ2WEEX5050 | DH | CON | 2A | Z2 | EX | WE | B06 | B06-D12 | RSE-2A |
| DUKHCONP2AZ2WEEX5060 |  | Structural steel & SS Shed cover installation | 25d | 2013-12-11 | 2014-01-09 | DUKHCONP2AZ2WEEX5050 FF+10d, DUKHCONP2AZ2WEEX5050 SS+5d | 30d | 20d | STRUCTURAL STEEL QTY [438 kg]; SS SHED COVER QTY [60 Sqm]; STEEL ERECTOR SK [312 h]; LABOR- SUBCONTRACTOR [222 h] | 33,315 | 35 | 2AP2WEEX35 | DUKHCON2AP2WE005060 | DUKHCONP2AZ2WEEX5060 | DH | CON | 2A | Z2 | EX | WE | B06 | B06-D12 | RSE-2A |
| DUKHCONP2AZ2WEEX5065 |  | Install. of Water Tank,Chiller,Pump & Meter | 25d | 2014-01-16 | 2014-02-15 | DUKHCONP2AZ2PLRF4350 SS+5d, DUKHCONP2AZ2WEEX5060 SS+10d, DUKHCONP2AZ2WEEX5060 FF+10d, DUKHCONP2AZ2MSEX5015 SS+5d, DUKHCONP2AZ2PLRF4350 FF+5d, DUKHCONP2AZ1WEEX5065, DUKHCONP2AZ2MSEX5015 FF+5d | 10d | 0d | LABOR- SUBCONTRACTOR [90 h]; AC TECHNICIAN SK [67.2 h]; MECHANICALS SK [129.6 h]; WATER TANK QTY [6 ea]; CHILLER QTY [60 ea]; PUMP QTY [6 ea] | 450,453 | 40 | 2AP2WEEX40 | DUKHCON2AP2WE005065 | DUKHCONP2AZ2WEEX5065 | DH | CON | 2A | Z2 | EX | WE | B06 | B06-D07 | RSE-2A |
| DUKHCONP2AZ2WEEX5070 |  | Installation ladder for water Tank | 20d | 2014-01-25 | 2014-02-17 | DUKHCONP2AZ2WEEX5065 SS+7d, DUKHCONP2AZ1WEEX5070 | 15d | 5d | LABOR- SUBCONTRACTOR [100 h]; LADDER QTY [6 ea]; LADDER ERECTOR SK [100 h] | 8,550 | 40 | 2AP2WEEX45 | DUKHCON2AP2WE005070 | DUKHCONP2AZ2WEEX5070 | DH | CON | 2A | Z2 | EX | WE | B06 | B06-D06 | RSE-2A |
|  | 20 | **HARD LANDSCAPING** |  | 2013-11-17 | 2014-01-06 |  |  |  |  |  |  |  |  |  |  |  |  |  |  |  |  |  |  |
| DUKHCONP2AZ2HDEX5090 |  | kerb works | 20d | 2013-11-17 | 2013-12-09 | DUKHCONP2AZ2MSEX5020 SS+7d, DUKHCONP2AZ2MSEX5025 SS+7d, DUKHCONP2AZ1HDEX5090, DUKHCONP2AZ2MSEX5020 FF+7d | 30d | 0d | KERBSTONE MASON SK [152 h]; LABOR- SUBCONTRACTOR [84 h]; KERBSTONE QTY [186 lm] | 17,158 | 10 | 2AP2HDEX10 | DUKHCON2AP2HD005090 | DUKHCONP2AZ2HDEX5090 | DH | CON | 2A | Z2 | EX | HD | B06 | B06-D12 | RSE-2A |
| DUKHCONP2AZ2HDEX5095 |  | Cobble Stone Works | 20d | 2013-11-28 | 2013-12-22 | DUKHCONP2AZ2HDEX5090 FF+10d, DUKHCONP2AZ2HDEX5090 SS+10d | 30d | 0d | TILE MASON SK [56 h]; LABOR- SUBCONTRACTOR [30 h]; COBBLE STONE QTY [36 Sqm] | 5,004 | 15 | 2AP2HDEX15 | DUKHCON2AP2HD005095 | DUKHCONP2AZ2HDEX5095 | DH | CON | 2A | Z2 | EX | HD | B06 | B06-D12 | RSE-2A |
| DUKHCONP2AZ2HDEX5100 |  | Interlock works | 20d | 2013-12-14 | 2014-01-06 | DUKHCONP2AZ2HDEX5095 FF+13d, DUKHCONP2AZ2HDEX5095 SS+13d | 30d | 9d | INTERLOCK MASON SK [216 h]; LABOR- SUBCONTRACTOR [84 h]; INTERLOCK QTY [270 Sqm] | 23,084 | 20 | 2AP2HDEX20 | DUKHCON2AP2HD005100 | DUKHCONP2AZ2HDEX5100 | DH | CON | 2A | Z2 | EX | HD | B06 | B06-D12 | RSE-2A |
|  | 25 | **SOFT LANDSCAPING** |  | 2014-01-06 | 2014-02-09 |  |  |  |  |  |  |  |  |  |  |  |  |  |  |  |  |  |  |
| DUKHCONP2AZ2SLEX5105 |  | Laying of Grass/ green area | 20d | 2014-01-06 | 2014-01-28 | DUKHCONP2AZ2HDEX5100 SS+10d, DUKHCONP2AZ1SLEX5105, DUKHCONP2AZ2HDEX5100 FF+10d | 21d | 0d | LABOR- SUBCONTRACTOR [918 h]; SWEET SOIL QTY [294 Cum]; GRASS QTY [294 Sqm]; LANDSCAPING SK [1224 h] | 36,162 | 10 | 2AP2SLEX10 | DUKHCON2AP2SL005105 | DUKHCONP2AZ2SLEX5105 | DH | CON | 2A | Z2 | EX | SL | B06 | B06-D12 | RSE-2A |
| DUKHCONP2AZ2SLEX5110 |  | Laying of Palm tree | 20d | 2014-01-18 | 2014-02-09 | DUKHCONP2AZ2SLEX5105 SS+10d, DUKHCONP2AZ2SLEX5105 FF+10d, DUKHCONP2AZ1SLEX5110 | 61d | 0d | SWEET SOIL QTY [600 Cum]; PLAM TREES QTY [54 ea]; LANDSCAPING SK [312 h]; LABOR- SUBCONTRACTOR [234 h] | 84,084 | 15 | 2AP2SLEX15 | DUKHCON2AP2SL005110 | DUKHCONP2AZ2SLEX5110 | DH | CON | 2A | Z2 | EX | SL | B06 | B06-D12 | RSE-2A |
|  | 30 | **TESTING AND COMMISSIONING** |  | 2014-04-07 | 2014-05-05 |  |  |  |  |  |  |  |  |  |  |  |  |  |  |  |  |  |  |
| DUKHCONP2AZ2ACTC8000 |  | Pre-Commissioning & Testing of AC Works | 25d | 2014-04-07 | 2014-05-05 | DUKHMOBP2APS00002170 FF, DUKHCONP2AZ2HDEX5100, DUKHCONP2AZ2MSEX5005, DUKHMOBI2APS00002205 FF, DUKHCONP2AZ2ACRF4635, DUKHCONP2AZ2AREL3680, DUKHCONP2AZ2ARRF3660, DUKHCONP2AZ2ARGF3095, DUKHCONP2AZ2SLEX5110, DUKHCONP2AZ2PLRF4350, DUKHCONP2AZ2SLEX5105 | 34d |  | LABOR- SUBCONTRACTOR [500 h]; AC TECHNICIAN SK [1000 h] | 978 |  | 2AP2ACU100 | DUKHCON2AP2AC008000 | DUKHCONP2AZ2ACTC8000 | DH | CON | 2A | Z2 | TES |  | B06 | B06-D08 | RSE-2A |
| DUKHCONP2AZ2ELTC8010 |  | Pre-Commissioning & Testing of Electrical Works | 25d | 2014-04-07 | 2014-05-05 | DUKHMOBP2APS00002170 FF, DUKHCONP2AZ2ELGF4015, DUKHCONP2AZ2ARRF3660, DUKHCONP2AZ2SLEX5105, DUKHMOBI2APS00002205 FF, DUKHCONP2AZ2ELGF4030, DUKHCONP2AZ2ARGF3095, DUKHCONP2AZ2ELRF4075, DUKHCONP2AZ2AREL3680, DUKHCONP2AZ2ELGF4025, DUKHCONP2AZ2HDEX5100, DUKHCONP2AZ2SLEX5110, DUKHCONP2AZ2MSEX5005 | 34d |  | LABOR- SUBCONTRACTOR [1000 h]; ELECTRICIANS SK [2000 h] | 19,356 |  | 2AP2ELE100 | DUKHCON2AP2EL008010 | DUKHCONP2AZ2ELTC8010 | DH | CON | 2A | Z2 | TES |  | B06 | B06-D09 | RSE-2A |
| DUKHCONP2AZ2PLTC8005 |  | Pre-Commissioning & Testing of Plumbing Works | 25d | 2014-04-07 | 2014-05-05 | DUKHMOBI2APS00002205 FF, DUKHCONP2AZ2AREL3680, DUKHCONP2AZ2SLEX5105, DUKHCONP2AZ2SLEX5110, DUKHMOBP2APS00002170 FF, DUKHCONP2AZ2PLGF4320, DUKHCONP2AZ2PLRF4350, DUKHCONP2AZ2ARRF3660, DUKHCONP2AZ2ARGF3095, DUKHCONP2AZ2MSEX5005, DUKHCONP2AZ2WEEX5065, DUKHCONP2AZ2HDEX5100 | 34d |  | LABOR- SUBCONTRACTOR [1000 h]; MECHANICALS SK [2000 h] | 2,886 |  | 2AP2PLU100 | DUKHCON2AP2PL008005 | DUKHCONP2AZ2PLTC8005 | DH | CON | 2A | Z2 | TES |  | B06 | B06-D07 | RSE-2A |
|  | L40 | **PACKAGE-2A INFRASTRUCTURE WORKS** |  | 2013-08-28 | 2014-07-01 |  |  |  |  |  |  |  |  |  |  |  |  |  |  |  |  |  |  |
|  | 10 | **ZONE - 1** |  | 2013-08-28 | 2014-05-12 |  |  |  |  |  |  |  |  |  |  |  |  |  |  |  |  |  |  |
|  | 10 | **INFRASTRUCTURE WORKS** |  | 2013-08-28 | 2014-05-12 |  |  |  |  |  |  |  |  |  |  |  |  |  |  |  |  |  |  |
|  | 10 | **DRAINAGE LINES** |  | 2013-08-28 | 2013-10-16 |  |  |  |  |  |  |  |  |  |  |  |  |  |  |  |  |  |  |
| DUKHCONI2AZ1DRGL5115 |  | Excavation for Drainage line | 25d | 2013-08-28 | 2013-09-25 | DUKHENGI2ADWDRAP5050, DUKHCONP2AZ1STRF2060 | 0d |  | LABOR - CIVIL [72 h]; EXCAVATION QTY [115 Cum]; LOADER [25 h]; POCLAIN [50 h]; TRUCK [25 h]; EQUIP OPERATORS [100 h] | 4,382 | 10 | 2AP1DRFR10 | DUKHCON2AP1DRGL5115 | DUKHCONI2AZ1DRGL5115 | DH | CON | 2AF | Z1 | FR | DR | B07 | B07-D06 | RSE-2A |
| DUKHCONI2AZ1DRGL5120 |  | Laying of Drainage line | 25d | 2013-09-04 | 2013-10-02 | DUKHCONI2AZ1DRGL5115 FF+6d, DUKHCONI2AZ1DRGL5115 SS+6d | 0d |  | LABOR- SUBCONTRACTOR [18 h]; MECHANICALS SK [64.8 h]; DRAINAGE PIPES QTY [115 lm] | 15,023 | 15 | 2AP1DRFR15 | DUKHCON2AP1DRGL5120 | DUKHCONI2AZ1DRGL5120 | DH | CON | 2AF | Z1 | FR | DR | B07 | B07-D06 | RSE-2A |
| DUKHCONI2AZ1DRGL5125 |  | Testing of Drainage line | 25d | 2013-09-12 | 2013-10-10 | DUKHCONI2AZ1DRGL5120 SS+7d, DUKHCONI2AZ1DRGL5120 FF+7d | 0d |  | LABOR- SUBCONTRACTOR [18 h]; MECHANICALS SK [32.4 h]; DRAINAGE PIPES TEST QTY [115 lm] | 1,668.5 | 20 | 2AP1DRFR20 | DUKHCON2AP1DRGL5125 | DUKHCONI2AZ1DRGL5125 | DH | CON | 2AF | Z1 | FR | DR | B07 | B07-D06 | RSE-2A |
| DUKHCONI2AZ1DRGL5130 |  | Backfilling Drainage line | 15d | 2013-09-30 | 2013-10-16 | DUKHCONI2AZ1DRGL5125 FF+5d, DUKHCONI2AZ1DRGL5125 SS+10d | 0d |  | LABOR - CIVIL [30 h]; BACKFILLING QTY [115 Cum]; BOBCAT [75 h]; PLATE COMPACTOR [75 h]; TRUCK [15 h]; EQUIP OPERATORS [165 h] | 6,107 | 25 | 2AP1DRFR25 | DUKHCON2AP1DRGL5130 | DUKHCONI2AZ1DRGL5130 | DH | CON | 2AF | Z1 | FR | DR | B07 | B07-D06 | RSE-2A |

Notes:
- DUKHCONP2AZ2WEEX5030: Expenses: P2A-External works within the Plot Curtilage 672
- DUKHCONP2AZ2WEEX5035: Expenses: P2A-External works within the Plot Curtilage 10260
- DUKHCONP2AZ2WEEX5040: Expenses: P2A-External works within the Plot Curtilage 11503
- DUKHCONP2AZ2WEEX5045: Expenses: P2A-External works within the Plot Curtilage 9558
- DUKHCONP2AZ2WEEX5050: Expenses: P2A-External works within the Plot Curtilage 32436
- DUKHCONP2AZ2WEEX5060: Expenses: P2A-External works within the Plot Curtilage 33315
- DUKHCONP2AZ2WEEX5065: Expenses: P2A-Plumbing and Drainage works 450453
- DUKHCONP2AZ2WEEX5070: Expenses: P2A-Metal work 8550
- DUKHCONP2AZ2HDEX5090: Expenses: P2A-External works within the Plot Curtilage 17158
- DUKHCONP2AZ2HDEX5095: Expenses: P2A-External works within the Plot Curtilage 5004
- DUKHCONP2AZ2HDEX5100: Expenses: P2A-External works within the Plot Curtilage 23084
- DUKHCONP2AZ2SLEX5105: Expenses: P2A-External works within the Plot Curtilage 36162
- DUKHCONP2AZ2SLEX5110: Expenses: P2A-External works within the Plot Curtilage 84084
- DUKHCONP2AZ2ACTC8000: Expenses: P2A-Air-conditioning and Ventilation works 978
- DUKHCONP2AZ2ELTC8010: Expenses: P2A-Electrical Installations 19356
- DUKHCONP2AZ2PLTC8005: Expenses: P2A-Plumbing and Drainage works 2886
- DUKHCONI2AZ1DRGL5115: Expenses: I2A-Surface Water drainage and Sewerage system 4382
- DUKHCONI2AZ1DRGL5120: Expenses: I2A-Surface Water drainage and Sewerage system 15023
- DUKHCONI2AZ1DRGL5125: Expenses: I2A-Surface Water drainage and Sewerage system 1668.5
- DUKHCONI2AZ1DRGL5130: Expenses: I2A-Surface Water drainage and Sewerage system 6107

| ID | WBS | Activity | Duration | Start | Finish | Predecessors | Total float | Free float | Resources | Cost | CODE | P3 ACTID | P6 ID (old) | NP61D | PROJECT | PHASES | PACKAGE | PART | ELEMENTS | STEP | BILL NOS | BILL DIVISION | RES PACK |
| --- | --- | --- | --- | --- | --- | --- | --- | --- | --- | --- | --- | --- | --- | --- | --- | --- | --- | --- | --- | --- | --- | --- | --- |
|  | 15 | **MANHOLES & SOAKAWAY** |  | 2013-09-30 | 2013-12-23 |  |  |  |  |  |  |  |  |  |  |  |  |  |  |  |  |  |  |
| DUKHCONI2AZ1SAGL5135 |  | Construction of manholes Drainage | 25d | 2013-09-30 | 2013-10-30 | DUKHENGI2ADWDRAP5050, DUKHCONI2AZ1DRGL5115, DUKHCONI2AZ1DRGL5130 FF+10d | 62d | 18d | MANHOLES SK [24 h]; LABOR - CIVIL [12 h]; MANHOLES QTY [3 ea] | 11,525 | 10 | 2AP1SAFR10 | DUKHCON2AP1SAGL5135 | DUKHCONI2AZ1SAGL5135 | DH | CON | 2AF | Z1 | FR | SA | B07 | B07-D06 | RSE-2A |
| DUKHCONI2AZ1SAGL5140 |  | Construction of soakaways | 25d | 2013-09-30 | 2013-10-30 | DUKHCONI2AZ1DRGL5130 FF+10d, DUKHCONI2AZ1DRGL5115 | 1d | 0d | MANHOLES SK [72 h]; LABOR - CIVIL [30 h]; SOAKWAY QTY [9 ea] | 130,264 | 15 | 2AP1SAFR15 | DUKHCON2AP1SAGL5140 | DUKHCONI2AZ1SAGL5140 | DH | CON | 2AF | Z1 | FR | SA | B07 | B07-D06 | RSE-2A |
| DUKHCONI2AZ1SAGL5145 |  | Construction of Road gullies | 25d | 2013-10-31 | 2013-11-28 | DUKHCONI2AZ1SAGL5140 | 1d | 0d | MANHOLES SK [72 h]; LABOR - CIVIL [30 h]; ROAD GULLY QTY [9 ea] | 17,964.5 | 20 | 2AP1SAFR20 | DUKHCON2AP1SAGL5145 | DUKHCONI2AZ1SAGL5145 | DH | CON | 2AF | Z1 | FR | SA | B07 | B07-D06 | RSE-2A |
| DUKHCONI2AZ1SAGL5150 |  | Connection with existing sewer manhole | 20d | 2013-11-30 | 2013-12-23 | DUKHCONI2AZ1SAGL5135, DUKHCONI2AZ1SAGL5145 | 37d | 34d | MANHOLES SK [24 h]; LABOR - CIVIL [12 h]; MANHOLES QTY [3 ea] | 5,676.5 | 25 | 2AP1SAFR25 | DUKHCON2AP1SAGL5150 | DUKHCONI2AZ1SAGL5150 | DH | CON | 2AF | Z1 | FR | SA | B07 | B07-D06 | RSE-2A |
|  | 20 | **WATER SUPPLY SYSTEM** |  | 2013-10-12 | 2013-12-29 |  |  |  |  |  |  |  |  |  |  |  |  |  |  |  |  |  |  |
| DUKHCONI2AZ1WSGL5155 |  | Excavation for water line | 25d | 2013-10-12 | 2013-11-11 | DUKHCONI2AZ1DRGL5130 SS+10d, DUKHENGI2ADWWSAP5070 | 1d | 0d | LABOR - CIVIL [114 h]; EXCAVATION QTY [188 Cum]; LOADER [31 h]; POCLAIN [63 h]; TRUCK [31 h]; EQUIP OPERATORS [125 h] | 9,746 | 10 | 2AP1WSFR10 | DUKHCON2AP1WSGL5155 | DUKHCONI2AZ1WSGL5155 | DH | CON | 2AF | Z1 | FR | WS | B07 | B07-D07 | RSE-2A |
| DUKHCONI2AZ1WSGL5160 |  | Laying of water line | 25d | 2013-10-20 | 2013-11-17 | DUKHCONI2AZ1WSGL5155 SS+5d | 1d | 0d | LABOR- SUBCONTRACTOR [108 h]; MECHANICALS SK [194.4 h]; WATER PIPES QTY [261 lm] | 47,454 | 15 | 2AP1WSFR15 | DUKHCON2AP1WSGL5160 | DUKHCONI2AZ1WSGL5160 | DH | CON | 2AF | Z1 | FR | WS | B07 | B07-D07 | RSE-2A |
| DUKHCONI2AZ1WSGL5165 |  | Testing of potable water line | 25d | 2013-10-26 | 2013-11-23 | DUKHCONI2AZ1WSGL5160 SS+5d | 1d | 0d | LABOR- SUBCONTRACTOR [30 h]; MECHANICALS SK [54 h]; DRAINAGE PIPES TEST QTY [261 lm] | 4,751 | 20 | 2AP1WSFR20 | DUKHCON2AP1WSGL5165 | DUKHCONI2AZ1WSGL5165 | DH | CON | 2AF | Z1 | FR | WS | B07 | B07-D07 | RSE-2A |
| DUKHCONI2AZ1WSGL5170 |  | Backfilling potable water line | 25d | 2013-10-31 | 2013-11-28 | DUKHCONI2AZ1SAGL5145 FF, DUKHCONI2AZ1WSGL5165 SS+5d | 1d | 0d | LABOR - CIVIL [48 h]; BACKFILLING QTY [188 Cum]; BOBCAT [63 h]; PLATE COMPACTOR [63 h]; TRUCK [13 h]; EQUIP OPERATORS [139 h] | 2,436 | 25 | 2AP1WSFR25 | DUKHCON2AP1WSGL5170 | DUKHCONI2AZ1WSGL5170 | DH | CON | 2AF | Z1 | FR | WS | B07 | B07-D07 | RSE-2A |
| DUKHCONI2AZ1WSGL5175 |  | Construction of valve chambers & Thrust Blocks | 25d | 2013-11-06 | 2013-12-04 | DUKHCONI2AZ1WSGL5155 SS+10d, DUKHCONI2AZ1WSGL5170 FF+5d | 32d | 0d | MANHOLES SK [48 h]; LABOR - CIVIL [18 h]; MANHOLES QTY [6 ea] | 1,277.5 | 30 | 2AP1WSFR30 | DUKHCON2AP1WSGL5175 | DUKHCONI2AZ1WSGL5175 | DH | CON | 2AF | Z1 | FR | WS | B07 | B07-D07 | RSE-2A |
| DUKHCONI2AZ1WSGL5180 |  | Installation of meter ,Accessories & Connection | 20d | 2013-12-05 | 2013-12-29 | DUKHCONI2AZ1WSGL5175 | 32d | 12d | LABOR- SUBCONTRACTOR [12 h]; MECHANICALS SK [21.6 h]; CHAMPER QTY [6 lm] | 19,692.5 | 35 | 2AP1WSFR35 | DUKHCON2AP1WSGL5180 | DUKHCONI2AZ1WSGL5180 | DH | CON | 2AF | Z1 | FR | WS | B07 | B07-D07 | RSE-2A |
|  | 25 | **FIREFIGHTING LINES** |  | 2013-11-06 | 2014-01-12 |  |  |  |  |  |  |  |  |  |  |  |  |  |  |  |  |  |  |
| DUKHCONI2AZ1FFGL5185 |  | Excavation for firefighting line | 25d | 2013-11-06 | 2013-12-04 | DUKHENGI2ADWFFAP5060, DUKHCONI2AZ1WSGL5170 SS+5d | 1d | 0d | LABOR - CIVIL [36 h]; EXCAVATION QTY [58 Cum]; LOADER [13 h]; POCLAIN [25 h]; TRUCK [13 h]; EQUIP OPERATORS [51 h] | 6,458 | 10 | 2AP1FFFR10 | DUKHCON2AP1FFGL5185 | DUKHCONI2AZ1FFGL5185 | DH | CON | 2AF | Z1 | FR | FF | B07 | B07-D07 | RSE-2A |
| DUKHCONI2AZ1FFGL5190 |  | Laying of firefighting line | 25d | 2013-11-14 | 2013-12-12 | DUKHCONI2AZ1FFGL5185 SS+7d, DUKHPROGEN00PRDV3540, DUKHPROGEN00PRDV3650 | 1d | 0d | LABOR- SUBCONTRACTOR [18 h]; MECHANICALS SK [64.8 h]; PLUMB PIPES QTY [58 lm] | 8,494 | 15 | 2AP1FFFR15 | DUKHCON2AP1FFGL5190 | DUKHCONI2AZ1FFGL5190 | DH | CON | 2AF | Z1 | FR | FF | B07 | B07-D07 | RSE-2A |
| DUKHCONI2AZ1FFGL5195 |  | Testing of firefighting line | 25d | 2013-11-20 | 2013-12-19 | DUKHCONI2AZ1FFGL5190 SS+5d | 1d | 0d | LABOR- SUBCONTRACTOR [12 h]; MECHANICALS SK [32.4 h]; DRAINAGE PIPES QTY [58 lm] | 621 | 20 | 2AP1FFFR20 | DUKHCON2AP1FFGL5195 | DUKHCONI2AZ1FFGL5195 | DH | CON | 2AF | Z1 | FR | FF | B07 | B07-D07 | RSE-2A |
| DUKHCONI2AZ1FFGL5200 |  | Backfilling firefighting line | 25d | 2013-11-26 | 2013-12-25 | DUKHCONI2AZ1FFGL5195 SS+5d | 1d | 0d | LABOR - CIVIL [18 h]; BACKFILLING QTY [58 Cum]; BOBCAT [25 h]; PLATE COMPACTOR [25 h]; TRUCK [5 h]; EQUIP OPERATORS [55 h] | 1,615 | 25 | 2AP1FFFR25 | DUKHCON2AP1FFGL5200 | DUKHCONI2AZ1FFGL5200 | DH | CON | 2AF | Z1 | FR | FF | B07 | B07-D07 | RSE-2A |
| DUKHCONI2AZ1FFGL5205 |  | Construction of valve chambers & Thrust Blocks | 25d | 2013-12-08 | 2014-01-06 | DUKHCONI2AZ1FFGL5200 FF+5d, DUKHCONI2AZ1FFGL5185 SS+10d, DUKHPROGEN00PRDV3690 | 20d | 0d | STEEL FIXERS SK [8 h]; CARPENTERS SK [24 h]; CONCRETE MASON SK [16 h]; LABOR - CIVIL [36 h]; EXCAVATION QTY [7 Cum]; REINFORCEMENT BARS QTY [53 kg]; FORMWORK QTY [13 Sqm]; CONCRETE QTY [8 Cum] | 1,419.5 | 30 | 2AP1FFFR30 | DUKHCON2AP1FFGL5205 | DUKHCONI2AZ1FFGL5205 | DH | CON | 2AF | Z1 | FR | FF | B07 | B07-D07 | RSE-2A |
| DUKHCONI2AZ1FFGL5210 |  | Connection with existing Firewater System | 25d | 2013-12-14 | 2014-01-12 | DUKHCONI2AZ1WSGL5180 FF, DUKHCONI2AZ1FFGL5205 FF+5d | 20d | 13d | STEEL FIXERS SK [8 h]; CARPENTERS SK [24 h]; CONCRETE MASON SK [16 h]; LABOR - CIVIL [36 h]; EXCAVATION QTY [7 Cum]; REINFORCEMENT BARS QTY [53 kg]; FORMWORK QTY [13 Sqm]; CONCRETE QTY [8 Cum] | 12,025 | 35 | 2AP1FFFR35 | DUKHCON2AP1FFGL5210 | DUKHCONI2AZ1FFGL5210 | DH | CON | 2AF | Z1 | FR | FF | B07 | B07-D07 | RSE-2A |
|  | 30 | **ELECTRICAL LINES** |  | 2013-12-04 | 2014-01-28 |  |  |  |  |  |  |  |  |  |  |  |  |  |  |  |  |  |  |
| DUKHCONI2AZ1ELGL5215 |  | Excavation Cable Trenches & Duct Banks | 25d | 2013-12-04 | 2014-01-02 | DUKHCONI2AZ1FFGL5200 SS+7d, DUKHENGI2ADWELAP5080 | 3d | 0d | LABOR - CIVIL [1326 h]; EXCAVATION QTY [2211 Cum]; LOADER [188 h]; POCLAIN [375 h]; TRUCK [188 h]; EQUIP OPERATORS [751 h] | 10,948.5 | 10 | 2AP1ECFR10 | DUKHCON2AP1ELGL5215 | DUKHCONI2AZ1ELGL5215 | DH | CON | 2AF | Z1 | FR | EC | B07 | B07-D04 | RSE-2A |
| DUKHCONI2AZ1ELGL5220 |  | Laying of electrical cables | 25d | 2013-12-10 | 2014-01-08 | DUKHCONI2AZ1ELGL5215 SS+5d | 6d | 0d | LABOR- SUBCONTRACTOR [666 h]; ELECTRICIANS SK [2475.2 h]; CABLE QTY [2211 lm] | 1,047,951.5 | 15 | 2AP1ECFR15 | DUKHCON2AP1ELGL5220 | DUKHCONI2AZ1ELGL5220 | DH | CON | 2AF | Z1 | FR | EC | B07 | B07-D04 | RSE-2A |
| DUKHCONI2AZ1ELGL5225 |  | Backfilling Electrical trench | 25d | 2013-12-19 | 2014-01-16 | DUKHCONI2AZ1ELGL5215 FF+7d, DUKHCONI2AZ1ELGL5220 SS+7d | 6d | 0d | LABOR - CIVIL [534 h]; BACKFILLING QTY [2211 Cum]; BOBCAT [375 h]; PLATE COMPACTOR [375 h]; TRUCK [75 h]; EQUIP OPERATORS [825 h] | 4,692 | 20 | 2AP1ECFR20 | DUKHCON2AP1ELGL5225 | DUKHCONI2AZ1ELGL5225 | DH | CON | 2AF | Z1 | FR | EC | B07 | B07-D04 | RSE-2A |
| DUKHCONI2AZ1ELGL5230 |  | Construction of Submain Board & Feeder Pillar | 25d | 2013-12-31 | 2014-01-28 | DUKHCONI2AZ1ELGL5225 FF+10d, DUKHCONI2AZ1ELGL5225 SS+10d | 51d | 0d | STEEL FIXERS SK [8 h]; CARPENTERS SK [88 h]; CONCRETE MASON SK [8 h]; LABOR - CIVIL [72 h]; LABOR- SUBCONTRACTOR [96 h]; REINFORCEMENT BARS QTY [53 kg]; FORMWORK QTY [42 Sqm]; CONCRETE QTY [3 Cum]; DOOR ERECTOR SK [24 h]; EXPANSION JOINT QTY [28 Sqm]; ALUMINIUM DOOR QTY [5 ea]; EXPANSION JOINT SKILLED SK [224 h] | 37,026 | 25 | 2AP1ECFR25 | DUKHCON2AP1ELGL5230 | DUKHCONI2AZ1ELGL5230 | DH | CON | 2AF | Z1 | FR | EC | B07 | B07-D04 | RSE-2A |

Notes:
- DUKHCONI2AZ1SAGL5135: Expenses: I2A-Surface Water drainage and Sewerage system 11525
- DUKHCONI2AZ1SAGL5140: Expenses: I2A-Surface Water drainage and Sewerage system 130264
- DUKHCONI2AZ1SAGL5145: Expenses: I2A-Surface Water drainage and Sewerage system 17964.5
- DUKHCONI2AZ1SAGL5150: Expenses: I2A-Surface Water drainage and Sewerage system 5676.5
- DUKHCONI2AZ1WSGL5155: Expenses: I2A-Water supply system 9746
- DUKHCONI2AZ1WSGL5160: Expenses: I2A-Water supply system 47454
- DUKHCONI2AZ1WSGL5165: Expenses: I2A-Water supply system 4751
- DUKHCONI2AZ1WSGL5170: Expenses: I2A-Water supply system 2436
- DUKHCONI2AZ1WSGL5175: Expenses: I2A-Water supply system 1277.5
- DUKHCONI2AZ1WSGL5180: Expenses: I2A-Water supply system 19692.5
- DUKHCONI2AZ1FFGL5185: Expenses: I2A-Water supply system 6458
- DUKHCONI2AZ1FFGL5190: Expenses: I2A-Water supply system 8494
- DUKHCONI2AZ1FFGL5195: Expenses: I2A-Water supply system 621
- DUKHCONI2AZ1FFGL5200: Expenses: I2A-Water supply system 1615
- DUKHCONI2AZ1FFGL5205: Expenses: I2A-Water supply system 1419.5
- DUKHCONI2AZ1FFGL5210: Expenses: I2A-Water supply system 12025
- DUKHCONI2AZ1ELGL5215: Expenses: I2A-Electrical power supply and distribution 10948.5
- DUKHCONI2AZ1ELGL5220: Expenses: I2A-Electrical power supply and distribution 1047952
- DUKHCONI2AZ1ELGL5225: Expenses: I2A-Electrical power supply and distribution 4692
- DUKHCONI2AZ1ELGL5230: Expenses: I2A-Electrical power supply and distribution 37026

| ID | WBS | Activity | Duration | Start | Finish | Predecessors | Total float | Free float | Resources | Cost | CODE | P3 ACTID | P6 ID (old) | NP61D | PROJECT | PHASES | PACKAGE | PART | ELEMENTS | STEP | BILL NOS | BILL DIVISION | RES PACK |
| --- | --- | --- | --- | --- | --- | --- | --- | --- | --- | --- | --- | --- | --- | --- | --- | --- | --- | --- | --- | --- | --- | --- | --- |
|  | 35 | **STREET LIGHTING** |  | 2013-12-04 | 2014-02-27 |  |  |  |  |  |  |  |  |  |  |  |  |  |  |  |  |  |  |
| DUKHCONI2AZ1STGL5235 |  | Excavation for Street lighting | 25d | 2013-12-04 | 2014-01-02 | DUKHENGI2ADWSTAP5090, DUKHCONI2AZ1ELGL5215 SS | 3d | 0d | LABOR - CIVIL [84 h]; EXCAVATION QTY [140 Cum]; LOADER [25 h]; POCLAIN [50 h]; TRUCK [25 h]; EQUIP OPERATORS [100 h] | 1,216 | 10 | 2AP1STFR10 | DUKHCON2AP1STGL5235 | DUKHCONI2AZ1STGL5235 | DH | CON | 2AF | Z1 | FR | ST | B07 | B07-D09 | RSE-2A |
| DUKHCONI2AZ1STGL5240 |  | Construction of Duct Banks | 25d | 2013-12-10 | 2014-01-08 | DUKHCONI2AZ1STGL5235 SS+5d | 3d | 0d | LABOR- SUBCONTRACTOR [72 h]; ELECTRICIANS SK [268.8 h]; DUCT BANK QTY [94 lm] | 53,233 | 15 | 2AP1STFR15 | DUKHCON2AP1STGL5240 | DUKHCONI2AZ1STGL5240 | DH | CON | 2AF | Z1 | FR | ST | B07 | B07-D09 | RSE-2A |
| DUKHCONI2AZ1STGL5245 |  | Construction of Foundation | 25d | 2013-12-10 | 2014-01-08 | DUKHCONI2AZ1STGL5240 SS | 3d | 0d | MANHOLES SK [368 h]; LABOR - CIVIL [138 h]; COLUMN BASE QTY [23 ea] | 16,104.5 | 20 | 2AP1STFR20 | DUKHCON2AP1STGL5245 | DUKHCONI2AZ1STGL5245 | DH | CON | 2AF | Z1 | FR | ST | B07 | B07-D09 | RSE-2A |
| DUKHCONI2AZ1STGL5250 |  | Backfilling Street Lighting | 25d | 2013-12-16 | 2014-01-14 | DUKHCONI2AZ1STGL5245 SS+5d, DUKHCONI2AZ1STGL5235 FF+5d | 3d | 0d | LABOR - CIVIL [36 h]; BACKFILLING QTY [140 Cum]; BOBCAT [50 h]; PLATE COMPACTOR [50 h]; TRUCK [10 h]; EQUIP OPERATORS [110 h] | 1,216 | 25 | 2AP1STFR25 | DUKHCON2AP1STGL5250 | DUKHCONI2AZ1STGL5250 | DH | CON | 2AF | Z1 | FR | ST | B07 | B07-D09 | RSE-2A |
| DUKHCONI2AZ1STGL5255 |  | Installation of light Post | 25d | 2014-01-04 | 2014-02-01 | DUKHPROGEN00PRDV3350, DUKHCONI2AZ1STGL5250 SS+10d, DUKHPROGEN00PRDV3250 | 66d | 13d | LABOR- SUBCONTRACTOR [36 h]; ELECTRICIANS SK [134.4 h]; LIGHTPOST COLUMN QTY [23 ea] | 195,371 | 30 | 2AP1STFR30 | DUKHCON2AP1STGL5255 | DUKHCONI2AZ1STGL5255 | DH | CON | 2AF | Z1 | FR | ST | B07 | B07-D09 | RSE-2A |
| DUKHCONI2AZ1STGL5260 |  | Electrical Works | 25d | 2014-01-29 | 2014-02-27 | DUKHCONI2AZ1ELGL5230, DUKHCONI2AZ1STGL5255 SS+7d | 51d | 18d | LABOR- SUBCONTRACTOR [30 h]; ELECTRICIANS SK [112 h]; CABLE QTY [94 lm] | 12,498 | 35 | 2AP1STFR35 | DUKHCON2AP1STGL5260 | DUKHCONI2AZ1STGL5260 | DH | CON | 2AF | Z1 | FR | ST | B07 | B07-D09 | RSE-2A |
|  | 40 | **IRRIGATION LINES** |  | 2014-01-18 | 2014-03-25 |  |  |  |  |  |  |  |  |  |  |  |  |  |  |  |  |  |  |
| DUKHCONI2AZ1IRGL5265 |  | Excavation for irrigation line | 25d | 2014-01-18 | 2014-02-16 | DUKHENGI2ADWIRAP5110, DUKHCONI2AZ1ELGL5225 | 29d | 0d | LABOR - CIVIL [42 h]; EXCAVATION QTY [67 Cum]; LOADER [13 h]; POCLAIN [25 h]; TRUCK [13 h]; EQUIP OPERATORS [51 h] | 2,658.5 | 10 | 2AP1IRFR10 | DUKHCON2AP1IRGL5265 | DUKHCONI2AZ1IRGL5265 | DH | CON | 2AF | Z1 | FR | IR | B07 | B07-D07 | RSE-2A |
| DUKHCONI2AZ1IRGL5270 |  | Laying of irrigationline | 25d | 2014-01-23 | 2014-02-22 | DUKHCONI2AZ1IRGL5265 SS+5d | 29d | 0d | LABOR- SUBCONTRACTOR [18 h]; MECHANICALS SK [32.4 h]; IRRIGATION PIPES QTY [114 lm] | 3,701.5 | 15 | 2AP1IRFR15 | DUKHCON2AP1IRGL5270 | DUKHCONI2AZ1IRGL5270 | DH | CON | 2AF | Z1 | FR | IR | B07 | B07-D07 | RSE-2A |
| DUKHCONI2AZ1IRGL5275 |  | Testing of irrigation line | 25d | 2014-01-29 | 2014-02-27 | DUKHCONI2AZ1IRGL5270 SS+5d | 29d | 0d | LABOR- SUBCONTRACTOR [18 h]; MECHANICALS SK [32.4 h]; DRAINAGE PIPES TEST QTY [114 lm] | 303.5 | 20 | 2AP1IRFR20 | DUKHCON2AP1IRGL5275 | DUKHCONI2AZ1IRGL5275 | DH | CON | 2AF | Z1 | FR | IR | B07 | B07-D07 | RSE-2A |
| DUKHCONI2AZ1IRGL5280 |  | Backfilling irrigation line | 25d | 2014-02-04 | 2014-03-05 | DUKHCONI2AZ1IRGL5275 SS+5d | 29d | 0d | LABOR - CIVIL [18 h]; BACKFILLING QTY [67 Cum]; BOBCAT [25 h]; TRUCK [5 h]; EQUIP OPERATORS [55 h]; PLATE COMPACTOR [25 h] | 664.5 | 25 | 2AP1IRFR25 | DUKHCON2AP1IRGL5280 | DUKHCONI2AZ1IRGL5280 | DH | CON | 2AF | Z1 | FR | IR | B07 | B07-D07 | RSE-2A |
| DUKHCONI2AZ1IRGL5285 |  | Construction of Thrust Blocks,Pull boxes | 25d | 2014-02-17 | 2014-03-17 | DUKHCONI2AZ1IRGL5280 FF+10d, DUKHCONI2AZ1ELGL5225 SS+10d | 34d | 0d | LABOR- SUBCONTRACTOR [48 h]; ELECTRICIANS SK [33.6 h]; THRUST BLOCKS QTY [3 ea]; PULL BOX QTY [14 ea]; PULL BOX SK [112 h] | 2,778.5 | 30 | 2AP1IRFR30 | DUKHCON2AP1IRGL5285 | DUKHCONI2AZ1IRGL5285 | DH | CON | 2AF | Z1 | FR | IR | B07 | B07-D07 | RSE-2A |
| DUKHCONI2AZ1IRGL5290 |  | Irrigation Fittings (Nozzle,Values) | 25d | 2014-02-25 | 2014-03-25 | DUKHPROGEN00PRDV3760, DUKHPROGEN00PRDV3830, DUKHCONI2AZ1IRGL5280 SS+10d, DUKHCONI2AZ1IRGL5285 SS+7d, DUKHPROGEN00PRDV3810, DUKHPROGEN00PRDV3860, DUKHPROGEN00PRDV3840, DUKHPROGEN00PRDV3870 | 34d | 11d | LABOR- SUBCONTRACTOR [12 h]; MECHANICALS SK [21.6 h]; IRRIGATION PIPES QTY [60 lm] | 39,898.5 | 35 | 2AP1IRFR35 | DUKHCON2AP1IRGL5290 | DUKHCONI2AZ1IRGL5290 | DH | CON | 2AF | Z1 | FR | IR | B07 | B07-D07 | RSE-2A |
|  | 45 | **TELECOMMUNICATION LINES** |  | 2013-12-29 | 2014-02-13 |  |  |  |  |  |  |  |  |  |  |  |  |  |  |  |  |  |  |
| DUKHCONI2AZ1TCGL5295 |  | Excavation Telecommunication trenches | 20d | 2013-12-29 | 2014-01-20 | DUKHENGI2ADWTCAP5100, DUKHCONI2AZ1STGL5250 SS+10d | 3d | 0d | POCLAIN [50 h]; TRUCK [25 h]; EQUIP OPERATORS [100 h]; LABOR - CIVIL [78 h]; EXCAVATION QTY [130 Cum]; LOADER [25 h] | 6,838 | 10 | 2AP1TCFR10 | DUKHCON2AP1TCGL5295 | DUKHCONI2AZ1TCGL5295 | DH | CON | 2AF | Z1 | FR | TC | B07 | B07-D05 | RSE-2A |
| DUKHCONI2AZ1TCGL5300 |  | Laying of cables | 20d | 2014-01-04 | 2014-01-26 | DUKHCONI2AZ1TCGL5295 SS+5d | 3d | 0d | LABOR- SUBCONTRACTOR [78 h]; ELECTRICIANS SK [291.2 h]; CABLE QTY [260 lm] | 1,092 | 15 | 2AP1TCFR15 | DUKHCON2AP1TCGL5300 | DUKHCONI2AZ1TCGL5300 | DH | CON | 2AF | Z1 | FR | TC | B07 | B07-D05 | RSE-2A |
| DUKHCONI2AZ1TCGL5305 |  | Backfilling telecommunication trench | 20d | 2014-01-09 | 2014-02-01 | DUKHCONI2AZ1TCGL5300 SS+5d | 3d | 0d | LABOR - CIVIL [30 h]; BACKFILLING QTY [130 Cum]; BOBCAT [50 h]; PLATE COMPACTOR [50 h]; TRUCK [10 h]; EQUIP OPERATORS [110 h] | 2,929.5 | 20 | 2AP1TCFR20 | DUKHCON2AP1TCGL5305 | DUKHCONI2AZ1TCGL5305 | DH | CON | 2AF | Z1 | FR | TC | B07 | B07-D05 | RSE-2A |
| DUKHCONI2AZ1TCGL5310 |  | Connection & Installation | 20d | 2014-01-21 | 2014-02-13 | DUKHCONI2AZ1TCGL5305 SS+10d | 68d | 23d | LABOR- SUBCONTRACTOR [24 h]; ELECTRICIANS SK [156.8 h]; TELEPHONE SOCKETS QTY [14 ea] | 32,225 | 25 | 2AP1TCFR25 | DUKHCON2AP1TCGL5310 | DUKHCONI2AZ1TCGL5310 | DH | CON | 2AF | Z1 | FR | TC | B07 | B07-D05 | RSE-2A |
|  | 50 | **BOUNDARY WALL** |  | 2013-12-29 | 2014-03-25 |  |  |  |  |  |  |  |  |  |  |  |  |  |  |  |  |  |  |
| DUKHCONI2AZ1BWGL5315 |  | Construction of Boundary Wall (Ht-3m) | 25d | 2013-12-29 | 2014-01-26 | DUKHCONI2AZ1STGL5250 SS+10d, DUKHENGI2ADWBWAP5130, DUKHPROGEN00PRDV3820 | 29d | 0d | STEEL FIXERS SK [72 h]; LABOR - CIVIL [54 h]; BOUNDARY WIRE MESH QTY [173 Sqm] | 278,491 | 10 | 2AP1BWFR10 | DUKHCON2AP1ARGL5315 | DUKHCONI2AZ1BWGL5315 | DH | CON | 2AF | Z1 | FR | BW | B07 | B07-D10 | RSE-2A |
| DUKHCONI2AZ1BWGL5320 |  | Install.Steel Gate,Entance Barrier (3m Wall) | 25d | 2014-01-14 | 2014-02-12 | DUKHPROGEN00PRDV3800, DUKHCONI2AZ1BWGL5315 SS+14d | 29d | 0d | LABOR- SUBCONTRACTOR [12 h]; GATE QTY [2 ea]; GATE ERECTOR SK [16 h] | 2,145.5 | 15 | 2AP1BWFR15 | DUKHCON2AP1ARGL5320 | DUKHCONI2AZ1BWGL5320 | DH | CON | 2AF | Z1 | FR | BW | B07 | B07-D10 | RSE-2A |
| DUKHCONI2AZ1BWGL5325 |  | Const. of Villa Front Boundary Wall (Ht-2m) | 25d | 2014-02-13 | 2014-03-13 | DUKHCONI2AZ1BWGL5320, DUKHCONI2AZ1BWGL5315 SS+5d | 29d | 0d | STEEL FIXERS SK [40 h]; LABOR - CIVIL [30 h]; BOUNDARY WIRE MESH QTY [98 Sqm] | 163,525.5 | 20 | 2AP1BWFR20 | DUKHCON2AP1ARGL5325 | DUKHCONI2AZ1BWGL5325 | DH | CON | 2AF | Z1 | FR | BW | B07 | B07-D10 | RSE-2A |
| DUKHCONI2AZ1BWGL5330 |  | Const. of Blockwork fence Wall (Ht-1.85m) | 25d | 2014-02-25 | 2014-03-25 | DUKHCONI2AZ1BWGL5325 SS+10d | 57d | 17d | STEEL FIXERS SK [16 h]; LABOR - CIVIL [12 h]; BOUNDARY WIRE MESH QTY [39 Sqm] | 31,436.5 | 30 | 2AP1BWFR30 | DUKHCON2AP1ARGL5330 | DUKHCONI2AZ1BWGL5330 | DH | CON | 2AF | Z1 | FR | BW | B07 | B07-D10 | RSE-2A |

Notes:
- DUKHCONI2AZ1STGL5235: Expenses: I2A-Street lighting 1216
- DUKHCONI2AZ1STGL5240: Expenses: I2A-Street lighting 53233
- DUKHCONI2AZ1STGL5245: Expenses: I2A-Street lighting 16104.5
- DUKHCONI2AZ1STGL5250: Expenses: I2A-Street lighting 1216
- DUKHCONI2AZ1STGL5255: Expenses: I2A-Street lighting 195371
- DUKHCONI2AZ1STGL5260: Expenses: I2A-Street lighting 12498
- DUKHCONI2AZ1IRGL5265: Expenses: I2A-Water supply system 2658.5
- DUKHCONI2AZ1IRGL5270: Expenses: I2A-Water supply system 3701.5
- DUKHCONI2AZ1IRGL5275: Expenses: I2A-Water supply system 303.5
- DUKHCONI2AZ1IRGL5280: Expenses: I2A-Water supply system 664.5
- DUKHCONI2AZ1IRGL5285: Expenses: I2A-Water supply system 2778.5
- DUKHCONI2AZ1IRGL5290: Expenses: I2A-Water supply system 39898.5
- DUKHCONI2AZ1TCGL5295: Expenses: I2A-Telecommunication 6838
- DUKHCONI2AZ1TCGL5300: Expenses: I2A-Telecommunication 1092
- DUKHCONI2AZ1TCGL5305: Expenses: I2A-Telecommunication 2929.5
- DUKHCONI2AZ1TCGL5310: Expenses: I2A-Telecommunication 32225
- DUKHCONI2AZ1BWGL5315: Expenses: I2A-Hard and soft landscaping 278491
- DUKHCONI2AZ1BWGL5320: Expenses: I2A-Hard and soft landscaping 2145.5
- DUKHCONI2AZ1BWGL5325: Expenses: I2A-Hard and soft landscaping 163526
- DUKHCONI2AZ1BWGL5330: Expenses: I2A-Hard and soft landscaping 31436.5

| ID | WBS | Activity | Duration | Start | Finish | Predecessors | Total float | Free float | Resources | Cost | CODE | P3 ACTID | P6 ID (old) | NP61D | PROJECT | PHASES | PACKAGE | PART | ELEMENTS | STEP | BILL NOS | BILL DIVISION | RES PACK |
| --- | --- | --- | --- | --- | --- | --- | --- | --- | --- | --- | --- | --- | --- | --- | --- | --- | --- | --- | --- | --- | --- | --- | --- |
|  | 55 | **ROAD WORKS** |  | 2014-02-02 | 2014-04-19 |  |  |  |  |  |  |  |  |  |  |  |  |  |  |  |  |  |  |
| DUKHCONI2AZ1RWGL6000 |  | Excavation & Earth Filling | 10d | 2014-02-02 | 2014-02-13 | DUKHCONI2AZ1STGL5250, DUKHCONI2AZ1FFGL5210, DUKHENGI2ADWBWAP5130, DUKHCONI2AZ1ELGL5225, DUKHCONI2AZ1TCGL5305, DUKHCONI2AZ1FFGL5200, DUKHCONI2AZ1SAGL5150 | 3d | 0d | EQUIP OPERATORS [200 h]; LABOR - CIVIL [252 h]; EXCAVATION QTY [265 Cum]; BACKFILLING QTY [380 Cum]; LOADER [50 h]; POCLAIN [100 h]; TRUCK [50 h] | 38,401 | 10 | 2AP1RDFR10 | DUKHCON2AP1RDGL6000 | DUKHCONI2AZ1RWGL6000 | DH | CON | 2AF | Z1 | FR | RD | B07 | B07-D08 | RSE-2A |
| DUKHCONI2AZ1RWGL6005 |  | Laying of Sub Grade | 25d | 2014-02-15 | 2014-03-15 | DUKHCONI2AZ1RWGL6000 | 3d | 0d | LABOR- SUBCONTRACTOR [18 h]; SUBGRADE QTY [252 Sqm] | 77,389 | 15 | 2AP1RDFR15 | DUKHCON2AP1RDGL6005 | DUKHCONI2AZ1RWGL6005 | DH | CON | 2AF | Z1 | FR | RD | B07 | B07-D08 | RSE-2A |
| DUKHCONI2AZ1RWGL6010 |  | Laying of Precast Kerbs | 25d | 2014-02-26 | 2014-03-26 | DUKHCONI2AZ1RWGL6005 SS+10d | 3d | 0d | LABOR- SUBCONTRACTOR [18 h]; GRANULAR SUBBASE QTY [252 Sqm] | 59,403 | 20 | 2AP1RDFR20 | DUKHCON2AP1RDGL6010 | DUKHCONI2AZ1RWGL6010 | DH | CON | 2AF | Z1 | FR | RD | B07 | B07-D08 | RSE-2A |
| DUKHCONI2AZ1RWGL6015 |  | Laying of Granular Sub Base Coarse | 20d | 2014-03-10 | 2014-04-01 | DUKHCONI2AZ1RWGL6010 SS+10d | 3d | 0d | KERBSTONE MASON SK [416 h]; LABOR- SUBCONTRACTOR [234 h]; KERBSTONE QTY [260 lm]; EDGE STONE QTY [260 Sqm]; HEAVY ROLLER [400 h]; LOADER [100 h]; TRUCK [100 h]; EQUIP OPERATORS [600 h] | 38,695 | 25 | 2AP1RDFR25 | DUKHCON2AP1RDGL6015 | DUKHCONI2AZ1RWGL6015 | DH | CON | 2AF | Z1 | FR | RD | B07 | B07-D08 | RSE-2A |
| DUKHCONI2AZ1RWGL6020 |  | Laying of Road Base Asphalt Concrete | 5d | 2014-04-02 | 2014-04-07 | DUKHCONI2AZ1RWGL6015 | 21d | 0d | LABOR- SUBCONTRACTOR [18 h]; ASPHALT CONCRETE QTY [1259 Cum]; ASPHALT PAVER MACHINE [50 h]; HAND ROLLER [100 h]; EQUIP OPERATORS [150 h] | 98,319.5 | 30 | 2AP1RDFR30 | DUKHCON2AP1RDGL6020 | DUKHCONI2AZ1RWGL6020 | DH | CON | 2AF | Z1 | FR | RD | B07 | B07-D08 | RSE-2A |
| DUKHCONI2AZ1RWGL6025 |  | Laying of Asphalt Wearing Coarse | 5d | 2014-04-08 | 2014-04-13 | DUKHCONI2AZ1RWGL6020 | 33d | 0d | LABOR- SUBCONTRACTOR [18 h]; ASPHALT WEARING COURSE QTY [1259 Sqm]; ASPHALT PAVER MACHINE [50 h]; HAND ROLLER [100 h]; EQUIP OPERATORS [150 h] | 51,221 | 35 | 2AP1RDFR35 | DUKHCON2AP1RDGL6025 | DUKHCONI2AZ1RWGL6025 | DH | CON | 2AF | Z1 | FR | RD | B07 | B07-D08 | RSE-2A |
| DUKHCONI2AZ1RWGL6030 |  | Traffic Signage & Road Marking | 5d | 2014-04-14 | 2014-04-19 | DUKHPROGEN00PRDV3720, DUKHPROGEN00PRDV3710, DUKHCONI2AZ1RWGL6025, DUKHPROGEN00PRDV3700 | 36d | 15d | LABOR- SUBCONTRACTOR [168 h]; STEEL ERECTOR SK [200 h]; TRAFFIC SIGN QTY [122 ea]; ROAD MARKING QTY [65 lm]; ASPHALT SK [104 h] | 190,005.5 | 40 | 2AP1RDFR40 | DUKHCON2AP1RDGL6030 | DUKHCONI2AZ1RWGL6030 | DH | CON | 2AF | Z1 | FR | RD | B07 | B07-D08 | RSE-2A |
|  | 60 | **PARKING SHED** |  | 2014-03-16 | 2014-05-12 |  |  |  |  |  |  |  |  |  |  |  |  |  |  |  |  |  |  |
| DUKHCONI2AZ1PSGL7000 |  | Excavation | 15d | 2014-03-16 | 2014-04-01 | DUKHCONI2AZ1RWGL6015 SS+5d, DUKHENGI2ADWPSAP5140 | 26d | 5d | LABOR - CIVIL [6 h]; EXCAVATION QTY [10 Cum]; LOADER [8 h]; POCLAIN [15 h]; TRUCK [8 h]; EQUIP OPERATORS [31 h] | 14,926 | 10 | 2AP1PSFR10 | DUKHCON2AP1PSGL7000 | DUKHCONI2AZ1PSGL7000 | DH | CON | 2AF | Z1 | FR | PS | B07 | B07-D08 | RSE-2A |
| DUKHCONI2AZ1PSGL7005 |  | Foundation casting | 15d | 2014-03-27 | 2014-04-13 | DUKHCONI2AZ1PSGL7000 FF+5d, DUKHCONI2AZ1PSGL7000 SS+5d, DUKHCONI2AZ1RWGL6015 FF+10d | 21d | 0d | STEEL FIXERS SK [208 h]; CARPENTERS SK [280 h]; CONCRETE MASON SK [48 h]; LABOR - CIVIL [402 h]; REINFORCEMENT BARS QTY [2550 kg]; FORMWORK QTY [140 Sqm]; CONCRETE QTY [24 Cum] | 14,926 | 15 | 2AP1PSFR15 | DUKHCON2AP1PSGL7005 | DUKHCONI2AZ1PSGL7005 | DH | CON | 2AF | Z1 | FR | PS | B07 | B07-D08 | RSE-2A |
| DUKHCONI2AZ1PSGL7010 |  | Column, Frame& Fabrics Erection | 25d | 2014-04-08 | 2014-05-06 | DUKHCONI2AZ1PSGL7005 SS+10d, DUKHCONI2AZ1RWGL6020, DUKHPROGEN00PRDV3730, DUKHCONI2AZ1BWGL5330 FF, DUKHCONI2AZ1RWGL6030 FF | 21d | 0d | LABOR- SUBCONTRACTOR [42 h]; STEEL ERECTOR SK [80 h]; PARKING SHED QTY [240 ea] | 74,626 | 20 | 2AP1PSFR20 | DUKHCON2AP1PSGL7010 | DUKHCONI2AZ1PSGL7010 | DH | CON | 2AF | Z1 | FR | PS | B07 | B07-D08 | RSE-2A |
| DUKHCONI2AZ1PSGL7015 |  | Electrical Works-Parking Shed | 25d | 2014-04-14 | 2014-05-12 | DUKHCONI2AZ1PSGL7010 SS+5d, DUKHCONI2AZ1STGL5260 | 21d | 18d | LABOR- SUBCONTRACTOR [96 h]; ELECTRICIANS SK [179.2 h]; LIGHTS QTY [77 ea] | 7,463 | 25 | 2AP1PSFR25 | DUKHCON2AP1PSGL7015 | DUKHCONI2AZ1PSGL7015 | DH | CON | 2AF | Z1 | FR | PS | B07 | B07-D08 | RSE-2A |
|  | 65 | **HARD LANDSCAPING** |  | 2014-02-02 | 2014-04-24 |  |  |  |  |  |  |  |  |  |  |  |  |  |  |  |  |  |  |
| DUKHCONI2AZ1HDGL7020 |  | Precast Concrete Kerbs works | 20d | 2014-02-02 | 2014-02-25 | DUKHENGI2ADWSLAP5120, DUKHCONI2AZ1RWGL6000 SS | 23d | 0d | KERBSTONE MASON SK [120 h]; LABOR- SUBCONTRACTOR [66 h]; KERBSTONE QTY [143 lm] | 17,117 | 10 | 2AP1HDFR10 | DUKHCON2AP1HDGL7020 | DUKHCONI2AZ1HDGL7020 | DH | CON | 2AF | Z1 | FR | HD | B07 | B07-D10 | RSE-2A |
| DUKHCONI2AZ1HDGL7025 |  | Interlocking for Walkways | 25d | 2014-02-15 | 2014-03-15 | DUKHCONI2AZ1HDGL7020 SS+10d | 23d | 0d | INTERLOCK MASON SK [312 h]; LABOR- SUBCONTRACTOR [120 h]; INTERLOCK QTY [390 Sqm] | 46,683 | 15 | 2AP1HDFR15 | DUKHCON2AP1HDGL7025 | DUKHCONI2AZ1HDGL7025 | DH | CON | 2AF | Z1 | FR | HD | B07 | B07-D10 | RSE-2A |
| DUKHCONI2AZ1HDGL7030 |  | Construction of Retaining wall | 25d | 2014-02-26 | 2014-03-26 | DUKHCONI2AZ1HDGL7025 SS+10d | 23d | 0d | STEEL FIXERS SK [16 h]; CARPENTERS SK [168 h]; CONCRETE MASON SK [24 h]; LABOR - CIVIL [168 h]; EXCAVATION QTY [18 Cum]; REINFORCEMENT BARS QTY [210 kg]; FORMWORK QTY [84 Sqm]; CONCRETE QTY [11 Cum] | 59,913 | 20 | 2AP1HDFR20 | DUKHCON2AP1HDGL7030 | DUKHCONI2AZ1HDGL7030 | DH | CON | 2AF | Z1 | FR | HD | B07 | B07-D10 | RSE-2A |
| DUKHCONI2AZ1HDGL7035 |  | Construction of Wash Stone Boulders | 25d | 2014-02-26 | 2014-03-26 | DUKHPROGEN00PRDV3740, DUKHCONI2AZ1HDGL7030 SS | 23d | 0d | TILE MASON SK [48 h]; LABOR- SUBCONTRACTOR [18 h]; STONE BOULDERS QTY [24 Sqm] | 24,652.5 | 25 | 2AP1HDFR25 | DUKHCON2AP1HDGL7035 | DUKHCONI2AZ1HDGL7035 | DH | CON | 2AF | Z1 | FR | HD | B07 | B07-D10 | RSE-2A |
| DUKHCONI2AZ1HDGL7040 |  | Construction of Speed Humps | 10d | 2014-04-14 | 2014-04-24 | DUKHPROGEN00PRDV3750, DUKHCONI2AZ1HDGL7035 SS, DUKHCONI2AZ1RWGL6025 | 33d |  | CONCRETE MASON SK [8 h]; LABOR - CIVIL [6 h]; SPEED HUMPS [1 ea] | 1,424 | 30 | 2AP1HDFR30 | DUKHCON2AP1HDGL7040 | DUKHCONI2AZ1HDGL7040 | DH | CON | 2AF | Z1 | FR | HD | B07 | B07-D10 | RSE-2A |
|  | 70 | **SOFT LANDSCAPING** |  | 2014-03-10 | 2014-04-30 |  |  |  |  |  |  |  |  |  |  |  |  |  |  |  |  |  |  |
| DUKHCONI2AZ1SLGL7200 |  | Excavation | 25d | 2014-03-10 | 2014-04-07 | DUKHENGI2ADWSLAP5120, DUKHCONI2AZ1HDGL7035 SS+10d, DUKHCONI2AZ1IRGL5290 SS | 23d | 0d | LABOR - CIVIL [282 h]; EXCAVATION QTY [470 Cum]; LOADER [94 h]; POCLAIN [188 h]; TRUCK [94 h]; EQUIP OPERATORS [376 h] | 6,275 | 10 | 2AP1SLFR10 | DUKHCON2AP1SLGL7200 | DUKHCONI2AZ1SLGL7200 | DH | CON | 2AF | Z1 | FR | SL | B07 | B07-D10 | RSE-2A |
| DUKHCONI2AZ1SLGL7205 |  | Sweet Soil Laying | 25d | 2014-03-22 | 2014-04-19 | DUKHCONI2AZ1SLGL7200 SS+10d | 23d | 0d | LABOR- SUBCONTRACTOR [60 h]; SWEET SOIL QTY [470 Cum]; LANDSCAPING SK [80 h] | 35,557.5 | 15 | 2AP1SLFR15 | DUKHCON2AP1SLGL7205 | DUKHCONI2AZ1SLGL7205 | DH | CON | 2AF | Z1 | FR | SL | B07 | B07-D10 | RSE-2A |
| DUKHCONI2AZ1SLGL7210 |  | Plantation works | 25d | 2014-04-02 | 2014-04-30 | DUKHCONI2AZ1SLGL7205 SS+10d | 33d | 18d | LABOR- SUBCONTRACTOR [114 h]; PLAM TREES QTY [18 ea]; LANDSCAPING SK [152 h]; GROUND COVER QTY [875 Sqm]; SHRUBS QTY [9 ea] | 76,761.5 | 20 | 2AP1SLFR20 | DUKHCON2AP1SLGL7210 | DUKHCONI2AZ1SLGL7210 | DH | CON | 2AF | Z1 | FR | SL | B07 | B07-D10 | RSE-2A |
|  | 15 | **ZONE - 2** |  | 2013-10-20 | 2014-07-01 |  |  |  |  |  |  |  |  |  |  |  |  |  |  |  |  |  |  |
|  | 10 | **INFRASTRUCTURE WORKS** |  | 2013-10-20 | 2014-07-01 |  |  |  |  |  |  |  |  |  |  |  |  |  |  |  |  |  |  |
|  | 10 | **DRAINAGE LINES** |  | 2013-10-20 | 2013-12-08 |  |  |  |  |  |  |  |  |  |  |  |  |  |  |  |  |  |  |
| DUKHCONI2AZ2DRGL5115 |  | Excavation for Drainage line | 25d | 2013-10-20 | 2013-11-17 | DUKHCONI2AZ1DRGL5130 | 0d |  | LABOR - CIVIL [72 h]; EXCAVATION QTY [115 Cum]; LOADER [25 h]; POCLAIN [50 h]; TRUCK [25 h]; EQUIP OPERATORS [100 h] | 4,382 | 10 | 2AP2DRFR10 | DUKHCON2AP2DRGL5115 | DUKHCONI2AZ2DRGL5115 | DH | CON | 2AF | Z2 | FR | DR | B07 | B07-D06 | RSE-2A |
| DUKHCONI2AZ2DRGL5120 |  | Laying of Drainage line | 25d | 2013-10-27 | 2013-11-24 | DUKHCONI2AZ2DRGL5115 FF+6d, DUKHCONI2AZ2DRGL5115 SS+6d | 0d |  | LABOR- SUBCONTRACTOR [18 h]; MECHANICALS SK [64.8 h]; DRAINAGE PIPES QTY [115 lm] | 15,023 | 15 | 2AP2DRFR15 | DUKHCON2AP2DRGL5120 | DUKHCONI2AZ2DRGL5120 | DH | CON | 2AF | Z2 | FR | DR | B07 | B07-D06 | RSE-2A |
| DUKHCONI2AZ2DRGL5125 |  | Testing of Drainage line | 25d | 2013-11-04 | 2013-12-02 | DUKHCONI2AZ2DRGL5120 FF+7d, DUKHCONI2AZ2DRGL5120 SS+7d | 0d |  | LABOR- SUBCONTRACTOR [18 h]; MECHANICALS SK [32.4 h]; DRAINAGE PIPES TEST QTY [115 lm] | 1,668.5 | 20 | 2AP2DRFR20 | DUKHCON2AP2DRGL5125 | DUKHCONI2AZ2DRGL5125 | DH | CON | 2AF | Z2 | FR | DR | B07 | B07-D06 | RSE-2A |
| DUKHCONI2AZ2DRGL5130 |  | Backfilling Drainage line | 15d | 2013-11-21 | 2013-12-08 | DUKHCONI2AZ2DRGL5125 FF+5d, DUKHCONI2AZ2DRGL5125 SS+10d | 0d |  | LABOR - CIVIL [30 h]; BACKFILLING QTY [115 Cum]; BOBCAT [75 h]; PLATE COMPACTOR [75 h]; TRUCK [15 h]; EQUIP OPERATORS [165 h] | 6,107 | 25 | 2AP2DRFR25 | DUKHCON2AP2DRGL5130 | DUKHCONI2AZ2DRGL5130 | DH | CON | 2AF | Z2 | FR | DR | B07 | B07-D06 | RSE-2A |

Notes:
- DUKHCONI2AZ1RWGL6000: Expenses: I2A-Road work 38401
- DUKHCONI2AZ1RWGL6005: Expenses: I2A-Road work 77389
- DUKHCONI2AZ1RWGL6010: Expenses: I2A-Road work 59403
- DUKHCONI2AZ1RWGL6015: Expenses: I2A-Road work 38695
- DUKHCONI2AZ1RWGL6020: Expenses: I2A-Road work 98319.5
- DUKHCONI2AZ1RWGL6025: Expenses: I2A-Road work 51221
- DUKHCONI2AZ1RWGL6030: Expenses: I2A-Road work 190006
- DUKHCONI2AZ1PSGL7000: Expenses: I2A-Road work 14926
- DUKHCONI2AZ1PSGL7005: Expenses: I2A-Road work 14926
- DUKHCONI2AZ1PSGL7010: Expenses: I2A-Road work 74626
- DUKHCONI2AZ1PSGL7015: Expenses: I2A-Road work 7463
- DUKHCONI2AZ1HDGL7020: Expenses: I2A-Hard and soft landscaping 17117
- DUKHCONI2AZ1HDGL7025: Expenses: I2A-Hard and soft landscaping 46683
- DUKHCONI2AZ1HDGL7030: Expenses: I2A-Hard and soft landscaping 59913
- DUKHCONI2AZ1HDGL7035: Expenses: I2A-Hard and soft landscaping 24652.5
- DUKHCONI2AZ1HDGL7040: Expenses: I2A-Hard and soft landscaping 1424
- DUKHCONI2AZ1SLGL7200: Expenses: I2A-Hard and soft landscaping 6275
- DUKHCONI2AZ1SLGL7205: Expenses: I2A-Hard and soft landscaping 35557.5
- DUKHCONI2AZ1SLGL7210: Expenses: I2A-Hard and soft landscaping 76761.5
- DUKHCONI2AZ2DRGL5115: Expenses: I2A-Surface Water drainage and Sewerage system 4382
- DUKHCONI2AZ2DRGL5120: Expenses: I2A-Surface Water drainage and Sewerage system 15023
- DUKHCONI2AZ2DRGL5125: Expenses: I2A-Surface Water drainage and Sewerage system 1668.5
- DUKHCONI2AZ2DRGL5130: Expenses: I2A-Surface Water drainage and Sewerage system 6107

| ID | WBS | Activity | Duration | Start | Finish | Predecessors | Total float | Free float | Resources | Cost | CODE | P3 ACTID | P6 ID (old) | NP61D | PROJECT | PHASES | PACKAGE | PART | ELEMENTS | STEP | BILL NOS | BILL DIVISION | RES PACK |
| --- | --- | --- | --- | --- | --- | --- | --- | --- | --- | --- | --- | --- | --- | --- | --- | --- | --- | --- | --- | --- | --- | --- | --- |
|  | 15 | **MANHOLES & SOAKAWAY** |  | 2013-11-21 | 2014-02-12 |  |  |  |  |  |  |  |  |  |  |  |  |  |  |  |  |  |  |
| DUKHCONI2AZ2SAGL5135 |  | Construction of manholes Drainage | 25d | 2013-11-21 | 2013-12-21 | DUKHCONI2AZ2DRGL5115, DUKHCONI2AZ1SAGL5135, DUKHCONI2AZ2DRGL5130 FF+10d | 59d | 25d | MANHOLES SK [24 h]; LABOR - CIVIL [12 h]; MANHOLES QTY [3 ea] | 11,525 | 10 | 2AP2SAFR10 | DUKHCON2AP2SAGL5135 | DUKHCONI2AZ2SAGL5135 | DH | CON | 2AF | Z2 | FR | SA | B07 | B07-D06 | RSE-2A |
| DUKHCONI2AZ2SAGL5140 |  | Construction of soakaways | 25d | 2013-11-21 | 2013-12-21 | DUKHCONI2AZ2DRGL5115, DUKHCONI2AZ2DRGL5130 FF+10d | 0d |  | MANHOLES SK [72 h]; LABOR - CIVIL [30 h]; SOAKWAY QTY [9 ea] | 130,264 | 15 | 2AP2SAFR15 | DUKHCON2AP2SAGL5140 | DUKHCONI2AZ2SAGL5140 | DH | CON | 2AF | Z2 | FR | SA | B07 | B07-D06 | RSE-2A |
| DUKHCONI2AZ2SAGL5145 |  | Construction of Road gullies | 25d | 2013-12-22 | 2014-01-19 | DUKHCONI2AZ2SAGL5140, DUKHCONI2AZ1SAGL5145 | 0d |  | MANHOLES SK [72 h]; LABOR - CIVIL [30 h]; ROAD GULLY QTY [9 ea] | 17,964.5 | 20 | 2AP2SAFR20 | DUKHCON2AP2SAGL5145 | DUKHCONI2AZ2SAGL5145 | DH | CON | 2AF | Z2 | FR | SA | B07 | B07-D06 | RSE-2A |
| DUKHCONI2AZ2SAGL5150 |  | Connection with existing sewer manhole | 20d | 2014-01-20 | 2014-02-12 | DUKHCONI2AZ2SAGL5145, DUKHCONI2AZ2SAGL5135 | 34d |  | MANHOLES SK [24 h]; LABOR - CIVIL [12 h]; MANHOLES QTY [3 ea] | 5,676.5 | 25 | 2AP2SAFR25 | DUKHCON2AP2SAGL5150 | DUKHCONI2AZ2SAGL5150 | DH | CON | 2AF | Z2 | FR | SA | B07 | B07-D06 | RSE-2A |
|  | 20 | **WATER SUPPLY SYSTEM** |  | 2013-12-02 | 2014-02-18 |  |  |  |  |  |  |  |  |  |  |  |  |  |  |  |  |  |  |
| DUKHCONI2AZ2WSGL5155 |  | Excavation for water line | 25d | 2013-12-02 | 2013-12-31 | DUKHCONI2AZ1WSGL5170, DUKHCONI2AZ2DRGL5130 SS+9d | 1d | 0d | LABOR - CIVIL [114 h]; EXCAVATION QTY [188 Cum]; LOADER [31 h]; POCLAIN [63 h]; TRUCK [31 h]; EQUIP OPERATORS [125 h] | 9,746 | 10 | 2AP2WSFR10 | DUKHCON2AP2WSGL5155 | DUKHCONI2AZ2WSGL5155 | DH | CON | 2AF | Z2 | FR | WS | B07 | B07-D07 | RSE-2A |
| DUKHCONI2AZ2WSGL5160 |  | Laying of water line | 25d | 2013-12-08 | 2014-01-06 | DUKHCONI2AZ2WSGL5155 SS+5d | 1d | 0d | LABOR- SUBCONTRACTOR [108 h]; MECHANICALS SK [194.4 h]; WATER PIPES QTY [261 lm] | 47,454 | 15 | 2AP2WSFR15 | DUKHCON2AP2WSGL5160 | DUKHCONI2AZ2WSGL5160 | DH | CON | 2AF | Z2 | FR | WS | B07 | B07-D07 | RSE-2A |
| DUKHCONI2AZ2WSGL5165 |  | Testing of potable water line | 25d | 2013-12-14 | 2014-01-12 | DUKHCONI2AZ2WSGL5160 SS+5d | 1d |  | LABOR- SUBCONTRACTOR [30 h]; MECHANICALS SK [54 h]; DRAINAGE PIPES TEST QTY [261 lm] | 4,751 | 20 | 2AP2WSFR20 | DUKHCON2AP2WSGL5165 | DUKHCONI2AZ2WSGL5165 | DH | CON | 2AF | Z2 | FR | WS | B07 | B07-D07 | RSE-2A |
| DUKHCONI2AZ2WSGL5170 |  | Backfilling potable water line | 25d | 2013-12-22 | 2014-01-19 | DUKHCONI2AZ2WSGL5165 SS+5d, DUKHCONI2AZ2SAGL5145 FF | 0d |  | LABOR - CIVIL [48 h]; BACKFILLING QTY [188 Cum]; BOBCAT [63 h]; PLATE COMPACTOR [63 h]; TRUCK [13 h]; EQUIP OPERATORS [139 h] | 2,436 | 25 | 2AP2WSFR25 | DUKHCON2AP2WSGL5170 | DUKHCONI2AZ2WSGL5170 | DH | CON | 2AF | Z2 | FR | WS | B07 | B07-D07 | RSE-2A |
| DUKHCONI2AZ2WSGL5175 |  | Construction of valve chambers & Thrust Blocks | 25d | 2013-12-28 | 2014-01-25 | DUKHCONI2AZ2WSGL5170 FF+5d, DUKHCONI2AZ1WSGL5175, DUKHCONI2AZ2WSGL5155 SS+10d | 29d | 0d | MANHOLES SK [48 h]; LABOR - CIVIL [18 h]; MANHOLES QTY [6 ea] | 1,277.5 | 30 | 2AP2WSFR30 | DUKHCON2AP2WSGL5175 | DUKHCONI2AZ2WSGL5175 | DH | CON | 2AF | Z2 | FR | WS | B07 | B07-D07 | RSE-2A |
| DUKHCONI2AZ2WSGL5180 |  | Installation of meter ,Accessories & Connection | 20d | 2014-01-26 | 2014-02-18 | DUKHCONI2AZ1WSGL5180, DUKHCONI2AZ2WSGL5175 | 29d | 7d | CHAMPER QTY [6 lm]; LABOR- SUBCONTRACTOR [12 h]; MECHANICALS SK [21.6 h] | 19,692.5 | 35 | 2AP2WSFR35 | DUKHCON2AP2WSGL5180 | DUKHCONI2AZ2WSGL5180 | DH | CON | 2AF | Z2 | FR | WS | B07 | B07-D07 | RSE-2A |
|  | 25 | **FIREFIGHTING LINES** |  | 2013-12-28 | 2014-02-26 |  |  |  |  |  |  |  |  |  |  |  |  |  |  |  |  |  |  |
| DUKHCONI2AZ2FFGL5185 |  | Excavation for firefighting line | 25d | 2013-12-28 | 2014-01-25 | DUKHCONI2AZ1FFGL5200, DUKHCONI2AZ2WSGL5170 SS+5d | 0d |  | LABOR - CIVIL [36 h]; EXCAVATION QTY [58 Cum]; LOADER [13 h]; POCLAIN [25 h]; TRUCK [13 h]; EQUIP OPERATORS [51 h] | 6,458 | 10 | 2AP2FFFR10 | DUKHCON2AP2FFGL5185 | DUKHCONI2AZ2FFGL5185 | DH | CON | 2AF | Z2 | FR | FF | B07 | B07-D07 | RSE-2A |
| DUKHCONI2AZ2FFGL5190 |  | Laying of firefighting line | 25d | 2014-01-05 | 2014-02-02 | DUKHCONI2AZ2FFGL5185 SS+7d | 0d |  | LABOR- SUBCONTRACTOR [18 h]; MECHANICALS SK [64.8 h]; PLUMB PIPES QTY [58 lm] | 8,494 | 15 | 2AP2FFFR15 | DUKHCON2AP2FFGL5190 | DUKHCONI2AZ2FFGL5190 | DH | CON | 2AF | Z2 | FR | FF | B07 | B07-D07 | RSE-2A |
| DUKHCONI2AZ2FFGL5195 |  | Testing of firefighting line | 25d | 2014-01-11 | 2014-02-08 | DUKHCONI2AZ2FFGL5190 SS+5d | 0d |  | LABOR- SUBCONTRACTOR [12 h]; MECHANICALS SK [32.4 h]; DRAINAGE PIPES QTY [58 lm] | 621 | 20 | 2AP2FFFR20 | DUKHCON2AP2FFGL5195 | DUKHCONI2AZ2FFGL5195 | DH | CON | 2AF | Z2 | FR | FF | B07 | B07-D07 | RSE-2A |
| DUKHCONI2AZ2FFGL5200 |  | Backfilling firefighting line | 25d | 2014-01-16 | 2014-02-15 | DUKHCONI2AZ2FFGL5195 SS+5d | 0d |  | LABOR - CIVIL [18 h]; BACKFILLING QTY [58 Cum]; BOBCAT [25 h]; PLATE COMPACTOR [25 h]; TRUCK [5 h]; EQUIP OPERATORS [55 h] | 1,615 | 25 | 2AP2FFFR25 | DUKHCON2AP2FFGL5200 | DUKHCONI2AZ2FFGL5200 | DH | CON | 2AF | Z2 | FR | FF | B07 | B07-D07 | RSE-2A |
| DUKHCONI2AZ2FFGL5205 |  | Construction of valve chambers & Thrust Blocks | 25d | 2014-01-22 | 2014-02-20 | DUKHCONI2AZ2FFGL5200 FF+5d, DUKHCONI2AZ1FFGL5205, DUKHCONI2AZ2FFGL5185 SS+10d | 22d | 0d | STEEL FIXERS SK [8 h]; CARPENTERS SK [24 h]; CONCRETE MASON SK [16 h]; LABOR - CIVIL [36 h]; EXCAVATION QTY [7 Cum]; REINFORCEMENT BARS QTY [53 kg]; FORMWORK QTY [13 Sqm]; CONCRETE QTY [8 Cum] | 1,419.5 | 30 | 2AP2FFFR30 | DUKHCON2AP2FFGL5205 | DUKHCONI2AZ2FFGL5205 | DH | CON | 2AF | Z2 | FR | FF | B07 | B07-D07 | RSE-2A |
| DUKHCONI2AZ2FFGL5210 |  | Connection with existing Firewater System | 25d | 2014-01-28 | 2014-02-26 | DUKHCONI2AZ2WSGL5180 FF, DUKHCONI2AZ2FFGL5205 FF+5d, DUKHCONI2AZ1FFGL5210 | 22d | 16d | STEEL FIXERS SK [8 h]; CARPENTERS SK [24 h]; CONCRETE MASON SK [16 h]; LABOR - CIVIL [36 h]; EXCAVATION QTY [7 Cum]; REINFORCEMENT BARS QTY [53 kg]; FORMWORK QTY [13 Sqm]; CONCRETE QTY [8 Cum] | 12,025 | 35 | 2AP2FFFR35 | DUKHCON2AP2FFGL5210 | DUKHCONI2AZ2FFGL5210 | DH | CON | 2AF | Z2 | FR | FF | B07 | B07-D07 | RSE-2A |
|  | 30 | **ELECTRICAL LINES** |  | 2014-01-25 | 2014-03-20 |  |  |  |  |  |  |  |  |  |  |  |  |  |  |  |  |  |  |
| DUKHCONI2AZ2ELGL5215 |  | Excavation Cable Trenches & Duct Banks | 25d | 2014-01-25 | 2014-02-23 | DUKHCONI2AZ2FFGL5200 SS+7d, DUKHCONI2AZ1ELGL5225 | 0d |  | LABOR - CIVIL [1326 h]; EXCAVATION QTY [2211 Cum]; LOADER [188 h]; POCLAIN [375 h]; TRUCK [188 h]; EQUIP OPERATORS [751 h] | 10,948.5 | 10 | 2AP2ECFR10 | DUKHCON2AP2ELGL5215 | DUKHCONI2AZ2ELGL5215 | DH | CON | 2AF | Z2 | FR | EC | B07 | B07-D04 | RSE-2A |
| DUKHCONI2AZ2ELGL5220 |  | Laying of electrical cables | 25d | 2014-01-30 | 2014-03-01 | DUKHCONI2AZ2ELGL5215 SS+5d | 13d | 0d | LABOR- SUBCONTRACTOR [666 h]; ELECTRICIANS SK [2475.2 h]; CABLE QTY [2211 lm] | 1,047,951.5 | 15 | 2AP2ECFR15 | DUKHCON2AP2ELGL5220 | DUKHCONI2AZ2ELGL5220 | DH | CON | 2AF | Z2 | FR | EC | B07 | B07-D04 | RSE-2A |
| DUKHCONI2AZ2ELGL5225 |  | Backfilling Electrical trench | 25d | 2014-02-08 | 2014-03-09 | DUKHCONI2AZ2ELGL5215 FF+7d, DUKHCONI2AZ2ELGL5220 SS+7d | 13d | 0d | LABOR - CIVIL [534 h]; BACKFILLING QTY [2211 Cum]; BOBCAT [375 h]; PLATE COMPACTOR [375 h]; TRUCK [75 h]; EQUIP OPERATORS [825 h] | 4,692 | 20 | 2AP2ECFR20 | DUKHCON2AP2ELGL5225 | DUKHCONI2AZ2ELGL5225 | DH | CON | 2AF | Z2 | FR | EC | B07 | B07-D04 | RSE-2A |
| DUKHCONI2AZ2ELGL5230 |  | Construction of Submain Board & Feeder Pillar | 25d | 2014-02-20 | 2014-03-20 | DUKHCONI2AZ2ELGL5225 SS+10d, DUKHCONI2AZ2ELGL5225 FF+10d, DUKHCONI2AZ1ELGL5230 | 33d | 0d | STEEL FIXERS SK [8 h]; CARPENTERS SK [88 h]; CONCRETE MASON SK [8 h]; LABOR - CIVIL [72 h]; LABOR- SUBCONTRACTOR [96 h]; REINFORCEMENT BARS QTY [53 kg]; FORMWORK QTY [42 Sqm]; CONCRETE QTY [3 Cum]; DOOR ERECTOR SK [24 h]; EXPANSION JOINT QTY [28 Sqm]; ALUMINIUM DOOR QTY [5 ea]; EXPANSION JOINT SKILLED SK [224 h] | 37,026 | 25 | 2AP2ECFR25 | DUKHCON2AP2ELGL5230 | DUKHCONI2AZ2ELGL5230 | DH | CON | 2AF | Z2 | FR | EC | B07 | B07-D04 | RSE-2A |

Notes:
- DUKHCONI2AZ2SAGL5135: Expenses: I2A-Surface Water drainage and Sewerage system 11525
- DUKHCONI2AZ2SAGL5140: Expenses: I2A-Surface Water drainage and Sewerage system 130264
- DUKHCONI2AZ2SAGL5145: Expenses: I2A-Surface Water drainage and Sewerage system 17964.5
- DUKHCONI2AZ2SAGL5150: Expenses: I2A-Surface Water drainage and Sewerage system 5676.5
- DUKHCONI2AZ2WSGL5155: Expenses: I2A-Water supply system 9746
- DUKHCONI2AZ2WSGL5160: Expenses: I2A-Water supply system 47454
- DUKHCONI2AZ2WSGL5165: Expenses: I2A-Water supply system 4751
- DUKHCONI2AZ2WSGL5170: Expenses: I2A-Water supply system 2436
- DUKHCONI2AZ2WSGL5175: Expenses: I2A-Water supply system 1277.5
- DUKHCONI2AZ2WSGL5180: Expenses: I2A-Water supply system 19692.5
- DUKHCONI2AZ2FFGL5185: Expenses: I2A-Water supply system 6458
- DUKHCONI2AZ2FFGL5190: Expenses: I2A-Water supply system 8494
- DUKHCONI2AZ2FFGL5195: Expenses: I2A-Water supply system 621
- DUKHCONI2AZ2FFGL5200: Expenses: I2A-Water supply system 1615
- DUKHCONI2AZ2FFGL5205: Expenses: I2A-Water supply system 1419.5
- DUKHCONI2AZ2FFGL5210: Expenses: I2A-Water supply system 12025
- DUKHCONI2AZ2ELGL5215: Expenses: I2A-Electrical power supply and distribution 10948.5
- DUKHCONI2AZ2ELGL5220: Expenses: I2A-Electrical power supply and distribution 1047952
- DUKHCONI2AZ2ELGL5225: Expenses: I2A-Electrical power supply and distribution 4692
- DUKHCONI2AZ2ELGL5230: Expenses: I2A-Electrical power supply and distribution 37026

| ID | WBS | Activity | Duration | Start | Finish | Predecessors | Total float | Free float | Resources | Cost | CODE | P3 ACTID | P6 ID (old) | NP61D | PROJECT | PHASES | PACKAGE | PART | ELEMENTS | STEP | BILL NOS | BILL DIVISION | RES PACK |
| --- | --- | --- | --- | --- | --- | --- | --- | --- | --- | --- | --- | --- | --- | --- | --- | --- | --- | --- | --- | --- | --- | --- | --- |
|  | 35 | **STREET LIGHTING** |  | 2014-01-25 | 2014-04-19 |  |  |  |  |  |  |  |  |  |  |  |  |  |  |  |  |  |  |
| DUKHCONI2AZ2STGL5235 |  | Excavation for Street lighting | 25d | 2014-01-25 | 2014-02-23 | DUKHCONI2AZ2ELGL5215 SS, DUKHCONI2AZ1STGL5250 | 0d |  | LABOR - CIVIL [84 h]; EXCAVATION QTY [140 Cum]; LOADER [25 h]; POCLAIN [50 h]; TRUCK [25 h]; EQUIP OPERATORS [100 h] | 1,216 | 10 | 2AP2STFR10 | DUKHCON2AP2STGL5235 | DUKHCONI2AZ2STGL5235 | DH | CON | 2AF | Z2 | FR | ST | B07 | B07-D09 | RSE-2A |
| DUKHCONI2AZ2STGL5240 |  | Construction of Duct Banks | 25d | 2014-01-30 | 2014-03-01 | DUKHCONI2AZ2STGL5235 SS+5d | 0d |  | LABOR- SUBCONTRACTOR [72 h]; ELECTRICIANS SK [268.8 h]; DUCT BANK QTY [94 lm] | 53,233 | 15 | 2AP2STFR15 | DUKHCON2AP2STGL5240 | DUKHCONI2AZ2STGL5240 | DH | CON | 2AF | Z2 | FR | ST | B07 | B07-D09 | RSE-2A |
| DUKHCONI2AZ2STGL5245 |  | Construction of Foundation | 25d | 2014-01-30 | 2014-03-01 | DUKHCONI2AZ2STGL5240 SS | 0d |  | MANHOLES SK [368 h]; LABOR - CIVIL [138 h]; COLUMN BASE QTY [23 ea] | 16,104.5 | 20 | 2AP2STFR20 | DUKHCON2AP2STGL5245 | DUKHCONI2AZ2STGL5245 | DH | CON | 2AF | Z2 | FR | ST | B07 | B07-D09 | RSE-2A |
| DUKHCONI2AZ2STGL5250 |  | Backfilling Street Lighting | 25d | 2014-02-05 | 2014-03-06 | DUKHCONI2AZ2STGL5235 FF+5d, DUKHCONI2AZ2STGL5245 SS+5d | 0d |  | LABOR - CIVIL [36 h]; BACKFILLING QTY [140 Cum]; BOBCAT [50 h]; PLATE COMPACTOR [50 h]; TRUCK [10 h]; EQUIP OPERATORS [110 h] | 1,216 | 25 | 2AP2STFR25 | DUKHCON2AP2STGL5250 | DUKHCONI2AZ2STGL5250 | DH | CON | 2AF | Z2 | FR | ST | B07 | B07-D09 | RSE-2A |
| DUKHCONI2AZ2STGL5255 |  | Installation of light Post | 25d | 2014-02-18 | 2014-03-18 | DUKHCONI2AZ2STGL5250 SS+10d, DUKHCONI2AZ1STGL5255 | 53d | 20d | LABOR- SUBCONTRACTOR [36 h]; ELECTRICIANS SK [134.4 h]; LIGHTPOST COLUMN QTY [23 ea] | 195,371 | 30 | 2AP2STFR30 | DUKHCON2AP2STGL5255 | DUKHCONI2AZ2STGL5255 | DH | CON | 2AF | Z2 | FR | ST | B07 | B07-D09 | RSE-2A |
| DUKHCONI2AZ2STGL5260 |  | Electrical Works | 25d | 2014-03-22 | 2014-04-19 | DUKHCONI2AZ2STGL5255 SS+7d, DUKHCONI2AZ2ELGL5230, DUKHCONI2AZ1STGL5260 | 33d | 5d | CABLE QTY [94 lm]; LABOR- SUBCONTRACTOR [30 h]; ELECTRICIANS SK [112 h] | 12,498 | 35 | 2AP2STFR35 | DUKHCON2AP2STGL5260 | DUKHCONI2AZ2STGL5260 | DH | CON | 2AF | Z2 | FR | ST | B07 | B07-D09 | RSE-2A |
|  | 40 | **IRRIGATION LINES** |  | 2014-03-10 | 2014-05-14 |  |  |  |  |  |  |  |  |  |  |  |  |  |  |  |  |  |  |
| DUKHCONI2AZ2IRGL5265 |  | Excavation for irrigation line | 25d | 2014-03-10 | 2014-04-07 | DUKHCONI2AZ1IRGL5280, DUKHCONI2AZ2ELGL5225 | 26d | 0d | LABOR - CIVIL [42 h]; EXCAVATION QTY [67 Cum]; LOADER [13 h]; POCLAIN [25 h]; TRUCK [13 h]; EQUIP OPERATORS [51 h] | 2,658.5 | 10 | 2AP2IRFR10 | DUKHCON2AP2IRGL5265 | DUKHCONI2AZ2IRGL5265 | DH | CON | 2AF | Z2 | FR | IR | B07 | B07-D07 | RSE-2A |
| DUKHCONI2AZ2IRGL5270 |  | Laying of irrigationline | 25d | 2014-03-16 | 2014-04-13 | DUKHCONI2AZ2IRGL5265 SS+5d | 26d | 0d | LABOR- SUBCONTRACTOR [18 h]; MECHANICALS SK [32.4 h]; IRRIGATION PIPES QTY [114 lm] | 3,701.5 | 15 | 2AP2IRFR15 | DUKHCON2AP2IRGL5270 | DUKHCONI2AZ2IRGL5270 | DH | CON | 2AF | Z2 | FR | IR | B07 | B07-D07 | RSE-2A |
| DUKHCONI2AZ2IRGL5275 |  | Testing of irrigation line | 25d | 2014-03-22 | 2014-04-19 | DUKHCONI2AZ2IRGL5270 SS+5d | 26d | 0d | LABOR- SUBCONTRACTOR [18 h]; MECHANICALS SK [32.4 h]; DRAINAGE PIPES TEST QTY [114 lm] | 303.5 | 20 | 2AP2IRFR20 | DUKHCON2AP2IRGL5275 | DUKHCONI2AZ2IRGL5275 | DH | CON | 2AF | Z2 | FR | IR | B07 | B07-D07 | RSE-2A |
| DUKHCONI2AZ2IRGL5280 |  | Backfilling irrigation line | 25d | 2014-03-27 | 2014-04-24 | DUKHCONI2AZ2IRGL5275 SS+5d | 26d | 0d | LABOR - CIVIL [18 h]; BACKFILLING QTY [67 Cum]; BOBCAT [25 h]; PLATE COMPACTOR [25 h]; TRUCK [5 h]; EQUIP OPERATORS [55 h] | 664.5 | 25 | 2AP2IRFR25 | DUKHCON2AP2IRGL5280 | DUKHCONI2AZ2IRGL5280 | DH | CON | 2AF | Z2 | FR | IR | B07 | B07-D07 | RSE-2A |
| DUKHCONI2AZ2IRGL5285 |  | Construction of Thrust Blocks,Pull boxes | 25d | 2014-04-08 | 2014-05-06 | DUKHCONI2AZ2ELGL5225 SS+10d, DUKHCONI2AZ2IRGL5280 FF+10d | 26d | 0d | LABOR- SUBCONTRACTOR [48 h]; ELECTRICIANS SK [33.6 h]; THRUST BLOCKS QTY [3 ea]; PULL BOX QTY [14 ea]; PULL BOX SK [112 h] | 2,778.5 | 30 | 2AP2IRFR30 | DUKHCON2AP2IRGL5285 | DUKHCONI2AZ2IRGL5285 | DH | CON | 2AF | Z2 | FR | IR | B07 | B07-D07 | RSE-2A |
| DUKHCONI2AZ2IRGL5290 |  | Irrigation Fittings (Nozzle,Values) | 25d | 2014-04-16 | 2014-05-14 | DUKHCONI2AZ2IRGL5285 SS+7d, DUKHCONI2AZ2IRGL5280 SS+10d | 26d | 11d | LABOR- SUBCONTRACTOR [12 h]; MECHANICALS SK [21.6 h]; IRRIGATION PIPES QTY [60 lm] | 39,898.5 | 35 | 2AP2IRFR35 | DUKHCON2AP2IRGL5290 | DUKHCONI2AZ2IRGL5290 | DH | CON | 2AF | Z2 | FR | IR | B07 | B07-D07 | RSE-2A |
|  | 45 | **TELECOMMUNICATION LINES** |  | 2014-02-18 | 2014-04-05 |  |  |  |  |  |  |  |  |  |  |  |  |  |  |  |  |  |  |
| DUKHCONI2AZ2TCGL5295 |  | Excavation Telecommunication trenches | 20d | 2014-02-18 | 2014-03-12 | DUKHCONI2AZ1TCGL5305, DUKHCONI2AZ2STGL5250 SS+10d | 0d |  | LABOR - CIVIL [78 h]; EXCAVATION QTY [130 Cum]; LOADER [25 h]; POCLAIN [50 h]; TRUCK [25 h]; EQUIP OPERATORS [100 h] | 6,838 | 10 | 2AP2TCFR10 | DUKHCON2AP2TCGL5295 | DUKHCONI2AZ2TCGL5295 | DH | CON | 2AF | Z2 | FR | TC | B07 | B07-D05 | RSE-2A |
| DUKHCONI2AZ2TCGL5300 |  | Laying of cables | 20d | 2014-02-24 | 2014-03-18 | DUKHCONI2AZ2TCGL5295 SS+5d | 0d |  | LABOR- SUBCONTRACTOR [78 h]; ELECTRICIANS SK [291.2 h]; CABLE QTY [260 lm] | 1,092 | 15 | 2AP2TCFR15 | DUKHCON2AP2TCGL5300 | DUKHCONI2AZ2TCGL5300 | DH | CON | 2AF | Z2 | FR | TC | B07 | B07-D05 | RSE-2A |
| DUKHCONI2AZ2TCGL5305 |  | Backfilling telecommunication trench | 20d | 2014-03-02 | 2014-03-24 | DUKHCONI2AZ2TCGL5300 SS+5d | 0d |  | TRUCK [10 h]; EQUIP OPERATORS [110 h]; LABOR - CIVIL [30 h]; BACKFILLING QTY [130 Cum]; BOBCAT [50 h]; PLATE COMPACTOR [50 h] | 2,929.5 | 20 | 2AP2TCFR20 | DUKHCON2AP2TCGL5305 | DUKHCONI2AZ2TCGL5305 | DH | CON | 2AF | Z2 | FR | TC | B07 | B07-D05 | RSE-2A |
| DUKHCONI2AZ2TCGL5310 |  | Connection & Installation | 20d | 2014-03-13 | 2014-04-05 | DUKHCONI2AZ1TCGL5310, DUKHCONI2AZ2TCGL5305 SS+10d | 45d | 17d | LABOR- SUBCONTRACTOR [24 h]; ELECTRICIANS SK [156.8 h]; TELEPHONE SOCKETS QTY [14 ea] | 32,225 | 25 | 2AP2TCFR25 | DUKHCON2AP2TCGL5310 | DUKHCONI2AZ2TCGL5310 | DH | CON | 2AF | Z2 | FR | TC | B07 | B07-D05 | RSE-2A |
|  | 50 | **BOUNDARY WALL** |  | 2014-02-18 | 2014-05-13 |  |  |  |  |  |  |  |  |  |  |  |  |  |  |  |  |  |  |
| DUKHCONI2AZ2BWGL5315 |  | Construction of Boundary Wall (Ht-3m) | 25d | 2014-02-18 | 2014-03-18 | DUKHCONI2AZ2STGL5250 SS+10d, DUKHCONI2AZ1BWGL5315 | 27d | 0d | STEEL FIXERS SK [72 h]; LABOR - CIVIL [54 h]; BOUNDARY WIRE MESH QTY [173 Sqm] | 278,491 | 10 | 2AP2BWFR10 | DUKHCON2AP2ARGL5315 | DUKHCONI2AZ2BWGL5315 | DH | CON | 2AF | Z2 | FR | BW | B07 | B07-D10 | RSE-2A |
| DUKHCONI2AZ2BWGL5320 |  | Install.Steel Gate,Entance Barrier (3m Wall) | 25d | 2014-03-05 | 2014-04-02 | DUKHCONI2AZ2BWGL5315 SS+13d | 27d | 0d | LABOR- SUBCONTRACTOR [12 h]; GATE QTY [2 ea]; GATE ERECTOR SK [16 h] | 2,145.5 | 15 | 2AP2BWFR15 | DUKHCON2AP2ARGL5320 | DUKHCONI2AZ2BWGL5320 | DH | CON | 2AF | Z2 | FR | BW | B07 | B07-D10 | RSE-2A |
| DUKHCONI2AZ2BWGL5325 |  | Const. of Villa Front Boundary Wall (Ht-2m) | 25d | 2014-04-03 | 2014-05-01 | DUKHCONI2AZ2BWGL5315 SS+5d, DUKHCONI2AZ2BWGL5320, DUKHCONI2AZ1BWGL5325 | 27d | 0d | STEEL FIXERS SK [40 h]; LABOR - CIVIL [30 h]; BOUNDARY WIRE MESH QTY [98 Sqm] | 163,525.5 | 20 | 2AP2BWFR20 | DUKHCON2AP2ARGL5325 | DUKHCONI2AZ2BWGL5325 | DH | CON | 2AF | Z2 | FR | BW | B07 | B07-D10 | RSE-2A |
| DUKHCONI2AZ2BWGL5330 |  | Const. of Blockwork fence Wall (Ht-1.85m) | 25d | 2014-04-15 | 2014-05-13 | DUKHCONI2AZ2BWGL5325 SS+10d, DUKHCONI2AZ1BWGL5330 | 40d | 37d | STEEL FIXERS SK [16 h]; LABOR - CIVIL [12 h]; BOUNDARY WIRE MESH QTY [39 Sqm] | 31,436.5 | 30 | 2AP2BWFR30 | DUKHCON2AP2ARGL5330 | DUKHCONI2AZ2BWGL5330 | DH | CON | 2AF | Z2 | FR | BW | B07 | B07-D10 | RSE-2A |

Notes:
- DUKHCONI2AZ2STGL5235: Expenses: I2A-Street lighting 1216
- DUKHCONI2AZ2STGL5240: Expenses: I2A-Street lighting 53233
- DUKHCONI2AZ2STGL5245: Expenses: I2A-Street lighting 16104.5
- DUKHCONI2AZ2STGL5250: Expenses: I2A-Street lighting 1216
- DUKHCONI2AZ2STGL5255: Expenses: I2A-Street lighting 195371
- DUKHCONI2AZ2STGL5260: Expenses: I2A-Street lighting 12498
- DUKHCONI2AZ2IRGL5265: Expenses: I2A-Water supply system 2658.5
- DUKHCONI2AZ2IRGL5270: Expenses: I2A-Water supply system 3701.5
- DUKHCONI2AZ2IRGL5275: Expenses: I2A-Water supply system 303.5
- DUKHCONI2AZ2IRGL5280: Expenses: I2A-Water supply system 664.5
- DUKHCONI2AZ2IRGL5285: Expenses: I2A-Water supply system 2778.5
- DUKHCONI2AZ2IRGL5290: Expenses: I2A-Water supply system 39898.5
- DUKHCONI2AZ2TCGL5295: Expenses: I2A-Telecommunication 6838
- DUKHCONI2AZ2TCGL5300: Expenses: I2A-Telecommunication 1092
- DUKHCONI2AZ2TCGL5305: Expenses: I2A-Telecommunication 2929.5
- DUKHCONI2AZ2TCGL5310: Expenses: I2A-Telecommunication 32225
- DUKHCONI2AZ2BWGL5315: Expenses: I2A-Hard and soft landscaping 278491
- DUKHCONI2AZ2BWGL5320: Expenses: I2A-Hard and soft landscaping 2145.5
- DUKHCONI2AZ2BWGL5325: Expenses: I2A-Hard and soft landscaping 163526
- DUKHCONI2AZ2BWGL5330: Expenses: I2A-Hard and soft landscaping 31436.5

| ID | WBS | Activity | Duration | Start | Finish | Predecessors | Total float | Free float | Resources | Cost | CODE | P3 ACTID | P6 ID (old) | NP61D | PROJECT | PHASES | PACKAGE | PART | ELEMENTS | STEP | BILL NOS | BILL DIVISION | RES PACK |
| --- | --- | --- | --- | --- | --- | --- | --- | --- | --- | --- | --- | --- | --- | --- | --- | --- | --- | --- | --- | --- | --- | --- | --- |
|  | 55 | **ROAD WORKS** |  | 2014-03-25 | 2014-06-08 |  |  |  |  |  |  |  |  |  |  |  |  |  |  |  |  |  |  |
| DUKHCONI2AZ2RWGL6000 |  | Excavation & Earth Filling | 10d | 2014-03-25 | 2014-04-05 | DUKHCONI2AZ2FFGL5200, DUKHCONI2AZ2STGL5250, DUKHCONI2AZ2SAGL5150, DUKHCONI2AZ2FFGL5210, DUKHCONI2AZ1RWGL6015 SS+10d, DUKHCONI2AZ2TCGL5305, DUKHCONI2AZ2ELGL5225 | 0d |  | LABOR - CIVIL [252 h]; EXCAVATION QTY [265 Cum]; BACKFILLING QTY [380 Cum]; LOADER [50 h]; POCLAIN [100 h]; TRUCK [50 h]; EQUIP OPERATORS [200 h] | 38,401 | 10 | 2AP2RDFR10 | DUKHCON2AP2RDGL6000 | DUKHCONI2AZ2RWGL6000 | DH | CON | 2AF | Z2 | FR | RD | B07 | B07-D08 | RSE-2A |
| DUKHCONI2AZ2RWGL6005 |  | Laying of Sub Grade | 25d | 2014-04-06 | 2014-05-04 | DUKHCONI2AZ2RWGL6000 | 0d |  | LABOR- SUBCONTRACTOR [18 h]; SUBGRADE QTY [252 Sqm] | 77,389 | 15 | 2AP2RDFR15 | DUKHCON2AP2RDGL6005 | DUKHCONI2AZ2RWGL6005 | DH | CON | 2AF | Z2 | FR | RD | B07 | B07-D08 | RSE-2A |
| DUKHCONI2AZ2RWGL6010 |  | Laying of Precast Kerbs | 25d | 2014-04-17 | 2014-05-15 | DUKHCONI2AZ2RWGL6005 SS+10d | 0d |  | GRANULAR SUBBASE QTY [252 Sqm]; LABOR- SUBCONTRACTOR [18 h] | 59,403 | 20 | 2AP2RDFR20 | DUKHCON2AP2RDGL6010 | DUKHCONI2AZ2RWGL6010 | DH | CON | 2AF | Z2 | FR | RD | B07 | B07-D08 | RSE-2A |
| DUKHCONI2AZ2RWGL6015 |  | Laying of Granular Sub Base Coarse | 20d | 2014-04-29 | 2014-05-21 | DUKHCONI2AZ2RWGL6010 SS+10d | 0d |  | KERBSTONE MASON SK [416 h]; LABOR- SUBCONTRACTOR [234 h]; KERBSTONE QTY [260 lm]; EDGE STONE QTY [260 Sqm]; HEAVY ROLLER [400 h]; LOADER [100 h]; TRUCK [100 h]; EQUIP OPERATORS [600 h] | 38,695 | 25 | 2AP2RDFR25 | DUKHCON2AP2RDGL6015 | DUKHCONI2AZ2RWGL6015 | DH | CON | 2AF | Z2 | FR | RD | B07 | B07-D08 | RSE-2A |
| DUKHCONI2AZ2RWGL6020 |  | Laying of Road Base Asphalt Concrete | 5d | 2014-05-22 | 2014-05-27 | DUKHCONI2AZ2RWGL6015 | 0d |  | ASPHALT PAVER MACHINE [50 h]; HAND ROLLER [100 h]; EQUIP OPERATORS [150 h]; LABOR- SUBCONTRACTOR [18 h]; ASPHALT CONCRETE QTY [1259 Cum] | 98,319.5 | 30 | 2AP2RDFR30 | DUKHCON2AP2RDGL6020 | DUKHCONI2AZ2RWGL6020 | DH | CON | 2AF | Z2 | FR | RD | B07 | B07-D08 | RSE-2A |
| DUKHCONI2AZ2RWGL6025 |  | Laying of Asphalt Wearing Coarse | 5d | 2014-05-28 | 2014-06-02 | DUKHCONI2AZ2RWGL6020, DUKHCONI2AZ1RWGL6025 | 0d |  | LABOR- SUBCONTRACTOR [18 h]; ASPHALT WEARING COURSE QTY [1259 Sqm]; ASPHALT PAVER MACHINE [50 h]; HAND ROLLER [100 h]; EQUIP OPERATORS [150 h] | 51,221 | 35 | 2AP2RDFR35 | DUKHCON2AP2RDGL6025 | DUKHCONI2AZ2RWGL6025 | DH | CON | 2AF | Z2 | FR | RD | B07 | B07-D08 | RSE-2A |
| DUKHCONI2AZ2RWGL6030 |  | Traffic Signage & Road Marking | 5d | 2014-06-03 | 2014-06-08 | DUKHCONI2AZ2RWGL6025, DUKHCONI2AZ1RWGL6030 | 18d | 15d | LABOR- SUBCONTRACTOR [168 h]; STEEL ERECTOR SK [200 h]; TRAFFIC SIGN QTY [122 ea]; ROAD MARKING QTY [65 lm]; ASPHALT SK [104 h] | 190,005.5 | 40 | 2AP2RDFR40 | DUKHCON2AP2RDGL6030 | DUKHCONI2AZ2RWGL6030 | DH | CON | 2AF | Z2 | FR | RD | B07 | B07-D08 | RSE-2A |
|  | 60 | **PARKING SHED** |  | 2014-05-05 | 2014-07-01 |  |  |  |  |  |  |  |  |  |  |  |  |  |  |  |  |  |  |
| DUKHCONI2AZ2PSGL7000 |  | Excavation | 15d | 2014-05-05 | 2014-05-21 | DUKHCONI2AZ1PSGL7005, DUKHCONI2AZ2RWGL6015 SS+5d | 8d | 5d | LABOR - CIVIL [6 h]; EXCAVATION QTY [10 Cum]; LOADER [8 h]; POCLAIN [15 h]; TRUCK [8 h]; EQUIP OPERATORS [31 h] | 14,926 | 10 | 2AP2PSFR10 | DUKHCON2AP2PSGL7000 | DUKHCONI2AZ2PSGL7000 | DH | CON | 2AF | Z2 | FR | PS | B07 | B07-D08 | RSE-2A |
| DUKHCONI2AZ2PSGL7005 |  | Foundation casting | 15d | 2014-05-17 | 2014-06-02 | DUKHCONI2AZ2RWGL6015 FF+10d, DUKHCONI2AZ2PSGL7000 FF+5d, DUKHCONI2AZ2PSGL7000 SS+5d | 3d | 0d | STEEL FIXERS SK [208 h]; CARPENTERS SK [280 h]; CONCRETE MASON SK [48 h]; LABOR - CIVIL [402 h]; REINFORCEMENT BARS QTY [2550 kg]; FORMWORK QTY [140 Sqm]; CONCRETE QTY [24 Cum] | 14,926 | 15 | 2AP2PSFR15 | DUKHCON2AP2PSGL7005 | DUKHCONI2AZ2PSGL7005 | DH | CON | 2AF | Z2 | FR | PS | B07 | B07-D08 | RSE-2A |
| DUKHCONI2AZ2PSGL7010 |  | Column, Frame& Fabrics Erection | 25d | 2014-05-28 | 2014-06-25 | DUKHCONI2AZ2BWGL5330 FF, DUKHCONI2AZ2RWGL6030 FF, DUKHCONI2AZ2PSGL7005 SS+10d, DUKHCONI2AZ2RWGL6020, DUKHCONI2AZ1PSGL7010 | 3d | 0d | LABOR- SUBCONTRACTOR [42 h]; STEEL ERECTOR SK [80 h]; PARKING SHED QTY [240 ea] | 74,626 | 20 | 2AP2PSFR20 | DUKHCON2AP2PSGL7010 | DUKHCONI2AZ2PSGL7010 | DH | CON | 2AF | Z2 | FR | PS | B07 | B07-D08 | RSE-2A |
| DUKHCONI2AZ2PSGL7015 |  | Electrical Works-Parking Shed | 25d | 2014-06-03 | 2014-07-01 | DUKHCONI2AZ2STGL5260, DUKHCONI2AZ1PSGL7015, DUKHCONI2AZ2PSGL7010 SS+5d | 3d |  | LABOR- SUBCONTRACTOR [96 h]; ELECTRICIANS SK [179.2 h]; LIGHTS QTY [77 ea] | 7,463 | 25 | 2AP2PSFR25 | DUKHCON2AP2PSGL7015 | DUKHCONI2AZ2PSGL7015 | DH | CON | 2AF | Z2 | FR | PS | B07 | B07-D08 | RSE-2A |
|  | 65 | **HARD LANDSCAPING** |  | 2014-03-25 | 2014-06-14 |  |  |  |  |  |  |  |  |  |  |  |  |  |  |  |  |  |  |
| DUKHCONI2AZ2HDGL7020 |  | Precast Concrete Kerbs works | 20d | 2014-03-25 | 2014-04-16 | DUKHCONI2AZ2RWGL6000 SS | 15d | 0d | KERBSTONE MASON SK [120 h]; LABOR- SUBCONTRACTOR [66 h]; KERBSTONE QTY [143 lm] | 17,117 | 10 | 2AP2HDFR10 | DUKHCON2AP2HDGL7020 | DUKHCONI2AZ2HDGL7020 | DH | CON | 2AF | Z2 | FR | HD | B07 | B07-D10 | RSE-2A |
| DUKHCONI2AZ2HDGL7025 |  | Interlocking for Walkways | 25d | 2014-04-06 | 2014-05-04 | DUKHCONI2AZ2HDGL7020 SS+10d, DUKHCONI2ASBGZGL7910 FF | 15d | 0d | INTERLOCK MASON SK [312 h]; LABOR- SUBCONTRACTOR [120 h]; INTERLOCK QTY [390 Sqm] | 37,346 | 15 | 2AP2HDFR15 | DUKHCON2AP2HDGL7025 | DUKHCONI2AZ2HDGL7025 | DH | CON | 2AF | Z2 | FR | HD | B07 | B07-D10 | RSE-2A |
| DUKHCONI2AZ2HDGL7030 |  | Construction of Retaining wall | 25d | 2014-04-17 | 2014-05-15 | DUKHCONI2AZ1HDGL7030, DUKHCONI2AZ2HDGL7025 SS+10d | 15d | 0d | STEEL FIXERS SK [16 h]; CARPENTERS SK [168 h]; CONCRETE MASON SK [24 h]; LABOR - CIVIL [168 h]; EXCAVATION QTY [18 Cum]; REINFORCEMENT BARS QTY [210 kg]; FORMWORK QTY [84 Sqm]; CONCRETE QTY [11 Cum] | 59,913 | 20 | 2AP2HDFR20 | DUKHCON2AP2HDGL7030 | DUKHCONI2AZ2HDGL7030 | DH | CON | 2AF | Z2 | FR | HD | B07 | B07-D10 | RSE-2A |
| DUKHCONI2AZ2HDGL7035 |  | Construction of Wash Stone Boulders | 25d | 2014-04-17 | 2014-05-15 | DUKHCONI2AZ2HDGL7030 SS, DUKHCONI2AZ1HDGL7035 | 15d | 0d | TILE MASON SK [48 h]; LABOR- SUBCONTRACTOR [18 h]; STONE BOULDERS QTY [24 Sqm] | 24,652.5 | 25 | 2AP2HDFR25 | DUKHCON2AP2HDGL7035 | DUKHCONI2AZ2HDGL7035 | DH | CON | 2AF | Z2 | FR | HD | B07 | B07-D10 | RSE-2A |
| DUKHCONI2AZ2HDGL7040 |  | Construction of Speed Humps | 10d | 2014-06-03 | 2014-06-14 | DUKHCONI2AZ2RWGL6025, DUKHCONI2AZ2HDGL7035 SS, DUKHCONI2AZ1HDGL7040 | 0d |  | CONCRETE MASON SK [8 h]; LABOR - CIVIL [6 h]; SPEED HUMPS [1 ea] | 1,424 | 30 | 2AP2HDFR30 | DUKHCON2AP2HDGL7040 | DUKHCONI2AZ2HDGL7040 | DH | CON | 2AF | Z2 | FR | HD | B07 | B07-D10 | RSE-2A |
|  | 70 | **SOFT LANDSCAPING** |  | 2014-04-29 | 2014-06-19 |  |  |  |  |  |  |  |  |  |  |  |  |  |  |  |  |  |  |
| DUKHCONI2AZ2SLGL7200 |  | Excavation for Landscaping | 25d | 2014-04-29 | 2014-05-27 | DUKHCONI2AZ1SLGL7205, DUKHCONI2AZ2IRGL5290 SS, DUKHCONI2AZ2HDGL7035 SS+10d | 15d | 0d | LABOR - CIVIL [282 h]; EXCAVATION QTY [470 Cum]; LOADER [94 h]; POCLAIN [188 h]; TRUCK [94 h]; EQUIP OPERATORS [376 h] | 6,275 | 10 | 2AP2SLFR10 | DUKHCON2AP2SLGL7200 | DUKHCONI2AZ2SLGL7200 | DH | CON | 2AF | Z2 | FR | SL | B07 | B07-D10 | RSE-2A |
| DUKHCONI2AZ2SLGL7205 |  | Sweet Soil Laying | 25d | 2014-05-11 | 2014-06-08 | DUKHCONI2AZ2SLGL7200 SS+10d | 15d | 0d | LABOR- SUBCONTRACTOR [60 h]; SWEET SOIL QTY [470 Cum]; LANDSCAPING SK [80 h] | 35,557.5 | 15 | 2AP2SLFR15 | DUKHCON2AP2SLGL7205 | DUKHCONI2AZ2SLGL7205 | DH | CON | 2AF | Z2 | FR | SL | B07 | B07-D10 | RSE-2A |
| DUKHCONI2AZ2SLGL7210 |  | Plantation works | 25d | 2014-05-22 | 2014-06-19 | DUKHCONI2AZ2SLGL7205 SS+10d, DUKHCONI2AZ1SLGL7210 | 15d |  | LABOR- SUBCONTRACTOR [114 h]; PLAM TREES QTY [18 ea]; LANDSCAPING SK [152 h]; GROUND COVER QTY [875 Sqm]; SHRUBS QTY [9 ea] | 76,761.5 | 20 | 2AP2SLFR20 | DUKHCON2AP2SLGL7210 | DUKHCONI2AZ2SLGL7210 | DH | CON | 2AF | Z2 | FR | SL | B07 | B07-D10 | RSE-2A |
|  | 30 | **SECONDARY BUILDINGS** |  | 2013-11-12 | 2014-05-12 |  |  |  |  |  |  |  |  |  |  |  |  |  |  |  |  |  |  |
|  | 10 | **INFRASTRUCTURE WORKS** |  | 2013-11-12 | 2014-05-12 |  |  |  |  |  |  |  |  |  |  |  |  |  |  |  |  |  |  |
|  | 10 | **IRRIGATION WATER TANK & PUMP ROOM** |  | 2013-11-12 | 2014-05-12 |  |  |  |  |  |  |  |  |  |  |  |  |  |  |  |  |  |  |
| DUKHCONI2ASBIWGL7400 |  | Excavation | 15d | 2013-11-12 | 2013-11-28 | DUKHENGI2ADWIWAP5160, DUKHCONI2AZ1WSGL5155 | 28d | 0d | LABOR - CIVIL [144 h]; EXCAVATION QTY [235 Cum]; LOADER [38 h]; POCLAIN [75 h]; TRUCK [38 h]; EQUIP OPERATORS [151 h] | 25,532 | 10 | 2AOBIWFR10 | DUKHCON2AOBIWGL7400 | DUKHCONI2ASBIWGL7400 | DH | CON | 2AF | OB | FR | IW | B07 | B07-D07 | RSE-2A |
| DUKHCONI2ASBIWGL7405 |  | Blinding & base waterproofing | 10d | 2013-11-30 | 2013-12-10 | DUKHCONI2ASBIWGL7400 | 28d | 0d | BLINDING MASON SK [64 h]; LABOR - CIVIL [48 h]; LABOR- SUBCONTRACTOR [24 h]; BLINDING QTY [78 Sqm]; WATERPROOFING QTY [78 Sqm]; WATERPROOFING SPECIALIST SK [64 h] | 11,821 | 15 | 2AOBIWFR15 | DUKHCON2AOBIWGL7405 | DUKHCONI2ASBIWGL7405 | DH | CON | 2AF | OB | FR | IW | B07 | B07-D07 | RSE-2A |
| DUKHCONI2ASBIWGL7410 |  | Construction of Raft slab | 10d | 2013-12-11 | 2013-12-23 | DUKHCONI2ASBIWGL7405 | 28d | 0d | LABOR - CIVIL [270 h]; REINFORCEMENT BARS QTY [3300 kg]; FORMWORK QTY [17 Sqm]; CONCRETE QTY [33 Cum]; STEEL FIXERS SK [264 h]; CARPENTERS SK [32 h]; CONCRETE MASON SK [64 h] | 28,096 | 20 | 2AOBIWFR20 | DUKHCON2AOBIWGL7410 | DUKHCONI2ASBIWGL7410 | DH | CON | 2AF | OB | FR | IW | B07 | B07-D07 | RSE-2A |
| DUKHCONI2ASBIWGL7415 |  | Construction of RCC Wall | 25d | 2013-12-24 | 2014-01-21 | DUKHCONI2ASBIWGL7410 | 28d | 0d | STEEL FIXERS SK [424 h]; CARPENTERS SK [448 h]; CONCRETE MASON SK [104 h]; LABOR - CIVIL [732 h]; REINFORCEMENT BARS QTY [5300 kg]; FORMWORK QTY [222 Sqm]; CONCRETE QTY [53 Cum] | 85,171 | 25 | 2AOBIWFR25 | DUKHCON2AOBIWGL7415 | DUKHCONI2ASBIWGL7415 | DH | CON | 2AF | OB | FR | IW | B07 | B07-D07 | RSE-2A |
| DUKHCONI2ASBIWGL7420 |  | Construction of Roof Slab | 20d | 2014-01-22 | 2014-02-15 | DUKHCONI2ASBIWGL7415 | 28d | 0d | STEEL FIXERS SK [112 h]; CARPENTERS SK [136 h]; CONCRETE MASON SK [32 h]; LABOR - CIVIL [210 h]; REINFORCEMENT BARS QTY [1400 kg]; FORMWORK QTY [66 Sqm]; CONCRETE QTY [14 Cum] | 26,221 | 30 | 2AOBIWFR30 | DUKHCON2AOBIWGL7420 | DUKHCONI2ASBIWGL7420 | DH | CON | 2AF | OB | FR | IW | B07 | B07-D07 | RSE-2A |
| DUKHCONI2ASBIWGL7425 |  | Waterproofing & Backfilling | 15d | 2014-02-16 | 2014-03-04 | DUKHCONI2ASBIWGL7420 | 34d | 0d | LABOR - CIVIL [6 h]; LABOR- SUBCONTRACTOR [30 h]; WATERPROOFING QTY [93 Sqm]; BACKFILLING QTY [33 Cum]; WATERPROOFING SPECIALIST SK [72 h]; BOBCAT [38 h]; PLATE COMPACTOR [38 h]; TRUCK [8 h]; EQUIP OPERATORS [84 h] | 25,340 | 35 | 2AOBIWFR35 | DUKHCON2AOBIWGL7425 | DUKHCONI2ASBIWGL7425 | DH | CON | 2AF | OB | FR | IW | B07 | B07-D07 | RSE-2A |
| DUKHCONI2ASBIWGL7950 |  | Laying of Interlock | 10d | 2014-03-05 | 2014-03-16 | DUKHCONI2ASBIWGL7425 | 57d | 0d | INTERLOCK MASON SK [40 h]; LABOR- SUBCONTRACTOR [18 h]; INTERLOCK QTY [48 Sqm] | 10,374 | 75 | 2AOBIWFR75 | DUKHCON2AOBIWGL7950 | DUKHCONI2ASBIWGL7950 | DH | CON | 2AF | OB | FR | IW | B07 | B07-D10 | RSE-2A |
| DUKHCONI2ASBIWGL7430 |  | Floor screed | 5d | 2014-03-12 | 2014-03-17 | DUKHCONI2ASBIWGL7420 FS+21d, DUKHCONI2ASBIWGL7425 | 28d | 0d | SCREED MASON SK [48 h]; LABOR - CIVIL [18 h]; FLOORING SCREED QTY [64 Sqm] | 2,072 | 40 | 2AOBIWFR40 | DUKHCON2AOBIWGL7430 | DUKHCONI2ASBIWGL7430 | DH | CON | 2AF | OB | FR | IW | B07 | B07-D07 | RSE-2A |
| DUKHCONI2ASBIWGL7435 |  | Installation of Boundary Fences | 15d | 2014-03-17 | 2014-04-02 | DUKHCONI2ASBIWGL7950, DUKHPROGEN00PRDV3850 | 57d | 29d | STEEL FIXERS SK [24 h]; LABOR - CIVIL [18 h]; BOUNDARY WIRE MESH QTY [55 Sqm] | 32,769 | 80 | 2AOBIWFR80 | DUKHCON2AOBIWGL7435 | DUKHCONI2ASBIWGL7435 | DH | CON | 2AF | OB | FR | IW | B07 | B07-D07 | RSE-2A |
| DUKHCONI2ASBIWGL7440 |  | Plumbing , Drainage & Firefighting works | 25d | 2014-03-18 | 2014-04-15 | DUKHCONI2ASBIWGL7430, DUKHCONI2AZ2FFGL5210, DUKHCONI2AZ1FFGL5210 | 28d | 0d | LABOR- SUBCONTRACTOR [18 h]; MECHANICALS SK [32.4 h]; PUMP QTY [3 ea] | 153,477 | 60 | 2AOBIWFR60 | DUKHCON2AOBIWGL7440 | DUKHCONI2ASBIWGL7440 | DH | CON | 2AF | OB | FR | IW | B07 | B07-D07 | RSE-2A |
| DUKHCONI2ASBIWGL7445 |  | AC Works | 25d | 2014-03-18 | 2014-04-15 | DUKHCONI2ASBIWGL7440 SS | 28d | 0d | LABOR- SUBCONTRACTOR [36 h]; AC TECHNICIAN SK [123.2 h]; AC PIPES QTY [17 lm]; VENTILIATION EQP QTY [1 ea] | 2,228 | 65 | 2AOBIWFR65 | DUKHCON2AOBIWGL7445 | DUKHCONI2ASBIWGL7445 | DH | CON | 2AF | OB | FR | IW | B07 | B07-D07 | RSE-2A |
| DUKHCONI2ASBIWGL7450 |  | Electrical Works | 25d | 2014-03-27 | 2014-04-24 | DUKHCONI2ASBIWGL7445 SS+8d, DUKHCONI2AZ2TCGL5310 FF, DUKHCONI2AZ2ELGL5230, DUKHCONI2AZ2STGL5260 SS | 28d | 0d | LABOR- SUBCONTRACTOR [90 h]; ELECTRICIANS SK [235.2 h]; CODUITS QTY [60 lm]; CABLE QTY [50 lm]; DB QTY [2 ea]; LIGHTS QTY [31 ea]; ISOLATOR QTY [4 ea] | 9,783 | 70 | 2AOBIWFR70 | DUKHCON2AOBIWGL7450 | DUKHCONI2ASBIWGL7450 | DH | CON | 2AF | OB | FR | IW | B07 | B07-D07 | RSE-2A |
| DUKHCONI2ASBIWGL7455 |  | Internal epoxy coating & Painting | 5d | 2014-04-26 | 2014-04-30 | DUKHCONI2ASBIWGL7450 | 28d | 0d | LABOR- SUBCONTRACTOR [12 h]; EPOXY QTY [64 Sqm]; EPOXY SK [32 h] | 6,198 | 45 | 2AOBIWFR45 | DUKHCON2AOBIWGL7455 | DUKHCONI2ASBIWGL7455 | DH | CON | 2AF | OB | FR | IW | B07 | B07-D07 | RSE-2A |
| DUKHCONI2ASBIWGL7460 |  | Installation of Steel Ladder | 5d | 2014-05-01 | 2014-05-06 | DUKHCONI2ASBIWGL7455 | 28d | 0d | LABOR- SUBCONTRACTOR [6 h]; LADDER QTY [1 ea]; LADDER ERECTOR SK [8 h] | 3,970 | 50 | 2AOBIWFR50 | DUKHCON2AOBIWGL7460 | DUKHCONI2ASBIWGL7460 | DH | CON | 2AF | OB | FR | IW | B07 | B07-D07 | RSE-2A |
| DUKHCONI2ASBIWGL7465 |  | Installation of G.I Handrails | 5d | 2014-05-07 | 2014-05-12 | DUKHCONI2ASBIWGL7460, DUKHCONI2ASBIWGL7435 | 28d |  | LABOR- SUBCONTRACTOR [60 h]; STEEL ERECTOR SK [104 h]; HANDRAIL QTY [50 lm] | 18,447 | 55 | 2AOBIWFR55 | DUKHCON2AOBIWGL7465 | DUKHCONI2ASBIWGL7465 | DH | CON | 2AF | OB | FR | IW | B07 | B07-D07 | RSE-2A |

Notes:
- DUKHCONI2AZ2RWGL6000: Expenses: I2A-Road work 38401
- DUKHCONI2AZ2RWGL6005: Expenses: I2A-Road work 77389
- DUKHCONI2AZ2RWGL6010: Expenses: I2A-Road work 59403
- DUKHCONI2AZ2RWGL6015: Expenses: I2A-Road work 38695
- DUKHCONI2AZ2RWGL6020: Expenses: I2A-Road work 98319.5
- DUKHCONI2AZ2RWGL6025: Expenses: I2A-Road work 51221
- DUKHCONI2AZ2RWGL6030: Expenses: I2A-Road work 190006
- DUKHCONI2AZ2PSGL7000: Expenses: I2A-Road work 14926
- DUKHCONI2AZ2PSGL7005: Expenses: I2A-Road work 14926
- DUKHCONI2AZ2PSGL7010: Expenses: I2A-Road work 74626
- DUKHCONI2AZ2PSGL7015: Expenses: I2A-Road work 7463
- DUKHCONI2AZ2HDGL7020: Expenses: I2A-Hard and soft landscaping 17117
- DUKHCONI2AZ2HDGL7025: Expenses: I2A-Hard and soft landscaping 37346
- DUKHCONI2AZ2HDGL7030: Expenses: I2A-Hard and soft landscaping 59913
- DUKHCONI2AZ2HDGL7035: Expenses: I2A-Hard and soft landscaping 24652.5
- DUKHCONI2AZ2HDGL7040: Expenses: I2A-Hard and soft landscaping 1424
- DUKHCONI2AZ2SLGL7200: Expenses: I2A-Hard and soft landscaping 6275
- DUKHCONI2AZ2SLGL7205: Expenses: I2A-Hard and soft landscaping 35557.5
- DUKHCONI2AZ2SLGL7210: Expenses: I2A-Hard and soft landscaping 76761.5
- DUKHCONI2ASBIWGL7400: Expenses: I2A-Water supply system 25532
- DUKHCONI2ASBIWGL7405: Expenses: I2A-Water supply system 11821
- DUKHCONI2ASBIWGL7410: Expenses: I2A-Water supply system 28096
- DUKHCONI2ASBIWGL7415: Expenses: I2A-Water supply system 85171
- DUKHCONI2ASBIWGL7420: Expenses: I2A-Water supply system 26221
- DUKHCONI2ASBIWGL7425: Expenses: I2A-Water supply system 25340
- DUKHCONI2ASBIWGL7950: Expenses: I2A-Hard and soft landscaping 10374
- DUKHCONI2ASBIWGL7430: Expenses: I2A-Water supply system 2072
- DUKHCONI2ASBIWGL7435: Expenses: I2A-Water supply system 32769
- DUKHCONI2ASBIWGL7440: Expenses: I2A-Water supply system 153477
- DUKHCONI2ASBIWGL7445: Expenses: I2A-Water supply system 2228
- DUKHCONI2ASBIWGL7450: Expenses: I2A-Water supply system 9783
- DUKHCONI2ASBIWGL7455: Expenses: I2A-Water supply system 6198
- DUKHCONI2ASBIWGL7460: Expenses: I2A-Water supply system 3970
- DUKHCONI2ASBIWGL7465: Expenses: I2A-Water supply system 18447

| ID | WBS | Activity | Duration | Start | Finish | Predecessors | Total float | Free float | Resources | Cost | CODE | P3 ACTID | P6 ID (old) | NP61D | PROJECT | PHASES | PACKAGE | PART | ELEMENTS | STEP | BILL NOS | BILL DIVISION | RES PACK | FLOORS | rem |
| --- | --- | --- | --- | --- | --- | --- | --- | --- | --- | --- | --- | --- | --- | --- | --- | --- | --- | --- | --- | --- | --- | --- | --- | --- | --- |
|  | 25 | **GAZEBO** |  | 2014-02-26 | 2014-04-24 |  |  |  |  |  |  |  |  |  |  |  |  |  |  |  |  |  |  |  |  |
| DUKHCONI2ASBGZGL7900 |  | Construction of Concrete structure | 20d | 2014-02-26 | 2014-03-20 | DUKHENGI2ADWGZAP5170, DUKHPROGEN00PRDV3780, DUKHCONI2AZ1HDGL7020 | 23d | 0d | REINFORCEMENT BARS QTY [85 kg]; FORMWORK QTY [15 Sqm]; CONCRETE QTY [10 Cum]; STEEL FIXERS SK [8 h]; CARPENTERS SK [32 h]; CONCRETE MASON SK [24 h]; LABOR - CIVIL [60 h]; EXCAVATION QTY [20 Cum] | 4,276 | 10 | 2AOBGZFR10 | DUKHCON2AOBGZGL7900 | DUKHCONI2ASBGZGL7900 | DH | CON | 2AF | OB | FR | GZ | B07 | B07-D10 | RSE-2A |  |  |
| DUKHCONI2ASBGZGL7905 |  | Installation of Wooden Works | 25d | 2014-03-10 | 2014-04-07 | DUKHCONI2ASBGZGL7900 SS+10d | 23d | 0d | LABOR- SUBCONTRACTOR [100 h]; WOODEN WORKS QTY [1 ea]; DOOR WORK SK [200 h] | 42,754 | 15 | 2AOBGZFR15 | DUKHCON2AOBGZGL7905 | DUKHCONI2ASBGZGL7905 | DH | CON | 2AF | OB | FR | GZ | B07 | B07-D10 | RSE-2A |  |  |
| DUKHCONI2ASBGZGL7915 |  | Park Benches Installation | 15d | 2014-03-10 | 2014-03-26 | DUKHCONI2ASBGZGL7905 SS | 33d | 10d | LABOR- SUBCONTRACTOR [120 h]; WOODEN WORKS QTY [5 ea] | 42,754 | 20 | 2AOBGZFR30 | DUKHCON2AOBGZGL7915 | DUKHCONI2ASBGZGL7915 | DH | CON | 2AF | OB | FR | GZ | B07 | B07-D10 | RSE-2A |  |  |
| DUKHCONI2ASBGZGL7910 |  | Electrical Works-Gazebo | 15d | 2014-04-08 | 2014-04-24 | DUKHCONI2ASBGZGL7905, DUKHCONI2ASBGZGL7915 | 23d | 8d | LABOR- SUBCONTRACTOR [36 h]; ELECTRICIANS SK [89.6 h]; CABLE QTY [50 lm]; LIGHTS QTY [15 ea] | 17,102 | 20 | 2AOBGZFR20 | DUKHCON2AOBGZGL7910 | DUKHCONI2ASBGZGL7910 | DH | CON | 2AF | OB | FR | GZ | B07 | B07-D10 | RSE-2A |  |  |
|  | L45 | **PACKAGE-2B** |  | 2012-12-01 | 2014-06-14 |  |  |  |  |  |  |  |  |  |  |  |  |  |  |  |  |  |  |  |  |
|  | 18 | **SITE PREPARATORY WORKS** |  | 2012-12-01 | 2013-03-10 |  |  |  |  |  |  |  |  |  |  |  |  |  |  |  |  |  |  |  |  |
| DUKHCONP2BGNSP001000 |  | Survey works, | 20d | 2012-12-01 | 2012-12-24 | DUKHMOBP020000004000 | 0d |  | SURVEYOR SK [50 h]; LABOR - CIVIL [37.5 h] | 8,553 |  | 2BSP010000 | DUKHCON2BGNCI001000 | DUKHCONP2BGNSP001000 | DH | CON | 2B | SP |  |  | B09 | B09-D02 | RES-2B |  |  |
| DUKHCONP2BGNSP002000 |  | Scanning for Existing Services for rerouting | 12d | 2012-12-06 | 2012-12-20 | DUKHCONP2BGNSP001000 SS+5d | 0d |  | ELECTRICIANS SK [70 h]; MECHANICALS SK [67.5 h]; LABOR - CIVIL [187.5 h] | 7,600 |  | 2BSP010010 | DUKHCON2BGNCI002000 | DUKHCONP2BGNSP002000 | DH | CON | 2B | SP |  |  | B09 | B09-D02 | RES-2B |  |  |
| DUKHCONP2BGNSP003000 |  | Site stripping | 20d | 2012-12-13 | 2013-01-06 | DUKHCONP2BGNSP002000 SS+6d | 43d | 0d | LABOR - CIVIL [375 h]; BOBCAT [100 h]; LOADER [100 h]; TRUCK [100 h]; EQUIP OPERATORS [300 h] | 126,990 |  | 2BSP010020 | DUKHCON2BGNCI003000 | DUKHCONP2BGNSP003000 | DH | CON | 2B | SP |  |  | B09 | B09-D03 | RES-2B |  |  |
| DUKHCONP2BGNSP004000 |  | Demolition of Existing building & landscaping | 20d | 2012-12-20 | 2013-01-12 | DUKHCONP2BGNSP003000 SS+5d | 43d | 0d | LOADER [250 h]; TRUCK [250 h]; EQUIP OPERATORS [1750 h]; BREAKER [250 h]; LABOR - CIVIL [937.5 h]; POCLAIN [1000 h] | 267,931 |  | 2BSP010030 | DUKHCON2BGNCI004000 | DUKHCONP2BGNSP004000 | DH | CON | 2B | SP |  |  | B09 | B09-D02 | RES-2B |  |  |
| DUKHCONP2BGNSP002100 |  | Submission of Scanning Reports | 7d | 2012-12-22 | 2012-12-29 | DUKHCONP2BGNSP002000 | 0d |  | QUANTITY SURVEYOUR [40 h] | 1,901 |  | 2BSP010010 | DUKHCON2BGNCI002000 | DUKHCONP2BGNSP002000 | DH | CON | 2B | SP |  |  | B09 | B09-D02 | RES-2B |  |  |
| DUKHCONP2BGNSP005000 |  | Demolition of existing services works | 20d | 2012-12-26 | 2013-01-17 | DUKHCONP2BGNSP004000 SS+5d | 43d |  | LABOR - CIVIL [375 h]; POCLAIN [100 h]; LOADER [100 h]; TRUCK [100 h]; EQUIP OPERATORS [400 h]; BREAKER [100 h] | 617,571 |  | 2BSP010040 | DUKHCON2BGNCI005000 | DUKHCONP2BGNSP005000 | DH | CON | 2B | SP |  |  | B09 | B09-D02 | RES-2B |  |  |
| DUKHCONP2BGNSP002200 |  | Information Required for Rerouting | 14d | 2012-12-30 | 2013-01-14 | DUKHCONP2BGNSP002100 | 0d |  |  |  |  | 2BSP010010 | DUKHCON2BGNCI002000 | DUKHCONP2BGNSP002000 | DH | CON | 2B | SP |  |  | B09 | B09-D02 | RES-2B |  |  |
| DUKHCONP2BGNSP002300 |  | Preparation & Submission for New Layout | 7d | 2013-01-15 | 2013-01-22 | DUKHCONP2BGNSP002200 | 0d |  | QUANTITY SURVEYOUR [40 h] | 1,901 |  | 2BSP010010 | DUKHCON2BGNCI002000 | DUKHCONP2BGNSP002000 | DH | CON | 2B | SP |  |  | B09 | B09-D02 | RES-2B |  |  |
| DUKHCONP2BGNSP002400 |  | Approval for new Layout for rerouting | 14d | 2013-01-23 | 2013-02-07 | DUKHCONP2BGNSP002300 | 0d |  |  |  |  | 2BSP010010 | DUKHCON2BGNCI002000 | DUKHCONP2BGNSP002000 | DH | CON | 2B | SP |  |  | B09 | B09-D02 | RES-2B |  |  |
| DUKHCONP2BGNSP002500 |  | Rerouting Works | 25d | 2013-02-09 | 2013-03-10 | DUKHCONP2BGNSP002400 | 0d |  | ELECTRICIANS SK [70 h]; MECHANICALS SK [67.5 h]; LABOR - CIVIL [187.5 h] | 7,600 |  | 2BSP010010 | DUKHCON2BGNCI002000 | DUKHCONP2BGNSP002000 | DH | CON | 2B | SP |  |  | B09 | B09-D02 | RES-2B |  |  |
|  | 20 | **ZONE - 3 (3 Twin Villas)** |  | 2013-03-11 | 2014-04-30 |  |  |  |  |  |  |  |  |  |  |  |  |  |  |  |  |  |  |  |  |
|  | 10 | **STRUCTURAL WORKS** |  | 2013-03-11 | 2013-10-22 |  |  |  |  |  |  |  |  |  |  |  |  |  |  |  |  |  |  |  |  |
|  | 10 | **SUB STRUCTURE** |  | 2013-03-11 | 2013-07-10 |  |  |  |  |  |  |  |  |  |  |  |  |  |  |  |  |  |  |  |  |
|  | 10 | **UPTO GRADE SLAB** |  | 2013-03-11 | 2013-07-10 |  |  |  |  |  |  |  |  |  |  |  |  |  |  |  |  |  |  |  |  |
| DUKHCONP2BZ3STUG1000 |  | Footing Excavation | 25d | 2013-03-11 | 2013-04-08 | DUKHCONP2BGNSP005000, DUKHCONP2BGNSP002500 | 0d |  | LABOR - CIVIL [252 h]; EXCAVATION QTY [420 Cum]; LOADER [56 h]; POCLAIN [112 h]; TRUCK [56 h]; EQUIP OPERATORS [224 h] | 39,690 | 10 | 2BP3SBUG10 | DUKHCON2BP3STUG1000 | DUKHCONP2BZ3STUG1000 | DH | CON | 2B | Z3 | ST | SB | B08 | B08-D01 | RES-2B | UG |  |
| DUKHCONP2BZ3STUG1005 |  | Footing Antitermite | 20d | 2013-03-23 | 2013-04-14 | DUKHCONP2BZ3STUG1000 SS+5d, DUKHCONP2BZ3STUG1000 FF+5d | 0d |  | LABOR- SUBCONTRACTOR [246 h]; ANTITERMITE QTY [1638 sqft]; ANTITERMITE SK [656 h] | 4,913 | 15 | 2BP3SBUG15 | DUKHCON2BP3STUG1005 | DUKHCONP2BZ3STUG1005 | DH | CON | 2B | Z3 | ST | SB | B08 | B08-D01 | RES-2B | UG | REM |
| DUKHCONP2BZ3STUG1010 |  | Footing Blinding | 20d | 2013-03-25 | 2013-04-16 | DUKHCONP2BZ3STUG1005 FF+2d, DUKHCONP2BZ3STUG1005 SS+2d | 0d |  | BLINDING MASON SK [17 h]; LABOR - CIVIL [12.75 h]; BLINDING QTY [21 Sqm] | 529 | 15 | 2BP3SBUG18 | DUKHCON2BP3STUG1010 | DUKHCONP2BZ3STUG1010 | DH | CON | 2B | Z3 | ST | SB | B08 | B08-D02 | RES-2B | UG | REM |
| DUKHCONP2BZ3STUG1015 |  | Footing Waterproofing & Screed | 20d | 2013-03-31 | 2013-04-22 | DUKHCONP2BZ3STUG1010 SS+5d, DUKHCONP2BZ3STUG1010 FF+5d, DUKHENGP2BDWSTAP5180 | 0d |  | SCREED MASON SK [141 h]; LABOR - CIVIL [53.25 h]; LABOR- SUBCONTRACTOR [78.75 h]; SCREED QTY [176 Sqm]; WATERPROOFING QTY [262 Sqm]; WATERPROOFING SPECIALIST SK [210 h] | 12,357 | 20 | 2BP3SBUG20 | DUKHCON2BP3STUG1015 | DUKHCONP2BZ3STUG1015 | DH | CON | 2B | Z3 | ST | SB | B08 | B08-D02 | RES-2B | UG | REM |
| DUKHCONP2BZ3STUG1020 |  | Construction of foundations | 20d | 2013-04-09 | 2013-05-01 | DUKHCONP2BZ3STUG1015 FF+8d, DUKHCONP2BZ3STUG1015 SS+8d | 0d |  | STEEL FIXERS SK [275 h]; CARPENTERS SK [440 h]; CONCRETE MASON SK [48 h]; LABOR - CIVIL [572.25 h]; REINFORCEMENT BARS QTY [3432 kg]; FORMWORK QTY [220 Sqm]; CONCRETE QTY [24 Cum] | 27,759 | 25 | 2BP3SBUG25 | DUKHCON2BP3STUG1020 | DUKHCONP2BZ3STUG1020 | DH | CON | 2B | Z3 | ST | SB | B08 | B08-D02 | RES-2B | UG | REM |
| DUKHCONP2BZ3STUG1025 |  | Construction of neck of columns | 20d | 2013-04-18 | 2013-05-11 | DUKHCONP2BZ3STUG1020 FF+8d, DUKHCONP2BZ3STUG1020 SS+8d | 0d |  | STEEL FIXERS SK [458 h]; CARPENTERS SK [312 h]; CONCRETE MASON SK [24 h]; LABOR - CIVIL [595.5 h]; REINFORCEMENT BARS QTY [5719 kg]; FORMWORK QTY [156 Sqm]; CONCRETE QTY [12 Cum] | 33,259 | 30 | 2BP3SBUG30 | DUKHCON2BP3STUG1025 | DUKHCONP2BZ3STUG1025 | DH | CON | 2B | Z3 | ST | SB | B08 | B08-D02 | RES-2B | UG | REM |
| DUKHCONP2BZ3STUG1030 |  | Waterproofing Footing & Neck Column | 20d | 2013-04-28 | 2013-05-20 | DUKHCONP2BZ3STUG1025 FF+8d, DUKHCONP2BZ3STUG1025 SS+8d | 0d |  | LABOR- SUBCONTRACTOR [34.5 h]; WATERPROOFING QTY [113 Sqm]; WATERPROOFING SPECIALIST SK [91 h] | 4,720 | 35 | 2BP3SBUG35 | DUKHCON2BP3STUG1030 | DUKHCONP2BZ3STUG1030 | DH | CON | 2B | Z3 | ST | SB | B08 | B08-D02 | RES-2B | UG | REM |
| DUKHCONP2BZ3STUG1035 |  | Backfilling Upto Grade Beam Bottom | 20d | 2013-05-09 | 2013-06-01 | DUKHCONP2BZ3STUG1030 SS+10d, DUKHCONP2BZ3STUG1030 FF+10d | 0d |  | LABOR - CIVIL [162 h]; BACKFILLING QTY [672 Cum]; BOBCAT [300 h]; PLATE COMPACTOR [300 h]; TRUCK [60 h]; EQUIP OPERATORS [660 h] | 19,354 | 40 | 2BP3SBUG40 | DUKHCON2BP3STUG1035 | DUKHCONP2BZ3STUG1035 | DH | CON | 2B | Z3 | ST | SB | B08 | B08-D01 | RES-2B | UG |  |
| DUKHCONP2BZ3STUG1040 |  | Construction of Grade Beams | 25d | 2013-05-21 | 2013-06-18 | DUKHENGP2BDWSTAP5190, DUKHCONP2BZ3STUG1035 SS+10d, DUKHCONP2BZ3STUG1035 FF+10d | 0d |  | BLINDING MASON SK [74 h]; STEEL FIXERS SK [183 h]; CARPENTERS SK [1024 h]; CONCRETE MASON SK [48 h]; LABOR - CIVIL [996.75 h]; BLINDING QTY [92 Sqm]; REINFORCEMENT BARS QTY [2286 kg]; FORMWORK QTY [512 Sqm]; CONCRETE QTY [24 Cum] | 76,799 | 45 | 2BP3SBUG45 | DUKHCON2BP3STUG1040 | DUKHCONP2BZ3STUG1040 | DH | CON | 2B | Z3 | ST | SB | B08 | B08-D02 | RES-2B | UG | REM |
| DUKHCONP2BZ3STUG1045 |  | Construction of slab on grade | 25d | 2013-06-12 | 2013-07-10 | DUKHCONP2BZ3STUG1040 SS+10d, DUKHENGP2BDWSTAP5190, DUKHCONP2BZ3PLUG4300 FF+7d, DUKHCONP2BZ3PLUG4300 SS+7d, DUKHCONP2BZ3STUG1040 FF+10d | 2d | 0d | BLINDING MASON SK [508 h]; STEEL FIXERS SK [205 h]; CONCRETE MASON SK [168 h]; LABOR - CIVIL [660.75 h]; BLINDING QTY [634 Sqm]; CONCRETE QTY [84 Cum]; WELDED WIRE MESH [768 Sqm] | 100,548 | 50 | 2BP3SBUG50 | DUKHCON2BP3STUG1045 | DUKHCONP2BZ3STUG1045 | DH | CON | 2B | Z3 | ST | SB | B08 | B08-D02 | RES-2B | UG | REM |

Notes:
- DUKHCONI2ASBGZGL7900: Expenses: I2A-Hard and soft landscaping 4276
- DUKHCONI2ASBGZGL7905: Expenses: I2A-Hard and soft landscaping 42754
- DUKHCONI2ASBGZGL7915: Expenses: I2A-Hard and soft landscaping 42754
- DUKHCONI2ASBGZGL7910: Expenses: I2A-Hard and soft landscaping 17102
- DUKHCONP2BGNSP001000: Expenses: I2B-Demolition 8553
- DUKHCONP2BGNSP002000: Expenses: I2B-Demolition 7600
- DUKHCONP2BGNSP003000: Expenses: I2B-Site clearance general excavation and earthwork 126990
- DUKHCONP2BGNSP004000: Expenses: I2B-Demolition 267931
- DUKHCONP2BGNSP002100: Expenses: I2B-Demolition 1901
- DUKHCONP2BGNSP005000: Expenses: I2B-Demolition 617571
- DUKHCONP2BGNSP002300: Expenses: I2B-Demolition 1901
- DUKHCONP2BGNSP002500: Expenses: I2B-Demolition 7600
- DUKHCONP2BZ3STUG1000: Expenses: P2B-Excavation and Earth Works 39690
- DUKHCONP2BZ3STUG1005: Expenses: P2B-Excavation and Earth Works 4913
- DUKHCONP2BZ3STUG1010: Expenses: P2B-Concrete Works 529
- DUKHCONP2BZ3STUG1015: Expenses: P2B-Concrete Works 12357
- DUKHCONP2BZ3STUG1020: Expenses: P2B-Concrete Works 27759
- DUKHCONP2BZ3STUG1025: Expenses: P2B-Concrete Works 33259
- DUKHCONP2BZ3STUG1030: Expenses: P2B-Concrete Works 4720
- DUKHCONP2BZ3STUG1035: Expenses: P2B-Excavation and Earth Works 19354
- DUKHCONP2BZ3STUG1040: Expenses: P2B-Concrete Works 76799
- DUKHCONP2BZ3STUG1045: Expenses: P2B-Concrete Works 100548

| ID | WBS | Activity | Duration | Start | Finish | Predecessors | Total float | Free float | Resources | Cost | CODE | rem | P3 ACTID | P6 ID (old) | NP61D | PROJECT | PHASES | PACKAGE | PART | ELEMENTS | STEP | FLOORS | BILL NOS | BILL DIVISION | RES PACK | EXECUTER |
| --- | --- | --- | --- | --- | --- | --- | --- | --- | --- | --- | --- | --- | --- | --- | --- | --- | --- | --- | --- | --- | --- | --- | --- | --- | --- | --- |
|  | 15 | **SUPERSTRUCTURE** |  | 2013-06-30 | 2013-10-22 |  |  |  |  |  |  |  |  |  |  |  |  |  |  |  |  |  |  |  |  |  |
|  | 10 | **GROUND FLOOR** |  | 2013-06-30 | 2013-08-24 |  |  |  |  |  |  |  |  |  |  |  |  |  |  |  |  |  |  |  |  |  |
| DUKHCONP2BZ3STGF2000 |  | Column-Rebar & Formwork | 20d | 2013-06-30 | 2013-07-22 | DUKHENGP2BDWSTAP5200, DUKHCONP2BZ3STUG1045 FF+10d, DUKHCONP2BZ3STUG1045 SS+10d | 2d | 0d | STEEL FIXERS SK [151 h]; CARPENTERS SK [720 h]; LABOR - CIVIL [653.25 h]; REINFORCEMENT BARS QTY [1883 kg]; FORMWORK QTY [360 Sqm] | 26,498 | 10 | REM | 2BP3SPGF10 | DUKHCON2BP3STGF2000 | DUKHCONP2BZ3STGF2000 | DH | CON | 2B | Z3 | ST | SP | GF | B08 | B08-D02 | RES-2B |  |
| DUKHCONP2BZ3STGF2005 |  | Column-Concrete | 15d | 2013-07-10 | 2013-07-27 | DUKHCONP2BZ3STGF2000 FF+4d, DUKHCONP2BZ3STGF2000 SS+7d | 2d | 0d | CONCRETE MASON SK [60 h]; LABOR - CIVIL [45 h]; CONCRETE QTY [30 Cum] | 8,613 | 15 | REM | 2BP3SPGF15 | DUKHCON2BP3STGF2005 | DUKHCONP2BZ3STGF2005 | DH | CON | 2B | Z3 | ST | SP | GF | B08 | B08-D02 | RES-2B |  |
| DUKHCONP2BZ3STGF2010 |  | Beam, Stairs ,Slab-Rebar & Formwork | 25d | 2013-07-18 | 2013-08-19 | DUKHCONP2BZ3STGF2005 FF+7d, DUKHENGP2BDWSTAP5210, DUKHCONP2BZ3STGF2005 SS+7d | 2d | 0d | STEEL FIXERS SK [1312 h]; CARPENTERS SK [2160 h]; LABOR - CIVIL [2604 h]; REINFORCEMENT BARS QTY [16392 kg]; FORMWORK QTY [1080 Sqm] | 156,724 | 20 | REM | 2BP3SPGF20 | DUKHCON2BP3STGF2010 | DUKHCONP2BZ3STGF2010 | DH | CON | 2B | Z3 | ST | SP | GF | B08 | B08-D02 | RES-2B |  |
| DUKHCONP2BZ3STGF2015 |  | Beam, Stairs ,Slab-Concrete | 15d | 2013-08-04 | 2013-08-24 | DUKHCONP2BZ3STGF2010 FF+4d, DUKHCONP2BZ3STGF2010 SS+10d | 2d | 0d | CONCRETE MASON SK [744 h]; LABOR - CIVIL [558 h]; CONCRETE QTY [372 Cum] | 114,669 | 25 | REM | 2BP3SPGF25 | DUKHCON2BP3STGF2015 | DUKHCONP2BZ3STGF2015 | DH | CON | 2B | Z3 | ST | SP | GF | B08 | B08-D02 | RES-2B |  |
|  | 20 | **ROOF** |  | 2013-09-21 | 2013-10-22 |  |  |  |  |  |  |  |  |  |  |  |  |  |  |  |  |  |  |  |  |  |
| DUKHCONP2BZ3STRF2060 |  | Construction of Parapets | 20d | 2013-09-21 | 2013-10-13 | DUKHCONP2AZ2STRF2060, DUKHCONP2BZ3STGF2015 FF+7d, DUKHCONP2BZ3STGF2015 SS+7d | 19d | 0d | STEEL FIXERS SK [46 h]; CARPENTERS SK [228 h]; CONCRETE MASON SK [24 h]; LABOR - CIVIL [223.5 h]; REINFORCEMENT BARS QTY [565 kg]; FORMWORK QTY [114 Sqm]; CONCRETE QTY [12 Cum] | 13,038 | 30 | REM | 2BP3SPRF30 | DUKHCON2BP3STRF2060 | DUKHCONP2BZ3STRF2060 | DH | CON | 2B | Z3 | ST | SP | RF | B08 | B08-D02 | RES-2B |  |
| DUKHCONP2BZ3STRF2065 |  | Construction of up stands/Plinth | 20d | 2013-09-28 | 2013-10-22 | DUKHCONP2BZ3STRF2060 SS+6d, DUKHCONP2BZ3STRF2060 FF+6d | 26d | 0d | CARPENTERS SK [36 h]; CONCRETE MASON SK [12 h]; LABOR - CIVIL [36 h]; FORMWORK QTY [18 Sqm]; CONCRETE QTY [6 Cum] | 3,048 | 35 | REM | 2BP3SPRF35 | DUKHCON2BP3STRF2065 | DUKHCONP2BZ3STRF2065 | DH | CON | 2B | Z3 | ST | SP | RF | B08 | B08-D02 | RES-2B |  |
|  | 15 | **FINISHING WORKS** |  | 2013-09-01 | 2014-04-01 |  |  |  |  |  |  |  |  |  |  |  |  |  |  |  |  |  |  |  |  |  |
|  | 10 | **INTERNAL FINISHES** |  | 2013-09-01 | 2014-04-01 |  |  |  |  |  |  |  |  |  |  |  |  |  |  |  |  |  |  |  |  |  |
|  | 10 | **GROUND FLOOR** |  | 2013-09-01 | 2014-04-01 |  |  |  |  |  |  |  |  |  |  |  |  |  |  |  |  |  |  |  |  |  |
| DUKHCONP2BZ3ARGF3000 |  | Block work | 25d | 2013-09-01 | 2013-09-29 | DUKHCONP2BZ3STGF2015 SS+21d, DUKHCONP2BZ3STGF2015 FF+21d | 2d | 0d | BLOCK MASON SK [3648 h]; LABOR - CIVIL [2052 h]; BLOCK QTY [1824 Sqm] | 145,094 | 10 | REM | 2BP3IFGF10 | DUKHCON2BP3ARGF3000 | DUKHCONP2BZ3ARGF3000 | DH | CON | 2B | Z3 | FIN | IF | GF | B08 | B08-D03 | RES-2B |  |
| DUKHCONP2BZ3ARGF3005 |  | Plastering work | 25d | 2013-09-21 | 2013-10-21 | DUKHCONP2BZ3ARGF3000 SS+8d, DUKHCONP2BZ3PLGF4305 FF+5d, DUKHCONP2BZ3ARGF3000 FF+8d, DUKHCONP2BZ3ELGF4000 SS+5d, DUKHCONP2BZ3PLGF4305 SS+5d, DUKHCONP2BZ3ELGF4000 FF+5d | 5d | 0d | PLASTER MASON SK [1824 h]; LABOR - CIVIL [1026 h]; PLASTER QTY [1140 Sqm] | 14,820 | 12 | REM | 2BP3IFGF12 | DUKHCON2BP3ARGF3005 | DUKHCONP2BZ3ARGF3005 | DH | CON | 2B | Z3 | FIN | IF | GF | B08 | B08-D10 | RES-2B |  |
| DUKHCONP2BZ3ARGF3010 |  | Flooring screed | 20d | 2013-10-02 | 2013-10-27 | DUKHCONP2BZ3ARGF3005 FF+5d, DUKHCONP2BZ3ARGF3005 SS+5d | 35d | 10d | SCREED MASON SK [461 h]; LABOR - CIVIL [173.25 h]; FLOORING SCREED QTY [576 Sqm] | 19,008 | 15 | REM | 2BP3IFGF15 | DUKHCON2BP3ARGF3010 | DUKHCONP2BZ3ARGF3010 | DH | CON | 2B | Z3 | FIN | IF | GF | B08 | B08-D10 | RES-2B |  |
| DUKHCONP2BZ3ARGF3015 |  | Wet area waterproofing & Protection Screed | 20d | 2013-10-05 | 2013-10-29 | DUKHCONP2BZ3ARGF3005 SS+7d, DUKHCONP2BZ3ARGF3005 FF+7d | 17d | 0d | LABOR- SUBCONTRACTOR [24 h]; WETAREA WATERPROOFING QTY [78 Sqm]; WATERPROOFING SPECIALIST SK [63 h] | 2,652 | 18 | REM | 2BP3IFGF18 | DUKHCON2BP3ARGF3015 | DUKHCONP2BZ3ARGF3015 | DH | CON | 2B | Z3 | FIN | IF | GF | B08 | B08-D10 | RES-2B |  |
| DUKHCONP2BZ3ARGF3020 |  | Ceramic Wall Tiling | 15d | 2013-10-26 | 2013-11-11 | DUKHCONP2BZ3PLGF4305 SS+11d, DUKHCONP2BZ3PLGF4305 FF+11d, DUKHCONP2BZ3ARGF3015 SS+11d, DUKHCONP2BZ3PLGF4310 SS+5d, DUKHCONP2BZ3ARGF3015 FF+11d, DUKHCONP2BZ3PLGF4310 FF+5d | 17d | 0d | TILE MASON SK [648 h]; LABOR- SUBCONTRACTOR [364.5 h]; CERAMIC WALL TILE QTY [324 Sqm] | 32,379 | 24 | REM | 2BP3IFGF24 | DUKHCON2BP3ARGF3020 | DUKHCONP2BZ3ARGF3020 | DH | CON | 2B | Z3 | FIN | IF | GF | B08 | B08-D10 | RES-2B |  |
| DUKHCONP2BZ3ARGF3025 |  | Porcelain Tile flooring | 20d | 2013-11-11 | 2013-12-03 | DUKHCONP2BZ3ARGF3010 SS+14d, DUKHCONP2BZ3ARGF3020 FF+14d, DUKHCONP2BZ3ARGF3020 SS+14d, DUKHCONP2BZ3ARGF3010 FF+14d | 17d | 11d | TILE MASON SK [659 h]; LABOR- SUBCONTRACTOR [371.25 h]; PORCELAIN FLOORING QTY [576 Sqm] | 51,620 | 27 | REM | 2BP3IFGF27 | DUKHCON2BP3ARGF3025 | DUKHCONP2BZ3ARGF3025 | DH | CON | 2B | Z3 | FIN | IF | GF | B08 | B08-D10 | RES-2B |  |
| DUKHCONP2BZ3ARGF3030 |  | Paint First coat | 20d | 2013-11-24 | 2013-12-16 | DUKHCONP2BZ3ARGF3005 SS+10d, DUKHCONP2BZ3ARGF3005 FF+10d, DUKHCONP2AZ2ARGF3030 | 6d | 0d | LABOR- SUBCONTRACTOR [495 h]; FIRSTCOAT PAINT QTY [1650 Sqm]; PAINTERS SK [1320 h] | 5,580 | 21 | REM | 2BP3IFGF21 | DUKHCON2BP3ARGF3030 | DUKHCONP2BZ3ARGF3030 | DH | CON | 2B | Z3 | FIN | IF | GF | B08 | B08-D11 | RES-2B | ENT |
| DUKHCONP2BZ3ARGF3045 |  | Fixing of Suspension systems | 15d | 2013-12-16 | 2014-01-02 | DUKHCONP2BZ3ELGF4010 SS+14d, DUKHCONP2BZ3ARGF3030 SS+14d, DUKHCONP2BZ3ARGF3025 FF+14d, DUKHCONP2BZ3ELGF4010 FF+14d, DUKHCONP2BZ3ARGF3030 FF+14d, DUKHCONP2BZ3ARGF3025 SS+14d | 6d | 0d | LABOR- SUBCONTRACTOR [235.5 h]; SUSPENSION QTY [522 Sqm]; FALSE CEILING SKILLED SK [418 h] | 10,230 | 39 | REM | 2BP3IFGF39 | DUKHCON2BP3ARGF3045 | DUKHCONP2BZ3ARGF3045 | DH | CON | 2B | Z3 | FIN | IF | GF | B08 | B08-D10 | RES-2B | SUS |
| DUKHCONP2BZ3ARGF3060 |  | Gypsum board false ceiling | 20d | 2014-01-02 | 2014-01-25 | DUKHCONP2BZ3ACGF4600 FF+14d, DUKHCONP2BZ3ACGF4600 SS+14d, DUKHCONP2BZ3ARGF3045 FF+14d, DUKHCONP2BZ3ARGF3045 SS+14d | 6d | 0d | LABOR- SUBCONTRACTOR [235.5 h]; FALSE CEILING QTY [522 Sqm]; FALSE CEILING SKILLED SK [418 h] | 30,024 | 45 | REM | 2BP3IFGF45 | DUKHCON2BP3ARGF3060 | DUKHCONP2BZ3ARGF3060 | DH | CON | 2B | Z3 | FIN | IF | GF | B08 | B08-D10 | RES-2B | GYP |
| DUKHCONP2BZ3ARGF3035 |  | Slate Tile Flooring & Skirting | 18d | 2014-01-11 | 2014-01-30 | DUKHCONP2BZ3ARGF3010 SS+13d, DUKHCONP2BZ3ARGF3025 FF+13d, DUKHCONP2AZ2ARGF3035, DUKHCONP2BZ3ARGF3010 FF+13d, DUKHCONP2BZ3ARGF3025 SS+13d | 13d | 0d | TILE MASON SK [1008 h]; SLATE TILE QTY [630 Sqm]; LABOR- SUBCONTRACTOR [567 h] | 107,729 | 33 | REM | 2BP3IFGF33 | DUKHCON2BP3ARGF3035 | DUKHCONP2BZ3ARGF3035 | DH | CON | 2B | Z3 | FIN | IF | GF | B08 | B08-D10 | RES-2B |  |
| DUKHCONP2BZ3ARGF3065 |  | Wooden door | 15d | 2014-01-22 | 2014-02-08 | DUKHCONP2BZ3ARGF3060 FF+5d, DUKHCONP2BZ3ARGF3035 SS+7d, DUKHCONP2BZ3ARGF3035 FF+7d, DUKHCONP2BZ3ARGF3060 SS+5d | 17d | 0d | LABOR- SUBCONTRACTOR [54 h]; WOODEN DOOR QTY [36 ea]; DOOR ERECTOR SK [144 h] | 113,057 | 48 | REM | 2BP3IFGF48 | DUKHCON2BP3ARGF3065 | DUKHCONP2BZ3ARGF3065 | DH | CON | 2B | Z3 | FIN | IF | GF | B08 | B08-D05 | RES-2B |  |
| DUKHCONP2BZ3ARGF3075 |  | Carpentry & Joinery Works | 18d | 2014-01-28 | 2014-02-18 | DUKHCONP2BZ3ARGF3065 SS+5d, DUKHCONP2BZ3ARGF3065 FF+5d | 17d | 0d | LABOR- SUBCONTRACTOR [144 h]; CABINET QTY [36 ea]; WARDROBE QTY [12 ea]; JOINERY WORK SK [384 h] | 88,572 | 57 | REM | 2BP3IFGF57 | DUKHCON2BP3ARGF3075 | DUKHCONP2BZ3ARGF3075 | DH | CON | 2B | Z3 | FIN | IF | GF | B08 | B08-D05 | RES-2B |  |
| DUKHCONP2BZ3ARGF3040 |  | Cobble Tile flooring | 15d | 2014-01-29 | 2014-02-16 | DUKHCONP2BZ3ARGF3025 FF+13d, DUKHCONP2BZ3ARGF3010 SS+13d, DUKHCONP2BZ3ARGF3010 FF+13d, DUKHCONP2BZ3ARGF3035 SS+13d, DUKHCONP2BZ3ARGF3025 SS+13d, DUKHCONP2BZ3ARGF3035 FF+13d, DUKHCONP2AZ2ARGF3040 | 23d | 3d | TILE MASON SK [192 h]; LABOR- SUBCONTRACTOR [108 h]; COBBLE STONE QTY [120 Sqm] | 10,008 | 30 | REM | 2BP3IFGF30 | DUKHCON2BP3ARGF3040 | DUKHCONP2BZ3ARGF3040 | DH | CON | 2B | Z3 | FIN | IF | GF | B08 | B08-D10 | RES-2B |  |
| DUKHCONP2BZ3ARGF3080 |  | Aluminum windows | 18d | 2014-02-09 | 2014-03-02 | DUKHCONP2BZ3ARGF3065 | 49d | 11d | LABOR- SUBCONTRACTOR [36 h]; ALUMINIUM WINDOWS QTY [36 ea]; WINDOW ERECTOR SK [96 h] | 27,398 | 54 | REM | 2BP3IFGF54 | DUKHCON2BP3ARGF3080 | DUKHCONP2BZ3ARGF3080 | DH | CON | 2B | Z3 | FIN | IF | GF | B08 | B08-D06 | RES-2B |  |
| DUKHCONP2BZ3ARGF3090 |  | Installation of Granite Counter Top | 15d | 2014-02-26 | 2014-03-15 | DUKHCONP2BZ3ARGF3075 FF+6d, DUKHCONP2BZ3ARGF3075 SS+7d, DUKHCONP2AZ2ARGF3090 | 8d | 0d | GRANITE MASON SK [72 h]; LABOR- SUBCONTRACTOR [27 h]; GRANITE COUNTER TOP QTY [18 ea] | 21,356 | 60 | REM | 2BP3IFGF60 | DUKHCON2BP3ARGF3090 | DUKHCONP2BZ3ARGF3090 | DH | CON | 2B | Z3 | FIN | IF | GF | B08 | B08-D10 | RES-2B |  |
| DUKHCONP2BZ3ARGF3095 |  | Final Painting | 25d | 2014-03-04 | 2014-04-01 | DUKHCONP2BZ3ARGF3060 SS+8d, DUKHCONP2BZ3ARGF3065, DUKHCONP2BZ3ARGF3035 SS+13d, DUKHCONP2BZ3ACGF4610 FF+10d, DUKHCONP2BZ3ARGF3030 SS+10d, DUKHCONP2BZ3ARGF3030 FF+10d, DUKHCONP2BZ3ARGF3060 FF+8d, DUKHCONP2BZ3ARGF3080 FF+8d, DUKHCONP2BZ3ARGF3035 FF+13d, DUKHCONP2BZ3ACGF4610 SS+10d, DUKHCONP2BZ3ARGF3040 SS+13d, DUKHCONP2BZ3ARGF3090 FF+5d, DUKHCONP2BZ3ARGF3090 SS+5d, DUKHCONP2BZ3ARGF3040 FF+13d, DUKHCONP2BZ3ARGF3080 SS+8d | 38d | 0d | LABOR- SUBCONTRACTOR [495 h]; PAINT QTY [1650 Sqm]; PAINTERS SK [1320 h] | 23,267 | 66 | REM | 2BP3IFGF66 | DUKHCON2BP3ARGF3095 | DUKHCONP2BZ3ARGF3095 | DH | CON | 2B | Z3 | FIN | IF | GF | B08 | B08-D11 | RES-2B | PNT |

Notes:
- DUKHCONP2BZ3STGF2000: Expenses: P2B-Concrete Works 26498
- DUKHCONP2BZ3STGF2005: Expenses: P2B-Concrete Works 8613
- DUKHCONP2BZ3STGF2010: Expenses: P2B-Concrete Works 156724
- DUKHCONP2BZ3STGF2015: Expenses: P2B-Concrete Works 114669
- DUKHCONP2BZ3STRF2060: Expenses: P2B-Concrete Works 13038
- DUKHCONP2BZ3STRF2065: Expenses: P2B-Concrete Works 3048
- DUKHCONP2BZ3ARGF3000: Expenses: P2B-Block work 145094
- DUKHCONP2BZ3ARGF3005: Expenses: P2B-Finishes 14820
- DUKHCONP2BZ3ARGF3010: Expenses: P2B-Finishes 19008
- DUKHCONP2BZ3ARGF3015: Expenses: P2B-Finishes 2652
- DUKHCONP2BZ3ARGF3020: Expenses: P2B-Finishes 32379
- DUKHCONP2BZ3ARGF3025: Expenses: P2B-Finishes 51620
- DUKHCONP2BZ3ARGF3030: Expenses: P2B-Painting and Decorating 5580
- DUKHCONP2BZ3ARGF3045: Expenses: P2B-Finishes 10230
- DUKHCONP2BZ3ARGF3060: Expenses: P2B-Finishes 30024
- DUKHCONP2BZ3ARGF3035: Expenses: P2B-Finishes 107729
- DUKHCONP2BZ3ARGF3065: Expenses: P2B-Carpentry and Joinery 113057
- DUKHCONP2BZ3ARGF3075: Expenses: P2B-Carpentry and Joinery 88572
- DUKHCONP2BZ3ARGF3040: Expenses: P2B-Finishes 10008
- DUKHCONP2BZ3ARGF3080: Expenses: P2B-Metal work 27398
- DUKHCONP2BZ3ARGF3090: Expenses: P2B-Finishes 21356
- DUKHCONP2BZ3ARGF3095: Expenses: P2B-Painting and Decorating 23267

| ID | WBS | Activity | Duration | Start | Finish | Predecessors | Total float | Free float | Resources | Cost | CODE | P3 ACTID | P6 ID (old) | NP61D | PROJECT | PHASES | PACKAGE | PART | ELEMENTS | STEP | FLOORS | BILL NOS | BILL DIVISION | RES PACK | rem |
| --- | --- | --- | --- | --- | --- | --- | --- | --- | --- | --- | --- | --- | --- | --- | --- | --- | --- | --- | --- | --- | --- | --- | --- | --- | --- |
|  | 15 | **EXTERNAL FINISHES** |  | 2013-10-31 | 2014-01-29 |  |  |  |  |  |  |  |  |  |  |  |  |  |  |  |  |  |  |  |  |
|  | 10 | **ROOF** |  | 2013-10-31 | 2014-01-01 |  |  |  |  |  |  |  |  |  |  |  |  |  |  |  |  |  |  |  |  |
| DUKHCONP2BZ3ARRF3625 |  | Laying of Pitched Roof | 25d | 2013-10-31 | 2013-11-28 | DUKHCONP2BZ3STRF2065 FF+10d, DUKHCONP2BZ3STRF2065 SS+10d, DUKHCONP2BZ3STRF2060 FF+10d, DUKHCONP2AZ2ARRF3625, DUKHCONP2BZ3STRF2060 SS+10d | 30d | 0d | ROOF TILES QTY [234 Sqm]; INTERLOCK MASON SK [184 h]; LABOR- SUBCONTRACTOR [72 h] | 120,042 | 10 | 2BP3EFRF05 | DUKHCON2BP3ARRF3625 | DUKHCONP2BZ3ARRF3625 | DH | CON | 2B | Z3 | FIN | EF | RF | B08 | B08-D04 | RES-2B |  |
| DUKHCONP2BZ3ARRF3630 |  | Leveling Screed for Waterproofing | 18d | 2013-11-14 | 2013-12-04 | DUKHCONP2BZ3ARRF3625 SS+5d, DUKHCONP2BZ3ARRF3625 FF+5d | 30d | 0d | SCREED MASON SK [125 h]; LABOR- SUBCONTRACTOR [70.5 h]; ROOF WP SCREED QTY [312 Sqm] | 16,134 | 15 | 2BP3EFRF10 | DUKHCON2BP3ARRF3630 | DUKHCONP2BZ3ARRF3630 | DH | CON | 2B | Z3 | FIN | EF | RF | B08 | B08-D04 | RES-2B | REM |
| DUKHCONP2BZ3ARRF3635 |  | Laying of Waterproofing Membrane | 18d | 2013-11-20 | 2013-12-10 | DUKHCONP2BZ3ARRF3630 FF+5d, DUKHCONP2BZ3ARRF3630 SS+5d | 30d | 0d | LABOR- SUBCONTRACTOR [197.25 h]; ROOF WP MEMBRANE QTY [984 Sqm]; WATERPROOFING SPECIALIST SK [525 h] | 25,318 | 20 | 2BP3EFRF15 | DUKHCON2BP3ARRF3635 | DUKHCONP2BZ3ARRF3635 | DH | CON | 2B | Z3 | FIN | EF | RF | B08 | B08-D04 | RES-2B | REM |
| DUKHCONP2BZ3ARRF3640 |  | Installation of Insulation & Protection | 18d | 2013-11-25 | 2013-12-15 | DUKHCONP2AZ2ARRF3640, DUKHCONP2BZ3ARRF3635 SS+4d, DUKHCONP2BZ3ARRF3635 FF+4d | 30d | 0d | LABOR- SUBCONTRACTOR [93.75 h]; ROOF WP INSULATION QTY [624 Sqm]; WATERPROOFING SPECIALIST SK [250 h] | 15,264 | 25 | 2BP3EFRF20 | DUKHCON2BP3ARRF3640 | DUKHCONP2BZ3ARRF3640 | DH | CON | 2B | Z3 | FIN | EF | RF | B08 | B08-D04 | RES-2B | REM |
| DUKHCONP2BZ3ARRF3645 |  | Lime Stone Chips & Paving slab Installation | 18d | 2013-12-03 | 2013-12-24 | DUKHCONP2BZ3ARRF3640 FF+7d, DUKHCONP2BZ3ARRF3640 SS+7d | 30d | 0d | TILE MASON SK [125 h]; LABOR- SUBCONTRACTOR [94.5 h]; LIME STONE QTY [312 Sqm]; PRECAST PAVING SLAB QTY [312 Sqm]; PRE CAST CONCRETE SK [125 h] | 29,640 | 35 | 2BP3EFRF25 | DUKHCON2BP3ARRF3645 | DUKHCONP2BZ3ARRF3645 | DH | CON | 2B | Z3 | FIN | EF | RF | B08 | B08-D04 | RES-2B | REM |
| DUKHCONP2BZ3ARRF3660 |  | Installation of Access Ladder | 20d | 2013-12-09 | 2014-01-01 | DUKHCONP2BZ3ARRF3645 FF+5d, DUKHCONP2BZ3ARRF3645 SS+5d, DUKHCONP2AZ2ARRF3660 | 64d | 5d | LABOR- SUBCONTRACTOR [36 h]; LADDER QTY [12 ea]; LADDER ERECTOR SK [96 h] | 12,566 | 40 | 2BP3EFRF40 | DUKHCON2BP3ARRF3660 | DUKHCONP2BZ3ARRF3660 | DH | CON | 2B | Z3 | FIN | EF | RF | B08 | B08-D06 | RES-2B | REM |
|  | 15 | **ELEVATION** |  | 2013-12-15 | 2014-01-29 |  |  |  |  |  |  |  |  |  |  |  |  |  |  |  |  |  |  |  |  |
| DUKHCONP2BZ3AREL3665 |  | External Plastering | 25d | 2013-12-15 | 2014-01-13 | DUKHCONP2BZ3ARRF3645 FF+10d, DUKHCONP2AZ2AREL3665, DUKHCONP2BZ3STRF2065 SS+7d, DUKHCONP2BZ3STRF2065 FF+7d, DUKHCONP2BZ3ARRF3645 SS+10d | 30d | 0d | PLASTER MASON SK [2568 h]; LABOR - CIVIL [1444.5 h]; EXTERNAL PLASTER QTY [1284 Sqm] | 30,816 | 10 | 2BP3EFEL10 | DUKHCON2BP3AREL3665 | DUKHCONP2BZ3AREL3665 | DH | CON | 2B | Z3 | FIN | EF | EL | B08 | B08-D10 | RES-2B | REM |
| DUKHCONP2BZ3AREL3680 |  | External Painting | 20d | 2014-01-07 | 2014-01-29 | DUKHCONP2BZ3AREL3665 SS+14d, DUKHCONP2AZ2AREL3680, DUKHCONP2BZ3ARRF3660 FF+10d, DUKHCONP2BZ3AREL3665 FF+14d | 50d | 5d | LABOR- SUBCONTRACTOR [384 h]; PAINT QTY [1284 Sqm]; PAINTERS SK [1024 h] | 30,274 | 20 | 2BP3EFEL20 | DUKHCON2BP3AREL3680 | DUKHCONP2BZ3AREL3680 | DH | CON | 2B | Z3 | FIN | EF | EL | B08 | B08-D11 | RES-2B |  |
|  | 20 | **MEP WORKS** |  | 2013-06-04 | 2014-03-22 |  |  |  |  |  |  |  |  |  |  |  |  |  |  |  |  |  |  |  |  |
|  | 10 | **ELECTRICAL WORKS** |  | 2013-09-15 | 2014-03-15 |  |  |  |  |  |  |  |  |  |  |  |  |  |  |  |  |  |  |  |  |
|  | 10 | **GROUND FLOOR** |  | 2013-09-15 | 2014-03-15 |  |  |  |  |  |  |  |  |  |  |  |  |  |  |  |  |  |  |  |  |
| DUKHCONP2BZ3ELGF4000 |  | Fixing of wall conduits & switch socket boxes | 20d | 2013-09-15 | 2013-10-07 | DUKHCONP2BZ3ARGF3000 FF+7d, DUKHCONP2BZ3ARGF3000 SS+7d | 5d | 0d | LABOR- SUBCONTRACTOR [102 h]; ELECTRICIANS SK [492.8 h]; SOCKET BOXES QTY [222 ea]; CODUITS QTY [222 lm] | 23,814 | 10 | 2BP3EWGF10 | DUKHCON2BP3ELGF4000 | DUKHCONP2BZ3ELGF4000 | DH | CON | 2B | Z3 | MEP | EW | GF | B08 | B08-D09 | RES-2B |  |
| DUKHCONP2BZ3ELGF4005 |  | Cable tray & trunking installation | 20d | 2013-11-07 | 2013-11-30 | DUKHCONP2BZ3ELGF4000 SS+7d, DUKHCONP2AZ2ELGF4005, DUKHCONP2BZ3ELGF4000 FF+7d | 13d | 0d | LABOR- SUBCONTRACTOR [432 h]; ELECTRICIANS SK [1612.8 h]; CABLE TRAY QTY [288 lm] | 9,900 | 15 | 2BP3EWGF15 | DUKHCON2BP3ELGF4005 | DUKHCONP2BZ3ELGF4005 | DH | CON | 2B | Z3 | MEP | EW | GF | B08 | B08-D09 | RES-2B |  |
| DUKHCONP2BZ3ELGF4010 |  | Installation of wiring & Main Cabling | 20d | 2013-11-16 | 2013-12-08 | DUKHCONP2BZ3ELGF4005 FF+7d, DUKHCONP2BZ3ELGF4005 SS+7d | 13d | 7d | LABOR- SUBCONTRACTOR [90 h]; ELECTRICIANS SK [324.8 h]; CABLE QTY [288 lm] | 71,442 | 20 | 2BP3EWGF20 | DUKHCON2BP3ELGF4010 | DUKHCONP2BZ3ELGF4010 | DH | CON | 2B | Z3 | MEP | EW | GF | B08 | B08-D09 | RES-2B |  |
| DUKHCONP2BZ3ELGF4020 |  | Installation of DBS,MCCB Accessories. | 20d | 2014-01-11 | 2014-02-02 | DUKHCONP2BZ3ELGF4010 FF+5d, DUKHCONP2BZ3ARGF3060 SS+7d, DUKHCONP2BZ3ELGF4010 SS+5d, DUKHCONP2BZ3ARGF3060 FF+7d | 15d | 0d | LABOR- SUBCONTRACTOR [36 h]; ELECTRICIANS SK [134.4 h]; MCCB QTY [60 ea]; DB QTY [6 ea] | 23,786 | 25 | 2BP3EWGF25 | DUKHCON2BP3ELGF4020 | DUKHCONP2BZ3ELGF4020 | DH | CON | 2B | Z3 | MEP | EW | GF | B08 | B08-D09 | RES-2B |  |
| DUKHCONP2BZ3ELGF4025 |  | Installation of Lighting fixtures & Accessories | 20d | 2014-01-22 | 2014-02-15 | DUKHCONP2BZ3ELGF4020 FF+10d, DUKHCONP2BZ3ELGF4020 SS+10d, DUKHCONP2BZ3ARGF3060 SS+10d, DUKHCONP2BZ3ARGF3060 FF+10d | 15d | 0d | LABOR- SUBCONTRACTOR [138 h]; ELECTRICIANS SK [257.6 h]; LIGHTS QTY [114 ea] | 99,288 | 30 | 2BP3EWGF30 | DUKHCON2BP3ELGF4025 | DUKHCONP2BZ3ELGF4025 | DH | CON | 2B | Z3 | MEP | EW | GF | B08 | B08-D09 | RES-2B |  |
| DUKHCONP2BZ3ELGF4030 |  | Installation of Telephone System | 20d | 2014-01-22 | 2014-02-15 | DUKHCONP2BZ3ELGF4020 SS+10d, DUKHCONP2BZ3ELGF4020 FF+10d, DUKHCONP2BZ3ARGF3060 FF+5d, DUKHCONP2BZ3ARGF3060 SS+5d, DUKHCONP2BZ3MSEX5010 | 18d | 1d | LABOR- SUBCONTRACTOR [18 h]; ELECTRICIANS SK [134.4 h]; TELEPHONE SOCKETS QTY [12 ea] | 43,206 | 40 | 2BP3EWGF40 | DUKHCON2BP3ELGF4030 | DUKHCONP2BZ3ELGF4030 | DH | CON | 2B | Z3 | MEP | EW | GF | B08 | B08-D09 | RES-2B |  |
| DUKHCONP2BZ3ELGF4015 |  | Install. of CAMS & Fire Fighting Accessories | 20d | 2014-02-20 | 2014-03-15 | DUKHCONP2AZ2ELGF4015, DUKHCONP2BZ3ARGF3060 SS+14d, DUKHCONP2BZ3ARGF3060 FF+14d | 13d | 0d | LABOR- SUBCONTRACTOR [396 h]; MECHANICALS SK [712.8 h]; SMOKE DETECTOR POINTS QTY [126 ea]; FIRE EXTINGUISHER QTY [6 ea] | 53,272 | 35 | 2BP3EWGF35 | DUKHCON2BP3ELGF4015 | DUKHCONP2BZ3ELGF4015 | DH | CON | 2B | Z3 | MEP | EW | GF | B08 | B08-D09 | RES-2B |  |
|  | 20 | **ROOF** |  | 2014-02-05 | 2014-03-12 |  |  |  |  |  |  |  |  |  |  |  |  |  |  |  |  |  |  |  |  |
| DUKHCONP2BZ3ELRF4070 |  | Installation of Isolator | 18d | 2014-02-05 | 2014-02-26 | DUKHCONP2BZ3ELGF4010 FF+10d, DUKHCONP2BZ3ELGF4025 SS+10d, DUKHCONP2BZ3ELGF4030 FF+7d, DUKHCONP2BZ3ARRF3645 FF+7d, DUKHCONP2BZ3ELGF4030 SS+5d, DUKHCONP2BZ3ELGF4010 SS+10d, DUKHCONP2BZ3ELGF4025 FF+10d, DUKHCONP2BZ3ARRF3645 SS+7d | 15d | 0d | LABOR- SUBCONTRACTOR [126 h]; ELECTRICIANS SK [235.2 h]; ISOLATOR QTY [42 ea] | 22,378 | 10 | 2BP3EWRF10 | DUKHCON2BP3ELRF4070 | DUKHCONP2BZ3ELRF4070 | DH | CON | 2B | Z3 | MEP | EW | RF | B08 | B08-D09 | RES-2B |  |
| DUKHCONP2BZ3ELRF4075 |  | Installation of TV Dish Antenna | 20d | 2014-02-18 | 2014-03-12 | DUKHCONP2BZ3ELRF4070 FF+10d, DUKHCONP2BZ3ELRF4070 SS+10d | 15d | 1d | LABOR- SUBCONTRACTOR [54 h]; ELECTRICIANS SK [134.4 h]; CONTROL BOX QTY [6 ea]; SWITCHING BOX QTY [6 ea] | 23,716 | 15 | 2BP3EWRF15 | DUKHCON2BP3ELRF4075 | DUKHCONP2BZ3ELRF4075 | DH | CON | 2B | Z3 | MEP | EW | RF | B08 | B08-D09 | RES-2B |  |

Notes:
- DUKHCONP2BZ3ARRF3625: Expenses: P2B-Roofing 120042
- DUKHCONP2BZ3ARRF3630: Expenses: P2B-Roofing 16134
- DUKHCONP2BZ3ARRF3635: Expenses: P2B-Roofing 25318
- DUKHCONP2BZ3ARRF3640: Expenses: P2B-Roofing 15264
- DUKHCONP2BZ3ARRF3645: Expenses: P2B-Roofing 29640
- DUKHCONP2BZ3ARRF3660: Expenses: P2B-Metal work 12566
- DUKHCONP2BZ3AREL3665: Expenses: P2B-Finishes 30816
- DUKHCONP2BZ3AREL3680: Expenses: P2B-Painting and Decorating 30274
- DUKHCONP2BZ3ELGF4000: Expenses: P2B-Electrical Installations 23814
- DUKHCONP2BZ3ELGF4005: Expenses: P2B-Electrical Installations 9900
- DUKHCONP2BZ3ELGF4010: Expenses: P2B-Electrical Installations 71442
- DUKHCONP2BZ3ELGF4020: Expenses: P2B-Electrical Installations 23786
- DUKHCONP2BZ3ELGF4025: Expenses: P2B-Electrical Installations 99288
- DUKHCONP2BZ3ELGF4030: Expenses: P2B-Electrical Installations 43206
- DUKHCONP2BZ3ELGF4015: Expenses: P2B-Electrical Installations 53272
- DUKHCONP2BZ3ELRF4070: Expenses: P2B-Electrical Installations 22378
- DUKHCONP2BZ3ELRF4075: Expenses: P2B-Electrical Installations 23716

| ID | WBS | Activity | Duration | Start | Finish | Predecessors | Total float | Free float | Resources | Cost | CODE | P3 ACTID | P6 ID (old) | NP61D | PROJECT | PHASES | PACKAGE | PART | ELEMENTS | STEP | FLOORS | BILL NOS | BILL DIVISION | RES PACK |
| --- | --- | --- | --- | --- | --- | --- | --- | --- | --- | --- | --- | --- | --- | --- | --- | --- | --- | --- | --- | --- | --- | --- | --- | --- |
|  | 15 | **PLUMBING, DRAINAGE & FIRE FIGHTING WORKS** |  | 2013-06-04 | 2014-03-22 |  |  |  |  |  |  |  |  |  |  |  |  |  |  |  |  |  |  |  |
|  | 10 | **GROUND FLOOR** |  | 2013-06-04 | 2014-03-22 |  |  |  |  |  |  |  |  |  |  |  |  |  |  |  |  |  |  |  |
| DUKHCONP2BZ3PLUG4300 |  | Drainage / Storm Pipes in Grade Slab | 20d | 2013-06-04 | 2013-06-26 | DUKHCONP2BZ3STUG1040 SS+7d, DUKHCONP2BZ3STUG1040 FF+7d | 2d | 0d | LABOR- SUBCONTRACTOR [42 h]; MECHANICALS SK [140.4 h]; DRAINAGE PIPES QTY [252 lm] | 10,105 | 10 | 2BP3PLUG10 | DUKHCON2BP3PLUG4300 | DUKHCONP2BZ3PLUG4300 | DH | CON | 2B | Z3 | ST | SB | UG | B08 | B08-D07 | RES-2B |
| DUKHCONP2BZ3PLGF4305 |  | Installation of Plumbing pipes & testing | 20d | 2013-09-15 | 2013-10-07 | DUKHCONP2BZ3ARGF3000 FF+7d, DUKHCONP2BZ3ARGF3000 SS+7d | 5d | 0d | LABOR- SUBCONTRACTOR [312 h]; MECHANICALS SK [1123.2 h]; PLUMB PIPES QTY [1038 lm] | 64,872 | 10 | 2BP3PLGF10 | DUKHCON2BP3PLGF4305 | DUKHCONP2BZ3PLGF4305 | DH | CON | 2B | Z3 | MEP | PL | GF | B08 | B08-D07 | RES-2B |
| DUKHCONP2BZ3PLGF4310 |  | Installation of Drainage pipes &testing | 18d | 2013-09-17 | 2013-10-07 | DUKHCONP2BZ3ARGF3000 FF+7d, DUKHCONP2BZ3PLGF4305 FF, DUKHCONP2BZ3PLGF4305 SS, DUKHCONP2BZ3ARGF3000 SS+7d | 30d | 4d | LABOR- SUBCONTRACTOR [18 h]; DRAINAGE PIPES QTY [102 lm]; MECHANICALS SK [54 h] | 2,538 | 15 | 2BP3PLGF15 | DUKHCON2BP3PLGF4310 | DUKHCONP2BZ3PLGF4310 | DH | CON | 2B | Z3 | MEP | PL | GF | B08 | B08-D07 | RES-2B |
| DUKHCONP2BZ3PLGF4315 |  | Sanitary Fittings & Accessories | 20d | 2014-02-22 | 2014-03-16 | DUKHCONP2BZ3PLGF4310 FF+5d, DUKHCONP2BZ3ARGF3065 SS+5d, DUKHCONP2AZ2PLGF4315, DUKHCONP2BZ3PLGF4310 SS+5d, DUKHCONP2BZ3ARGF3065 FF+5d | 7d | 0d | LABOR- SUBCONTRACTOR [78 h]; MECHANICALS SK [140.4 h]; SANITARY ACC QTY [132 ea] | 59,278 | 20 | 2BP3PLGF20 | DUKHCON2BP3PLGF4315 | DUKHCONP2BZ3PLGF4315 | DH | CON | 2B | Z3 | MEP | PL | GF | B08 | B08-D07 | RES-2B |
| DUKHCONP2BZ3PLGF4320 |  | Installation of Water Heater | 15d | 2014-03-05 | 2014-03-22 | DUKHCONP2BZ3ARGF3060 SS+5d, DUKHCONP2BZ3ARGF3060 FF+5d, DUKHCONP2BZ3PLGF4315 FF+5d, DUKHCONP2BZ3PLGF4315 SS+5d | 47d | 9d | LABOR- SUBCONTRACTOR [54 h]; MECHANICALS SK [97.2 h]; WATER HEATER QTY [18 ea] | 6,502 | 25 | 2BP3PLGF25 | DUKHCON2BP3PLGF4320 | DUKHCONP2BZ3PLGF4320 | DH | CON | 2B | Z3 | MEP | PL | GF | B08 | B08-D07 | RES-2B |
|  | 20 | **ROOF** |  | 2014-01-11 | 2014-01-27 |  |  |  |  |  |  |  |  |  |  |  |  |  |  |  |  |  |  |  |
| DUKHCONP2BZ3PLRF4350 |  | Installation of Rain water Pipes | 15d | 2014-01-11 | 2014-01-27 | DUKHCONP2BZ3PLGF4310 SS+5d, DUKHCONP2BZ3AREL3665 FF+7d, DUKHCONP2BZ3PLGF4310 FF+5d, DUKHCONP2BZ3ARRF3645 SS+5d, DUKHCONP2BZ3PLGF4305 FF+5d, DUKHCONP2AZ2PLRF4350, DUKHCONP2BZ3AREL3665 SS+7d, DUKHCONP2BZ3PLGF4305 SS+5d, DUKHCONP2BZ3ARRF3645 FF+5d | 35d | 5d | RAINWATER PIPES QTY [96 lm]; LABOR- SUBCONTRACTOR [60 h]; MECHANICALS SK [205.2 h] | 48,325 | 15 | 2BP3PLRF15 | DUKHCON2BP3PLRF4350 | DUKHCONP2BZ3PLRF4350 | DH | CON | 2B | Z3 | MEP | PL | RF | B08 | B08-D07 | RES-2B |
|  | 20 | **AC WORKS** |  | 2013-11-20 | 2014-03-11 |  |  |  |  |  |  |  |  |  |  |  |  |  |  |  |  |  |  |  |
|  | 10 | **GROUND FLOOR** |  | 2013-11-20 | 2014-03-05 |  |  |  |  |  |  |  |  |  |  |  |  |  |  |  |  |  |  |  |
| DUKHCONP2BZ3ACGF4600 |  | Installation AC Pipes | 20d | 2013-11-20 | 2013-12-12 | DUKHCONP2AZ2ACGF4600, DUKHCONP2BZ3ARGF3005 FF+7d, DUKHCONP2BZ3ARGF3005 SS+7d | 28d | 0d | LABOR- SUBCONTRACTOR [120 h]; AC TECHNICIAN SK [436.8 h]; AC PIPES QTY [1182 lm] | 3,600 | 10 | 2BP3ACGF10 | DUKHCON2BP3ACGF4600 | DUKHCONP2BZ3ACGF4600 | DH | CON | 2B | Z3 | MEP | AC | GF | B08 | B08-D08 | RES-2B |
| DUKHCONP2BZ3ACGF4605 |  | Fixing of Ventilation Equipments | 25d | 2014-01-19 | 2014-02-17 | DUKHCONP2BZ3ACGF4600 FF+10d, DUKHCONP2BZ3ARGF3060 SS+14d, DUKHCONP2BZ3ACGF4600 SS+10d, DUKHCONP2BZ3ARGF3060 FF+14d | 16d | 0d | LABOR- SUBCONTRACTOR [18 h]; AC TECHNICIAN SK [67.2 h]; VENTILIATION EQP QTY [24 ea] | 14,750 | 15 | 2BP3ACGF15 | DUKHCON2BP3ACGF4605 | DUKHCONP2BZ3ACGF4605 | DH | CON | 2B | Z3 | MEP | AC | GF | B08 | B08-D08 | RES-2B |
| DUKHCONP2BZ3ACGF4610 |  | Fixing of Split AC | 20d | 2014-02-10 | 2014-03-05 | DUKHCONP2BZ3ACGF4605 SS+14d, DUKHCONP2BZ3ACGF4605 FF+14d | 16d | 0d | LABOR- SUBCONTRACTOR [54 h]; AC TECHNICIAN SK [100.8 h]; SPILIT UNIT QTY [18 ea] | 18,870 | 20 | 2BP3ACGF20 | DUKHCON2BP3ACGF4610 | DUKHCONP2BZ3ACGF4610 | DH | CON | 2B | Z3 | MEP | AC | GF | B08 | B08-D08 | RES-2B |
|  | 20 | **ROOF** |  | 2013-12-21 | 2014-03-11 |  |  |  |  |  |  |  |  |  |  |  |  |  |  |  |  |  |  |  |
| DUKHCONP2BZ3ACRF4630 |  | Installation of Refrigerant Pipes | 20d | 2013-12-21 | 2014-01-12 | DUKHCONP2AZ2ACRF4630, DUKHCONP2BZ3ARRF3645 SS+14d, DUKHCONP2BZ3ACGF4600 SS+14d, DUKHCONP2BZ3ACGF4600 FF+14d, DUKHCONP2BZ3ARRF3645 FF+14d | 55d | 5d | LABOR- SUBCONTRACTOR [6 h]; AC TECHNICIAN SK [11.2 h]; AC PIPES QTY [42 lm] | 3,348 | 10 | 2BP3ACRF10 | DUKHCON2BP3ACRF4630 | DUKHCONP2BZ3ACRF4630 | DH | CON | 2B | Z3 | MEP | AC | RF | B08 | B08-D08 | RES-2B |
| DUKHCONP2BZ3ACRF4635 |  | Installation of Condensing Unit | 20d | 2014-02-17 | 2014-03-11 | DUKHCONP2BZ3ACRF4630 FF+10d, DUKHCONP2BZ3ACRF4630 SS+10d, DUKHCONP2BZ3ACGF4610 SS+5d, DUKHCONP2BZ3ACGF4610 FF+5d | 16d | 1d | LABOR- SUBCONTRACTOR [30 h]; AC TECHNICIAN SK [100.8 h]; AC UNITS QTY [18 ea] | 24,640 | 15 | 2BP3ACRF15 | DUKHCON2BP3ACRF4635 | DUKHCONP2BZ3ACRF4635 | DH | CON | 2B | Z3 | MEP | AC | RF | B08 | B08-D08 | RES-2B |
|  | 25 | **EXTERNAL WORKS** |  | 2013-10-03 | 2014-03-18 |  |  |  |  |  |  |  |  |  |  |  |  |  |  |  |  |  |  |  |
|  | 10 | **MISCELLANEOUS** |  | 2013-10-03 | 2013-12-31 |  |  |  |  |  |  |  |  |  |  |  |  |  |  |  |  |  |  |  |
| DUKHCONP2BZ3MSEX5000 |  | Construction of Manholes | 25d | 2013-10-03 | 2013-11-03 | DUKHCONP2BZ3PLGF4310 SS+10d, DUKHCONP2BZ3PLGF4310 FF+10d, DUKHCONP2BZ3STRF2065 FF+5d, DUKHCONP2BZ3STRF2065 SS+5d | 26d | 0d | MANHOLES SK [96 h]; LABOR - CIVIL [36 h]; MANHOLES QTY [12 ea] | 13,617 | 25 | 2BP3MSEX25 | DUKHCON2BP3MS005000 | DUKHCONP2BZ3MSEX5000 | DH | CON | 2B | Z3 | EX | MS |  | B08 | B08-D12 | RES-2B |
| DUKHCONP2BZ3MSEX5005 |  | Construction of Soak pit, Chambers | 25d | 2013-10-20 | 2013-11-17 | DUKHCONP2BZ3MSEX5000 FF+12d, DUKHCONP2BZ3MSEX5000 SS+12d | 36d | 0d | MANHOLES SK [48 h]; LABOR - CIVIL [18 h]; SOAKPIT QTY [6 ea] | 22,500 | 30 | 2BP3MSEX30 | DUKHCON2BP3MS005005 | DUKHCONP2BZ3MSEX5005 | DH | CON | 2B | Z3 | EX | MS |  | B08 | B08-D12 | RES-2B |
| DUKHCONP2BZ3MSEX5015 |  | Construction of grease Trap | 20d | 2013-11-09 | 2013-12-01 | DUKHCONP2BZ3MSEX5005 FF+12d, DUKHCONP2BZ3MSEX5005 SS+12d | 36d | 0d | LABOR- SUBCONTRACTOR [48 h]; GREASE TRAP QTY [60 lm]; HANDRAIL ERECTOR SKILLED [120 h] | 17,022 | 20 | 2BP3MSEX20 | DUKHCON2BP3MS005015 | DUKHCONP2BZ3MSEX5015 | DH | CON | 2B | Z3 | EX | MS |  | B08 | B08-D07 | RES-2B |
| DUKHCONP2BZ3MSEX5020 |  | Construction Entrance Ramp | 20d | 2013-11-09 | 2013-12-01 | DUKHCONP2BZ3STRF2065 SS, DUKHCONP2AZ2MSEX5020, DUKHCONP2BZ3STRF2065 FF | 30d | 0d | SCREED MASON SK [136 h]; CONCRETE MASON SK [32 h]; INTERLOCK MASON SK [136 h]; LABOR - CIVIL [78 h]; LABOR- SUBCONTRACTOR [54 h]; SCREED QTY [168 Sqm]; CONCRETE QTY [16.8 Cum]; INTERLOCK QTY [168 Sqm] | 43,008 | 10 | 2BP3MSEX10 | DUKHCON2BP3MS005020 | DUKHCONP2BZ3MSEX5020 | DH | CON | 2B | Z3 | EX | MS |  | B08 | B08-D12 | RES-2B |
| DUKHCONP2BZ3MSEX5055 |  | Installation Steel Door | 20d | 2013-11-20 | 2013-12-12 | DUKHCONP2BZ3MSEX5020 SS+10d | 30d | 0d | LABOR- SUBCONTRACTOR [80 h]; GATE QTY [6 ea]; GATE ERECTOR SK [100 h] | 23,090 | 20 | 2BP3MSEX35 | DUKHCON2BP3MS005055 | DUKHCONP2BZ3MSEX5055 | DH | CON | 2B | Z3 | EX | MS |  | B08 | B08-D06 | RES-2B |
| DUKHCONP2BZ3MSEX5010 |  | Telephone cable laying | 25d | 2013-12-02 | 2013-12-31 | DUKHCONP2BZ3MSEX5015 | 36d | 18d | LABOR - CIVIL [125 h]; LABOR- SUBCONTRACTOR [125 h]; ELECTRICIANS SK [125 h]; CONCRETE MASON SK [125 h] | 992 |  | 2BP3MSEX40 | DUKHCON2BP3MS005010 | DUKHCONP2BZ3MSEX5010 | DH | CON | 2B | Z3 | EX | MS |  | B08 | B08-D12 | RES-2B |
| DUKHCONP2BZ3MSEX5025 |  | SS.Handrails and Balustrades | 20d | 2013-12-02 | 2013-12-25 | DUKHCONP2BZ3MSEX5020 FF+10d, DUKHCONP2BZ3MSEX5055 SS+10d, DUKHCONP2BZ3MSEX5020 SS+10d, DUKHCONP2AZ2MSEX5025 | 30d | 0d | LABOR- SUBCONTRACTOR [48 h]; S.S.BALUSTRADE QTY [42 lm]; HANDRAIL ERECTOR SKILLED [88 h] | 42,745 | 15 | 2BP3MSEX15 | DUKHCON2BP3MS005025 | DUKHCONP2BZ3MSEX5025 | DH | CON | 2B | Z3 | EX | MS |  | B08 | B08-D12 | RES-2B |

Notes:
- DUKHCONP2BZ3PLUG4300: Expenses: P2B-Plumbing and Drainage works 10105
- DUKHCONP2BZ3PLGF4305: Expenses: P2B-Plumbing and Drainage works 64872
- DUKHCONP2BZ3PLGF4310: Expenses: P2B-Plumbing and Drainage works 2538
- DUKHCONP2BZ3PLGF4315: Expenses: P2B-Plumbing and Drainage works 59278
- DUKHCONP2BZ3PLGF4320: Expenses: P2B-Plumbing and Drainage works 6502
- DUKHCONP2BZ3PLRF4350: Expenses: P2B-Plumbing and Drainage works 48325
- DUKHCONP2BZ3ACGF4600: Expenses: P2B-Air-conditioning and Ventilation works 3600
- DUKHCONP2BZ3ACGF4605: Expenses: P2B-Air-conditioning and Ventilation works 14750
- DUKHCONP2BZ3ACGF4610: Expenses: P2B-Air-conditioning and Ventilation works 18870
- DUKHCONP2BZ3ACRF4630: Expenses: P2B-Air-conditioning and Ventilation works 3348
- DUKHCONP2BZ3ACRF4635: Expenses: P2B-Air-conditioning and Ventilation works 24640
- DUKHCONP2BZ3MSEX5000: Expenses: P2B-External works within the Plot Curtilage 13617
- DUKHCONP2BZ3MSEX5005: Expenses: P2B-External works within the Plot Curtilage 22500
- DUKHCONP2BZ3MSEX5015: Expenses: P2B-Plumbing and Drainage works 17022
- DUKHCONP2BZ3MSEX5020: Expenses: P2B-External works within the Plot Curtilage 43008
- DUKHCONP2BZ3MSEX5055: Expenses: P2B-Metal work 23090
- DUKHCONP2BZ3MSEX5010: Expenses: P2B-External works within the Plot Curtilage 992
- DUKHCONP2BZ3MSEX5025: Expenses: P2B-External works within the Plot Curtilage 42745

| ID | WBS | Activity | Duration | Start | Finish | Predecessors | Total float | Free float | Resources | Cost | CODE | P3 ACTID | P6 ID (old) | NP61D | PROJECT | PHASES | PACKAGE | PART | ELEMENTS | STEP | BILL NOS | BILL DIVISION | RES PACK | FLOORS | rem |
| --- | --- | --- | --- | --- | --- | --- | --- | --- | --- | --- | --- | --- | --- | --- | --- | --- | --- | --- | --- | --- | --- | --- | --- | --- | --- |
|  | 15 | **WATER TANK ENCLOSURE** |  | 2013-11-12 | 2014-03-18 |  |  |  |  |  |  |  |  |  |  |  |  |  |  |  |  |  |  |  |  |
| DUKHCONP2BZ3WEEX5030 |  | Excavation | 20d | 2013-11-12 | 2013-12-04 | DUKHCONP2AZ2WEEX5030, DUKHCONP2BZ3STRF2065 FF+7d, DUKHCONP2BZ3STRF2065 SS+7d | 15d | 0d | LABOR - CIVIL [36 h]; LOADER [20 h]; POCLAIN [40 h]; EXCAVATION QTY [60 Cum]; TRUCK [20 h]; EQUIP OPERATORS [80 h] | 672 | 10 | 2BP3WEEX10 | DUKHCON2BP3WE005030 | DUKHCONP2BZ3WEEX5030 | DH | CON | 2B | Z3 | EX | WE | B08 | B08-D12 | RES-2B |  |  |
| DUKHCONP2BZ3WEEX5035 |  | Construction of Raft | 25d | 2013-11-20 | 2013-12-19 | DUKHCONP2BZ3WEEX5030 FF+10d, DUKHCONP2BZ3WEEX5030 SS+7d | 15d | 0d | CONCRETE MASON SK [120 h]; LABOR - CIVIL [90 h]; CONCRETE QTY [60 Cum] | 10,260 | 15 | 2BP3WEEX15 | DUKHCON2BP3WE005035 | DUKHCONP2BZ3WEEX5035 | DH | CON | 2B | Z3 | EX | WE | B08 | B08-D12 | RES-2B |  |  |
| DUKHCONP2BZ3WEEX5040 |  | Block works & Plastering | 25d | 2013-11-30 | 2013-12-29 | DUKHCONP2BZ3WEEX5035 SS+8d, DUKHCONP2BZ3WEEX5035 FF+8d | 35d | 0d | BLOCK MASON SK [168 h]; PLASTER MASON SK [272 h]; LABOR - CIVIL [252 h]; BLOCK QTY [84 Sqm]; PLASTER QTY [168 Sqm] | 11,503 | 20 | 2BP3WEEX20 | DUKHCON2BP3WE005040 | DUKHCONP2BZ3WEEX5040 | DH | CON | 2B | Z3 | EX | WE | B08 | B08-D12 | RES-2B |  |  |
| DUKHCONP2BZ3WEEX5045 |  | Flooring & Painting | 25d | 2013-12-11 | 2014-01-09 | DUKHCONP2BZ3WEEX5040 FF+10d, DUKHCONP2BZ3WEEX5040 SS+10d | 35d | 0d | SCREED MASON SK [56 h]; LABOR - CIVIL [24 h]; LABOR- SUBCONTRACTOR [72 h]; SCREED QTY [66 Sqm]; PAINT QTY [234 Sqm]; PAINTERS SK [184 h] | 10,062 | 25 | 2BP3WEEX25 | DUKHCON2BP3WE005045 | DUKHCONP2BZ3WEEX5045 | DH | CON | 2B | Z3 | EX | WE | B08 | B08-D12 | RES-2B |  |  |
| DUKHCONP2BZ3WEEX5050 |  | Installation of Steel Gate | 20d | 2013-12-30 | 2014-01-21 | DUKHCONP2BZ3MSEX5025 SS+10d, DUKHCONP2BZ3MSEX5025 FF+10d, DUKHCONP2BZ3WEEX5045 SS+5d, DUKHCONP2AZ2WEEX5050, DUKHCONP2BZ3WEEX5045 FF+10d | 35d | 0d | LABOR- SUBCONTRACTOR [54 h]; LADDER QTY [6 ea]; GATE QTY [6 ea]; LADDER ERECTOR SK [48 h]; GATE ERECTOR SK [48 h] | 32,436 | 30 | 2BP3WEEX30 | DUKHCON2BP3WE005050 | DUKHCONP2BZ3WEEX5050 | DH | CON | 2B | Z3 | EX | WE | B08 | B08-D12 | RES-2B |  |  |
| DUKHCONP2BZ3WEEX5060 |  | Structural steel & SS Shed cover installation | 25d | 2014-01-05 | 2014-02-02 | DUKHCONP2BZ3WEEX5050 FF+10d, DUKHCONP2BZ3WEEX5050 SS+5d | 35d | 25d | LABOR- SUBCONTRACTOR [222 h]; STRUCTURAL STEEL QTY [438 kg]; SS SHED COVER QTY [60 Sqm]; STEEL ERECTOR SK [312 h] | 33,315 | 35 | 2BP3WEEX35 | DUKHCON2BP3WE005060 | DUKHCONP2BZ3WEEX5060 | DH | CON | 2B | Z3 | EX | WE | B08 | B08-D12 | RES-2B |  |  |
| DUKHCONP2BZ3MSEX5335 |  | Aluminum Roll-up Shutter with 2m Wall | 25d | 2014-01-27 | 2014-02-25 | DUKHCONI2BZ1BWGL5325 SS+7d | 43d | 17d | LABOR- SUBCONTRACTOR [200 h]; DOOR ERECTOR SK [200 h]; ROLLING SHUTTER QTY [6 ea] | 25,259 | 25 | 2BP1BWFR25 | DUKHCON2BP3MS005335 | DUKHCONP2BZ3MSEX5335 | DH | CON | 2B | Z3 | EX | MS | B08 | B08-D12 | RES-2B |  |  |
| DUKHCONP2BZ3WEEX5065 |  | Install. of Water Tank,Chiller,Pump & Meter | 25d | 2014-02-16 | 2014-03-16 | DUKHCONP2BZ3PLRF4350 SS+5d, DUKHCONP2BZ3WEEX5060 SS+10d, DUKHCONP2BZ3WEEX5060 FF+10d, DUKHCONP2BZ3MSEX5015 SS+5d, DUKHCONP2AZ2WEEX5065, DUKHCONP2BZ3PLRF4350 FF+5d, DUKHCONP2BZ3MSEX5015 FF+5d | 10d | 0d | LABOR- SUBCONTRACTOR [90 h]; AC TECHNICIAN SK [67.2 h]; MECHANICALS SK [129.6 h]; CHILLER QTY [60 ea]; PUMP QTY [6 ea]; WATER TANK QTY [6 ea] | 450,453 | 40 | 2BP3WEEX40 | DUKHCON2BP3WE005065 | DUKHCONP2BZ3WEEX5065 | DH | CON | 2B | Z3 | EX | WE | B08 | B08-D07 | RES-2B |  |  |
| DUKHCONP2BZ3WEEX5070 |  | Installation ladder for water Tank | 20d | 2014-02-24 | 2014-03-18 | DUKHCONP2AZ2WEEX5070, DUKHCONP2BZ3WEEX5065 SS+7d | 10d | 0d | LABOR- SUBCONTRACTOR [100 h]; LADDER QTY [6 ea]; LADDER ERECTOR SK [100 h] | 11,118 | 40 | 2BP3WEEX45 | DUKHCON2BP3WE005070 | DUKHCONP2BZ3WEEX5070 | DH | CON | 2B | Z3 | EX | WE | B08 | B08-D06 | RES-2B |  |  |
|  | 20 | **HARD LANDSCAPING** |  | 2013-12-10 | 2014-01-29 |  |  |  |  |  |  |  |  |  |  |  |  |  |  |  |  |  |  |  |  |
| DUKHCONP2BZ3HDEX5090 |  | kerb works | 20d | 2013-12-10 | 2014-01-02 | DUKHCONP2BZ3MSEX5020 SS+7d, DUKHCONP2AZ2HDEX5090, DUKHCONP2BZ3MSEX5020 FF+7d, DUKHCONP2BZ3MSEX5025 SS+7d | 30d | 0d | KERBSTONE MASON SK [152 h]; LABOR- SUBCONTRACTOR [84 h]; KERBSTONE QTY [186 lm] | 18,554 | 10 | 2BP3HDEX10 | DUKHCON2BP3HD005090 | DUKHCONP2BZ3HDEX5090 | DH | CON | 2B | Z3 | EX | HD | B08 | B08-D12 | RES-2B |  |  |
| DUKHCONP2BZ3HDEX5095 |  | Cobble Stone Works | 20d | 2013-12-23 | 2014-01-14 | DUKHCONP2BZ3HDEX5090 SS+10d, DUKHCONP2BZ3HDEX5090 FF+10d | 30d | 0d | TILE MASON SK [56 h]; LABOR- SUBCONTRACTOR [30 h]; COBBLE STONE QTY [36 Sqm] | 5,004 | 15 | 2BP3HDEX15 | DUKHCON2BP3HD005095 | DUKHCONP2BZ3HDEX5095 | DH | CON | 2B | Z3 | EX | HD | B08 | B08-D12 | RES-2B |  |  |
| DUKHCONP2BZ3HDEX5100 |  | Interlock works | 20d | 2014-01-07 | 2014-01-29 | DUKHCONP2BZ3HDEX5095 SS+13d, DUKHCONP2BZ3HDEX5095 FF+13d | 30d | 9d | INTERLOCK MASON SK [216 h]; LABOR- SUBCONTRACTOR [84 h]; INTERLOCK QTY [270 Sqm] | 23,084 | 20 | 2BP3HDEX20 | DUKHCON2BP3HD005100 | DUKHCONP2BZ3HDEX5100 | DH | CON | 2B | Z3 | EX | HD | B08 | B08-D12 | RES-2B |  |  |
|  | 25 | **SOFT LANDSCAPING** |  | 2014-01-29 | 2014-03-05 |  |  |  |  |  |  |  |  |  |  |  |  |  |  |  |  |  |  |  |  |
| DUKHCONP2BZ3SLEX5105 |  | Laying of Grass/ green area | 20d | 2014-01-29 | 2014-02-22 | DUKHCONP2BZ3HDEX5100 SS+10d, DUKHCONP2AZ2SLEX5105, DUKHCONP2BZ3HDEX5100 FF+10d | 21d | 0d | LABOR- SUBCONTRACTOR [918 h]; SWEET SOIL QTY [294 Cum]; GRASS QTY [294 Sqm]; LANDSCAPING SK [1224 h] | 36,162 | 10 | 2BP3SLEX10 | DUKHCON2BP3SL005105 | DUKHCONP2BZ3SLEX5105 | DH | CON | 2B | Z3 | EX | SL | B08 | B08-D12 | RES-2B |  |  |
| DUKHCONP2BZ3SLEX5110 |  | Laying of Palm tree | 20d | 2014-02-10 | 2014-03-05 | DUKHCONP2BZ3SLEX5105 FF+10d, DUKHCONP2BZ3SLEX5105 SS+10d, DUKHCONP2AZ2SLEX5110 | 61d | 23d | LABOR- SUBCONTRACTOR [234 h]; SWEET SOIL QTY [600 Cum]; PLAM TREES QTY [54 ea]; LANDSCAPING SK [312 h] | 81,432 | 15 | 2BP3SLEX15 | DUKHCON2BP3SL005110 | DUKHCONP2BZ3SLEX5110 | DH | CON | 2B | Z3 | EX | SL | B08 | B08-D12 | RES-2B |  |  |
|  | 30 | **TESTING AND COMMISSIONING** |  | 2014-04-02 | 2014-04-30 |  |  |  |  |  |  |  |  |  |  |  |  |  |  |  |  |  |  |  |  |
| DUKHCONP2BZ3ACTC8000 |  | Pre-Commissioning & Testing of AC Works | 25d | 2014-04-02 | 2014-04-30 | DUKHCONP2BZ3ARRF3660, DUKHCONP2BZ3MSEX5005, DUKHCONP2BZ3SLEX5110, DUKHCONP2BZ3ACRF4635, DUKHCONP2BZ3ARGF3095, DUKHCONP2BZ3AREL3680, DUKHCONP2BZ3SLEX5105, DUKHCONP2BZ3HDEX5100 | 38d |  | LABOR- SUBCONTRACTOR [500 h]; AC TECHNICIAN SK [1000 h] | 582 |  | 2BP3ACU100 | DUKHCON2BP3AC008000 | DUKHCONP2BZ3ACTC8000 | DH | CON | 2B | Z3 | TES |  | B08 | B08-D08 | RES-2B |  |  |
| DUKHCONP2BZ3ELTC8010 |  | Pre-Commissioning & Testing of Electrical Works | 25d | 2014-04-02 | 2014-04-30 | DUKHCONP2BZ3AREL3680, DUKHCONP2BZ3HDEX5100, DUKHCONP2BZ3ELGF4030, DUKHCONP2BZ3MSEX5005, DUKHCONP2BZ3ARGF3095, DUKHCONP2BZ3SLEX5110, DUKHCONP2BZ3ELGF4025, DUKHCONP2BZ3ARRF3660, DUKHCONP2BZ3ELGF4015, DUKHCONP2BZ3ELRF4075, DUKHCONP2BZ3SLEX5105 | 38d |  | LABOR- SUBCONTRACTOR [1000 h]; ELECTRICIANS SK [2000 h] | 19,374 |  | 2BP3ELE100 | DUKHCON2BP3EL008010 | DUKHCONP2BZ3ELTC8010 | DH | CON | 2B | Z3 | TES |  | B08 | B08-D09 | RES-2B |  |  |
| DUKHCONP2BZ3PLTC8005 |  | Pre-Commissioning & Testing of Plumbing Works | 25d | 2014-04-02 | 2014-04-30 | DUKHCONP2BZ3PLGF4320, DUKHCONP2BZ3ARRF3660, DUKHCONP2BZ3PLRF4350, DUKHCONP2BZ3AREL3680, DUKHCONP2BZ3WEEX5065, DUKHCONP2BZ3HDEX5100, DUKHCONP2BZ3MSEX5005, DUKHCONP2BZ3ARGF3095, DUKHCONP2BZ3SLEX5105, DUKHCONP2BZ3SLEX5110 | 38d |  | LABOR- SUBCONTRACTOR [1000 h]; MECHANICALS SK [2000 h] | 2,886 |  | 2BP3PLU100 | DUKHCON2BP3PL008005 | DUKHCONP2BZ3PLTC8005 | DH | CON | 2B | Z3 | TES |  | B08 | B08-D07 | RES-2B |  |  |
|  | 25 | **ZONE- 4 (3 Twin Villas)** |  | 2013-04-09 | 2014-05-18 |  |  |  |  |  |  |  |  |  |  |  |  |  |  |  |  |  |  |  |  |
|  | 10 | **STRUCTURAL WORKS** |  | 2013-04-09 | 2013-11-14 |  |  |  |  |  |  |  |  |  |  |  |  |  |  |  |  |  |  |  |  |
|  | 10 | **SUB STRUCTURE** |  | 2013-04-09 | 2013-08-14 |  |  |  |  |  |  |  |  |  |  |  |  |  |  |  |  |  |  |  |  |
|  | 10 | **UPTO GRADE SLAB** |  | 2013-04-09 | 2013-08-14 |  |  |  |  |  |  |  |  |  |  |  |  |  |  |  |  |  |  |  |  |
| DUKHCONP2BZ4STUG1000 |  | Footing Excavation | 25d | 2013-04-09 | 2013-05-07 | DUKHCONP2BZ3STUG1000 | 0d |  | LABOR - CIVIL [252 h]; EXCAVATION QTY [420 Cum]; LOADER [56 h]; POCLAIN [112 h]; TRUCK [56 h]; EQUIP OPERATORS [224 h] | 39,690 | 10 | 2BP4SBUG10 | DUKHCON2BP4STUG1000 | DUKHCONP2BZ4STUG1000 | DH | CON | 2B | Z4 | ST | SB | B08 | B08-D01 | RES-2B | UG |  |
| DUKHCONP2BZ4STUG1005 |  | Footing Antitermite | 20d | 2013-04-21 | 2013-05-13 | DUKHCONP2BZ4STUG1000 SS+5d, DUKHCONP2BZ4STUG1000 FF+5d | 0d |  | LABOR- SUBCONTRACTOR [246 h]; ANTITERMITE QTY [1638 sqft]; ANTITERMITE SK [656 h] | 4,913 | 15 | 2BP4SBUG15 | DUKHCON2BP4STUG1005 | DUKHCONP2BZ4STUG1005 | DH | CON | 2B | Z4 | ST | SB | B08 | B08-D01 | RES-2B | UG | REM |
| DUKHCONP2BZ4STUG1010 |  | Footing Blinding | 20d | 2013-04-23 | 2013-05-15 | DUKHCONP2BZ4STUG1005 SS+2d, DUKHCONP2BZ4STUG1005 FF+2d | 0d |  | LABOR - CIVIL [12.75 h]; BLINDING QTY [21 Sqm]; BLINDING MASON SK [17 h] | 529 | 15 | 2BP4SBUG18 | DUKHCON2BP4STUG1010 | DUKHCONP2BZ4STUG1010 | DH | CON | 2B | Z4 | ST | SB | B08 | B08-D02 | RES-2B | UG | REM |
| DUKHCONP2BZ4STUG1015 |  | Footing Waterproofing & Screed | 20d | 2013-04-29 | 2013-05-21 | DUKHCONP2BZ4STUG1010 SS+5d, DUKHCONP2BZ4STUG1010 FF+5d | 0d |  | SCREED MASON SK [141 h]; LABOR - CIVIL [53.25 h]; LABOR- SUBCONTRACTOR [78.75 h]; SCREED QTY [176 Sqm]; WATERPROOFING QTY [262 Sqm]; WATERPROOFING SPECIALIST SK [210 h] | 12,357 | 20 | 2BP4SBUG20 | DUKHCON2BP4STUG1015 | DUKHCONP2BZ4STUG1015 | DH | CON | 2B | Z4 | ST | SB | B08 | B08-D02 | RES-2B | UG | REM |
| DUKHCONP2BZ4STUG1020 |  | Construction of foundations | 20d | 2013-05-08 | 2013-05-30 | DUKHCONP2BZ4STUG1015 SS+8d, DUKHCONP2BZ3STUG1020, DUKHCONP2BZ4STUG1015 FF+8d | 0d |  | STEEL FIXERS SK [275 h]; CARPENTERS SK [440 h]; CONCRETE MASON SK [48 h]; LABOR - CIVIL [572.25 h]; REINFORCEMENT BARS QTY [3432 kg]; FORMWORK QTY [220 Sqm]; CONCRETE QTY [24 Cum] | 27,759 | 25 | 2BP4SBUG25 | DUKHCON2BP4STUG1020 | DUKHCONP2BZ4STUG1020 | DH | CON | 2B | Z4 | ST | SB | B08 | B08-D02 | RES-2B | UG | REM |
| DUKHCONP2BZ4STUG1025 |  | Construction of neck of columns | 20d | 2013-05-18 | 2013-06-09 | DUKHCONP2BZ4STUG1020 FF+8d, DUKHCONP2BZ4STUG1020 SS+8d | 0d |  | STEEL FIXERS SK [458 h]; CARPENTERS SK [312 h]; CONCRETE MASON SK [24 h]; LABOR - CIVIL [595.5 h]; REINFORCEMENT BARS QTY [5719 kg]; FORMWORK QTY [156 Sqm]; CONCRETE QTY [12 Cum] | 33,259 | 30 | 2BP4SBUG30 | DUKHCON2BP4STUG1025 | DUKHCONP2BZ4STUG1025 | DH | CON | 2B | Z4 | ST | SB | B08 | B08-D02 | RES-2B | UG | REM |
| DUKHCONP2BZ4STUG1030 |  | Waterproofing Footing & Neck Column | 20d | 2013-05-27 | 2013-06-18 | DUKHCONP2BZ4STUG1025 FF+8d, DUKHCONP2BZ4STUG1025 SS+8d | 0d |  | WATERPROOFING QTY [113 Sqm]; WATERPROOFING SPECIALIST SK [91 h]; LABOR- SUBCONTRACTOR [34.5 h] | 4,720 | 35 | 2BP4SBUG35 | DUKHCON2BP4STUG1030 | DUKHCONP2BZ4STUG1030 | DH | CON | 2B | Z4 | ST | SB | B08 | B08-D02 | RES-2B | UG | REM |
| DUKHCONP2BZ4STUG1035 |  | Backfilling Upto Grade Beam Bottom | 20d | 2013-06-08 | 2013-06-30 | DUKHCONP2BZ4STUG1030 FF+10d, DUKHCONP2BZ4STUG1030 SS+10d, DUKHCONP2BZ3STUG1035 | 0d |  | LABOR - CIVIL [162 h]; BACKFILLING QTY [672 Cum]; BOBCAT [300 h]; PLATE COMPACTOR [300 h]; TRUCK [60 h]; EQUIP OPERATORS [660 h] | 19,354 | 40 | 2BP4SBUG40 | DUKHCON2BP4STUG1035 | DUKHCONP2BZ4STUG1035 | DH | CON | 2B | Z4 | ST | SB | B08 | B08-D01 | RES-2B | UG |  |
| DUKHCONP2BZ4STUG1040 |  | Construction of Grade Beams | 25d | 2013-06-19 | 2013-07-17 | DUKHCONP2BZ4STUG1035 FF+10d, DUKHCONP2BZ3STUG1040, DUKHCONP2BZ4STUG1035 SS+10d | 0d |  | BLINDING MASON SK [74 h]; STEEL FIXERS SK [183 h]; CARPENTERS SK [1024 h]; CONCRETE MASON SK [48 h]; LABOR - CIVIL [996.75 h]; BLINDING QTY [92 Sqm]; REINFORCEMENT BARS QTY [2286 kg]; FORMWORK QTY [512 Sqm]; CONCRETE QTY [24 Cum] | 76,799 | 45 | 2BP4SBUG45 | DUKHCON2BP4STUG1040 | DUKHCONP2BZ4STUG1040 | DH | CON | 2B | Z4 | ST | SB | B08 | B08-D02 | RES-2B | UG | REM |
| DUKHCONP2BZ4STUG1045 |  | Construction of slab on grade | 25d | 2013-07-14 | 2013-08-14 | DUKHCONP2BZ4PLUG4300 SS+8d, DUKHCONP2BZ4STUG1040 FF+10d, DUKHCONP2BZ4STUG1040 SS+10d, DUKHCONP2BZ4PLUG4300 FF+8d | 0d |  | BLINDING MASON SK [508 h]; STEEL FIXERS SK [205 h]; CONCRETE MASON SK [168 h]; LABOR - CIVIL [660.75 h]; BLINDING QTY [634 Sqm]; CONCRETE QTY [84 Cum]; WELDED WIRE MESH [768 Sqm] | 100,548 | 50 | 2BP4SBUG50 | DUKHCON2BP4STUG1045 | DUKHCONP2BZ4STUG1045 | DH | CON | 2B | Z4 | ST | SB | B08 | B08-D02 | RES-2B | UG | REM |

Notes:
- DUKHCONP2BZ3WEEX5030: Expenses: P2B-External works within the Plot Curtilage 672
- DUKHCONP2BZ3WEEX5035: Expenses: P2B-External works within the Plot Curtilage 10260
- DUKHCONP2BZ3WEEX5040: Expenses: P2B-External works within the Plot Curtilage 11503
- DUKHCONP2BZ3WEEX5045: Expenses: P2B-External works within the Plot Curtilage 10062
- DUKHCONP2BZ3WEEX5050: Expenses: P2B-External works within the Plot Curtilage 32436
- DUKHCONP2BZ3WEEX5060: Expenses: P2B-External works within the Plot Curtilage 33315
- DUKHCONP2BZ3MSEX5335: Expenses: P2B-External works within the Plot Curtilage 25259
- DUKHCONP2BZ3WEEX5065: Expenses: P2B-Plumbing and Drainage works 450453
- DUKHCONP2BZ3WEEX5070: Expenses: P2B-Metal work 11118
- DUKHCONP2BZ3HDEX5090: Expenses: P2B-External works within the Plot Curtilage 18554
- DUKHCONP2BZ3HDEX5095: Expenses: P2B-External works within the Plot Curtilage 5004
- DUKHCONP2BZ3HDEX5100: Expenses: P2B-External works within the Plot Curtilage 23084
- DUKHCONP2BZ3SLEX5105: Expenses: P2B-External works within the Plot Curtilage 36162
- DUKHCONP2BZ3SLEX5110: Expenses: P2B-External works within the Plot Curtilage 81432
- DUKHCONP2BZ3ACTC8000: Expenses: P2B-Air-conditioning and Ventilation works 582
- DUKHCONP2BZ3ELTC8010: Expenses: P2B-Electrical Installations 19374
- DUKHCONP2BZ3PLTC8005: Expenses: P2B-Plumbing and Drainage works 2886
- DUKHCONP2BZ4STUG1000: Expenses: P2B-Excavation and Earth Works 39690
- DUKHCONP2BZ4STUG1005: Expenses: P2B-Excavation and Earth Works 4913
- DUKHCONP2BZ4STUG1010: Expenses: P2B-Concrete Works 529
- DUKHCONP2BZ4STUG1015: Expenses: P2B-Concrete Works 12357
- DUKHCONP2BZ4STUG1020: Expenses: P2B-Concrete Works 27759
- DUKHCONP2BZ4STUG1025: Expenses: P2B-Concrete Works 33259
- DUKHCONP2BZ4STUG1030: Expenses: P2B-Concrete Works 4720
- DUKHCONP2BZ4STUG1035: Expenses: P2B-Excavation and Earth Works 19354
- DUKHCONP2BZ4STUG1040: Expenses: P2B-Concrete Works 76799
- DUKHCONP2BZ4STUG1045: Expenses: P2B-Concrete Works 100548

| ID | WBS | Activity | Duration | Start | Finish | Predecessors | Total float | Free float | Resources | Cost | CODE | rem | P3 ACTID | P6 ID (old) | NP61D | PROJECT | PHASES | PACKAGE | PART | ELEMENTS | STEP | FLOORS | BILL NOS | BILL DIVISION | RES PACK | EXECUTER |
| --- | --- | --- | --- | --- | --- | --- | --- | --- | --- | --- | --- | --- | --- | --- | --- | --- | --- | --- | --- | --- | --- | --- | --- | --- | --- | --- |
|  | 15 | **SUPERSTRUCTURE** |  | 2013-07-31 | 2013-11-14 |  |  |  |  |  |  |  |  |  |  |  |  |  |  |  |  |  |  |  |  |  |
|  | 10 | **GROUND FLOOR** |  | 2013-07-31 | 2013-09-24 |  |  |  |  |  |  |  |  |  |  |  |  |  |  |  |  |  |  |  |  |  |
| DUKHCONP2BZ4STGF2000 |  | Column-Rebar & Formwork | 20d | 2013-07-31 | 2013-08-26 | DUKHCONP2BZ3STGF2000, DUKHCONP2BZ4STUG1045 FF+10d, DUKHCONP2BZ4STUG1045 SS+10d | 0d |  | STEEL FIXERS SK [151 h]; CARPENTERS SK [720 h]; LABOR - CIVIL [653.25 h]; REINFORCEMENT BARS QTY [1883 kg]; FORMWORK QTY [360 Sqm] | 26,498 | 10 | REM | 2BP4SPGF10 | DUKHCON2BP4STGF2000 | DUKHCONP2BZ4STGF2000 | DH | CON | 2B | Z4 | ST | SP | GF | B08 | B08-D02 | RES-2B |  |
| DUKHCONP2BZ4STGF2005 |  | Column-Concrete | 15d | 2013-08-14 | 2013-08-31 | DUKHCONP2BZ4STGF2000 SS+7d, DUKHCONP2BZ4STGF2000 FF+4d | 0d |  | CONCRETE MASON SK [60 h]; LABOR - CIVIL [45 h]; CONCRETE QTY [30 Cum] | 8,613 | 15 | REM | 2BP4SPGF15 | DUKHCON2BP4STGF2005 | DUKHCONP2BZ4STGF2005 | DH | CON | 2B | Z4 | ST | SP | GF | B08 | B08-D02 | RES-2B |  |
| DUKHCONP2BZ4STGF2010 |  | Beam, Stairs ,Slab-Rebar & Formwork | 25d | 2013-08-22 | 2013-09-19 | DUKHCONP2BZ4STGF2005 FF+7d, DUKHCONP2BZ4STGF2005 SS+7d | 0d |  | STEEL FIXERS SK [1312 h]; CARPENTERS SK [2160 h]; LABOR - CIVIL [2604 h]; REINFORCEMENT BARS QTY [16392 kg]; FORMWORK QTY [1080 Sqm] | 156,724 | 20 | REM | 2BP4SPGF20 | DUKHCON2BP4STGF2010 | DUKHCONP2BZ4STGF2010 | DH | CON | 2B | Z4 | ST | SP | GF | B08 | B08-D02 | RES-2B |  |
| DUKHCONP2BZ4STGF2015 |  | Beam, Stairs ,Slab-Concrete | 15d | 2013-09-08 | 2013-09-24 | DUKHCONP2BZ4STGF2010 FF+4d, DUKHCONP2BZ4STGF2010 SS+10d, DUKHCONP2BZ3STGF2015 | 0d |  | CONCRETE MASON SK [744 h]; LABOR - CIVIL [558 h]; CONCRETE QTY [372 Cum] | 114,669 | 25 | REM | 2BP4SPGF25 | DUKHCON2BP4STGF2015 | DUKHCONP2BZ4STGF2015 | DH | CON | 2B | Z4 | ST | SP | GF | B08 | B08-D02 | RES-2B |  |
|  | 20 | **ROOF** |  | 2013-10-14 | 2013-11-14 |  |  |  |  |  |  |  |  |  |  |  |  |  |  |  |  |  |  |  |  |  |
| DUKHCONP2BZ4STRF2060 |  | Construction of Parapets | 20d | 2013-10-14 | 2013-11-07 | DUKHCONP2BZ4STGF2015 SS+7d, DUKHCONP2BZ3STRF2060, DUKHCONP2BZ4STGF2015 FF+7d | 19d | 0d | STEEL FIXERS SK [46 h]; CARPENTERS SK [228 h]; CONCRETE MASON SK [24 h]; LABOR - CIVIL [223.5 h]; REINFORCEMENT BARS QTY [565 kg]; FORMWORK QTY [114 Sqm]; CONCRETE QTY [12 Cum] | 13,038 | 30 | REM | 2BP4SPRF30 | DUKHCON2BP4STRF2060 | DUKHCONP2BZ4STRF2060 | DH | CON | 2B | Z4 | ST | SP | RF | B08 | B08-D02 | RES-2B |  |
| DUKHCONP2BZ4STRF2065 |  | Construction of up stands/Plinth | 20d | 2013-10-23 | 2013-11-14 | DUKHCONP2BZ4STRF2060 FF+6d, DUKHCONP2BZ4STRF2060 SS+6d | 31d | 5d | CARPENTERS SK [36 h]; CONCRETE MASON SK [12 h]; LABOR - CIVIL [36 h]; FORMWORK QTY [18 Sqm]; CONCRETE QTY [6 Cum] | 3,048 | 35 | REM | 2BP4SPRF35 | DUKHCON2BP4STRF2065 | DUKHCONP2BZ4STRF2065 | DH | CON | 2B | Z4 | ST | SP | RF | B08 | B08-D02 | RES-2B |  |
|  | 15 | **FINISHING WORKS** |  | 2013-10-02 | 2014-04-19 |  |  |  |  |  |  |  |  |  |  |  |  |  |  |  |  |  |  |  |  |  |
|  | 10 | **INTERNAL FINISHES** |  | 2013-10-02 | 2014-04-19 |  |  |  |  |  |  |  |  |  |  |  |  |  |  |  |  |  |  |  |  |  |
|  | 10 | **GROUND FLOOR** |  | 2013-10-02 | 2014-04-19 |  |  |  |  |  |  |  |  |  |  |  |  |  |  |  |  |  |  |  |  |  |
| DUKHCONP2BZ4ARGF3000 |  | Block work | 25d | 2013-10-02 | 2013-11-02 | DUKHCONP2BZ4STGF2015 SS+21d, DUKHCONP2BZ3ARGF3000, DUKHCONP2BZ4STGF2015 FF+21d | 0d |  | BLOCK QTY [1824 Sqm]; BLOCK MASON SK [3648 h]; LABOR - CIVIL [2052 h] | 145,094 | 10 | REM | 2BP4IFGF10 | DUKHCON2BP4ARGF3000 | DUKHCONP2BZ4ARGF3000 | DH | CON | 2B | Z4 | FIN | IF | GF | B08 | B08-D03 | RES-2B |  |
| DUKHCONP2BZ4ARGF3005 |  | Plastering work | 25d | 2013-10-28 | 2013-11-25 | DUKHCONP2BZ4PLGF4305 FF+8d, DUKHCONP2BZ4ELGF4000 SS+5d, DUKHCONP2BZ3ARGF3005, DUKHCONP2BZ4PLGF4305 SS+8d, DUKHCONP2BZ4ARGF3000 FF+8d, DUKHCONP2BZ4ARGF3000 SS+8d, DUKHCONP2BZ4ELGF4000 FF+5d | 0d |  | PLASTER MASON SK [1824 h]; LABOR - CIVIL [1026 h]; PLASTER QTY [1140 Sqm] | 14,820 | 12 | REM | 2BP4IFGF12 | DUKHCON2BP4ARGF3005 | DUKHCONP2BZ4ARGF3005 | DH | CON | 2B | Z4 | FIN | IF | GF | B08 | B08-D10 | RES-2B |  |
| DUKHCONP2BZ4ARGF3010 |  | Flooring screed | 20d | 2013-11-09 | 2013-12-01 | DUKHCONP2BZ3ARGF3010, DUKHCONP2BZ4ARGF3005 FF+5d, DUKHCONP2BZ4ARGF3005 SS+5d | 25d | 5d | SCREED MASON SK [461 h]; LABOR - CIVIL [173.25 h]; FLOORING SCREED QTY [576 Sqm] | 19,008 | 15 | REM | 2BP4IFGF15 | DUKHCON2BP4ARGF3010 | DUKHCONP2BZ4ARGF3010 | DH | CON | 2B | Z4 | FIN | IF | GF | B08 | B08-D10 | RES-2B |  |
| DUKHCONP2BZ4ARGF3015 |  | Wet area waterproofing & Protection Screed | 20d | 2013-11-13 | 2013-12-05 | DUKHCONP2BZ4ARGF3005 SS+9d, DUKHCONP2BZ4ARGF3005 FF+9d | 5d | 0d | LABOR- SUBCONTRACTOR [24 h]; WETAREA WATERPROOFING QTY [78 Sqm]; WATERPROOFING SPECIALIST SK [63 h] | 2,652 | 18 | REM | 2BP4IFGF18 | DUKHCON2BP4ARGF3015 | DUKHCONP2BZ4ARGF3015 | DH | CON | 2B | Z4 | FIN | IF | GF | B08 | B08-D10 | RES-2B |  |
| DUKHCONP2BZ4ARGF3020 |  | Ceramic Wall Tiling | 15d | 2013-12-02 | 2013-12-19 | DUKHCONP2BZ4ARGF3015 SS+11d, DUKHCONP2BZ4PLGF4310 FF+5d, DUKHCONP2BZ4PLGF4305 FF+11d, DUKHCONP2BZ4PLGF4305 SS+11d, DUKHCONP2BZ4PLGF4310 SS+5d, DUKHCONP2BZ4ARGF3015 FF+11d | 5d | 0d | TILE MASON SK [648 h]; LABOR- SUBCONTRACTOR [364.5 h]; CERAMIC WALL TILE QTY [324 Sqm] | 32,379 | 24 | REM | 2BP4IFGF24 | DUKHCON2BP4ARGF3020 | DUKHCONP2BZ4ARGF3020 | DH | CON | 2B | Z4 | FIN | IF | GF | B08 | B08-D10 | RES-2B |  |
| DUKHCONP2BZ4ARGF3030 |  | Paint First coat | 20d | 2013-12-17 | 2014-01-09 | DUKHCONP2BZ3ARGF3030, DUKHCONP2BZ4ARGF3005 FF+10d, DUKHCONP2BZ4ARGF3005 SS+10d | 6d | 0d | LABOR- SUBCONTRACTOR [495 h]; FIRSTCOAT PAINT QTY [1650 Sqm]; PAINTERS SK [1320 h] | 5,580 | 21 | REM | 2BP4IFGF21 | DUKHCON2BP4ARGF3030 | DUKHCONP2BZ4ARGF3030 | DH | CON | 2B | Z4 | FIN | IF | GF | B08 | B08-D11 | RES-2B | ENT |
| DUKHCONP2BZ4ARGF3025 |  | Porcelain Tile flooring | 20d | 2013-12-19 | 2014-01-11 | DUKHCONP2BZ4ARGF3020 FF+14d, DUKHCONP2BZ3ARGF3025, DUKHCONP2BZ4ARGF3010 FF+14d, DUKHCONP2BZ4ARGF3010 SS+14d, DUKHCONP2BZ4ARGF3020 SS+14d | 5d | 0d | TILE MASON SK [659 h]; LABOR- SUBCONTRACTOR [371.25 h]; PORCELAIN FLOORING QTY [576 Sqm] | 51,620 | 27 | REM | 2BP4IFGF27 | DUKHCON2BP4ARGF3025 | DUKHCONP2BZ4ARGF3025 | DH | CON | 2B | Z4 | FIN | IF | GF | B08 | B08-D10 | RES-2B |  |
| DUKHCONP2BZ4ARGF3045 |  | Fixing of Suspension systems | 15d | 2014-01-11 | 2014-01-27 | DUKHCONP2BZ4ARGF3030 SS+14d, DUKHCONP2BZ4ARGF3030 FF+14d, DUKHCONP2BZ4ARGF3025 FF+14d, DUKHCONP2BZ4ELGF4010 FF+14d, DUKHCONP2BZ4ELGF4010 SS+14d, DUKHCONP2BZ4ARGF3025 SS+14d | 5d | 0d | LABOR- SUBCONTRACTOR [235.5 h]; SUSPENSION QTY [522 Sqm]; FALSE CEILING SKILLED SK [418 h] | 10,230 | 39 | REM | 2BP4IFGF39 | DUKHCON2BP4ARGF3045 | DUKHCONP2BZ4ARGF3045 | DH | CON | 2B | Z4 | FIN | IF | GF | B08 | B08-D10 | RES-2B | SUS |
| DUKHCONP2BZ4ARGF3060 |  | Gypsum board false ceiling | 20d | 2014-01-27 | 2014-02-19 | DUKHCONP2BZ4ACGF4600 FF+14d, DUKHCONP2BZ3ARGF3060, DUKHCONP2BZ4ARGF3045 FF+14d, DUKHCONP2BZ4ACGF4600 SS+14d, DUKHCONP2BZ4ARGF3045 SS+14d | 5d | 0d | LABOR- SUBCONTRACTOR [235.5 h]; FALSE CEILING QTY [522 Sqm]; FALSE CEILING SKILLED SK [418 h] | 30,024 | 45 | REM | 2BP4IFGF45 | DUKHCON2BP4ARGF3060 | DUKHCONP2BZ4ARGF3060 | DH | CON | 2B | Z4 | FIN | IF | GF | B08 | B08-D10 | RES-2B | GYP |
| DUKHCONP2BZ4ARGF3035 |  | Slate Tile Flooring & Skirting | 18d | 2014-02-01 | 2014-02-22 | DUKHCONP2BZ4ARGF3010 FF+13d, DUKHCONP2BZ4ARGF3025 SS+13d, DUKHCONP2BZ3ARGF3035, DUKHCONP2BZ4ARGF3010 SS+13d, DUKHCONP2BZ4ARGF3025 FF+13d | 13d | 0d | TILE MASON SK [1008 h]; LABOR- SUBCONTRACTOR [567 h]; SLATE TILE QTY [630 Sqm] | 107,729 | 33 | REM | 2BP4IFGF33 | DUKHCON2BP4ARGF3035 | DUKHCONP2BZ4ARGF3035 | DH | CON | 2B | Z4 | FIN | IF | GF | B08 | B08-D10 | RES-2B |  |
| DUKHCONP2BZ4ARGF3065 |  | Wooden door | 15d | 2014-02-13 | 2014-03-02 | DUKHCONP2BZ4ARGF3035 FF+7d, DUKHCONP2BZ4ARGF3035 SS+7d, DUKHCONP2BZ4ARGF3060 SS+5d, DUKHCONP2BZ4ARGF3060 FF+5d | 17d | 0d | WOODEN DOOR QTY [36 ea]; DOOR ERECTOR SK [144 h]; LABOR- SUBCONTRACTOR [54 h] | 113,057 | 48 | REM | 2BP4IFGF48 | DUKHCON2BP4ARGF3065 | DUKHCONP2BZ4ARGF3065 | DH | CON | 2B | Z4 | FIN | IF | GF | B08 | B08-D05 | RES-2B |  |
| DUKHCONP2BZ4ARGF3075 |  | Carpentry & Joinery Works | 18d | 2014-02-19 | 2014-03-11 | DUKHCONP2BZ4ARGF3065 FF+5d, DUKHCONP2BZ4ARGF3065 SS+5d, DUKHCONP2BZ3ARGF3075 | 17d | 3d | LABOR- SUBCONTRACTOR [144 h]; CABINET QTY [36 ea]; WARDROBE QTY [12 ea]; JOINERY WORK SK [384 h] | 88,572 | 57 | REM | 2BP4IFGF57 | DUKHCON2BP4ARGF3075 | DUKHCONP2BZ4ARGF3075 | DH | CON | 2B | Z4 | FIN | IF | GF | B08 | B08-D05 | RES-2B |  |
| DUKHCONP2BZ4ARGF3040 |  | Cobble Tile flooring | 15d | 2014-02-20 | 2014-03-09 | DUKHCONP2BZ4ARGF3010 SS+13d, DUKHCONP2BZ3ARGF3040, DUKHCONP2BZ4ARGF3010 FF+13d, DUKHCONP2BZ4ARGF3035 FF+13d, DUKHCONP2BZ4ARGF3025 FF+13d, DUKHCONP2BZ4ARGF3035 SS+13d, DUKHCONP2BZ4ARGF3025 SS+13d | 20d | 3d | TILE MASON SK [192 h]; LABOR- SUBCONTRACTOR [108 h]; COBBLE STONE QTY [120 Sqm] | 10,008 | 30 | REM | 2BP4IFGF30 | DUKHCON2BP4ARGF3040 | DUKHCONP2BZ4ARGF3040 | DH | CON | 2B | Z4 | FIN | IF | GF | B08 | B08-D10 | RES-2B |  |
| DUKHCONP2BZ4ARGF3080 |  | Aluminum windows | 18d | 2014-03-03 | 2014-03-23 | DUKHCONP2BZ4ARGF3065 | 31d | 8d | LABOR- SUBCONTRACTOR [36 h]; ALUMINIUM WINDOWS QTY [36 ea]; WINDOW ERECTOR SK [96 h] | 27,398 | 54 | REM | 2BP4IFGF54 | DUKHCON2BP4ARGF3080 | DUKHCONP2BZ4ARGF3080 | DH | CON | 2B | Z4 | FIN | IF | GF | B08 | B08-D06 | RES-2B |  |
| DUKHCONP2BZ4ARGF3090 |  | Installation of Granite Counter Top | 15d | 2014-03-16 | 2014-04-01 | DUKHCONP2BZ3ARGF3090, DUKHCONP2BZ4ARGF3075 SS+7d, DUKHCONP2BZ4ARGF3075 FF+6d | 8d | 0d | GRANITE MASON SK [72 h]; LABOR- SUBCONTRACTOR [27 h]; GRANITE COUNTER TOP QTY [18 ea] | 21,356 | 60 | REM | 2BP4IFGF60 | DUKHCON2BP4ARGF3090 | DUKHCONP2BZ4ARGF3090 | DH | CON | 2B | Z4 | FIN | IF | GF | B08 | B08-D10 | RES-2B |  |
| DUKHCONP2BZ4ARGF3095 |  | Final Painting | 25d | 2014-03-22 | 2014-04-19 | DUKHCONP2BZ4ACGF4610 SS+10d, DUKHCONP2BZ4ARGF3040 SS+13d, DUKHCONP2BZ4ARGF3080 SS+8d, DUKHCONP2BZ4ACGF4610 FF+10d, DUKHCONP2BZ4ARGF3030 FF+10d, DUKHCONP2BZ4ARGF3030 SS+10d, DUKHCONP2BZ4ARGF3040 FF+13d, DUKHCONP2BZ4ARGF3065, DUKHCONP2BZ4ARGF3035 FF+13d, DUKHCONP2BZ4ARGF3035 SS+13d, DUKHCONP2BZ4ARGF3090 SS+5d, DUKHCONP2BZ4ARGF3080 FF+8d, DUKHCONP2BZ4ARGF3060 SS+8d, DUKHCONP2BZ4ARGF3060 FF+8d, DUKHCONP2BZ4ARGF3090 FF+5d | 23d | 0d | LABOR- SUBCONTRACTOR [495 h]; PAINT QTY [1650 Sqm]; PAINTERS SK [1320 h] | 23,267 | 66 | REM | 2BP4IFGF66 | DUKHCON2BP4ARGF3095 | DUKHCONP2BZ4ARGF3095 | DH | CON | 2B | Z4 | FIN | IF | GF | B08 | B08-D11 | RES-2B | PNT |

Notes:
- DUKHCONP2BZ4STGF2000: Expenses: P2B-Concrete Works 26498
- DUKHCONP2BZ4STGF2005: Expenses: P2B-Concrete Works 8613
- DUKHCONP2BZ4STGF2010: Expenses: P2B-Concrete Works 156724
- DUKHCONP2BZ4STGF2015: Expenses: P2B-Concrete Works 114669
- DUKHCONP2BZ4STRF2060: Expenses: P2B-Concrete Works 13038
- DUKHCONP2BZ4STRF2065: Expenses: P2B-Concrete Works 3048
- DUKHCONP2BZ4ARGF3000: Expenses: P2B-Block work 145094
- DUKHCONP2BZ4ARGF3005: Expenses: P2B-Finishes 14820
- DUKHCONP2BZ4ARGF3010: Expenses: P2B-Finishes 19008
- DUKHCONP2BZ4ARGF3015: Expenses: P2B-Finishes 2652
- DUKHCONP2BZ4ARGF3020: Expenses: P2B-Finishes 32379
- DUKHCONP2BZ4ARGF3030: Expenses: P2B-Painting and Decorating 5580
- DUKHCONP2BZ4ARGF3025: Expenses: P2B-Finishes 51620
- DUKHCONP2BZ4ARGF3045: Expenses: P2B-Finishes 10230
- DUKHCONP2BZ4ARGF3060: Expenses: P2B-Finishes 30024
- DUKHCONP2BZ4ARGF3035: Expenses: P2B-Finishes 107729
- DUKHCONP2BZ4ARGF3065: Expenses: P2B-Carpentry and Joinery 113057
- DUKHCONP2BZ4ARGF3075: Expenses: P2B-Carpentry and Joinery 88572
- DUKHCONP2BZ4ARGF3040: Expenses: P2B-Finishes 10008
- DUKHCONP2BZ4ARGF3080: Expenses: P2B-Metal work 27398
- DUKHCONP2BZ4ARGF3090: Expenses: P2B-Finishes 21356
- DUKHCONP2BZ4ARGF3095: Expenses: P2B-Painting and Decorating 23267

| ID | WBS | Activity | Duration | Start | Finish | Predecessors | Total float | Free float | Resources | Cost | CODE | P3 ACTID | P6 ID (old) | NP61D | PROJECT | PHASES | PACKAGE | PART | ELEMENTS | STEP | FLOORS | BILL NOS | BILL DIVISION | RES PACK | rem |
| --- | --- | --- | --- | --- | --- | --- | --- | --- | --- | --- | --- | --- | --- | --- | --- | --- | --- | --- | --- | --- | --- | --- | --- | --- | --- |
|  | 15 | **EXTERNAL FINISHES** |  | 2013-11-30 | 2014-03-01 |  |  |  |  |  |  |  |  |  |  |  |  |  |  |  |  |  |  |  |  |
|  | 10 | **ROOF** |  | 2013-11-30 | 2014-01-30 |  |  |  |  |  |  |  |  |  |  |  |  |  |  |  |  |  |  |  |  |
| DUKHCONP2BZ4ARRF3625 |  | Laying of Pitched Roof | 25d | 2013-11-30 | 2013-12-29 | DUKHCONP2BZ4STRF2060 SS+10d, DUKHCONP2BZ4STRF2065 FF+10d, DUKHCONP2BZ3ARRF3625, DUKHCONP2BZ4STRF2060 FF+10d, DUKHCONP2BZ4STRF2065 SS+10d | 30d | 0d | INTERLOCK MASON SK [184 h]; LABOR- SUBCONTRACTOR [72 h]; ROOF TILES QTY [234 Sqm] | 120,042 | 10 | 2BP4EFRF05 | DUKHCON2BP4ARRF3625 | DUKHCONP2BZ4ARRF3625 | DH | CON | 2B | Z4 | FIN | EF | RF | B08 | B08-D04 | RES-2B |  |
| DUKHCONP2BZ4ARRF3630 |  | Leveling Screed for Waterproofing | 18d | 2013-12-14 | 2014-01-04 | DUKHCONP2BZ4ARRF3625 SS+5d, DUKHCONP2BZ4ARRF3625 FF+5d | 30d | 0d | SCREED MASON SK [125 h]; LABOR- SUBCONTRACTOR [70.5 h]; ROOF WP SCREED QTY [312 Sqm] | 16,134 | 15 | 2BP4EFRF10 | DUKHCON2BP4ARRF3630 | DUKHCONP2BZ4ARRF3630 | DH | CON | 2B | Z4 | FIN | EF | RF | B08 | B08-D04 | RES-2B | REM |
| DUKHCONP2BZ4ARRF3635 |  | Laying of Waterproofing Membrane | 18d | 2013-12-21 | 2014-01-09 | DUKHCONP2BZ4ARRF3630 FF+5d, DUKHCONP2BZ4ARRF3630 SS+5d | 30d | 0d | LABOR- SUBCONTRACTOR [197.25 h]; ROOF WP MEMBRANE QTY [984 Sqm]; WATERPROOFING SPECIALIST SK [525 h] | 25,318 | 20 | 2BP4EFRF15 | DUKHCON2BP4ARRF3635 | DUKHCONP2BZ4ARRF3635 | DH | CON | 2B | Z4 | FIN | EF | RF | B08 | B08-D04 | RES-2B | REM |
| DUKHCONP2BZ4ARRF3640 |  | Installation of Insulation & Protection | 18d | 2013-12-25 | 2014-01-14 | DUKHCONP2BZ3ARRF3640, DUKHCONP2BZ4ARRF3635 FF+4d, DUKHCONP2BZ4ARRF3635 SS+4d | 30d | 0d | LABOR- SUBCONTRACTOR [93.75 h]; ROOF WP INSULATION QTY [624 Sqm]; WATERPROOFING SPECIALIST SK [250 h] | 15,264 | 25 | 2BP4EFRF20 | DUKHCON2BP4ARRF3640 | DUKHCONP2BZ4ARRF3640 | DH | CON | 2B | Z4 | FIN | EF | RF | B08 | B08-D04 | RES-2B | REM |
| DUKHCONP2BZ4ARRF3645 |  | Lime Stone Chips & Paving slab Installation | 18d | 2014-01-02 | 2014-01-22 | DUKHCONP2BZ4ARRF3640 SS+7d, DUKHCONP2BZ4ARRF3640 FF+7d | 30d | 0d | TILE MASON SK [125 h]; LABOR- SUBCONTRACTOR [94.5 h]; LIME STONE QTY [312 Sqm]; PRECAST PAVING SLAB QTY [312 Sqm]; PRE CAST CONCRETE SK [125 h] | 29,640 | 35 | 2BP4EFRF25 | DUKHCON2BP4ARRF3645 | DUKHCONP2BZ4ARRF3645 | DH | CON | 2B | Z4 | FIN | EF | RF | B08 | B08-D04 | RES-2B | REM |
| DUKHCONP2BZ4ARRF3660 |  | Installation of Access Ladder | 20d | 2014-01-08 | 2014-01-30 | DUKHCONP2BZ4ARRF3645 SS+5d, DUKHCONP2BZ4ARRF3645 FF+5d, DUKHCONP2BZ3ARRF3660 | 59d | 5d | LABOR- SUBCONTRACTOR [36 h]; LADDER QTY [12 ea]; LADDER ERECTOR SK [96 h] | 12,566 | 40 | 2BP4EFRF40 | DUKHCON2BP4ARRF3660 | DUKHCONP2BZ4ARRF3660 | DH | CON | 2B | Z4 | FIN | EF | RF | B08 | B08-D06 | RES-2B | REM |
|  | 15 | **ELEVATION** |  | 2014-01-14 | 2014-03-01 |  |  |  |  |  |  |  |  |  |  |  |  |  |  |  |  |  |  |  |  |
| DUKHCONP2BZ4AREL3665 |  | External Plastering | 25d | 2014-01-14 | 2014-02-12 | DUKHCONP2BZ4STRF2065 SS+7d, DUKHCONP2BZ3AREL3665, DUKHCONP2BZ4STRF2065 FF+7d, DUKHCONP2BZ4ARRF3645 SS+10d, DUKHCONP2BZ4ARRF3645 FF+10d | 30d | 0d | PLASTER MASON SK [2568 h]; LABOR - CIVIL [1444.5 h]; EXTERNAL PLASTER QTY [1284 Sqm] | 30,816 | 10 | 2BP4EFEL10 | DUKHCON2BP4AREL3665 | DUKHCONP2BZ4AREL3665 | DH | CON | 2B | Z4 | FIN | EF | EL | B08 | B08-D10 | RES-2B | REM |
| DUKHCONP2BZ4AREL3680 |  | External Painting | 20d | 2014-02-05 | 2014-03-01 | DUKHCONP2BZ3AREL3680, DUKHCONP2BZ4AREL3665 FF+14d, DUKHCONP2BZ4ARRF3660 FF+10d, DUKHCONP2BZ4AREL3665 SS+14d | 45d | 5d | LABOR- SUBCONTRACTOR [384 h]; PAINT QTY [1284 Sqm]; PAINTERS SK [1024 h] | 30,274 | 20 | 2BP4EFEL20 | DUKHCON2BP4AREL3680 | DUKHCONP2BZ4AREL3680 | DH | CON | 2B | Z4 | FIN | EF | EL | B08 | B08-D11 | RES-2B |  |
|  | 20 | **MEP WORKS** |  | 2013-07-04 | 2014-04-14 |  |  |  |  |  |  |  |  |  |  |  |  |  |  |  |  |  |  |  |  |
|  | 10 | **ELECTRICAL WORKS** |  | 2013-10-16 | 2014-04-07 |  |  |  |  |  |  |  |  |  |  |  |  |  |  |  |  |  |  |  |  |
|  | 10 | **GROUND FLOOR** |  | 2013-10-16 | 2014-04-07 |  |  |  |  |  |  |  |  |  |  |  |  |  |  |  |  |  |  |  |  |
| DUKHCONP2BZ4ELGF4000 |  | Fixing of wall conduits & switch socket boxes | 20d | 2013-10-16 | 2013-11-10 | DUKHCONP2BZ4ARGF3000 FF+7d, DUKHCONP2BZ4ARGF3000 SS+7d | 3d |  | LABOR- SUBCONTRACTOR [102 h]; SOCKET BOXES QTY [222 ea]; CODUITS QTY [222 lm]; ELECTRICIANS SK [492.8 h] | 23,814 | 10 | 2BP4EWGF10 | DUKHCON2BP4ELGF4000 | DUKHCONP2BZ4ELGF4000 | DH | CON | 2B | Z4 | MEP | EW | GF | B08 | B08-D09 | RES-2B |  |
| DUKHCONP2BZ4ELGF4005 |  | Cable tray & trunking installation | 20d | 2013-12-01 | 2013-12-24 | DUKHCONP2BZ4ELGF4000 FF+7d, DUKHCONP2BZ4ELGF4000 SS+7d, DUKHCONP2BZ3ELGF4005 | 13d | 0d | LABOR- SUBCONTRACTOR [432 h]; ELECTRICIANS SK [1612.8 h]; CABLE TRAY QTY [288 lm] | 9,900 | 15 | 2BP4EWGF15 | DUKHCON2BP4ELGF4005 | DUKHCONP2BZ4ELGF4005 | DH | CON | 2B | Z4 | MEP | EW | GF | B08 | B08-D09 | RES-2B |  |
| DUKHCONP2BZ4ELGF4010 |  | Installation of wiring & Main Cabling | 20d | 2013-12-09 | 2014-01-01 | DUKHCONP2BZ4ELGF4005 FF+7d, DUKHCONP2BZ4ELGF4005 SS+7d | 13d | 8d | LABOR- SUBCONTRACTOR [90 h]; ELECTRICIANS SK [324.8 h]; CABLE QTY [288 lm] | 71,442 | 20 | 2BP4EWGF20 | DUKHCON2BP4ELGF4010 | DUKHCONP2BZ4ELGF4010 | DH | CON | 2B | Z4 | MEP | EW | GF | B08 | B08-D09 | RES-2B |  |
| DUKHCONP2BZ4ELGF4020 |  | Installation of DBS,MCCB Accessories. | 20d | 2014-02-04 | 2014-02-27 | DUKHCONP2BZ4ARGF3060 FF+7d, DUKHCONP2BZ4ELGF4010 FF+5d, DUKHCONP2BZ3ELGF4020, DUKHCONP2BZ4ELGF4010 SS+5d, DUKHCONP2BZ4ARGF3060 SS+7d | 14d | 0d | LABOR- SUBCONTRACTOR [36 h]; ELECTRICIANS SK [134.4 h]; MCCB QTY [60 ea]; DB QTY [6 ea] | 23,786 | 25 | 2BP4EWGF25 | DUKHCON2BP4ELGF4020 | DUKHCONP2BZ4ELGF4020 | DH | CON | 2B | Z4 | MEP | EW | GF | B08 | B08-D09 | RES-2B |  |
| DUKHCONP2BZ4ELGF4025 |  | Installation of Lighting fixtures & Accessories | 20d | 2014-02-17 | 2014-03-11 | DUKHCONP2BZ4ARGF3060 SS+10d, DUKHCONP2BZ4ARGF3060 FF+10d, DUKHCONP2BZ4ELGF4020 FF+10d, DUKHCONP2BZ4ELGF4020 SS+10d | 14d | 0d | LABOR- SUBCONTRACTOR [138 h]; ELECTRICIANS SK [257.6 h]; LIGHTS QTY [114 ea] | 99,288 | 30 | 2BP4EWGF30 | DUKHCON2BP4ELGF4025 | DUKHCONP2BZ4ELGF4025 | DH | CON | 2B | Z4 | MEP | EW | GF | B08 | B08-D09 | RES-2B |  |
| DUKHCONP2BZ4ELGF4030 |  | Installation of Telephone System | 20d | 2014-02-17 | 2014-03-11 | DUKHCONP2BZ4ARGF3060 SS+5d, DUKHCONP2BZ4ELGF4020 SS+10d, DUKHCONP2BZ4ARGF3060 FF+5d, DUKHCONP2BZ3ELGF4030, DUKHCONP2BZ4MSEX5010, DUKHCONP2BZ4ELGF4020 FF+10d | 17d | 3d | LABOR- SUBCONTRACTOR [18 h]; ELECTRICIANS SK [134.4 h]; TELEPHONE SOCKETS QTY [12 ea] | 43,206 | 40 | 2BP4EWGF40 | DUKHCON2BP4ELGF4030 | DUKHCONP2BZ4ELGF4030 | DH | CON | 2B | Z4 | MEP | EW | GF | B08 | B08-D09 | RES-2B |  |
| DUKHCONP2BZ4ELGF4015 |  | Install. of CAMS & Fire Fighting Accessories | 20d | 2014-03-16 | 2014-04-07 | DUKHCONP2BZ4ARGF3060 FF+14d, DUKHCONP2BZ3ELGF4015, DUKHCONP2BZ4ARGF3060 SS+14d | 13d | 0d | SMOKE DETECTOR POINTS QTY [126 ea]; FIRE EXTINGUISHER QTY [6 ea]; MECHANICALS SK [712.8 h]; LABOR- SUBCONTRACTOR [396 h] | 53,272 | 35 | 2BP4EWGF35 | DUKHCON2BP4ELGF4015 | DUKHCONP2BZ4ELGF4015 | DH | CON | 2B | Z4 | MEP | EW | GF | B08 | B08-D09 | RES-2B |  |
|  | 20 | **ROOF** |  | 2014-03-03 | 2014-04-06 |  |  |  |  |  |  |  |  |  |  |  |  |  |  |  |  |  |  |  |  |
| DUKHCONP2BZ4ELRF4070 |  | Installation of Isolator | 18d | 2014-03-03 | 2014-03-23 | DUKHCONP2BZ4ELGF4010 SS+10d, DUKHCONP2BZ4ELGF4030 SS+5d, DUKHCONP2BZ4ARRF3645 FF+7d, DUKHCONP2BZ4ARRF3645 SS+7d, DUKHCONP2BZ4ELGF4030 FF+7d, DUKHCONP2BZ4ELGF4010 FF+10d, DUKHCONP2BZ4ELGF4025 FF+10d, DUKHCONP2BZ4ELGF4025 SS+10d | 14d | 0d | LABOR- SUBCONTRACTOR [126 h]; ELECTRICIANS SK [235.2 h]; ISOLATOR QTY [42 ea] | 22,378 | 10 | 2BP4EWRF10 | DUKHCON2BP4ELRF4070 | DUKHCONP2BZ4ELRF4070 | DH | CON | 2B | Z4 | MEP | EW | RF | B08 | B08-D09 | RES-2B |  |
| DUKHCONP2BZ4ELRF4075 |  | Installation of TV Dish Antenna | 20d | 2014-03-15 | 2014-04-06 | DUKHCONP2BZ4ELRF4070 FF+10d, DUKHCONP2BZ3ELRF4075, DUKHCONP2BZ4ELRF4070 SS+10d | 14d | 5d | LABOR- SUBCONTRACTOR [54 h]; ELECTRICIANS SK [134.4 h]; CONTROL BOX QTY [6 ea]; SWITCHING BOX QTY [6 ea] | 23,716 | 15 | 2BP4EWRF15 | DUKHCON2BP4ELRF4075 | DUKHCONP2BZ4ELRF4075 | DH | CON | 2B | Z4 | MEP | EW | RF | B08 | B08-D09 | RES-2B |  |

Notes:
- DUKHCONP2BZ4ARRF3625: Expenses: P2B-Roofing 120042
- DUKHCONP2BZ4ARRF3630: Expenses: P2B-Roofing 16134
- DUKHCONP2BZ4ARRF3635: Expenses: P2B-Roofing 25318
- DUKHCONP2BZ4ARRF3640: Expenses: P2B-Roofing 15264
- DUKHCONP2BZ4ARRF3645: Expenses: P2B-Roofing 29640
- DUKHCONP2BZ4ARRF3660: Expenses: P2B-Metal work 12566
- DUKHCONP2BZ4AREL3665: Expenses: P2B-Finishes 30816
- DUKHCONP2BZ4AREL3680: Expenses: P2B-Painting and Decorating 30274
- DUKHCONP2BZ4ELGF4000: Expenses: P2B-Electrical Installations 23814
- DUKHCONP2BZ4ELGF4005: Expenses: P2B-Electrical Installations 9900
- DUKHCONP2BZ4ELGF4010: Expenses: P2B-Electrical Installations 71442
- DUKHCONP2BZ4ELGF4020: Expenses: P2B-Electrical Installations 23786
- DUKHCONP2BZ4ELGF4025: Expenses: P2B-Electrical Installations 99288
- DUKHCONP2BZ4ELGF4030: Expenses: P2B-Electrical Installations 43206
- DUKHCONP2BZ4ELGF4015: Expenses: P2B-Electrical Installations 53272
- DUKHCONP2BZ4ELRF4070: Expenses: P2B-Electrical Installations 22378
- DUKHCONP2BZ4ELRF4075: Expenses: P2B-Electrical Installations 23716

| ID | WBS | Activity | Duration | Start | Finish | Predecessors | Total float | Free float | Resources | Cost | CODE | P3 ACTID | P6 ID (old) | NP61D | PROJECT | PHASES | PACKAGE | PART | ELEMENTS | STEP | FLOORS | BILL NOS | BILL DIVISION | RES PACK |
| --- | --- | --- | --- | --- | --- | --- | --- | --- | --- | --- | --- | --- | --- | --- | --- | --- | --- | --- | --- | --- | --- | --- | --- | --- |
|  | 15 | **PLUMBING, DRAINAGE & FIRE FIGHTING WORKS** |  | 2013-07-04 | 2014-04-14 |  |  |  |  |  |  |  |  |  |  |  |  |  |  |  |  |  |  |  |
|  | 10 | **GROUND FLOOR** |  | 2013-07-04 | 2014-04-14 |  |  |  |  |  |  |  |  |  |  |  |  |  |  |  |  |  |  |  |
| DUKHCONP2BZ4PLUG4300 |  | Drainage / Storm Pipes in Grade Slab | 20d | 2013-07-04 | 2013-07-27 | DUKHCONP2BZ4STUG1040 FF+8d, DUKHCONP2BZ4STUG1040 SS+8d | 0d |  | LABOR- SUBCONTRACTOR [42 h]; MECHANICALS SK [140.4 h]; DRAINAGE PIPES QTY [252 lm] | 10,105 | 10 | 2BP4PLUG10 | DUKHCON2BP4PLUG4300 | DUKHCONP2BZ4PLUG4300 | DH | CON | 2B | Z4 | ST | SB | UG | B08 | B08-D07 | RES-2B |
| DUKHCONP2BZ4PLGF4305 |  | Installation of Plumbing pipes & testing | 20d | 2013-10-16 | 2013-11-10 | DUKHCONP2BZ4ARGF3000 FF+7d, DUKHCONP2BZ4ARGF3000 SS+7d | 0d |  | LABOR- SUBCONTRACTOR [312 h]; MECHANICALS SK [1123.2 h]; PLUMB PIPES QTY [1038 lm] | 64,872 | 10 | 2BP4PLGF10 | DUKHCON2BP4PLGF4305 | DUKHCONP2BZ4PLGF4305 | DH | CON | 2B | Z4 | MEP | PL | GF | B08 | B08-D07 | RES-2B |
| DUKHCONP2BZ4PLGF4310 |  | Installation of Drainage pipes &testing | 18d | 2013-10-21 | 2013-11-10 | DUKHCONP2BZ4ARGF3000 FF+7d, DUKHCONP2BZ4PLGF4305 SS, DUKHCONP2BZ3PLGF4310, DUKHCONP2BZ4ARGF3000 SS+7d, DUKHCONP2BZ4PLGF4305 FF | 28d | 2d | LABOR- SUBCONTRACTOR [18 h]; MECHANICALS SK [54 h]; DRAINAGE PIPES QTY [102 lm] | 2,538 | 15 | 2BP4PLGF15 | DUKHCON2BP4PLGF4310 | DUKHCONP2BZ4PLGF4310 | DH | CON | 2B | Z4 | MEP | PL | GF | B08 | B08-D07 | RES-2B |
| DUKHCONP2BZ4PLGF4315 |  | Sanitary Fittings & Accessories | 20d | 2014-03-17 | 2014-04-08 | DUKHCONP2BZ4PLGF4310 FF+5d, DUKHCONP2BZ3PLGF4315, DUKHCONP2BZ4PLGF4310 SS+5d, DUKHCONP2BZ4ARGF3065 SS+5d, DUKHCONP2BZ4ARGF3065 FF+5d | 7d | 0d | LABOR- SUBCONTRACTOR [78 h]; SANITARY ACC QTY [132 ea]; MECHANICALS SK [140.4 h] | 59,278 | 20 | 2BP4PLGF20 | DUKHCON2BP4PLGF4315 | DUKHCONP2BZ4PLGF4315 | DH | CON | 2B | Z4 | MEP | PL | GF | B08 | B08-D07 | RES-2B |
| DUKHCONP2BZ4PLGF4320 |  | Installation of Water Heater | 15d | 2014-03-29 | 2014-04-14 | DUKHCONP2BZ4PLGF4315 FF+5d, DUKHCONP2BZ4ARGF3060 SS+5d, DUKHCONP2BZ4ARGF3060 FF+5d, DUKHCONP2BZ4PLGF4315 SS+5d | 27d | 4d | LABOR- SUBCONTRACTOR [54 h]; MECHANICALS SK [97.2 h]; WATER HEATER QTY [18 ea] | 6,502 | 25 | 2BP4PLGF25 | DUKHCON2BP4PLGF4320 | DUKHCONP2BZ4PLGF4320 | DH | CON | 2B | Z4 | MEP | PL | GF | B08 | B08-D07 | RES-2B |
|  | 20 | **ROOF** |  | 2014-02-03 | 2014-02-20 |  |  |  |  |  |  |  |  |  |  |  |  |  |  |  |  |  |  |  |
| DUKHCONP2BZ4PLRF4350 |  | Installation of Rain water Pipes | 15d | 2014-02-03 | 2014-02-20 | DUKHCONP2BZ4ARRF3645 FF+5d, DUKHCONP2BZ4PLGF4310 FF+5d, DUKHCONP2BZ3PLRF4350, DUKHCONP2BZ4PLGF4310 SS+5d, DUKHCONP2BZ4AREL3665 FF+7d, DUKHCONP2BZ4AREL3665 SS+7d, DUKHCONP2BZ4PLGF4305 SS+5d, DUKHCONP2BZ4PLGF4305 FF+5d, DUKHCONP2BZ4ARRF3645 SS+5d | 30d | 10d | LABOR- SUBCONTRACTOR [60 h]; MECHANICALS SK [205.2 h]; RAINWATER PIPES QTY [96 lm] | 48,325 | 15 | 2BP4PLRF15 | DUKHCON2BP4PLRF4350 | DUKHCONP2BZ4PLRF4350 | DH | CON | 2B | Z4 | MEP | PL | RF | B08 | B08-D07 | RES-2B |
|  | 20 | **AC WORKS** |  | 2013-12-14 | 2014-04-05 |  |  |  |  |  |  |  |  |  |  |  |  |  |  |  |  |  |  |  |
|  | 10 | **GROUND FLOOR** |  | 2013-12-14 | 2014-03-30 |  |  |  |  |  |  |  |  |  |  |  |  |  |  |  |  |  |  |  |
| DUKHCONP2BZ4ACGF4600 |  | Installation AC Pipes | 20d | 2013-12-14 | 2014-01-06 | DUKHCONP2BZ3ACGF4600, DUKHCONP2BZ4ARGF3005 SS+7d, DUKHCONP2BZ4ARGF3005 FF+7d | 28d | 0d | LABOR- SUBCONTRACTOR [120 h]; AC TECHNICIAN SK [436.8 h]; AC PIPES QTY [1182 lm] | 3,600 | 10 | 2BP4ACGF10 | DUKHCON2BP4ACGF4600 | DUKHCONP2BZ4ACGF4600 | DH | CON | 2B | Z4 | MEP | AC | GF | B08 | B08-D08 | RES-2B |
| DUKHCONP2BZ4ACGF4605 |  | Fixing of Ventilation Equipments | 25d | 2014-02-13 | 2014-03-13 | DUKHCONP2BZ4ACGF4600 FF+10d, DUKHCONP2BZ4ARGF3060 FF+14d, DUKHCONP2BZ4ACGF4600 SS+10d, DUKHCONP2BZ4ARGF3060 SS+14d | 15d | 0d | LABOR- SUBCONTRACTOR [18 h]; AC TECHNICIAN SK [67.2 h]; VENTILIATION EQP QTY [24 ea] | 14,750 | 15 | 2BP4ACGF15 | DUKHCON2BP4ACGF4605 | DUKHCONP2BZ4ACGF4605 | DH | CON | 2B | Z4 | MEP | AC | GF | B08 | B08-D08 | RES-2B |
| DUKHCONP2BZ4ACGF4610 |  | Fixing of Split AC | 20d | 2014-03-08 | 2014-03-30 | DUKHCONP2BZ4ACGF4605 SS+14d, DUKHCONP2BZ4ACGF4605 FF+14d | 15d | 0d | LABOR- SUBCONTRACTOR [54 h]; AC TECHNICIAN SK [100.8 h]; SPILIT UNIT QTY [18 ea] | 18,870 | 20 | 2BP4ACGF20 | DUKHCON2BP4ACGF4610 | DUKHCONP2BZ4ACGF4610 | DH | CON | 2B | Z4 | MEP | AC | GF | B08 | B08-D08 | RES-2B |
|  | 20 | **ROOF** |  | 2014-01-19 | 2014-04-05 |  |  |  |  |  |  |  |  |  |  |  |  |  |  |  |  |  |  |  |
| DUKHCONP2BZ4ACRF4630 |  | Installation of Refrigerant Pipes | 20d | 2014-01-19 | 2014-02-10 | DUKHCONP2BZ4ACGF4600 FF+14d, DUKHCONP2BZ3ACRF4630, DUKHCONP2BZ4ACGF4600 SS+14d, DUKHCONP2BZ4ARRF3645 SS+14d, DUKHCONP2BZ4ARRF3645 FF+14d | 50d | 5d | LABOR- SUBCONTRACTOR [6 h]; AC TECHNICIAN SK [11.2 h]; AC PIPES QTY [42 lm] | 3,348 | 10 | 2BP4ACRF10 | DUKHCON2BP4ACRF4630 | DUKHCONP2BZ4ACRF4630 | DH | CON | 2B | Z4 | MEP | AC | RF | B08 | B08-D08 | RES-2B |
| DUKHCONP2BZ4ACRF4635 |  | Installation of Condensing Unit | 20d | 2014-03-13 | 2014-04-05 | DUKHCONP2BZ4ACRF4630 SS+10d, DUKHCONP2BZ4ACGF4610 FF+5d, DUKHCONP2BZ4ACRF4630 FF+10d, DUKHCONP2BZ3ACRF4635, DUKHCONP2BZ4ACGF4610 SS+5d | 15d | 5d | AC UNITS QTY [18 ea]; LABOR- SUBCONTRACTOR [30 h]; AC TECHNICIAN SK [100.8 h] | 24,640 | 15 | 2BP4ACRF15 | DUKHCON2BP4ACRF4635 | DUKHCONP2BZ4ACRF4635 | DH | CON | 2B | Z4 | MEP | AC | RF | B08 | B08-D08 | RES-2B |
|  | 25 | **EXTERNAL WORKS** |  | 2013-11-04 | 2014-04-15 |  |  |  |  |  |  |  |  |  |  |  |  |  |  |  |  |  |  |  |
|  | 10 | **MISCELLANEOUS** |  | 2013-11-04 | 2014-01-29 |  |  |  |  |  |  |  |  |  |  |  |  |  |  |  |  |  |  |  |
| DUKHCONP2BZ4MSEX5000 |  | Construction of Manholes | 25d | 2013-11-04 | 2013-12-02 | DUKHCONP2BZ3MSEX5000, DUKHCONP2BZ4STRF2065 FF+5d, DUKHCONP2BZ4PLGF4310 FF+10d, DUKHCONP2BZ4PLGF4310 SS+10d, DUKHCONP2BZ4STRF2065 SS+5d | 26d | 0d | MANHOLES SK [96 h]; MANHOLES QTY [12 ea]; LABOR - CIVIL [36 h] | 13,617 | 25 | 2BP4MSEX25 | DUKHCON2BP4MS005000 | DUKHCONP2BZ4MSEX5000 | DH | CON | 2B | Z4 | EX | MS |  | B08 | B08-D12 | RES-2B |
| DUKHCONP2BZ4MSEX5005 |  | Construction of Soak pit, Chambers | 25d | 2013-11-18 | 2013-12-16 | DUKHCONP2BZ4MSEX5000 SS+12d, DUKHCONP2BZ4MSEX5000 FF+12d | 31d | 0d | MANHOLES SK [48 h]; LABOR - CIVIL [18 h]; SOAKPIT QTY [6 ea] | 22,500 | 30 | 2BP4MSEX30 | DUKHCON2BP4MS005005 | DUKHCONP2BZ4MSEX5005 | DH | CON | 2B | Z4 | EX | MS |  | B08 | B08-D12 | RES-2B |
| DUKHCONP2BZ4MSEX5020 |  | Construction Entrance Ramp | 20d | 2013-12-02 | 2013-12-25 | DUKHCONP2BZ4STRF2065 FF, DUKHCONP2BZ4STRF2065 SS, DUKHCONP2BZ3MSEX5020 | 30d | 0d | SCREED MASON SK [136 h]; CONCRETE MASON SK [32 h]; INTERLOCK MASON SK [136 h]; LABOR - CIVIL [78 h]; LABOR- SUBCONTRACTOR [54 h]; SCREED QTY [168 Sqm]; CONCRETE QTY [16.8 Cum]; INTERLOCK QTY [168 Sqm] | 43,008 | 10 | 2BP4MSEX10 | DUKHCON2BP4MS005020 | DUKHCONP2BZ4MSEX5020 | DH | CON | 2B | Z4 | EX | MS |  | B08 | B08-D12 | RES-2B |
| DUKHCONP2BZ4MSEX5015 |  | Construction of grease Trap | 20d | 2013-12-08 | 2013-12-31 | DUKHCONP2BZ4MSEX5005 SS+12d, DUKHCONP2BZ4MSEX5005 FF+12d | 31d | 0d | LABOR- SUBCONTRACTOR [48 h]; GREASE TRAP QTY [60 lm]; HANDRAIL ERECTOR SKILLED [120 h] | 17,022 | 20 | 2BP4MSEX20 | DUKHCON2BP4MS005015 | DUKHCONP2BZ4MSEX5015 | DH | CON | 2B | Z4 | EX | MS |  | B08 | B08-D07 | RES-2B |
| DUKHCONP2BZ4MSEX5055 |  | Installation Steel Door | 20d | 2013-12-14 | 2014-01-06 | DUKHCONP2BZ4MSEX5020 SS+10d | 30d | 0d | GATE QTY [6 ea]; LABOR- SUBCONTRACTOR [80 h]; GATE ERECTOR SK [100 h] | 23,090 | 20 | 2BP4MSEX35 | DUKHCON2BP4MS005055 | DUKHCONP2BZ4MSEX5055 | DH | CON | 2B | Z4 | EX | MS |  | B08 | B08-D06 | RES-2B |
| DUKHCONP2BZ4MSEX5025 |  | SS.Handrails and Balustrades | 20d | 2013-12-26 | 2014-01-18 | DUKHCONP2BZ4MSEX5055 SS+10d, DUKHCONP2BZ4MSEX5020 FF+10d, DUKHCONP2BZ4MSEX5020 SS+10d, DUKHCONP2BZ3MSEX5025 | 30d | 0d | LABOR- SUBCONTRACTOR [48 h]; S.S.BALUSTRADE QTY [42 lm]; HANDRAIL ERECTOR SKILLED [88 h] | 42,745 | 15 | 2BP4MSEX15 | DUKHCON2BP4MS005025 | DUKHCONP2BZ4MSEX5025 | DH | CON | 2B | Z4 | EX | MS |  | B08 | B08-D12 | RES-2B |
| DUKHCONP2BZ4MSEX5010 |  | Telephone cable laying | 25d | 2014-01-01 | 2014-01-29 | DUKHCONP2BZ4MSEX5015 | 31d | 14d | LABOR- SUBCONTRACTOR [125 h]; LABOR - CIVIL [125 h]; CONCRETE MASON SK [125 h]; ELECTRICIANS SK [125 h] | 992 |  | 2BP4MSEX40 | DUKHCON2BP4MS005010 | DUKHCONP2BZ4MSEX5010 | DH | CON | 2B | Z4 | EX | MS |  | B08 | B08-D12 | RES-2B |

Notes:
- DUKHCONP2BZ4PLUG4300: Expenses: P2B-Plumbing and Drainage works 10105
- DUKHCONP2BZ4PLGF4305: Expenses: P2B-Plumbing and Drainage works 64872
- DUKHCONP2BZ4PLGF4310: Expenses: P2B-Plumbing and Drainage works 2538
- DUKHCONP2BZ4PLGF4315: Expenses: P2B-Plumbing and Drainage works 59278
- DUKHCONP2BZ4PLGF4320: Expenses: P2B-Plumbing and Drainage works 6502
- DUKHCONP2BZ4PLRF4350: Expenses: P2B-Plumbing and Drainage works 48325
- DUKHCONP2BZ4ACGF4600: Expenses: P2B-Air-conditioning and Ventilation works 3600
- DUKHCONP2BZ4ACGF4605: Expenses: P2B-Air-conditioning and Ventilation works 14750
- DUKHCONP2BZ4ACGF4610: Expenses: P2B-Air-conditioning and Ventilation works 18870
- DUKHCONP2BZ4ACRF4630: Expenses: P2B-Air-conditioning and Ventilation works 3348
- DUKHCONP2BZ4ACRF4635: Expenses: P2B-Air-conditioning and Ventilation works 24640
- DUKHCONP2BZ4MSEX5000: Expenses: P2B-External works within the Plot Curtilage 13617
- DUKHCONP2BZ4MSEX5005: Expenses: P2B-External works within the Plot Curtilage 22500
- DUKHCONP2BZ4MSEX5020: Expenses: P2B-External works within the Plot Curtilage 43008
- DUKHCONP2BZ4MSEX5015: Expenses: P2B-Plumbing and Drainage works 17022
- DUKHCONP2BZ4MSEX5055: Expenses: P2B-Metal work 23090
- DUKHCONP2BZ4MSEX5025: Expenses: P2B-External works within the Plot Curtilage 42745
- DUKHCONP2BZ4MSEX5010: Expenses: P2B-External works within the Plot Curtilage 992

| ID | WBS | Activity | Duration | Start | Finish | Predecessors | Total float | Free float | Resources | Cost | CODE | P3 ACTID | P6 ID (old) | NP61D | PROJECT | PHASES | PACKAGE | PART | ELEMENTS | STEP | BILL NOS | BILL DIVISION | RES PACK | FLOORS | rem |
| --- | --- | --- | --- | --- | --- | --- | --- | --- | --- | --- | --- | --- | --- | --- | --- | --- | --- | --- | --- | --- | --- | --- | --- | --- | --- |
|  | 15 | **WATER TANK ENCLOSURE** |  | 2013-12-21 | 2014-04-15 |  |  |  |  |  |  |  |  |  |  |  |  |  |  |  |  |  |  |  |  |
| DUKHCONP2BZ4WEEX5030 |  | Excavation | 20d | 2013-12-21 | 2014-01-12 | DUKHCONP2BZ3WEEX5035, DUKHCONP2BZ4STRF2065 FF+5d, DUKHCONP2BZ4STRF2065 SS+5d | 15d | 0d | LABOR - CIVIL [36 h]; EXCAVATION QTY [60 Cum]; LOADER [20 h]; POCLAIN [40 h]; TRUCK [20 h]; EQUIP OPERATORS [80 h] | 672 | 10 | 2BP4WEEX10 | DUKHCON2BP4WE005030 | DUKHCONP2BZ4WEEX5030 | DH | CON | 2B | Z4 | EX | WE | B08 | B08-D12 | RES-2B |  |  |
| DUKHCONP2BZ4WEEX5035 |  | Construction of Raft | 25d | 2013-12-26 | 2014-01-23 | DUKHCONP2BZ4WEEX5030 SS+5d, DUKHCONP2BZ4WEEX5030 FF+10d | 15d | 0d | CONCRETE MASON SK [120 h]; LABOR - CIVIL [90 h]; CONCRETE QTY [60 Cum] | 10,260 | 15 | 2BP4WEEX15 | DUKHCON2BP4WE005035 | DUKHCONP2BZ4WEEX5035 | DH | CON | 2B | Z4 | EX | WE | B08 | B08-D12 | RES-2B |  |  |
| DUKHCONP2BZ4WEEX5040 |  | Block works & Plastering | 25d | 2014-01-05 | 2014-02-02 | DUKHCONP2BZ4WEEX5035 SS+8d, DUKHCONP2BZ4WEEX5035 FF+8d | 20d | 0d | BLOCK MASON SK [168 h]; PLASTER MASON SK [272 h]; LABOR - CIVIL [252 h]; BLOCK QTY [84 Sqm]; PLASTER QTY [168 Sqm] | 11,503 | 20 | 2BP4WEEX20 | DUKHCON2BP4WE005040 | DUKHCONP2BZ4WEEX5040 | DH | CON | 2B | Z4 | EX | WE | B08 | B08-D12 | RES-2B |  |  |
| DUKHCONP2BZ4WEEX5045 |  | Flooring & Painting | 25d | 2014-01-16 | 2014-02-15 | DUKHCONP2BZ4WEEX5040 SS+10d, DUKHCONP2BZ4WEEX5040 FF+10d | 20d | 0d | SCREED MASON SK [56 h]; LABOR - CIVIL [24 h]; LABOR- SUBCONTRACTOR [72 h]; SCREED QTY [66 Sqm]; PAINT QTY [234 Sqm]; PAINTERS SK [184 h] | 10,062 | 25 | 2BP4WEEX25 | DUKHCON2BP4WE005045 | DUKHCONP2BZ4WEEX5045 | DH | CON | 2B | Z4 | EX | WE | B08 | B08-D12 | RES-2B |  |  |
| DUKHCONP2BZ4WEEX5050 |  | Installation of Steel Gate | 20d | 2014-02-03 | 2014-02-26 | DUKHCONP2BZ4WEEX5045 FF+10d, DUKHCONP2BZ4WEEX5045 SS+5d, DUKHCONP2BZ4MSEX5025 FF+10d, DUKHCONP2BZ4MSEX5025 SS+10d | 20d | 0d | LABOR- SUBCONTRACTOR [54 h]; LADDER QTY [6 ea]; GATE QTY [6 ea]; LADDER ERECTOR SK [48 h]; GATE ERECTOR SK [48 h] | 32,436 | 30 | 2BP4WEEX30 | DUKHCON2BP4WE005050 | DUKHCONP2BZ4WEEX5050 | DH | CON | 2B | Z4 | EX | WE | B08 | B08-D12 | RES-2B |  |  |
| DUKHCONP2BZ4WEEX5060 |  | Structural steel & SS Shed cover installation | 25d | 2014-02-09 | 2014-03-10 | DUKHCONP2BZ4WEEX5050 SS+5d, DUKHCONP2BZ4WEEX5050 FF+10d | 20d | 0d | LABOR- SUBCONTRACTOR [222 h]; STRUCTURAL STEEL QTY [438 kg]; SS SHED COVER QTY [60 Sqm]; STEEL ERECTOR SK [312 h] | 33,315 | 35 | 2BP4WEEX35 | DUKHCON2BP4WE005060 | DUKHCONP2BZ4WEEX5060 | DH | CON | 2B | Z4 | EX | WE | B08 | B08-D12 | RES-2B |  |  |
| DUKHCONP2BZ4WEEX5065 |  | Install. of Water Tank,Chiller,Pump & Meter | 25d | 2014-02-22 | 2014-03-22 | DUKHCONP2BZ4PLRF4350 SS+5d, DUKHCONP2BZ4MSEX5015 FF+5d, DUKHCONP2BZ4MSEX5015 SS+5d, DUKHCONP2BZ4WEEX5060 FF+10d, DUKHCONP2BZ4WEEX5060 SS+10d, DUKHCONP2BZ4PLRF4350 FF+5d | 20d | 5d | LABOR- SUBCONTRACTOR [90 h]; AC TECHNICIAN SK [67.2 h]; MECHANICALS SK [129.6 h]; WATER TANK QTY [6 ea]; CHILLER QTY [60 ea]; PUMP QTY [6 ea] | 450,453 | 40 | 2BP4WEEX40 | DUKHCON2BP4WE005065 | DUKHCONP2BZ4WEEX5065 | DH | CON | 2B | Z4 | EX | WE | B08 | B08-D07 | RES-2B |  |  |
| DUKHCONP2BZ4MSEX5335 |  | Aluminum Roll-up Shutter with 2m Wall | 25d | 2014-03-18 | 2014-04-15 | DUKHCONI2BZ2BWGL5325 SS+7d, DUKHCONP2BZ3MSEX5335 | 26d | 0d | LABOR- SUBCONTRACTOR [200 h]; DOOR ERECTOR SK [200 h]; ROLLING SHUTTER QTY [6 ea] | 25,259 | 25 | 2BP2BWFR25 | DUKHCON2BP4MS005335 | DUKHCONP2BZ4MSEX5335 | DH | CON | 2B | Z4 | EX | MS | B08 | B08-D12 | RES-2B |  |  |
| DUKHCONP2BZ4WEEX5070 |  | Installation ladder for water Tank | 20d | 2014-03-19 | 2014-04-10 | DUKHCONP2BZ3WEEX5070, DUKHCONP2BZ4WEEX5065 SS+7d | 10d | 0d | LABOR- SUBCONTRACTOR [100 h]; LADDER QTY [6 ea]; LADDER ERECTOR SK [100 h] | 11,118 | 40 | 2BP4WEEX45 | DUKHCON2BP4WE005070 | DUKHCONP2BZ4WEEX5070 | DH | CON | 2B | Z4 | EX | WE | B08 | B08-D06 | RES-2B |  |  |
|  | 20 | **HARD LANDSCAPING** |  | 2014-01-04 | 2014-02-23 |  |  |  |  |  |  |  |  |  |  |  |  |  |  |  |  |  |  |  |  |
| DUKHCONP2BZ4HDEX5090 |  | kerb works | 20d | 2014-01-04 | 2014-01-26 | DUKHCONP2BZ3HDEX5090, DUKHCONP2BZ4MSEX5020 SS+7d, DUKHCONP2BZ4MSEX5020 FF+7d, DUKHCONP2BZ4MSEX5025 SS+7d | 30d | 0d | KERBSTONE MASON SK [152 h]; KERBSTONE QTY [186 lm]; LABOR- SUBCONTRACTOR [84 h] | 18,554 | 10 | 2BP4HDEX10 | DUKHCON2BP4HD005090 | DUKHCONP2BZ4HDEX5090 | DH | CON | 2B | Z4 | EX | HD | B08 | B08-D12 | RES-2B |  |  |
| DUKHCONP2BZ4HDEX5095 |  | Cobble Stone Works | 20d | 2014-01-15 | 2014-02-06 | DUKHCONP2BZ4HDEX5090 SS+10d, DUKHCONP2BZ4HDEX5090 FF+10d | 30d | 0d | TILE MASON SK [56 h]; LABOR- SUBCONTRACTOR [30 h]; COBBLE STONE QTY [36 Sqm] | 5,004 | 15 | 2BP4HDEX15 | DUKHCON2BP4HD005095 | DUKHCONP2BZ4HDEX5095 | DH | CON | 2B | Z4 | EX | HD | B08 | B08-D12 | RES-2B |  |  |
| DUKHCONP2BZ4HDEX5100 |  | Interlock works | 20d | 2014-01-30 | 2014-02-23 | DUKHCONP2BZ4HDEX5095 SS+13d, DUKHCONP2BZ4HDEX5095 FF+13d | 30d | 9d | INTERLOCK MASON SK [216 h]; LABOR- SUBCONTRACTOR [84 h]; INTERLOCK QTY [270 Sqm] | 23,084 | 20 | 2BP4HDEX20 | DUKHCON2BP4HD005100 | DUKHCONP2BZ4HDEX5100 | DH | CON | 2B | Z4 | EX | HD | B08 | B08-D12 | RES-2B |  |  |
|  | 25 | **SOFT LANDSCAPING** |  | 2014-02-23 | 2014-03-29 |  |  |  |  |  |  |  |  |  |  |  |  |  |  |  |  |  |  |  |  |
| DUKHCONP2BZ4SLEX5105 |  | Laying of Grass/ green area | 20d | 2014-02-23 | 2014-03-17 | DUKHCONP2BZ4HDEX5100 FF+10d, DUKHCONP2BZ4HDEX5100 SS+10d, DUKHCONP2BZ3SLEX5105 | 21d | 0d | LABOR- SUBCONTRACTOR [918 h]; SWEET SOIL QTY [294 Cum]; GRASS QTY [294 Sqm]; LANDSCAPING SK [1224 h] | 36,162 | 10 | 2BP4SLEX10 | DUKHCON2BP4SL005105 | DUKHCONP2BZ4SLEX5105 | DH | CON | 2B | Z4 | EX | SL | B08 | B08-D12 | RES-2B |  |  |
| DUKHCONP2BZ4SLEX5110 |  | Laying of Palm tree | 20d | 2014-03-06 | 2014-03-29 | DUKHCONP2BZ4SLEX5105 FF+10d, DUKHCONP2BZ4SLEX5105 SS+10d | 21d | 0d | LABOR- SUBCONTRACTOR [234 h]; SWEET SOIL QTY [600 Cum]; PLAM TREES QTY [54 ea]; LANDSCAPING SK [312 h] | 81,432 | 15 | 2BP4SLEX15 | DUKHCON2BP4SL005110 | DUKHCONP2BZ4SLEX5110 | DH | CON | 2B | Z4 | EX | SL | B08 | B08-D12 | RES-2B |  |  |
|  | 30 | **TESTING AND COMMISSIONING** |  | 2014-04-20 | 2014-05-18 |  |  |  |  |  |  |  |  |  |  |  |  |  |  |  |  |  |  |  |  |
| DUKHCONP2BZ4ACTC8000 |  | Pre-Commissioning & Testing of AC Works | 25d | 2014-04-20 | 2014-05-18 | DUKHCONP2BZ4HDEX5100, DUKHCONP2BZ4ARRF3660, DUKHCONP2BZ4SLEX5105, DUKHCONP2BZ4MSEX5005, DUKHCONP2BZ4ARGF3095, DUKHCONP2BZ4ACRF4635, DUKHCONP2BZ4SLEX5110, DUKHCONP2BZ4AREL3680 | 23d |  | AC TECHNICIAN SK [1000 h]; LABOR- SUBCONTRACTOR [500 h] | 582 |  | 2BP4ACU100 | DUKHCON2BP4AC008000 | DUKHCONP2BZ4ACTC8000 | DH | CON | 2B | Z4 | TES |  | B08 | B08-D08 | RES-2B |  |  |
| DUKHCONP2BZ4ELTC8010 |  | Pre-Commissioning & Testing of Electrical Works | 25d | 2014-04-20 | 2014-05-18 | DUKHCONP2BZ4MSEX5005, DUKHCONP2BZ4AREL3680, DUKHCONP2BZ4ELGF4025, DUKHCONP2BZ4ELGF4015, DUKHCONP2BZ4ELGF4030, DUKHCONP2BZ4SLEX5105, DUKHCONP2BZ4ELRF4075, DUKHCONP2BZ4ARRF3660, DUKHCONP2BZ4ARGF3095, DUKHCONP2BZ4HDEX5100, DUKHCONP2BZ4SLEX5110 | 23d |  | ELECTRICIANS SK [2000 h]; LABOR- SUBCONTRACTOR [1000 h] | 19,374 |  | 2BP4ELE100 | DUKHCON2BP4EL008010 | DUKHCONP2BZ4ELTC8010 | DH | CON | 2B | Z4 | TES |  | B08 | B08-D09 | RES-2B |  |  |
| DUKHCONP2BZ4PLTC8005 |  | Pre-Commissioning & Testing of Plumbing Works | 25d | 2014-04-20 | 2014-05-18 | DUKHCONP2BZ4SLEX5105, DUKHCONP2BZ4MSEX5005, DUKHCONP2BZ4HDEX5100, DUKHCONP2BZ4ARGF3095, DUKHCONP2BZ4PLGF4320, DUKHCONP2BZ4SLEX5110, DUKHCONP2BZ4WEEX5065, DUKHCONP2BZ4PLRF4350, DUKHCONP2BZ4AREL3680, DUKHCONP2BZ4ARRF3660 | 23d |  | MECHANICALS SK [2000 h]; LABOR- SUBCONTRACTOR [1000 h] | 2,886 |  | 2BP4PLU100 | DUKHCON2BP4PL008005 | DUKHCONP2BZ4PLTC8005 | DH | CON | 2B | Z4 | TES |  | B08 | B08-D07 | RES-2B |  |  |
|  | 30 | **ZONE - 5 (3 Twin Villas)** |  | 2013-05-08 | 2014-06-14 |  |  |  |  |  |  |  |  |  |  |  |  |  |  |  |  |  |  |  |  |
|  | 10 | **STRUCTURAL WORKS** |  | 2013-05-08 | 2013-12-08 |  |  |  |  |  |  |  |  |  |  |  |  |  |  |  |  |  |  |  |  |
|  | 10 | **SUB STRUCTURE** |  | 2013-05-08 | 2013-09-10 |  |  |  |  |  |  |  |  |  |  |  |  |  |  |  |  |  |  |  |  |
|  | 10 | **UPTO GRADE SLAB** |  | 2013-05-08 | 2013-09-10 |  |  |  |  |  |  |  |  |  |  |  |  |  |  |  |  |  |  |  |  |
| DUKHCONP2BZ5STUG1000 |  | Footing Excavation | 25d | 2013-05-08 | 2013-06-05 | DUKHCONP2BZ4STUG1000 | 2d | 0d | LABOR - CIVIL [252 h]; EXCAVATION QTY [420 Cum]; LOADER [56 h]; POCLAIN [112 h]; TRUCK [56 h]; EQUIP OPERATORS [224 h] | 39,690 | 10 | 2BP5SBUG10 | DUKHCON2BP5STUG1000 | DUKHCONP2BZ5STUG1000 | DH | CON | 2B | Z5 | ST | SB | B08 | B08-D01 | RES-2B | UG |  |
| DUKHCONP2BZ5STUG1005 |  | Footing Antitermite | 20d | 2013-05-20 | 2013-06-11 | DUKHCONP2BZ5STUG1000 FF+5d, DUKHCONP2BZ5STUG1000 SS+5d | 2d | 0d | LABOR- SUBCONTRACTOR [246 h]; ANTITERMITE QTY [1638 sqft]; ANTITERMITE SK [656 h] | 4,913 | 15 | 2BP5SBUG15 | DUKHCON2BP5STUG1005 | DUKHCONP2BZ5STUG1005 | DH | CON | 2B | Z5 | ST | SB | B08 | B08-D01 | RES-2B | UG | REM |
| DUKHCONP2BZ5STUG1010 |  | Footing Blinding | 20d | 2013-05-22 | 2013-06-13 | DUKHCONP2BZ5STUG1005 SS+2d, DUKHCONP2BZ5STUG1005 FF+2d | 2d | 0d | BLINDING MASON SK [17 h]; LABOR - CIVIL [12.75 h]; BLINDING QTY [21 Sqm] | 529 | 15 | 2BP5SBUG18 | DUKHCON2BP5STUG1010 | DUKHCONP2BZ5STUG1010 | DH | CON | 2B | Z5 | ST | SB | B08 | B08-D02 | RES-2B | UG | REM |
| DUKHCONP2BZ5STUG1015 |  | Footing Waterproofing & Screed | 20d | 2013-05-28 | 2013-06-19 | DUKHCONP2BZ5STUG1010 FF+5d, DUKHCONP2BZ5STUG1010 SS+5d | 2d | 0d | SCREED MASON SK [141 h]; LABOR - CIVIL [53.25 h]; LABOR- SUBCONTRACTOR [78.75 h]; SCREED QTY [176 Sqm]; WATERPROOFING QTY [262 Sqm]; WATERPROOFING SPECIALIST SK [210 h] | 12,357 | 20 | 2BP5SBUG20 | DUKHCON2BP5STUG1015 | DUKHCONP2BZ5STUG1015 | DH | CON | 2B | Z5 | ST | SB | B08 | B08-D02 | RES-2B | UG | REM |
| DUKHCONP2BZ5STUG1020 |  | Construction of foundations | 20d | 2013-06-06 | 2013-06-29 | DUKHCONP2BZ4STUG1020, DUKHCONP2BZ5STUG1015 SS+8d, DUKHCONP2BZ5STUG1015 FF+8d | 2d | 0d | STEEL FIXERS SK [275 h]; CARPENTERS SK [440 h]; CONCRETE MASON SK [48 h]; LABOR - CIVIL [572.25 h]; REINFORCEMENT BARS QTY [3432 kg]; FORMWORK QTY [220 Sqm]; CONCRETE QTY [24 Cum] | 27,759 | 25 | 2BP5SBUG25 | DUKHCON2BP5STUG1020 | DUKHCONP2BZ5STUG1020 | DH | CON | 2B | Z5 | ST | SB | B08 | B08-D02 | RES-2B | UG | REM |
| DUKHCONP2BZ5STUG1025 |  | Construction of neck of columns | 20d | 2013-06-16 | 2013-07-08 | DUKHCONP2BZ5STUG1020 FF+8d, DUKHCONP2BZ5STUG1020 SS+8d | 2d | 0d | STEEL FIXERS SK [458 h]; CARPENTERS SK [312 h]; CONCRETE MASON SK [24 h]; LABOR - CIVIL [595.5 h]; REINFORCEMENT BARS QTY [5719 kg]; FORMWORK QTY [156 Sqm]; CONCRETE QTY [12 Cum] | 33,259 | 30 | 2BP5SBUG30 | DUKHCON2BP5STUG1025 | DUKHCONP2BZ5STUG1025 | DH | CON | 2B | Z5 | ST | SB | B08 | B08-D02 | RES-2B | UG | REM |
| DUKHCONP2BZ5STUG1030 |  | Waterproofing Footing & Neck Column | 20d | 2013-06-25 | 2013-07-17 | DUKHCONP2BZ5STUG1025 FF+8d, DUKHCONP2BZ5STUG1025 SS+8d | 2d | 0d | LABOR- SUBCONTRACTOR [34.5 h]; WATERPROOFING QTY [113 Sqm]; WATERPROOFING SPECIALIST SK [91 h] | 4,720 | 35 | 2BP5SBUG35 | DUKHCON2BP5STUG1030 | DUKHCONP2BZ5STUG1030 | DH | CON | 2B | Z5 | ST | SB | B08 | B08-D02 | RES-2B | UG | REM |
| DUKHCONP2BZ5STUG1035 |  | Backfilling Upto Grade Beam Bottom | 20d | 2013-07-07 | 2013-07-29 | DUKHCONP2BZ5STUG1030 FF+10d, DUKHCONP2BZ5STUG1030 SS+10d, DUKHCONP2BZ4STUG1035 | 2d | 0d | EQUIP OPERATORS [660 h]; LABOR - CIVIL [162 h]; BACKFILLING QTY [672 Cum]; BOBCAT [300 h]; PLATE COMPACTOR [300 h]; TRUCK [60 h] | 19,354 | 40 | 2BP5SBUG40 | DUKHCON2BP5STUG1035 | DUKHCONP2BZ5STUG1035 | DH | CON | 2B | Z5 | ST | SB | B08 | B08-D01 | RES-2B | UG |  |
| DUKHCONP2BZ5STUG1040 |  | Construction of Grade Beams | 25d | 2013-07-18 | 2013-08-19 | DUKHCONP2BZ5STUG1035 FF+10d, DUKHCONP2BZ5STUG1035 SS+10d, DUKHCONP2BZ4STUG1040 | 2d | 0d | BLINDING MASON SK [74 h]; STEEL FIXERS SK [183 h]; CARPENTERS SK [1024 h]; CONCRETE MASON SK [48 h]; LABOR - CIVIL [996.75 h]; BLINDING QTY [92 Sqm]; REINFORCEMENT BARS QTY [2286 kg]; FORMWORK QTY [512 Sqm]; CONCRETE QTY [24 Cum] | 76,799 | 45 | 2BP5SBUG45 | DUKHCON2BP5STUG1040 | DUKHCONP2BZ5STUG1040 | DH | CON | 2B | Z5 | ST | SB | B08 | B08-D02 | RES-2B | UG | REM |
| DUKHCONP2BZ5STUG1045 |  | Construction of slab on grade | 25d | 2013-08-13 | 2013-09-10 | DUKHCONP2BZ5STUG1040 FF+10d, DUKHCONP2BZ5STUG1040 SS+10d, DUKHCONP2BZ5PLUG4300 SS+7d, DUKHCONP2BZ5PLUG4300 FF+7d | 2d | 0d | BLINDING MASON SK [508 h]; STEEL FIXERS SK [205 h]; CONCRETE MASON SK [168 h]; LABOR - CIVIL [660.75 h]; BLINDING QTY [634 Sqm]; CONCRETE QTY [84 Cum]; WELDED WIRE MESH [768 Sqm] | 100,548 | 50 | 2BP5SBUG50 | DUKHCON2BP5STUG1045 | DUKHCONP2BZ5STUG1045 | DH | CON | 2B | Z5 | ST | SB | B08 | B08-D02 | RES-2B | UG | REM |

Notes:
- DUKHCONP2BZ4WEEX5030: Expenses: P2B-External works within the Plot Curtilage 672
- DUKHCONP2BZ4WEEX5035: Expenses: P2B-External works within the Plot Curtilage 10260
- DUKHCONP2BZ4WEEX5040: Expenses: P2B-External works within the Plot Curtilage 11503
- DUKHCONP2BZ4WEEX5045: Expenses: P2B-External works within the Plot Curtilage 10062
- DUKHCONP2BZ4WEEX5050: Expenses: P2B-External works within the Plot Curtilage 32436
- DUKHCONP2BZ4WEEX5060: Expenses: P2B-External works within the Plot Curtilage 33315
- DUKHCONP2BZ4WEEX5065: Expenses: P2B-Plumbing and Drainage works 450453
- DUKHCONP2BZ4MSEX5335: Expenses: P2B-External works within the Plot Curtilage 25259
- DUKHCONP2BZ4WEEX5070: Expenses: P2B-Metal work 11118
- DUKHCONP2BZ4HDEX5090: Expenses: P2B-External works within the Plot Curtilage 18554
- DUKHCONP2BZ4HDEX5095: Expenses: P2B-External works within the Plot Curtilage 5004
- DUKHCONP2BZ4HDEX5100: Expenses: P2B-External works within the Plot Curtilage 23084
- DUKHCONP2BZ4SLEX5105: Expenses: P2B-External works within the Plot Curtilage 36162
- DUKHCONP2BZ4SLEX5110: Expenses: P2B-External works within the Plot Curtilage 81432
- DUKHCONP2BZ4ACTC8000: Expenses: P2B-Air-conditioning and Ventilation works 582
- DUKHCONP2BZ4ELTC8010: Expenses: P2B-Electrical Installations 19374
- DUKHCONP2BZ4PLTC8005: Expenses: P2B-Plumbing and Drainage works 2886
- DUKHCONP2BZ5STUG1000: Expenses: P2B-Excavation and Earth Works 39690
- DUKHCONP2BZ5STUG1005: Expenses: P2B-Excavation and Earth Works 4913
- DUKHCONP2BZ5STUG1010: Expenses: P2B-Concrete Works 529
- DUKHCONP2BZ5STUG1015: Expenses: P2B-Concrete Works 12357
- DUKHCONP2BZ5STUG1020: Expenses: P2B-Concrete Works 27759
- DUKHCONP2BZ5STUG1025: Expenses: P2B-Concrete Works 33259
- DUKHCONP2BZ5STUG1030: Expenses: P2B-Concrete Works 4720
- DUKHCONP2BZ5STUG1035: Expenses: P2B-Excavation and Earth Works 19354
- DUKHCONP2BZ5STUG1040: Expenses: P2B-Concrete Works 76799
- DUKHCONP2BZ5STUG1045: Expenses: P2B-Concrete Works 100548

| ID | WBS | Activity | Duration | Start | Finish | Predecessors | Total float | Free float | Resources | Cost | CODE | rem | P3 ACTID | P6 ID (old) | NP61D | PROJECT | PHASES | PACKAGE | PART | ELEMENTS | STEP | FLOORS | BILL NOS | BILL DIVISION | RES PACK | EXECUTER |
| --- | --- | --- | --- | --- | --- | --- | --- | --- | --- | --- | --- | --- | --- | --- | --- | --- | --- | --- | --- | --- | --- | --- | --- | --- | --- | --- |
|  | 15 | **SUPERSTRUCTURE** |  | 2013-08-31 | 2013-12-08 |  |  |  |  |  |  |  |  |  |  |  |  |  |  |  |  |  |  |  |  |  |
|  | 10 | **GROUND FLOOR** |  | 2013-08-31 | 2013-10-23 |  |  |  |  |  |  |  |  |  |  |  |  |  |  |  |  |  |  |  |  |  |
| DUKHCONP2BZ5STGF2000 |  | Column-Rebar & Formwork | 20d | 2013-08-31 | 2013-09-22 | DUKHCONP2BZ5STUG1045 SS+10d, DUKHCONP2BZ4STGF2000, DUKHCONP2BZ5STUG1045 FF+10d | 2d | 0d | STEEL FIXERS SK [151 h]; CARPENTERS SK [720 h]; LABOR - CIVIL [653.25 h]; REINFORCEMENT BARS QTY [1883 kg]; FORMWORK QTY [360 Sqm] | 26,498 | 10 | REM | 2BP5SPGF10 | DUKHCON2BP5STGF2000 | DUKHCONP2BZ5STGF2000 | DH | CON | 2B | Z5 | ST | SP | GF | B08 | B08-D02 | RES-2B |  |
| DUKHCONP2BZ5STGF2005 |  | Column-Concrete | 15d | 2013-09-10 | 2013-09-26 | DUKHCONP2BZ5STGF2000 SS+7d, DUKHCONP2BZ5STGF2000 FF+4d | 2d | 0d | CONCRETE MASON SK [60 h]; LABOR - CIVIL [45 h]; CONCRETE QTY [30 Cum] | 8,613 | 15 | REM | 2BP5SPGF15 | DUKHCON2BP5STGF2005 | DUKHCONP2BZ5STGF2005 | DH | CON | 2B | Z5 | ST | SP | GF | B08 | B08-D02 | RES-2B |  |
| DUKHCONP2BZ5STGF2010 |  | Beam, Stairs ,Slab-Rebar & Formwork | 25d | 2013-09-18 | 2013-10-16 | DUKHCONP2BZ5STGF2005 SS+7d, DUKHCONP2BZ5STGF2005 FF+7d | 2d | 0d | STEEL FIXERS SK [1312 h]; CARPENTERS SK [2160 h]; LABOR - CIVIL [2604 h]; REINFORCEMENT BARS QTY [16392 kg]; FORMWORK QTY [1080 Sqm] | 156,724 | 20 | REM | 2BP5SPGF20 | DUKHCON2BP5STGF2010 | DUKHCONP2BZ5STGF2010 | DH | CON | 2B | Z5 | ST | SP | GF | B08 | B08-D02 | RES-2B |  |
| DUKHCONP2BZ5STGF2015 |  | Beam, Stairs ,Slab-Concrete | 15d | 2013-10-05 | 2013-10-23 | DUKHCONP2BZ4STGF2015, DUKHCONP2BZ5STGF2010 SS+10d, DUKHCONP2BZ5STGF2010 FF+4d | 2d |  | CONCRETE MASON SK [744 h]; LABOR - CIVIL [558 h]; CONCRETE QTY [372 Cum] | 114,669 | 25 | REM | 2BP5SPGF25 | DUKHCON2BP5STGF2015 | DUKHCONP2BZ5STGF2015 | DH | CON | 2B | Z5 | ST | SP | GF | B08 | B08-D02 | RES-2B |  |
|  | 20 | **ROOF** |  | 2013-11-09 | 2013-12-08 |  |  |  |  |  |  |  |  |  |  |  |  |  |  |  |  |  |  |  |  |  |
| DUKHCONP2BZ5STRF2060 |  | Construction of Parapets | 20d | 2013-11-09 | 2013-12-01 | DUKHCONP2BZ4STRF2060, DUKHCONP2BZ5STGF2015 FF+7d, DUKHCONP2BZ5STGF2015 SS+7d | 19d | 0d | STEEL FIXERS SK [46 h]; CARPENTERS SK [228 h]; CONCRETE MASON SK [24 h]; LABOR - CIVIL [223.5 h]; REINFORCEMENT BARS QTY [565 kg]; FORMWORK QTY [114 Sqm]; CONCRETE QTY [12 Cum] | 13,038 | 30 | REM | 2BP5SPRF30 | DUKHCON2BP5STRF2060 | DUKHCONP2BZ5STRF2060 | DH | CON | 2B | Z5 | ST | SP | RF | B08 | B08-D02 | RES-2B |  |
| DUKHCONP2BZ5STRF2065 |  | Construction of up stands/Plinth | 20d | 2013-11-16 | 2013-12-08 | DUKHCONP2BZ5STRF2060 FF+6d, DUKHCONP2BZ5STRF2060 SS+6d | 36d | 10d | CARPENTERS SK [36 h]; CONCRETE MASON SK [12 h]; LABOR - CIVIL [36 h]; FORMWORK QTY [18 Sqm]; CONCRETE QTY [6 Cum] | 3,048 | 35 | REM | 2BP5SPRF35 | DUKHCON2BP5STRF2065 | DUKHCONP2BZ5STRF2065 | DH | CON | 2B | Z5 | ST | SP | RF | B08 | B08-D02 | RES-2B |  |
|  | 15 | **FINISHING WORKS** |  | 2013-11-03 | 2014-05-15 |  |  |  |  |  |  |  |  |  |  |  |  |  |  |  |  |  |  |  |  |  |
|  | 10 | **INTERNAL FINISHES** |  | 2013-11-03 | 2014-05-15 |  |  |  |  |  |  |  |  |  |  |  |  |  |  |  |  |  |  |  |  |  |
|  | 10 | **GROUND FLOOR** |  | 2013-11-03 | 2014-05-15 |  |  |  |  |  |  |  |  |  |  |  |  |  |  |  |  |  |  |  |  |  |
| DUKHCONP2BZ5ARGF3000 |  | Block work | 25d | 2013-11-03 | 2013-12-01 | DUKHCONP2BZ5STGF2015 FF+21d, DUKHCONP2BZ5STGF2015 SS+21d, DUKHCONP2BZ4ARGF3000 | 0d |  | BLOCK MASON SK [3648 h]; LABOR - CIVIL [2052 h]; BLOCK QTY [1824 Sqm] | 145,094 | 10 | REM | 2BP5IFGF10 | DUKHCON2BP5ARGF3000 | DUKHCONP2BZ5ARGF3000 | DH | CON | 2B | Z5 | FIN | IF | GF | B08 | B08-D03 | RES-2B |  |
| DUKHCONP2BZ5ARGF3005 |  | Plastering work | 25d | 2013-11-26 | 2013-12-25 | DUKHCONP2BZ5ARGF3000 SS+8d, DUKHCONP2BZ4ARGF3005, DUKHCONP2BZ5PLGF4305 FF+5d, DUKHCONP2BZ5PLGF4305 SS+8d, DUKHCONP2BZ5ELGF4000 SS+5d, DUKHCONP2BZ5ELGF4000 FF+5d, DUKHCONP2BZ5ARGF3000 FF+8d | 0d |  | PLASTER MASON SK [1824 h]; LABOR - CIVIL [1026 h]; PLASTER QTY [1140 Sqm] | 14,820 | 12 | REM | 2BP5IFGF12 | DUKHCON2BP5ARGF3005 | DUKHCONP2BZ5ARGF3005 | DH | CON | 2B | Z5 | FIN | IF | GF | B08 | B08-D10 | RES-2B |  |
| DUKHCONP2BZ5ARGF3010 |  | Flooring screed | 20d | 2013-12-08 | 2013-12-31 | DUKHCONP2BZ5ARGF3005 SS+5d, DUKHCONP2BZ4ARGF3010, DUKHCONP2BZ5ARGF3005 FF+5d | 20d |  | SCREED MASON SK [461 h]; LABOR - CIVIL [173.25 h]; FLOORING SCREED QTY [576 Sqm] | 19,008 | 15 | REM | 2BP5IFGF15 | DUKHCON2BP5ARGF3010 | DUKHCONP2BZ5ARGF3010 | DH | CON | 2B | Z5 | FIN | IF | GF | B08 | B08-D10 | RES-2B |  |
| DUKHCONP2BZ5ARGF3015 |  | Wet area waterproofing & Protection Screed | 20d | 2013-12-12 | 2014-01-05 | DUKHCONP2BZ5ARGF3005 FF+9d, DUKHCONP2BZ5ARGF3005 SS+9d | 0d |  | LABOR- SUBCONTRACTOR [24 h]; WETAREA WATERPROOFING QTY [78 Sqm]; WATERPROOFING SPECIALIST SK [63 h] | 2,652 | 18 | REM | 2BP5IFGF18 | DUKHCON2BP5ARGF3015 | DUKHCONP2BZ5ARGF3015 | DH | CON | 2B | Z5 | FIN | IF | GF | B08 | B08-D10 | RES-2B |  |
| DUKHCONP2BZ5ARGF3020 |  | Ceramic Wall Tiling | 15d | 2014-01-01 | 2014-01-18 | DUKHCONP2BZ5PLGF4305 SS+11d, DUKHCONP2BZ5PLGF4305 FF+11d, DUKHCONP2BZ5ARGF3015 SS+11d, DUKHCONP2BZ5ARGF3015 FF+11d, DUKHCONP2BZ5PLGF4310 FF+5d, DUKHCONP2BZ5PLGF4310 SS+5d | 0d |  | TILE MASON SK [648 h]; LABOR- SUBCONTRACTOR [364.5 h]; CERAMIC WALL TILE QTY [324 Sqm] | 32,379 | 24 | REM | 2BP5IFGF24 | DUKHCON2BP5ARGF3020 | DUKHCONP2BZ5ARGF3020 | DH | CON | 2B | Z5 | FIN | IF | GF | B08 | B08-D10 | RES-2B |  |
| DUKHCONP2BZ5ARGF3030 |  | Paint First coat | 20d | 2014-01-11 | 2014-02-02 | DUKHCONP2BZ5ARGF3005 FF+10d, DUKHCONP2BZ5ARGF3005 SS+10d, DUKHCONP2BZ4ARGF3030 | 6d |  | LABOR- SUBCONTRACTOR [495 h]; FIRSTCOAT PAINT QTY [1650 Sqm]; PAINTERS SK [1320 h] | 5,580 | 21 | REM | 2BP5IFGF21 | DUKHCON2BP5ARGF3030 | DUKHCONP2BZ5ARGF3030 | DH | CON | 2B | Z5 | FIN | IF | GF | B08 | B08-D11 | RES-2B | ENT |
| DUKHCONP2BZ5ARGF3025 |  | Porcelain Tile flooring | 20d | 2014-01-18 | 2014-02-09 | DUKHCONP2BZ5ARGF3020 FF+14d, DUKHCONP2BZ5ARGF3010 FF+14d, DUKHCONP2BZ4ARGF3025, DUKHCONP2BZ5ARGF3020 SS+14d, DUKHCONP2BZ5ARGF3010 SS+14d | 0d |  | TILE MASON SK [659 h]; LABOR- SUBCONTRACTOR [371.25 h]; PORCELAIN FLOORING QTY [576 Sqm] | 51,620 | 27 | REM | 2BP5IFGF27 | DUKHCON2BP5ARGF3025 | DUKHCONP2BZ5ARGF3025 | DH | CON | 2B | Z5 | FIN | IF | GF | B08 | B08-D10 | RES-2B |  |
| DUKHCONP2BZ5ARGF3045 |  | Fixing of Suspension systems | 15d | 2014-02-09 | 2014-02-26 | DUKHCONP2BZ5ARGF3025 FF+14d, DUKHCONP2BZ5ELGF4010 FF+14d, DUKHCONP2BZ5ARGF3030 FF+14d, DUKHCONP2BZ5ARGF3030 SS+14d, DUKHCONP2BZ5ARGF3025 SS+14d, DUKHCONP2BZ5ELGF4010 SS+14d | 0d |  | LABOR- SUBCONTRACTOR [235.5 h]; SUSPENSION QTY [522 Sqm]; FALSE CEILING SKILLED SK [418 h] | 10,230 | 39 | REM | 2BP5IFGF39 | DUKHCON2BP5ARGF3045 | DUKHCONP2BZ5ARGF3045 | DH | CON | 2B | Z5 | FIN | IF | GF | B08 | B08-D10 | RES-2B | SUS |
| DUKHCONP2BZ5ARGF3035 |  | Slate Tile Flooring & Skirting | 18d | 2014-02-23 | 2014-03-15 | DUKHCONP2BZ4ARGF3035, DUKHCONP2BZ5ARGF3010 FF+13d, DUKHCONP2BZ5ARGF3025 FF+13d, DUKHCONP2BZ5ARGF3025 SS+13d, DUKHCONP2BZ5ARGF3010 SS+13d | 13d | 0d | TILE MASON SK [1008 h]; LABOR- SUBCONTRACTOR [567 h]; SLATE TILE QTY [630 Sqm] | 107,729 | 33 | REM | 2BP5IFGF33 | DUKHCON2BP5ARGF3035 | DUKHCONP2BZ5ARGF3035 | DH | CON | 2B | Z5 | FIN | IF | GF | B08 | B08-D10 | RES-2B |  |
| DUKHCONP2BZ5ARGF3060 |  | Gypsum board false ceiling | 20d | 2014-02-26 | 2014-03-20 | DUKHCONP2BZ4ARGF3060, DUKHCONP2BZ5ACGF4600 SS+14d, DUKHCONP2BZ5ARGF3045 FF+14d, DUKHCONP2BZ5ACGF4600 FF+14d, DUKHCONP2BZ5ARGF3045 SS+14d | 0d |  | LABOR- SUBCONTRACTOR [235.5 h]; FALSE CEILING QTY [522 Sqm]; FALSE CEILING SKILLED SK [418 h] | 30,024 | 45 | REM | 2BP5IFGF45 | DUKHCON2BP5ARGF3060 | DUKHCONP2BZ5ARGF3060 | DH | CON | 2B | Z5 | FIN | IF | GF | B08 | B08-D10 | RES-2B | GYP |
| DUKHCONP2BZ5ARGF3065 |  | Wooden door | 15d | 2014-03-10 | 2014-03-26 | DUKHCONP2BZ5ARGF3035 FF+7d, DUKHCONP2BZ5ARGF3035 SS+7d, DUKHCONP2BZ5ARGF3060 SS+5d, DUKHCONP2BZ5ARGF3060 FF+5d | 10d | 0d | LABOR- SUBCONTRACTOR [54 h]; WOODEN DOOR QTY [36 ea]; DOOR ERECTOR SK [144 h] | 113,057 | 48 | REM | 2BP5IFGF48 | DUKHCON2BP5ARGF3065 | DUKHCONP2BZ5ARGF3065 | DH | CON | 2B | Z5 | FIN | IF | GF | B08 | B08-D05 | RES-2B |  |
| DUKHCONP2BZ5ARGF3040 |  | Cobble Tile flooring | 15d | 2014-03-13 | 2014-03-30 | DUKHCONP2BZ5ARGF3035 FF+13d, DUKHCONP2BZ5ARGF3010 FF+13d, DUKHCONP2BZ4ARGF3040, DUKHCONP2BZ5ARGF3010 SS+13d, DUKHCONP2BZ5ARGF3025 SS+13d, DUKHCONP2BZ5ARGF3035 SS+13d, DUKHCONP2BZ5ARGF3025 FF+13d | 17d |  | TILE MASON SK [192 h]; LABOR- SUBCONTRACTOR [108 h]; COBBLE STONE QTY [120 Sqm] | 10,008 | 30 | REM | 2BP5IFGF30 | DUKHCON2BP5ARGF3040 | DUKHCONP2BZ5ARGF3040 | DH | CON | 2B | Z5 | FIN | IF | GF | B08 | B08-D10 | RES-2B |  |
| DUKHCONP2BZ5ARGF3075 |  | Carpentry & Joinery Works | 18d | 2014-03-16 | 2014-04-05 | DUKHCONP2BZ5ARGF3065 SS+5d, DUKHCONP2BZ5ARGF3065 FF+5d, DUKHCONP2BZ4ARGF3075 | 14d | 6d | WARDROBE QTY [12 ea]; JOINERY WORK SK [384 h]; CABINET QTY [36 ea]; LABOR- SUBCONTRACTOR [144 h] | 88,572 | 57 | REM | 2BP5IFGF57 | DUKHCON2BP5ARGF3075 | DUKHCONP2BZ5ARGF3075 | DH | CON | 2B | Z5 | FIN | IF | GF | B08 | B08-D05 | RES-2B |  |
| DUKHCONP2BZ5ARGF3080 |  | Aluminum windows | 18d | 2014-03-27 | 2014-04-16 | DUKHCONP2BZ5ARGF3065 | 10d |  | LABOR- SUBCONTRACTOR [36 h]; ALUMINIUM WINDOWS QTY [36 ea]; WINDOW ERECTOR SK [96 h] | 27,398 | 54 | REM | 2BP5IFGF54 | DUKHCON2BP5ARGF3080 | DUKHCONP2BZ5ARGF3080 | DH | CON | 2B | Z5 | FIN | IF | GF | B08 | B08-D06 | RES-2B |  |
| DUKHCONP2BZ5ARGF3090 |  | Installation of Granite Counter Top | 15d | 2014-04-02 | 2014-04-19 | DUKHCONP2BZ5ARGF3075 FF+6d, DUKHCONP2BZ5ARGF3075 SS+7d, DUKHCONP2BZ4ARGF3090 | 8d |  | GRANITE MASON SK [72 h]; LABOR- SUBCONTRACTOR [27 h]; GRANITE COUNTER TOP QTY [18 ea] | 21,356 | 60 | REM | 2BP5IFGF60 | DUKHCON2BP5ARGF3090 | DUKHCONP2BZ5ARGF3090 | DH | CON | 2B | Z5 | FIN | IF | GF | B08 | B08-D10 | RES-2B |  |
| DUKHCONP2BZ5ARGF3095 |  | Final Painting | 25d | 2014-04-17 | 2014-05-15 | DUKHCONP2BZ5ARGF3030 SS+10d, DUKHCONP2BZ5ARGF3035 SS+13d, DUKHCONP2BZ5ARGF3080 SS+8d, DUKHCONP2BZ5ARGF3030 FF+10d, DUKHCONP2BZ5ARGF3040 SS+13d, DUKHCONP2BZ5ARGF3065, DUKHCONP2BZ5ARGF3080 FF+8d, DUKHCONP2BZ5ARGF3040 FF+13d, DUKHCONP2BZ5ARGF3060 FF+8d, DUKHCONP2BZ5ARGF3090 FF+5d, DUKHCONP2BZ5ARGF3090 SS+5d, DUKHCONP2BZ5ACGF4610 FF+10d, DUKHCONP2BZ5ARGF3035 FF+13d, DUKHCONP2BZ5ACGF4610 SS+10d, DUKHCONP2BZ5ARGF3060 SS+8d | 0d |  | LABOR- SUBCONTRACTOR [495 h]; PAINT QTY [1650 Sqm]; PAINTERS SK [1320 h] | 23,267 | 66 | REM | 2BP5IFGF66 | DUKHCON2BP5ARGF3095 | DUKHCONP2BZ5ARGF3095 | DH | CON | 2B | Z5 | FIN | IF | GF | B08 | B08-D11 | RES-2B | PNT |

Notes:
- DUKHCONP2BZ5STGF2000: Expenses: P2B-Concrete Works 26498
- DUKHCONP2BZ5STGF2005: Expenses: P2B-Concrete Works 8613
- DUKHCONP2BZ5STGF2010: Expenses: P2B-Concrete Works 156724
- DUKHCONP2BZ5STGF2015: Expenses: P2B-Concrete Works 114669
- DUKHCONP2BZ5STRF2060: Expenses: P2B-Concrete Works 13038
- DUKHCONP2BZ5STRF2065: Expenses: P2B-Concrete Works 3048
- DUKHCONP2BZ5ARGF3000: Expenses: P2B-Block work 145094
- DUKHCONP2BZ5ARGF3005: Expenses: P2B-Finishes 14820
- DUKHCONP2BZ5ARGF3010: Expenses: P2B-Finishes 19008
- DUKHCONP2BZ5ARGF3015: Expenses: P2B-Finishes 2652
- DUKHCONP2BZ5ARGF3020: Expenses: P2B-Finishes 32379
- DUKHCONP2BZ5ARGF3030: Expenses: P2B-Painting and Decorating 5580
- DUKHCONP2BZ5ARGF3025: Expenses: P2B-Finishes 51620
- DUKHCONP2BZ5ARGF3045: Expenses: P2B-Finishes 10230
- DUKHCONP2BZ5ARGF3035: Expenses: P2B-Finishes 107729
- DUKHCONP2BZ5ARGF3060: Expenses: P2B-Finishes 30024
- DUKHCONP2BZ5ARGF3065: Expenses: P2B-Carpentry and Joinery 113057
- DUKHCONP2BZ5ARGF3040: Expenses: P2B-Finishes 10008
- DUKHCONP2BZ5ARGF3075: Expenses: P2B-Carpentry and Joinery 88572
- DUKHCONP2BZ5ARGF3080: Expenses: P2B-Metal work 27398
- DUKHCONP2BZ5ARGF3090: Expenses: P2B-Finishes 21356
- DUKHCONP2BZ5ARGF3095: Expenses: P2B-Painting and Decorating 23267

| ID | WBS | Activity | Duration | Start | Finish | Predecessors | Total float | Free float | Resources | Cost | CODE | P3 ACTID | P6 ID (old) | NP61D | PROJECT | PHASES | PACKAGE | PART | ELEMENTS | STEP | FLOORS | BILL NOS | BILL DIVISION | RES PACK | rem |
| --- | --- | --- | --- | --- | --- | --- | --- | --- | --- | --- | --- | --- | --- | --- | --- | --- | --- | --- | --- | --- | --- | --- | --- | --- | --- |
|  | 15 | **EXTERNAL FINISHES** |  | 2013-12-30 | 2014-03-30 |  |  |  |  |  |  |  |  |  |  |  |  |  |  |  |  |  |  |  |  |
|  | 10 | **ROOF** |  | 2013-12-30 | 2014-03-02 |  |  |  |  |  |  |  |  |  |  |  |  |  |  |  |  |  |  |  |  |
| DUKHCONP2BZ5ARRF3625 |  | Laying of Pitched Roof | 25d | 2013-12-30 | 2014-01-27 | DUKHCONP2BZ5STRF2065 SS+10d, DUKHCONP2BZ5STRF2060 FF+10d, DUKHCONP2BZ5STRF2060 SS+10d, DUKHCONP2BZ5STRF2065 FF+10d, DUKHCONP2BZ4ARRF3625 | 30d | 0d | INTERLOCK MASON SK [184 h]; LABOR- SUBCONTRACTOR [72 h]; ROOF TILES QTY [234 Sqm] | 120,042 | 10 | 2BP5EFRF05 | DUKHCON2BP5ARRF3625 | DUKHCONP2BZ5ARRF3625 | DH | CON | 2B | Z5 | FIN | EF | RF | B08 | B08-D04 | RES-2B |  |
| DUKHCONP2BZ5ARRF3630 |  | Leveling Screed for Waterproofing | 18d | 2014-01-13 | 2014-02-02 | DUKHCONP2BZ5ARRF3625 FF+5d, DUKHCONP2BZ5ARRF3625 SS+5d | 30d | 0d | SCREED MASON SK [125 h]; LABOR- SUBCONTRACTOR [70.5 h]; ROOF WP SCREED QTY [312 Sqm] | 16,134 | 15 | 2BP5EFRF10 | DUKHCON2BP5ARRF3630 | DUKHCONP2BZ5ARRF3630 | DH | CON | 2B | Z5 | FIN | EF | RF | B08 | B08-D04 | RES-2B | REM |
| DUKHCONP2BZ5ARRF3635 |  | Laying of Waterproofing Membrane | 18d | 2014-01-19 | 2014-02-08 | DUKHCONP2BZ5ARRF3630 FF+5d, DUKHCONP2BZ5ARRF3630 SS+5d | 30d | 0d | LABOR- SUBCONTRACTOR [197.25 h]; ROOF WP MEMBRANE QTY [984 Sqm]; WATERPROOFING SPECIALIST SK [525 h] | 25,318 | 20 | 2BP5EFRF15 | DUKHCON2BP5ARRF3635 | DUKHCONP2BZ5ARRF3635 | DH | CON | 2B | Z5 | FIN | EF | RF | B08 | B08-D04 | RES-2B | REM |
| DUKHCONP2BZ5ARRF3640 |  | Installation of Insulation & Protection | 18d | 2014-01-23 | 2014-02-13 | DUKHCONP2BZ5ARRF3635 FF+4d, DUKHCONP2BZ4ARRF3640, DUKHCONP2BZ5ARRF3635 SS+4d | 30d | 0d | LABOR- SUBCONTRACTOR [93.75 h]; ROOF WP INSULATION QTY [624 Sqm]; WATERPROOFING SPECIALIST SK [250 h] | 15,264 | 25 | 2BP5EFRF20 | DUKHCON2BP5ARRF3640 | DUKHCONP2BZ5ARRF3640 | DH | CON | 2B | Z5 | FIN | EF | RF | B08 | B08-D04 | RES-2B | REM |
| DUKHCONP2BZ5ARRF3645 |  | Lime Stone Chips & Paving slab Installation | 18d | 2014-02-01 | 2014-02-22 | DUKHCONP2BZ5ARRF3640 FF+7d, DUKHCONP2BZ5ARRF3640 SS+7d | 30d | 0d | TILE MASON SK [125 h]; LABOR- SUBCONTRACTOR [94.5 h]; LIME STONE QTY [312 Sqm]; PRECAST PAVING SLAB QTY [312 Sqm]; PRE CAST CONCRETE SK [125 h] | 29,640 | 35 | 2BP5EFRF25 | DUKHCON2BP5ARRF3645 | DUKHCONP2BZ5ARRF3645 | DH | CON | 2B | Z5 | FIN | EF | RF | B08 | B08-D04 | RES-2B | REM |
| DUKHCONP2BZ5ARRF3660 |  | Installation of Access Ladder | 20d | 2014-02-06 | 2014-03-02 | DUKHCONP2BZ4ARRF3660, DUKHCONP2BZ5ARRF3645 SS+5d, DUKHCONP2BZ5ARRF3645 FF+5d | 54d | 14d | LABOR- SUBCONTRACTOR [36 h]; LADDER QTY [12 ea]; LADDER ERECTOR SK [96 h] | 12,566 | 40 | 2BP5EFRF40 | DUKHCON2BP5ARRF3660 | DUKHCONP2BZ5ARRF3660 | DH | CON | 2B | Z5 | FIN | EF | RF | B08 | B08-D06 | RES-2B | REM |
|  | 15 | **ELEVATION** |  | 2014-02-13 | 2014-03-30 |  |  |  |  |  |  |  |  |  |  |  |  |  |  |  |  |  |  |  |  |
| DUKHCONP2BZ5AREL3665 |  | External Plastering | 25d | 2014-02-13 | 2014-03-13 | DUKHCONP2BZ5ARRF3645 SS+10d, DUKHCONP2BZ4AREL3665, DUKHCONP2BZ5STRF2065 SS+7d, DUKHCONP2BZ5ARRF3645 FF+10d, DUKHCONP2BZ5STRF2065 FF+7d | 30d | 0d | PLASTER MASON SK [2568 h]; LABOR - CIVIL [1444.5 h]; EXTERNAL PLASTER QTY [1284 Sqm] | 30,816 | 10 | 2BP5EFEL10 | DUKHCON2BP5AREL3665 | DUKHCONP2BZ5AREL3665 | DH | CON | 2B | Z5 | FIN | EF | EL | B08 | B08-D10 | RES-2B | REM |
| DUKHCONP2BZ5AREL3680 |  | External Painting | 20d | 2014-03-08 | 2014-03-30 | DUKHCONP2BZ4AREL3680, DUKHCONP2BZ5AREL3665 FF+14d, DUKHCONP2BZ5AREL3665 SS+14d, DUKHCONP2BZ5ARRF3660 FF+10d | 40d |  | LABOR- SUBCONTRACTOR [384 h]; PAINT QTY [1284 Sqm]; PAINTERS SK [1024 h] | 30,274 | 20 | 2BP5EFEL20 | DUKHCON2BP5AREL3680 | DUKHCONP2BZ5AREL3680 | DH | CON | 2B | Z5 | FIN | EF | EL | B08 | B08-D11 | RES-2B |  |
|  | 20 | **MEP WORKS** |  | 2013-08-01 | 2014-05-07 |  |  |  |  |  |  |  |  |  |  |  |  |  |  |  |  |  |  |  |  |
|  | 10 | **ELECTRICAL WORKS** |  | 2013-11-17 | 2014-05-05 |  |  |  |  |  |  |  |  |  |  |  |  |  |  |  |  |  |  |  |  |
|  | 10 | **GROUND FLOOR** |  | 2013-11-17 | 2014-04-30 |  |  |  |  |  |  |  |  |  |  |  |  |  |  |  |  |  |  |  |  |
| DUKHCONP2BZ5ELGF4000 |  | Fixing of wall conduits & switch socket boxes | 20d | 2013-11-17 | 2013-12-09 | DUKHCONP2BZ5ARGF3000 SS+7d, DUKHCONP2BZ5ARGF3000 FF+7d | 3d |  | LABOR- SUBCONTRACTOR [102 h]; ELECTRICIANS SK [492.8 h]; SOCKET BOXES QTY [222 ea]; CODUITS QTY [222 lm] | 23,814 | 10 | 2BP5EWGF10 | DUKHCON2BP5ELGF4000 | DUKHCONP2BZ5ELGF4000 | DH | CON | 2B | Z5 | MEP | EW | GF | B08 | B08-D09 | RES-2B |  |
| DUKHCONP2BZ5ELGF4005 |  | Cable tray & trunking installation | 20d | 2013-12-25 | 2014-01-16 | DUKHCONP2BZ4ELGF4005, DUKHCONP2BZ5ELGF4000 FF+7d, DUKHCONP2BZ5ELGF4000 SS+7d | 13d | 0d | LABOR- SUBCONTRACTOR [432 h]; ELECTRICIANS SK [1612.8 h]; CABLE TRAY QTY [288 lm] | 9,900 | 15 | 2BP5EWGF15 | DUKHCON2BP5ELGF4005 | DUKHCONP2BZ5ELGF4005 | DH | CON | 2B | Z5 | MEP | EW | GF | B08 | B08-D09 | RES-2B |  |
| DUKHCONP2BZ5ELGF4010 |  | Installation of wiring & Main Cabling | 20d | 2014-01-02 | 2014-01-25 | DUKHCONP2BZ5ELGF4005 FF+7d, DUKHCONP2BZ5ELGF4005 SS+7d | 13d |  | LABOR- SUBCONTRACTOR [90 h]; ELECTRICIANS SK [324.8 h]; CABLE QTY [288 lm] | 71,442 | 20 | 2BP5EWGF20 | DUKHCON2BP5ELGF4010 | DUKHCONP2BZ5ELGF4010 | DH | CON | 2B | Z5 | MEP | EW | GF | B08 | B08-D09 | RES-2B |  |
| DUKHCONP2BZ5ELGF4020 |  | Installation of DBS,MCCB Accessories. | 20d | 2014-03-06 | 2014-03-29 | DUKHCONP2BZ5ARGF3060 SS+7d, DUKHCONP2BZ5ELGF4010 FF+5d, DUKHCONP2BZ5ELGF4010 SS+5d, DUKHCONP2BZ4ELGF4020, DUKHCONP2BZ5ARGF3060 FF+7d | 9d | 0d | LABOR- SUBCONTRACTOR [36 h]; ELECTRICIANS SK [134.4 h]; MCCB QTY [60 ea]; DB QTY [6 ea] | 23,786 | 25 | 2BP5EWGF25 | DUKHCON2BP5ELGF4020 | DUKHCONP2BZ5ELGF4020 | DH | CON | 2B | Z5 | MEP | EW | GF | B08 | B08-D09 | RES-2B |  |
| DUKHCONP2BZ5ELGF4025 |  | Installation of Lighting fixtures & Accessories | 20d | 2014-03-18 | 2014-04-09 | DUKHCONP2BZ5ARGF3060 SS+10d, DUKHCONP2BZ5ARGF3060 FF+10d, DUKHCONP2BZ5ELGF4020 FF+10d, DUKHCONP2BZ5ELGF4020 SS+10d | 9d | 0d | LABOR- SUBCONTRACTOR [138 h]; ELECTRICIANS SK [257.6 h]; LIGHTS QTY [114 ea] | 99,288 | 30 | 2BP5EWGF30 | DUKHCON2BP5ELGF4025 | DUKHCONP2BZ5ELGF4025 | DH | CON | 2B | Z5 | MEP | EW | GF | B08 | B08-D09 | RES-2B |  |
| DUKHCONP2BZ5ELGF4030 |  | Installation of Telephone System | 20d | 2014-03-18 | 2014-04-09 | DUKHCONP2BZ5ELGF4020 FF+10d, DUKHCONP2BZ5ARGF3060 SS+5d, DUKHCONP2BZ4ELGF4030, DUKHCONP2BZ5ELGF4020 SS+10d, DUKHCONP2BZ5ARGF3060 FF+5d, DUKHCONP2BZ5MSEX5010 | 12d | 3d | LABOR- SUBCONTRACTOR [18 h]; ELECTRICIANS SK [134.4 h]; TELEPHONE SOCKETS QTY [12 ea] | 43,206 | 40 | 2BP5EWGF40 | DUKHCON2BP5ELGF4030 | DUKHCONP2BZ5ELGF4030 | DH | CON | 2B | Z5 | MEP | EW | GF | B08 | B08-D09 | RES-2B |  |
| DUKHCONP2BZ5ELGF4015 |  | Install. of CAMS & Fire Fighting Accessories | 20d | 2014-04-08 | 2014-04-30 | DUKHCONP2BZ5ARGF3060 FF+14d, DUKHCONP2BZ4ELGF4015, DUKHCONP2BZ5ARGF3060 SS+14d | 13d |  | LABOR- SUBCONTRACTOR [396 h]; MECHANICALS SK [712.8 h]; SMOKE DETECTOR POINTS QTY [126 ea]; FIRE EXTINGUISHER QTY [6 ea] | 53,272 | 35 | 2BP5EWGF35 | DUKHCON2BP5ELGF4015 | DUKHCONP2BZ5ELGF4015 | DH | CON | 2B | Z5 | MEP | EW | GF | B08 | B08-D09 | RES-2B |  |
|  | 20 | **ROOF** |  | 2014-04-01 | 2014-05-05 |  |  |  |  |  |  |  |  |  |  |  |  |  |  |  |  |  |  |  |  |
| DUKHCONP2BZ5ELRF4070 |  | Installation of Isolator | 18d | 2014-04-01 | 2014-04-21 | DUKHCONP2BZ5ARRF3645 FF+7d, DUKHCONP2BZ5ELGF4010 FF+10d, DUKHCONP2BZ5ELGF4030 SS+5d, DUKHCONP2BZ5ARRF3645 SS+7d, DUKHCONP2BZ5ELGF4010 SS+10d, DUKHCONP2BZ5ELGF4025 SS+10d, DUKHCONP2BZ5ELGF4025 FF+10d, DUKHCONP2BZ5ELGF4030 FF+7d | 9d | 0d | LABOR- SUBCONTRACTOR [126 h]; ELECTRICIANS SK [235.2 h]; ISOLATOR QTY [42 ea] | 22,378 | 10 | 2BP5EWRF10 | DUKHCON2BP5ELRF4070 | DUKHCONP2BZ5ELRF4070 | DH | CON | 2B | Z5 | MEP | EW | RF | B08 | B08-D09 | RES-2B |  |
| DUKHCONP2BZ5ELRF4075 |  | Installation of TV Dish Antenna | 20d | 2014-04-13 | 2014-05-05 | DUKHCONP2BZ5ELRF4070 SS+10d, DUKHCONP2BZ4ELRF4075, DUKHCONP2BZ5ELRF4070 FF+10d | 9d |  | LABOR- SUBCONTRACTOR [54 h]; ELECTRICIANS SK [134.4 h]; CONTROL BOX QTY [6 ea]; SWITCHING BOX QTY [6 ea] | 23,716 | 15 | 2BP5EWRF15 | DUKHCON2BP5ELRF4075 | DUKHCONP2BZ5ELRF4075 | DH | CON | 2B | Z5 | MEP | EW | RF | B08 | B08-D09 | RES-2B |  |

Notes:
- DUKHCONP2BZ5ARRF3625: Expenses: P2B-Roofing 120042
- DUKHCONP2BZ5ARRF3630: Expenses: P2B-Roofing 16134
- DUKHCONP2BZ5ARRF3635: Expenses: P2B-Roofing 25318
- DUKHCONP2BZ5ARRF3640: Expenses: P2B-Roofing 15264
- DUKHCONP2BZ5ARRF3645: Expenses: P2B-Roofing 29640
- DUKHCONP2BZ5ARRF3660: Expenses: P2B-Metal work 12566
- DUKHCONP2BZ5AREL3665: Expenses: P2B-Finishes 30816
- DUKHCONP2BZ5AREL3680: Expenses: P2B-Painting and Decorating 30274
- DUKHCONP2BZ5ELGF4000: Expenses: P2B-Electrical Installations 23814
- DUKHCONP2BZ5ELGF4005: Expenses: P2B-Electrical Installations 9900
- DUKHCONP2BZ5ELGF4010: Expenses: P2B-Electrical Installations 71442
- DUKHCONP2BZ5ELGF4020: Expenses: P2B-Electrical Installations 23786
- DUKHCONP2BZ5ELGF4025: Expenses: P2B-Electrical Installations 99288
- DUKHCONP2BZ5ELGF4030: Expenses: P2B-Electrical Installations 43206
- DUKHCONP2BZ5ELGF4015: Expenses: P2B-Electrical Installations 53272
- DUKHCONP2BZ5ELRF4070: Expenses: P2B-Electrical Installations 22378
- DUKHCONP2BZ5ELRF4075: Expenses: P2B-Electrical Installations 23716

| ID | WBS | Activity | Duration | Start | Finish | Predecessors | Total float | Free float | Resources | Cost | CODE | P3 ACTID | P6 ID (old) | NP61D | PROJECT | PHASES | PACKAGE | PART | ELEMENTS | STEP | FLOORS | BILL NOS | BILL DIVISION | RES PACK |
| --- | --- | --- | --- | --- | --- | --- | --- | --- | --- | --- | --- | --- | --- | --- | --- | --- | --- | --- | --- | --- | --- | --- | --- | --- |
|  | 15 | **PLUMBING, DRAINAGE & FIRE FIGHTING WORKS** |  | 2013-08-01 | 2014-05-07 |  |  |  |  |  |  |  |  |  |  |  |  |  |  |  |  |  |  |  |
|  | 10 | **GROUND FLOOR** |  | 2013-08-01 | 2014-05-07 |  |  |  |  |  |  |  |  |  |  |  |  |  |  |  |  |  |  |  |
| DUKHCONP2BZ5PLUG4300 |  | Drainage / Storm Pipes in Grade Slab | 20d | 2013-08-01 | 2013-08-27 | DUKHCONP2BZ5STUG1040 SS+7d, DUKHCONP2BZ5STUG1040 FF+7d | 2d | 0d | LABOR- SUBCONTRACTOR [42 h]; MECHANICALS SK [140.4 h]; DRAINAGE PIPES QTY [252 lm] | 10,105 | 10 | 2BP5PLUG10 | DUKHCON2BP5PLUG4300 | DUKHCONP2BZ5PLUG4300 | DH | CON | 2B | Z5 | ST | SB | UG | B08 | B08-D07 | RES-2B |
| DUKHCONP2BZ5PLGF4305 |  | Installation of Plumbing pipes & testing | 20d | 2013-11-17 | 2013-12-09 | DUKHCONP2BZ5ARGF3000 SS+7d, DUKHCONP2BZ5ARGF3000 FF+7d | 0d |  | LABOR- SUBCONTRACTOR [312 h]; MECHANICALS SK [1123.2 h]; PLUMB PIPES QTY [1038 lm] | 64,872 | 10 | 2BP5PLGF10 | DUKHCON2BP5PLGF4305 | DUKHCONP2BZ5PLGF4305 | DH | CON | 2B | Z5 | MEP | PL | GF | B08 | B08-D07 | RES-2B |
| DUKHCONP2BZ5PLGF4310 |  | Installation of Drainage pipes &testing | 18d | 2013-11-19 | 2013-12-09 | DUKHCONP2BZ5PLGF4305 FF, DUKHCONP2BZ5ARGF3000 SS+7d, DUKHCONP2BZ5PLGF4305 SS, DUKHCONP2BZ5ARGF3000 FF+7d, DUKHCONP2BZ4PLGF4310 | 28d | 2d | LABOR- SUBCONTRACTOR [18 h]; MECHANICALS SK [54 h]; DRAINAGE PIPES QTY [102 lm] | 2,538 | 15 | 2BP5PLGF15 | DUKHCON2BP5PLGF4310 | DUKHCONP2BZ5PLGF4310 | DH | CON | 2B | Z5 | MEP | PL | GF | B08 | B08-D07 | RES-2B |
| DUKHCONP2BZ5PLGF4315 |  | Sanitary Fittings & Accessories | 20d | 2014-04-09 | 2014-05-01 | DUKHCONP2BZ5PLGF4310 SS+5d, DUKHCONP2BZ5ARGF3065 SS+5d, DUKHCONP2BZ5PLGF4310 FF+5d, DUKHCONP2BZ4PLGF4315, DUKHCONP2BZ5ARGF3065 FF+5d | 7d | 0d | SANITARY ACC QTY [132 ea]; LABOR- SUBCONTRACTOR [78 h]; MECHANICALS SK [140.4 h] | 59,278 | 20 | 2BP5PLGF20 | DUKHCON2BP5PLGF4315 | DUKHCONP2BZ5PLGF4315 | DH | CON | 2B | Z5 | MEP | PL | GF | B08 | B08-D07 | RES-2B |
| DUKHCONP2BZ5PLGF4320 |  | Installation of Water Heater | 15d | 2014-04-21 | 2014-05-07 | DUKHCONP2BZ5ARGF3060 FF+5d, DUKHCONP2BZ5PLGF4315 SS+5d, DUKHCONP2BZ5ARGF3060 SS+5d, DUKHCONP2BZ5PLGF4315 FF+5d | 7d |  | LABOR- SUBCONTRACTOR [54 h]; MECHANICALS SK [97.2 h]; WATER HEATER QTY [18 ea] | 6,502 | 25 | 2BP5PLGF25 | DUKHCON2BP5PLGF4320 | DUKHCONP2BZ5PLGF4320 | DH | CON | 2B | Z5 | MEP | PL | GF | B08 | B08-D07 | RES-2B |
|  | 20 | **ROOF** |  | 2014-03-05 | 2014-03-22 |  |  |  |  |  |  |  |  |  |  |  |  |  |  |  |  |  |  |  |
| DUKHCONP2BZ5PLRF4350 |  | Installation of Rain water Pipes | 15d | 2014-03-05 | 2014-03-22 | DUKHCONP2BZ5ARRF3645 FF+5d, DUKHCONP2BZ5PLGF4310 SS+5d, DUKHCONP2BZ5AREL3665 FF+7d, DUKHCONP2BZ5ARRF3645 SS+5d, DUKHCONP2BZ5PLGF4305 SS+5d, DUKHCONP2BZ5AREL3665 SS+7d, DUKHCONP2BZ5PLGF4310 FF+5d, DUKHCONP2BZ4PLRF4350, DUKHCONP2BZ5PLGF4305 FF+5d | 30d | 15d | LABOR- SUBCONTRACTOR [60 h]; MECHANICALS SK [205.2 h]; RAINWATER PIPES QTY [96 lm] | 48,325 | 15 | 2BP5PLRF15 | DUKHCON2BP5PLRF4350 | DUKHCONP2BZ5PLRF4350 | DH | CON | 2B | Z5 | MEP | PL | RF | B08 | B08-D07 | RES-2B |
|  | 20 | **AC WORKS** |  | 2014-01-07 | 2014-05-04 |  |  |  |  |  |  |  |  |  |  |  |  |  |  |  |  |  |  |  |
|  | 10 | **GROUND FLOOR** |  | 2014-01-07 | 2014-04-28 |  |  |  |  |  |  |  |  |  |  |  |  |  |  |  |  |  |  |  |
| DUKHCONP2BZ5ACGF4600 |  | Installation AC Pipes | 20d | 2014-01-07 | 2014-01-29 | DUKHCONP2BZ5ARGF3005 SS+7d, DUKHCONP2BZ4ACGF4600, DUKHCONP2BZ5ARGF3005 FF+7d | 28d | 21d | LABOR- SUBCONTRACTOR [120 h]; AC TECHNICIAN SK [436.8 h]; AC PIPES QTY [1182 lm] | 3,600 | 10 | 2BP5ACGF10 | DUKHCON2BP5ACGF4600 | DUKHCONP2BZ5ACGF4600 | DH | CON | 2B | Z5 | MEP | AC | GF | B08 | B08-D08 | RES-2B |
| DUKHCONP2BZ5ACGF4605 |  | Fixing of Ventilation Equipments | 25d | 2014-03-15 | 2014-04-12 | DUKHCONP2BZ5ACGF4600 SS+10d, DUKHCONP2BZ5ACGF4600 FF+10d, DUKHCONP2BZ5ARGF3060 SS+14d, DUKHCONP2BZ5ARGF3060 FF+14d | 0d |  | LABOR- SUBCONTRACTOR [18 h]; AC TECHNICIAN SK [67.2 h]; VENTILIATION EQP QTY [24 ea] | 14,750 | 15 | 2BP5ACGF15 | DUKHCON2BP5ACGF4605 | DUKHCONP2BZ5ACGF4605 | DH | CON | 2B | Z5 | MEP | AC | GF | B08 | B08-D08 | RES-2B |
| DUKHCONP2BZ5ACGF4610 |  | Fixing of Split AC | 20d | 2014-04-06 | 2014-04-28 | DUKHCONP2BZ5ACGF4605 FF+14d, DUKHCONP2BZ5ACGF4605 SS+14d | 0d |  | LABOR- SUBCONTRACTOR [54 h]; AC TECHNICIAN SK [100.8 h]; SPILIT UNIT QTY [18 ea] | 18,870 | 20 | 2BP5ACGF20 | DUKHCON2BP5ACGF4610 | DUKHCONP2BZ5ACGF4610 | DH | CON | 2B | Z5 | MEP | AC | GF | B08 | B08-D08 | RES-2B |
|  | 20 | **ROOF** |  | 2014-02-18 | 2014-05-04 |  |  |  |  |  |  |  |  |  |  |  |  |  |  |  |  |  |  |  |
| DUKHCONP2BZ5ACRF4630 |  | Installation of Refrigerant Pipes | 20d | 2014-02-18 | 2014-03-12 | DUKHCONP2BZ5ARRF3645 FF+14d, DUKHCONP2BZ5ARRF3645 SS+14d, DUKHCONP2BZ5ACGF4600 FF+14d, DUKHCONP2BZ4ACRF4630, DUKHCONP2BZ5ACGF4600 SS+14d | 45d | 35d | LABOR- SUBCONTRACTOR [6 h]; AC TECHNICIAN SK [11.2 h]; AC PIPES QTY [42 lm] | 3,348 | 10 | 2BP5ACRF10 | DUKHCON2BP5ACRF4630 | DUKHCONP2BZ5ACRF4630 | DH | CON | 2B | Z5 | MEP | AC | RF | B08 | B08-D08 | RES-2B |
| DUKHCONP2BZ5ACRF4635 |  | Installation of Condensing Unit | 20d | 2014-04-12 | 2014-05-04 | DUKHCONP2BZ5ACRF4630 SS+10d, DUKHCONP2BZ4ACRF4635, DUKHCONP2BZ5ACRF4630 FF+10d, DUKHCONP2BZ5ACGF4610 SS+5d, DUKHCONP2BZ5ACGF4610 FF+5d | 10d |  | LABOR- SUBCONTRACTOR [30 h]; AC UNITS QTY [18 ea]; AC TECHNICIAN SK [100.8 h] | 24,640 | 15 | 2BP5ACRF15 | DUKHCON2BP5ACRF4635 | DUKHCONP2BZ5ACRF4635 | DH | CON | 2B | Z5 | MEP | AC | RF | B08 | B08-D08 | RES-2B |
|  | 25 | **EXTERNAL WORKS** |  | 2013-12-03 | 2014-05-14 |  |  |  |  |  |  |  |  |  |  |  |  |  |  |  |  |  |  |  |
|  | 10 | **MISCELLANEOUS** |  | 2013-12-03 | 2014-03-01 |  |  |  |  |  |  |  |  |  |  |  |  |  |  |  |  |  |  |  |
| DUKHCONP2BZ5MSEX5000 |  | Construction of Manholes | 25d | 2013-12-03 | 2014-01-01 | DUKHCONP2BZ4MSEX5000, DUKHCONP2BZ5PLGF4310 FF+10d, DUKHCONP2BZ5STRF2065 SS+5d, DUKHCONP2BZ5PLGF4310 SS+10d, DUKHCONP2BZ5STRF2065 FF+5d | 26d | 0d | MANHOLES SK [96 h]; LABOR - CIVIL [36 h]; MANHOLES QTY [12 ea] | 13,617 | 25 | 2BP5MSEX25 | DUKHCON2BP5MS005000 | DUKHCONP2BZ5MSEX5000 | DH | CON | 2B | Z5 | EX | MS |  | B08 | B08-D12 | RES-2B |
| DUKHCONP2BZ5MSEX5005 |  | Construction of Soak pit, Chambers | 25d | 2013-12-17 | 2014-01-15 | DUKHCONP2BZ5MSEX5000 FF+12d, DUKHCONP2BZ5MSEX5000 SS+12d | 26d | 0d | MANHOLES SK [48 h]; LABOR - CIVIL [18 h]; SOAKPIT QTY [6 ea] | 22,500 | 30 | 2BP5MSEX30 | DUKHCON2BP5MS005005 | DUKHCONP2BZ5MSEX5005 | DH | CON | 2B | Z5 | EX | MS |  | B08 | B08-D12 | RES-2B |
| DUKHCONP2BZ5MSEX5020 |  | Construction Entrance Ramp | 20d | 2013-12-26 | 2014-01-18 | DUKHCONP2BZ5STRF2065 FF, DUKHCONP2BZ5STRF2065 SS, DUKHCONP2BZ4MSEX5020 | 30d | 0d | SCREED MASON SK [136 h]; CONCRETE MASON SK [32 h]; INTERLOCK MASON SK [136 h]; LABOR - CIVIL [78 h]; LABOR- SUBCONTRACTOR [54 h]; SCREED QTY [168 Sqm]; CONCRETE QTY [16.8 Cum]; INTERLOCK QTY [168 Sqm] | 43,008 | 10 | 2BP5MSEX10 | DUKHCON2BP5MS005020 | DUKHCONP2BZ5MSEX5020 | DH | CON | 2B | Z5 | EX | MS |  | B08 | B08-D12 | RES-2B |
| DUKHCONP2BZ5MSEX5015 |  | Construction of grease Trap | 20d | 2014-01-07 | 2014-01-29 | DUKHCONP2BZ5MSEX5005 FF+12d, DUKHCONP2BZ5MSEX5005 SS+12d | 26d | 0d | LABOR- SUBCONTRACTOR [48 h]; GREASE TRAP QTY [60 lm]; HANDRAIL ERECTOR SKILLED [120 h] | 17,022 | 20 | 2BP5MSEX20 | DUKHCON2BP5MS005015 | DUKHCONP2BZ5MSEX5015 | DH | CON | 2B | Z5 | EX | MS |  | B08 | B08-D07 | RES-2B |
| DUKHCONP2BZ5MSEX5055 |  | Installation Steel Door | 20d | 2014-01-07 | 2014-01-29 | DUKHCONP2BZ5MSEX5020 SS+10d | 30d | 0d | LABOR- SUBCONTRACTOR [80 h]; GATE QTY [6 ea]; GATE ERECTOR SK [100 h] | 23,090 | 20 | 2BP5MSEX35 | DUKHCON2BP5MS005055 | DUKHCONP2BZ5MSEX5055 | DH | CON | 2B | Z5 | EX | MS |  | B08 | B08-D06 | RES-2B |
| DUKHCONP2BZ5MSEX5025 |  | SS.Handrails and Balustrades | 20d | 2014-01-19 | 2014-02-10 | DUKHCONP2BZ5MSEX5055 SS+10d, DUKHCONP2BZ5MSEX5020 SS+10d, DUKHCONP2BZ4MSEX5025, DUKHCONP2BZ5MSEX5020 FF+10d | 30d | 0d | LABOR- SUBCONTRACTOR [48 h]; S.S.BALUSTRADE QTY [42 lm]; HANDRAIL ERECTOR SKILLED [88 h] | 42,745 | 15 | 2BP5MSEX15 | DUKHCON2BP5MS005025 | DUKHCONP2BZ5MSEX5025 | DH | CON | 2B | Z5 | EX | MS |  | B08 | B08-D12 | RES-2B |
| DUKHCONP2BZ5MSEX5010 |  | Telephone cable laying | 25d | 2014-01-30 | 2014-03-01 | DUKHCONP2BZ5MSEX5015 | 26d | 14d | LABOR - CIVIL [125 h]; LABOR- SUBCONTRACTOR [125 h]; CONCRETE MASON SK [125 h]; ELECTRICIANS SK [125 h] | 992 |  | 2BP5MSEX40 | DUKHCON2BP5MS005010 | DUKHCONP2BZ5MSEX5010 | DH | CON | 2B | Z5 | EX | MS |  | B08 | B08-D12 | RES-2B |

Notes:
- DUKHCONP2BZ5PLUG4300: Expenses: P2B-Plumbing and Drainage works 10105
- DUKHCONP2BZ5PLGF4305: Expenses: P2B-Plumbing and Drainage works 64872
- DUKHCONP2BZ5PLGF4310: Expenses: P2B-Plumbing and Drainage works 2538
- DUKHCONP2BZ5PLGF4315: Expenses: P2B-Plumbing and Drainage works 59278
- DUKHCONP2BZ5PLGF4320: Expenses: P2B-Plumbing and Drainage works 6502
- DUKHCONP2BZ5PLRF4350: Expenses: P2B-Plumbing and Drainage works 48325
- DUKHCONP2BZ5ACGF4600: Expenses: P2B-Air-conditioning and Ventilation works 3600
- DUKHCONP2BZ5ACGF4605: Expenses: P2B-Air-conditioning and Ventilation works 14750
- DUKHCONP2BZ5ACGF4610: Expenses: P2B-Air-conditioning and Ventilation works 18870
- DUKHCONP2BZ5ACRF4630: Expenses: P2B-Air-conditioning and Ventilation works 3348
- DUKHCONP2BZ5ACRF4635: Expenses: P2B-Air-conditioning and Ventilation works 24640
- DUKHCONP2BZ5MSEX5000: Expenses: P2B-External works within the Plot Curtilage 13617
- DUKHCONP2BZ5MSEX5005: Expenses: P2B-External works within the Plot Curtilage 22500
- DUKHCONP2BZ5MSEX5020: Expenses: P2B-External works within the Plot Curtilage 43008
- DUKHCONP2BZ5MSEX5015: Expenses: P2B-Plumbing and Drainage works 17022
- DUKHCONP2BZ5MSEX5055: Expenses: P2B-Metal work 23090
- DUKHCONP2BZ5MSEX5025: Expenses: P2B-External works within the Plot Curtilage 42745
- DUKHCONP2BZ5MSEX5010: Expenses: P2B-External works within the Plot Curtilage 992

| ID | WBS | Activity | Duration | Start | Finish | Predecessors | Total float | Free float | Resources | Cost | CODE | P3 ACTID | P6 ID (old) | NP61D | PROJECT | PHASES | PACKAGE | PART | ELEMENTS | STEP | BILL NOS | BILL DIVISION | RES PACK |
| --- | --- | --- | --- | --- | --- | --- | --- | --- | --- | --- | --- | --- | --- | --- | --- | --- | --- | --- | --- | --- | --- | --- | --- |
|  | 15 | **WATER TANK ENCLOSURE** |  | 2014-01-25 | 2014-05-14 |  |  |  |  |  |  |  |  |  |  |  |  |  |  |  |  |  |  |
| DUKHCONP2BZ5WEEX5030 |  | Excavation | 20d | 2014-01-25 | 2014-02-17 | DUKHCONP2BZ5STRF2065 FF+7d, DUKHCONP2BZ4WEEX5035, DUKHCONP2BZ5STRF2065 SS+7d | 15d | 0d | LABOR - CIVIL [36 h]; EXCAVATION QTY [60 Cum]; LOADER [20 h]; POCLAIN [40 h]; TRUCK [20 h]; EQUIP OPERATORS [80 h] | 672 | 10 | 2BP5WEEX10 | DUKHCON2BP5WE005030 | DUKHCONP2BZ5WEEX5030 | DH | CON | 2B | Z5 | EX | WE | B08 | B08-D12 | RES-2B |
| DUKHCONP2BZ5WEEX5035 |  | Construction of Raft | 25d | 2014-01-30 | 2014-03-01 | DUKHCONP2BZ5WEEX5030 FF+10d, DUKHCONP2BZ5WEEX5030 SS+5d | 15d | 0d | CONCRETE MASON SK [120 h]; LABOR - CIVIL [90 h]; CONCRETE QTY [60 Cum] | 10,260 | 15 | 2BP5WEEX15 | DUKHCON2BP5WE005035 | DUKHCONP2BZ5WEEX5035 | DH | CON | 2B | Z5 | EX | WE | B08 | B08-D12 | RES-2B |
| DUKHCONP2BZ5WEEX5040 |  | Block works & Plastering | 25d | 2014-02-09 | 2014-03-10 | DUKHCONP2BZ5WEEX5035 FF+8d, DUKHCONP2BZ5WEEX5035 SS+8d | 15d | 0d | BLOCK MASON SK [168 h]; PLASTER MASON SK [272 h]; LABOR - CIVIL [252 h]; BLOCK QTY [84 Sqm]; PLASTER QTY [168 Sqm] | 11,503 | 20 | 2BP5WEEX20 | DUKHCON2BP5WE005040 | DUKHCONP2BZ5WEEX5040 | DH | CON | 2B | Z5 | EX | WE | B08 | B08-D12 | RES-2B |
| DUKHCONP2BZ5WEEX5045 |  | Flooring & Painting | 25d | 2014-02-22 | 2014-03-22 | DUKHCONP2BZ5WEEX5040 FF+10d, DUKHCONP2BZ5WEEX5040 SS+10d | 15d | 0d | SCREED MASON SK [56 h]; LABOR - CIVIL [24 h]; LABOR- SUBCONTRACTOR [72 h]; SCREED QTY [66 Sqm]; PAINT QTY [234 Sqm]; PAINTERS SK [184 h] | 10,062 | 25 | 2BP5WEEX25 | DUKHCON2BP5WE005045 | DUKHCONP2BZ5WEEX5045 | DH | CON | 2B | Z5 | EX | WE | B08 | B08-D12 | RES-2B |
| DUKHCONP2BZ5WEEX5050 |  | Installation of Steel | 20d | 2014-03-11 | 2014-04-02 | DUKHCONP2BZ5WEEX5045 SS+5d, DUKHCONP2BZ5MSEX5025 FF+10d, DUKHCONP2BZ5MSEX5025 SS+10d, DUKHCONP2BZ5WEEX5045 FF+10d, DUKHCONP2BZ4WEEX5050 | 15d | 0d | LABOR- SUBCONTRACTOR [54 h]; LADDER QTY [6 ea]; GATE QTY [6 ea]; LADDER ERECTOR SK [48 h]; GATE ERECTOR SK [48 h] | 32,436 | 30 | 2BP5WEEX30 | DUKHCON2BP5WE005050 | DUKHCONP2BZ5WEEX5050 | DH | CON | 2B | Z5 | EX | WE | B08 | B08-D12 | RES-2B |
| DUKHCONP2BZ5WEEX5060 |  | Structural steel & SS Shed cover installation | 25d | 2014-03-17 | 2014-04-14 | DUKHCONP2BZ5WEEX5050 SS+5d, DUKHCONP2BZ5WEEX5050 FF+10d | 15d | 0d | LABOR- SUBCONTRACTOR [222 h]; STRUCTURAL STEEL QTY [438 kg]; SS SHED COVER QTY [60 Sqm]; STEEL ERECTOR SK [312 h] | 33,315 | 35 | 2BP5WEEX35 | DUKHCON2BP5WE005060 | DUKHCONP2BZ5WEEX5060 | DH | CON | 2B | Z5 | EX | WE | B08 | B08-D12 | RES-2B |
| DUKHCONP2BZ5WEEX5065 |  | Install. of Water Tank,Chiller,Pump & Meter | 25d | 2014-03-29 | 2014-04-26 | DUKHCONP2BZ5WEEX5060 SS+10d, DUKHCONP2BZ5PLRF4350 FF+5d, DUKHCONP2BZ5MSEX5015 FF+5d, DUKHCONP2BZ5WEEX5060 FF+10d, DUKHCONP2BZ5PLRF4350 SS+5d, DUKHCONP2BZ5MSEX5015 SS+5d, DUKHCONP2BZ4WEEX5065 | 15d | 5d | LABOR- SUBCONTRACTOR [90 h]; AC TECHNICIAN SK [67.2 h]; MECHANICALS SK [129.6 h]; WATER TANK QTY [6 ea]; PUMP QTY [6 ea]; CHILLER QTY [60 ea] | 450,453 | 40 | 2BP5WEEX40 | DUKHCON2BP5WE005065 | DUKHCONP2BZ5WEEX5065 | DH | CON | 2B | Z5 | EX | WE | B08 | B08-D07 | RES-2B |
| DUKHCONP2BZ5WEEX5070 |  | Installation ladder for water Tank | 20d | 2014-04-12 | 2014-05-04 | DUKHCONP2BZ5WEEX5065 SS+7d, DUKHCONP2BZ4WEEX5070 | 10d |  | LABOR- SUBCONTRACTOR [100 h]; LADDER QTY [6 ea]; LADDER ERECTOR SK [100 h] | 11,118 | 40 | 2BP5WEEX45 | DUKHCON2BP5WE005070 | DUKHCONP2BZ5WEEX5070 | DH | CON | 2B | Z5 | EX | WE | B08 | B08-D06 | RES-2B |
| DUKHCONP2BZ5MSEX5335 |  | Aluminum Roll-up Shutter with 2m Wall | 25d | 2014-04-16 | 2014-05-14 | DUKHCONI2BZ2BWGL5325, DUKHCONP2BZ4MSEX5335 | 26d |  | LABOR- SUBCONTRACTOR [200 h]; DOOR ERECTOR SK [200 h]; ROLLING SHUTTER QTY [6 ea] | 25,259 | 25 | 2BP3BWFR25 | DUKHCON2BP5MS005335 | DUKHCONP2BZ5MSEX5335 | DH | CON | 2B | Z5 | EX | MS | B08 | B08-D12 | RES-2B |
|  | 20 | **HARD LANDSCAPING** |  | 2014-01-27 | 2014-03-18 |  |  |  |  |  |  |  |  |  |  |  |  |  |  |  |  |  |  |
| DUKHCONP2BZ5HDEX5090 |  | kerb works | 20d | 2014-01-27 | 2014-02-19 | DUKHCONP2BZ5MSEX5020 SS+7d, DUKHCONP2BZ4HDEX5090, DUKHCONP2BZ5MSEX5025 SS+7d, DUKHCONP2BZ5MSEX5020 FF+7d | 30d | 0d | KERBSTONE MASON SK [152 h]; LABOR- SUBCONTRACTOR [84 h]; KERBSTONE QTY [186 lm] | 18,554 | 10 | 2BP5HDEX10 | DUKHCON2BP5HD005090 | DUKHCONP2BZ5HDEX5090 | DH | CON | 2B | Z5 | EX | HD | B08 | B08-D12 | RES-2B |
| DUKHCONP2BZ5HDEX5095 |  | Cobble Stone Works | 20d | 2014-02-08 | 2014-03-03 | DUKHCONP2BZ5HDEX5090 FF+10d, DUKHCONP2BZ5HDEX5090 SS+10d | 30d | 0d | TILE MASON SK [56 h]; LABOR- SUBCONTRACTOR [30 h]; COBBLE STONE QTY [36 Sqm] | 5,004 | 15 | 2BP5HDEX15 | DUKHCON2BP5HD005095 | DUKHCONP2BZ5HDEX5095 | DH | CON | 2B | Z5 | EX | HD | B08 | B08-D12 | RES-2B |
| DUKHCONP2BZ5HDEX5100 |  | Interlock works | 20d | 2014-02-24 | 2014-03-18 | DUKHCONP2BZ5HDEX5095 FF+13d, DUKHCONP2BZ5HDEX5095 SS+13d | 30d | 9d | INTERLOCK MASON SK [216 h]; LABOR- SUBCONTRACTOR [84 h]; INTERLOCK QTY [270 Sqm] | 23,084 | 20 | 2BP5HDEX20 | DUKHCON2BP5HD005100 | DUKHCONP2BZ5HDEX5100 | DH | CON | 2B | Z5 | EX | HD | B08 | B08-D12 | RES-2B |
|  | 25 | **SOFT LANDSCAPING** |  | 2014-03-18 | 2014-04-21 |  |  |  |  |  |  |  |  |  |  |  |  |  |  |  |  |  |  |
| DUKHCONP2BZ5SLEX5105 |  | Laying of Grass/ green area | 20d | 2014-03-18 | 2014-04-09 | DUKHCONP2BZ4SLEX5105, DUKHCONP2BZ5HDEX5100 SS+10d, DUKHCONP2BZ5HDEX5100 FF+10d | 21d | 0d | LABOR- SUBCONTRACTOR [918 h]; SWEET SOIL QTY [294 Cum]; GRASS QTY [294 Sqm]; LANDSCAPING SK [1224 h] | 36,162 | 10 | 2BP5SLEX10 | DUKHCON2BP5SL005105 | DUKHCONP2BZ5SLEX5105 | DH | CON | 2B | Z5 | EX | SL | B08 | B08-D12 | RES-2B |
| DUKHCONP2BZ5SLEX5110 |  | Laying of Palm tree | 20d | 2014-03-30 | 2014-04-21 | DUKHCONP2BZ5SLEX5105 FF+10d, DUKHCONP2BZ4SLEX5110, DUKHCONP2BZ5SLEX5105 SS+10d | 21d |  | LABOR- SUBCONTRACTOR [234 h]; SWEET SOIL QTY [600 Cum]; PLAM TREES QTY [54 ea]; LANDSCAPING SK [312 h] | 81,432 | 15 | 2BP5SLEX15 | DUKHCON2BP5SL005110 | DUKHCONP2BZ5SLEX5110 | DH | CON | 2B | Z5 | EX | SL | B08 | B08-D12 | RES-2B |
|  | 30 | **TESTING AND COMMISSIONING** |  | 2014-05-17 | 2014-06-14 |  |  |  |  |  |  |  |  |  |  |  |  |  |  |  |  |  |  |
| DUKHCONP2BZ5ACTC8000 |  | Pre-Commissioning & Testing of AC Works | 25d | 2014-05-17 | 2014-06-14 | DUKHCONP2BZ5HDEX5100, DUKHCONP2BZ5AREL3680, DUKHCONP2BZ5SLEX5110, DUKHMOBI2BPS00002275 FF, DUKHCONP2BZ5SLEX5105, DUKHCONP2BZ5ACRF4635, DUKHCONP2BZ5ARGF3095, DUKHCONP2BZ5MSEX5005, DUKHMOBP2BPS00002240 FF, DUKHCONP2BZ5ARRF3660 | 0d |  | LABOR- SUBCONTRACTOR [500 h]; AC TECHNICIAN SK [1000 h] | 582 |  | 2BP5ACU100 | DUKHCON2BP5AC008000 | DUKHCONP2BZ5ACTC8000 | DH | CON | 2B | Z5 | TES |  | B08 | B08-D08 | RES-2B |
| DUKHCONP2BZ5ELTC8010 |  | Pre-Commissioning & Testing of Electrical Works | 25d | 2014-05-17 | 2014-06-14 | DUKHCONP2BZ5ELGF4025, DUKHMOBI2BPS00002275 FF, DUKHCONP2BZ5ELGF4015, DUKHCONP2BZ5AREL3680, DUKHCONP2BZ5ARRF3660, DUKHCONP2BZ5ARGF3095, DUKHCONP2BZ5MSEX5005, DUKHCONP2BZ5ELRF4075, DUKHCONP2BZ5HDEX5100, DUKHCONP2BZ5SLEX5105, DUKHMOBP2BPS00002240 FF, DUKHCONP2BZ5ELGF4030, DUKHCONP2BZ5SLEX5110 | 0d |  | LABOR- SUBCONTRACTOR [1000 h]; ELECTRICIANS SK [2000 h] | 19,374 |  | 2BP5ELE100 | DUKHCON2BP5EL008010 | DUKHCONP2BZ5ELTC8010 | DH | CON | 2B | Z5 | TES |  | B08 | B08-D09 | RES-2B |
| DUKHCONP2BZ5PLTC8005 |  | Pre-Commissioning & Testing of Plumbing Works | 25d | 2014-05-17 | 2014-06-14 | DUKHCONP2BZ5SLEX5105, DUKHCONP2BZ5AREL3680, DUKHCONP2BZ5MSEX5005, DUKHCONP2BZ5SLEX5110, DUKHCONP2BZ5ARGF3095, DUKHCONP2BZ5WEEX5070, DUKHCONP2BZ5ARRF3660, DUKHCONP2BZ5PLRF4350, DUKHCONP2BZ5WEEX5065, DUKHMOBP2BPS00002240 FF, DUKHMOBI2BPS00002275 FF, DUKHCONP2BZ5PLGF4320, DUKHCONP2BZ5HDEX5100 | 0d |  | LABOR- SUBCONTRACTOR [1000 h]; MECHANICALS SK [2000 h] | 2,886 |  | 2BP5PLU100 | DUKHCON2BP5PL008005 | DUKHCONP2BZ5PLTC8005 | DH | CON | 2B | Z5 | TES |  | B08 | B08-D07 | RES-2B |
|  | L50 | **PACKAGE-2B INFRASTRUCTURE WORKS** |  | 2013-07-31 | 2014-05-25 |  |  |  |  |  |  |  |  |  |  |  |  |  |  |  |  |  |  |
|  | 10 | **ZONE- 1** |  | 2013-07-31 | 2014-04-06 |  |  |  |  |  |  |  |  |  |  |  |  |  |  |  |  |  |  |
|  | 10 | **INFRASTRUCTURE WORKS** |  | 2013-07-31 | 2014-04-06 |  |  |  |  |  |  |  |  |  |  |  |  |  |  |  |  |  |  |
|  | 10 | **DRAINAGE LINES** |  | 2013-07-31 | 2013-09-22 |  |  |  |  |  |  |  |  |  |  |  |  |  |  |  |  |  |  |
| DUKHCONI2BZ1DRGL5115 |  | Excavation for Drainage line | 25d | 2013-07-31 | 2013-09-01 | DUKHCONP2BZ4STGF2000 SS, DUKHENGI2BDWDRAP5430 | 17d | 0d | LABOR - CIVIL [108 h]; EXCAVATION QTY [178 Cum]; LOADER [31 h]; POCLAIN [63 h]; TRUCK [31 h]; EQUIP OPERATORS [125 h] | 7,089 | 10 | 2BP1DRFR10 | DUKHCON2BP1DRGL5115 | DUKHCONI2BZ1DRGL5115 | DH | CON | 2BF | Z1 | FR | DR | B09 | B09-D06 | RES-2B |
| DUKHCONI2BZ1DRGL5120 |  | Laying of Drainage line | 25d | 2013-08-07 | 2013-09-08 | DUKHCONI2BZ1DRGL5115 FF+6d, DUKHCONI2BZ1DRGL5115 SS+6d | 17d | 0d | LABOR- SUBCONTRACTOR [30 h]; MECHANICALS SK [97.2 h]; DRAINAGE PIPES QTY [178 lm] | 24,313 | 15 | 2BP1DRFR15 | DUKHCON2BP1DRGL5120 | DUKHCONI2BZ1DRGL5120 | DH | CON | 2BF | Z1 | FR | DR | B09 | B09-D06 | RES-2B |
| DUKHCONI2BZ1DRGL5125 |  | Testing of Drainage line | 25d | 2013-08-19 | 2013-09-16 | DUKHCONI2BZ1DRGL5120 SS+7d, DUKHCONI2BZ1DRGL5120 FF+7d | 17d | 0d | MECHANICALS SK [43.2 h]; DRAINAGE PIPES TEST QTY [178 lm]; LABOR- SUBCONTRACTOR [24 h] | 2,701.5 | 20 | 2BP1DRFR20 | DUKHCON2BP1DRGL5125 | DUKHCONI2BZ1DRGL5125 | DH | CON | 2BF | Z1 | FR | DR | B09 | B09-D06 | RES-2B |
| DUKHCONI2BZ1DRGL5130 |  | Backfilling Drainage line | 15d | 2013-09-05 | 2013-09-22 | DUKHCONI2BZ1DRGL5125 FF+5d, DUKHCONI2BZ1DRGL5125 SS+10d | 17d | 0d | LABOR - CIVIL [42 h]; BACKFILLING QTY [178 Cum]; BOBCAT [75 h]; PLATE COMPACTOR [75 h]; TRUCK [15 h]; EQUIP OPERATORS [165 h] | 9,880 | 25 | 2BP1DRFR25 | DUKHCON2BP1DRGL5130 | DUKHCONI2BZ1DRGL5130 | DH | CON | 2BF | Z1 | FR | DR | B09 | B09-D06 | RES-2B |

Notes:
- DUKHCONP2BZ5WEEX5030: Expenses: P2B-External works within the Plot Curtilage 672
- DUKHCONP2BZ5WEEX5035: Expenses: P2B-External works within the Plot Curtilage 10260
- DUKHCONP2BZ5WEEX5040: Expenses: P2B-External works within the Plot Curtilage 11503
- DUKHCONP2BZ5WEEX5045: Expenses: P2B-External works within the Plot Curtilage 10062
- DUKHCONP2BZ5WEEX5050: Expenses: P2B-External works within the Plot Curtilage 32436
- DUKHCONP2BZ5WEEX5060: Expenses: P2B-External works within the Plot Curtilage 33315
- DUKHCONP2BZ5WEEX5065: Expenses: P2B-Plumbing and Drainage works 450453
- DUKHCONP2BZ5WEEX5070: Expenses: P2B-Metal work 11118
- DUKHCONP2BZ5MSEX5335: Expenses: P2B-External works within the Plot Curtilage 25259
- DUKHCONP2BZ5HDEX5090: Expenses: P2B-External works within the Plot Curtilage 18554
- DUKHCONP2BZ5HDEX5095: Expenses: P2B-External works within the Plot Curtilage 5004
- DUKHCONP2BZ5HDEX5100: Expenses: P2B-External works within the Plot Curtilage 23084
- DUKHCONP2BZ5SLEX5105: Expenses: P2B-External works within the Plot Curtilage 36162
- DUKHCONP2BZ5SLEX5110: Expenses: P2B-External works within the Plot Curtilage 81432
- DUKHCONP2BZ5ACTC8000: Expenses: P2B-Air-conditioning and Ventilation works 582
- DUKHCONP2BZ5ELTC8010: Expenses: P2B-Electrical Installations 19374
- DUKHCONP2BZ5PLTC8005: Expenses: P2B-Plumbing and Drainage works 2886
- DUKHCONI2BZ1DRGL5115: Expenses: I2B-Surface Water drainage and Sewerage system 7089
- DUKHCONI2BZ1DRGL5120: Expenses: I2B-Surface Water drainage and Sewerage system 24313
- DUKHCONI2BZ1DRGL5125: Expenses: I2B-Surface Water drainage and Sewerage system 2701.5
- DUKHCONI2BZ1DRGL5130: Expenses: I2B-Surface Water drainage and Sewerage system 9880

| ID | WBS | Activity | Duration | Start | Finish | Predecessors | Total float | Free float | Resources | Cost | CODE | P3 ACTID | P6 ID (old) | NP61D | PROJECT | PHASES | PACKAGE | PART | ELEMENTS | STEP | BILL NOS | BILL DIVISION | RES PACK |
| --- | --- | --- | --- | --- | --- | --- | --- | --- | --- | --- | --- | --- | --- | --- | --- | --- | --- | --- | --- | --- | --- | --- | --- |
|  | 15 | **MANHOLES & SOAKAWAY** |  | 2013-09-05 | 2013-11-27 |  |  |  |  |  |  |  |  |  |  |  |  |  |  |  |  |  |  |
| DUKHCONI2BZ1SAGL5135 |  | Construction of manholes Drainage | 25d | 2013-09-05 | 2013-10-03 | DUKHCONI2BZ1DRGL5115, DUKHENGI2BDWDRAP5430, DUKHCONI2BZ1DRGL5130 FF+10d | 68d | 10d | MANHOLES SK [32 h]; LABOR - CIVIL [12 h]; MANHOLES QTY [4 ea] | 10,637.5 | 10 | 2BP1SAFR10 | DUKHCON2BP1SAGL5135 | DUKHCONI2BZ1SAGL5135 | DH | CON | 2BF | Z1 | FR | SA | B09 | B09-D06 | RES-2B |
| DUKHCONI2BZ1SAGL5140 |  | Construction of soakaways | 25d | 2013-09-05 | 2013-10-03 | DUKHCONI2BZ1DRGL5115, DUKHCONI2BZ1DRGL5130 FF+10d | 17d | 0d | MANHOLES SK [136 h]; LABOR - CIVIL [54 h]; SOAKWAY QTY [17 ea] | 226,248 | 15 | 2BP1SAFR15 | DUKHCON2BP1SAGL5140 | DUKHCONI2BZ1SAGL5140 | DH | CON | 2BF | Z1 | FR | SA | B09 | B09-D06 | RES-2B |
| DUKHCONI2BZ1SAGL5145 |  | Construction of Road gullies | 25d | 2013-10-05 | 2013-11-04 | DUKHCONI2BZ1SAGL5140 | 17d | 0d | MANHOLES SK [136 h]; LABOR - CIVIL [54 h]; ROAD GULLY QTY [17 ea] | 31,201.5 | 20 | 2BP1SAFR20 | DUKHCON2BP1SAGL5145 | DUKHCONI2BZ1SAGL5145 | DH | CON | 2BF | Z1 | FR | SA | B09 | B09-D06 | RES-2B |
| DUKHCONI2BZ1SAGL5150 |  | Connection with existing sewer manhole | 20d | 2013-11-05 | 2013-11-27 | DUKHCONI2BZ1SAGL5135, DUKHCONI2BZ1SAGL5145 | 43d | 24d | MANHOLES SK [32 h]; LABOR - CIVIL [12 h]; MANHOLES QTY [4 ea] | 5,676.5 | 25 | 2BP1SAFR25 | DUKHCON2BP1SAGL5150 | DUKHCONI2BZ1SAGL5150 | DH | CON | 2BF | Z1 | FR | SA | B09 | B09-D06 | RES-2B |
|  | 20 | **WATER SUPPLY SYSTEM** |  | 2013-09-17 | 2013-12-03 |  |  |  |  |  |  |  |  |  |  |  |  |  |  |  |  |  |  |
| DUKHCONI2BZ1WSGL5155 |  | Excavation for water line | 25d | 2013-09-17 | 2013-10-15 | DUKHCONI2BZ1DRGL5130 SS+10d, DUKHENGI2BDWWSAP5450 | 17d | 0d | LABOR - CIVIL [204 h]; EXCAVATION QTY [339 Cum]; POCLAIN [125 h]; TRUCK [63 h]; EQUIP OPERATORS [251 h]; LOADER [63 h] | 12,690 | 10 | 2BP1WSFR10 | DUKHCON2BP1WSGL5155 | DUKHCONI2BZ1WSGL5155 | DH | CON | 2BF | Z1 | FR | WS | B09 | B09-D07 | RES-2B |
| DUKHCONI2BZ1WSGL5160 |  | Laying of water line | 25d | 2013-09-23 | 2013-10-23 | DUKHCONI2BZ1WSGL5155 SS+5d | 17d | 0d | LABOR- SUBCONTRACTOR [138 h]; MECHANICALS SK [248.4 h]; WATER PIPES QTY [339 lm] | 57,255.5 | 15 | 2BP1WSFR15 | DUKHCON2BP1WSGL5160 | DUKHCONI2BZ1WSGL5160 | DH | CON | 2BF | Z1 | FR | WS | B09 | B09-D07 | RES-2B |
| DUKHCONI2BZ1WSGL5165 |  | Testing of potable water line | 25d | 2013-09-29 | 2013-10-29 | DUKHCONI2BZ1WSGL5160 SS+5d | 17d | 0d | LABOR- SUBCONTRACTOR [42 h]; MECHANICALS SK [75.6 h]; DRAINAGE PIPES TEST QTY [339 lm] | 5,458 | 20 | 2BP1WSFR20 | DUKHCON2BP1WSGL5165 | DUKHCONI2BZ1WSGL5165 | DH | CON | 2BF | Z1 | FR | WS | B09 | B09-D07 | RES-2B |
| DUKHCONI2BZ1WSGL5170 |  | Backfilling potable water line | 25d | 2013-10-05 | 2013-11-04 | DUKHCONI2BZ1SAGL5145 FF, DUKHCONI2BZ1WSGL5165 SS+5d | 17d | 0d | LABOR - CIVIL [84 h]; BACKFILLING QTY [339 Cum]; BOBCAT [125 h]; PLATE COMPACTOR [125 h]; TRUCK [25 h]; EQUIP OPERATORS [275 h] | 3,172 | 25 | 2BP1WSFR25 | DUKHCON2BP1WSGL5170 | DUKHCONI2BZ1WSGL5170 | DH | CON | 2BF | Z1 | FR | WS | B09 | B09-D07 | RES-2B |
| DUKHCONI2BZ1WSGL5175 |  | Construction of valve chambers & Thrust Blocks | 25d | 2013-10-10 | 2013-11-10 | DUKHCONI2BZ1WSGL5155 SS+10d, DUKHCONI2BZ1WSGL5170 FF+5d | 38d | 0d | MANHOLES SK [56 h]; LABOR - CIVIL [24 h]; MANHOLES QTY [7 ea] | 1,845 | 30 | 2BP1WSFR30 | DUKHCON2BP1WSGL5175 | DUKHCONI2BZ1WSGL5175 | DH | CON | 2BF | Z1 | FR | WS | B09 | B09-D07 | RES-2B |
| DUKHCONI2BZ1WSGL5180 |  | Installation of meter ,Accessories & Connection | 20d | 2013-11-11 | 2013-12-03 | DUKHCONI2BZ1WSGL5175 | 38d | 7d | LABOR- SUBCONTRACTOR [12 h]; MECHANICALS SK [21.6 h]; CHAMPER QTY [7 lm] | 19,692.5 | 35 | 2BP1WSFR35 | DUKHCON2BP1WSGL5180 | DUKHCONI2BZ1WSGL5180 | DH | CON | 2BF | Z1 | FR | WS | B09 | B09-D07 | RES-2B |
|  | 25 | **FIREFIGHTING LINES** |  | 2013-10-10 | 2013-12-11 |  |  |  |  |  |  |  |  |  |  |  |  |  |  |  |  |  |  |
| DUKHCONI2BZ1FFGL5185 |  | Excavation for firefighting line | 25d | 2013-10-10 | 2013-11-10 | DUKHENGI2BDWFFAP5440, DUKHCONI2BZ1WSGL5170 SS+5d | 17d | 0d | EXCAVATION QTY [115 Cum]; LOADER [25 h]; POCLAIN [50 h]; TRUCK [25 h]; EQUIP OPERATORS [100 h]; LABOR - CIVIL [72 h] | 12,917 | 10 | 2BP1FFFR10 | DUKHCON2BP1FFGL5185 | DUKHCONI2BZ1FFGL5185 | DH | CON | 2BF | Z1 | FR | FF | B09 | B09-D07 | RES-2B |
| DUKHCONI2BZ1FFGL5190 |  | Laying of firefighting line | 25d | 2013-10-21 | 2013-11-18 | DUKHCONI2BZ1FFGL5185 SS+7d | 17d | 0d | LABOR- SUBCONTRACTOR [36 h]; MECHANICALS SK [129.6 h]; PLUMB PIPES QTY [115 lm] | 16,395 | 15 | 2BP1FFFR15 | DUKHCON2BP1FFGL5190 | DUKHCONI2BZ1FFGL5190 | DH | CON | 2BF | Z1 | FR | FF | B09 | B09-D07 | RES-2B |
| DUKHCONI2BZ1FFGL5195 |  | Testing of firefighting line | 25d | 2013-10-27 | 2013-11-24 | DUKHCONI2BZ1FFGL5190 SS+5d | 17d | 0d | LABOR- SUBCONTRACTOR [18 h]; MECHANICALS SK [64.8 h]; DRAINAGE PIPES QTY [115 lm] | 1,542.5 | 20 | 2BP1FFFR20 | DUKHCON2BP1FFGL5195 | DUKHCONI2BZ1FFGL5195 | DH | CON | 2BF | Z1 | FR | FF | B09 | B09-D07 | RES-2B |
| DUKHCONI2BZ1FFGL5200 |  | Backfilling firefighting line | 25d | 2013-11-02 | 2013-11-30 | DUKHCONI2BZ1FFGL5195 SS+5d | 17d | 0d | LABOR - CIVIL [30 h]; BACKFILLING QTY [115 Cum]; BOBCAT [50 h]; PLATE COMPACTOR [50 h]; TRUCK [10 h]; EQUIP OPERATORS [110 h] | 3,229 | 25 | 2BP1FFFR25 | DUKHCON2BP1FFGL5200 | DUKHCONI2BZ1FFGL5200 | DH | CON | 2BF | Z1 | FR | FF | B09 | B09-D07 | RES-2B |
| DUKHCONI2BZ1FFGL5205 |  | Construction of valve chambers & Thrust Blocks | 25d | 2013-11-07 | 2013-12-05 | DUKHCONI2BZ1FFGL5200 FF+5d, DUKHCONI2BZ1FFGL5185 SS+10d | 31d | 0d | STEEL FIXERS SK [8 h]; CARPENTERS SK [56 h]; CONCRETE MASON SK [32 h]; LABOR - CIVIL [78 h]; EXCAVATION QTY [14 Cum]; REINFORCEMENT BARS QTY [58 kg]; FORMWORK QTY [25 Sqm]; CONCRETE QTY [15 Cum] | 1,987 | 30 | 2BP1FFFR30 | DUKHCON2BP1FFGL5205 | DUKHCONI2BZ1FFGL5205 | DH | CON | 2BF | Z1 | FR | FF | B09 | B09-D07 | RES-2B |
| DUKHCONI2BZ1FFGL5210 |  | Connection with existing Firewater System | 25d | 2013-11-13 | 2013-12-11 | DUKHCONI2BZ1FFGL5205 FF+5d, DUKHCONI2BZ1WSGL5180 FF | 31d | 12d | STEEL FIXERS SK [8 h]; CARPENTERS SK [56 h]; CONCRETE MASON SK [32 h]; LABOR - CIVIL [78 h]; EXCAVATION QTY [14 Cum]; REINFORCEMENT BARS QTY [55 kg]; FORMWORK QTY [25 Sqm]; CONCRETE QTY [15 Cum] | 21,275.5 | 35 | 2BP1FFFR35 | DUKHCON2BP1FFGL5210 | DUKHCONI2BZ1FFGL5210 | DH | CON | 2BF | Z1 | FR | FF | B09 | B09-D07 | RES-2B |
|  | 30 | **ELECTRICAL LINES** |  | 2013-11-10 | 2014-01-04 |  |  |  |  |  |  |  |  |  |  |  |  |  |  |  |  |  |  |
| DUKHCONI2BZ1ELGL5215 |  | Excavation Cable Trenches & Duct Banks | 25d | 2013-11-10 | 2013-12-08 | DUKHENGI2BDWELAP5460, DUKHCONI2BZ1FFGL5200 SS+7d | 19d | 0d | LABOR - CIVIL [942 h]; EXCAVATION QTY [1571 Cum]; LOADER [163 h]; POCLAIN [325 h]; TRUCK [163 h]; EQUIP OPERATORS [651 h] | 21,081.5 | 10 | 2BP1ECFR10 | DUKHCON2BP1ELGL5215 | DUKHCONI2BZ1ELGL5215 | DH | CON | 2BF | Z1 | FR | EC | B09 | B09-D04 | RES-2B |
| DUKHCONI2BZ1ELGL5220 |  | Laying of electrical cables | 25d | 2013-11-16 | 2013-12-14 | DUKHCONI2BZ1ELGL5215 SS+5d | 22d | 0d | LABOR- SUBCONTRACTOR [474 h]; ELECTRICIANS SK [1758.4 h]; CABLE QTY [1571 lm] | 469,935.5 | 15 | 2BP1ECFR15 | DUKHCON2BP1ELGL5220 | DUKHCONI2BZ1ELGL5220 | DH | CON | 2BF | Z1 | FR | EC | B09 | B09-D04 | RES-2B |
| DUKHCONI2BZ1ELGL5225 |  | Backfilling Electrical trench | 25d | 2013-11-24 | 2013-12-23 | DUKHCONI2BZ1ELGL5215 FF+7d, DUKHCONI2BZ1ELGL5220 SS+7d | 22d | 0d | LABOR - CIVIL [378 h]; BACKFILLING QTY [1571 Cum]; BOBCAT [375 h]; PLATE COMPACTOR [375 h]; TRUCK [75 h]; EQUIP OPERATORS [825 h] | 9,036.5 | 20 | 2BP1ECFR20 | DUKHCON2BP1ELGL5225 | DUKHCONI2BZ1ELGL5225 | DH | CON | 2BF | Z1 | FR | EC | B09 | B09-D04 | RES-2B |
| DUKHCONI2BZ1ELGL5230 |  | Construction of Submain Board & Feeder Pillar | 25d | 2013-12-05 | 2014-01-04 | DUKHCONI2BZ1ELGL5225 SS+10d, DUKHCONI2BZ1ELGL5225 FF+10d | 62d | 0d | DOOR ERECTOR SK [24 h]; EXPANSION JOINT QTY [28 Sqm]; ALUMINIUM DOOR QTY [5 ea]; EXPANSION JOINT SKILLED SK [224 h]; STEEL FIXERS SK [8 h]; CARPENTERS SK [88 h]; CONCRETE MASON SK [8 h]; LABOR - CIVIL [72 h]; LABOR- SUBCONTRACTOR [96 h]; REINFORCEMENT BARS QTY [53 kg]; FORMWORK QTY [42 Sqm]; CONCRETE QTY [3 Cum] | 46,313.5 | 25 | 2BP1ECFR25 | DUKHCON2BP1ELGL5230 | DUKHCONI2BZ1ELGL5230 | DH | CON | 2BF | Z1 | FR | EC | B09 | B09-D04 | RES-2B |

Notes:
- DUKHCONI2BZ1SAGL5135: Expenses: I2B-Surface Water drainage and Sewerage system 10637.5
- DUKHCONI2BZ1SAGL5140: Expenses: I2B-Surface Water drainage and Sewerage system 226248
- DUKHCONI2BZ1SAGL5145: Expenses: I2B-Surface Water drainage and Sewerage system 31201.5
- DUKHCONI2BZ1SAGL5150: Expenses: I2B-Surface Water drainage and Sewerage system 5676.5
- DUKHCONI2BZ1WSGL5155: Expenses: I2B-Water supply system 12690
- DUKHCONI2BZ1WSGL5160: Expenses: I2B-Water supply system 57255.5
- DUKHCONI2BZ1WSGL5165: Expenses: I2B-Water supply system 5458
- DUKHCONI2BZ1WSGL5170: Expenses: I2B-Water supply system 3172
- DUKHCONI2BZ1WSGL5175: Expenses: I2B-Water supply system 1845
- DUKHCONI2BZ1WSGL5180: Expenses: I2B-Water supply system 19692.5
- DUKHCONI2BZ1FFGL5185: Expenses: I2B-Water supply system 12917
- DUKHCONI2BZ1FFGL5190: Expenses: I2B-Water supply system 16395
- DUKHCONI2BZ1FFGL5195: Expenses: I2B-Water supply system 1542.5
- DUKHCONI2BZ1FFGL5200: Expenses: I2B-Water supply system 3229
- DUKHCONI2BZ1FFGL5205: Expenses: I2B-Water supply system 1987
- DUKHCONI2BZ1FFGL5210: Expenses: I2B-Water supply system 21275.5
- DUKHCONI2BZ1ELGL5215: Expenses: I2B-Electrical power supply and distribution 21081.5
- DUKHCONI2BZ1ELGL5220: Expenses: I2B-Electrical power supply and distribution 469936
- DUKHCONI2BZ1ELGL5225: Expenses: I2B-Electrical power supply and distribution 9036.5
- DUKHCONI2BZ1ELGL5230: Expenses: I2B-Electrical power supply and distribution 46313.5

| ID | WBS | Activity | Duration | Start | Finish | Predecessors | Total float | Free float | Resources | Cost | CODE | P3 ACTID | P6 ID (old) | NP61D | PROJECT | PHASES | PACKAGE | PART | ELEMENTS | STEP | BILL NOS | BILL DIVISION | RES PACK |
| --- | --- | --- | --- | --- | --- | --- | --- | --- | --- | --- | --- | --- | --- | --- | --- | --- | --- | --- | --- | --- | --- | --- | --- |
|  | 35 | **STREET LIGHTING** |  | 2013-11-10 | 2014-02-02 |  |  |  |  |  |  |  |  |  |  |  |  |  |  |  |  |  |  |
| DUKHCONI2BZ1STGL5235 |  | Excavation for Street lighting | 25d | 2013-11-10 | 2013-12-08 | DUKHCONI2BZ1ELGL5215 SS, DUKHENGI2BDWSTAP5470 | 19d | 0d | LABOR - CIVIL [96 h]; EXCAVATION QTY [158 Cum]; LOADER [38 h]; POCLAIN [75 h]; TRUCK [38 h]; EQUIP OPERATORS [151 h] | 1,410 | 10 | 2BP1STFR10 | DUKHCON2BP1STGL5235 | DUKHCONI2BZ1STGL5235 | DH | CON | 2BF | Z1 | FR | ST | B09 | B09-D09 | RES-2B |
| DUKHCONI2BZ1STGL5240 |  | Construction of Duct Banks | 25d | 2013-11-16 | 2013-12-14 | DUKHCONI2BZ1STGL5235 SS+5d | 19d | 0d | LABOR- SUBCONTRACTOR [96 h]; ELECTRICIANS SK [358.4 h]; DUCT BANK QTY [128 lm] | 63,508.5 | 15 | 2BP1STFR15 | DUKHCON2BP1STGL5240 | DUKHCONI2BZ1STGL5240 | DH | CON | 2BF | Z1 | FR | ST | B09 | B09-D09 | RES-2B |
| DUKHCONI2BZ1STGL5245 |  | Construction of Foundation | 25d | 2013-11-16 | 2013-12-14 | DUKHCONI2BZ1STGL5240 SS | 19d | 0d | MANHOLES SK [488 h]; LABOR - CIVIL [186 h]; COLUMN BASE QTY [31 ea] | 20,891 | 20 | 2BP1STFR20 | DUKHCON2BP1STGL5245 | DUKHCONI2BZ1STGL5245 | DH | CON | 2BF | Z1 | FR | ST | B09 | B09-D09 | RES-2B |
| DUKHCONI2BZ1STGL5250 |  | Backfilling Street Lighting | 25d | 2013-11-21 | 2013-12-21 | DUKHCONI2BZ1STGL5235 FF+5d, DUKHCONI2BZ1STGL5245 SS+5d | 19d | 0d | LABOR - CIVIL [42 h]; BACKFILLING QTY [158 Cum]; BOBCAT [50 h]; PLATE COMPACTOR [50 h]; TRUCK [10 h]; EQUIP OPERATORS [110 h] | 1,410 | 25 | 2BP1STFR25 | DUKHCON2BP1STGL5250 | DUKHCONI2BZ1STGL5250 | DH | CON | 2BF | Z1 | FR | ST | B09 | B09-D09 | RES-2B |
| DUKHCONI2BZ1STGL5255 |  | Installation of light Post | 25d | 2013-12-03 | 2014-01-01 | DUKHCONI2BZ1STGL5250 SS+10d | 82d | 17d | LABOR- SUBCONTRACTOR [48 h]; ELECTRICIANS SK [179.2 h]; LIGHTPOST COLUMN QTY [31 ea] | 250,520.5 | 30 | 2BP1STFR30 | DUKHCON2BP1STGL5255 | DUKHCONI2BZ1STGL5255 | DH | CON | 2BF | Z1 | FR | ST | B09 | B09-D09 | RES-2B |
| DUKHCONI2BZ1STGL5260 |  | Electrical Works | 25d | 2014-01-05 | 2014-02-02 | DUKHCONI2BZ1ELGL5230, DUKHCONI2BZ1STGL5255 SS+7d | 62d | 17d | LABOR- SUBCONTRACTOR [36 h]; ELECTRICIANS SK [134.4 h]; CABLE QTY [122 lm] | 14,806.5 | 35 | 2BP1STFR35 | DUKHCON2BP1STGL5260 | DUKHCONI2BZ1STGL5260 | DH | CON | 2BF | Z1 | FR | ST | B09 | B09-D09 | RES-2B |
|  | 40 | **IRRIGATION LINES** |  | 2013-12-24 | 2014-03-01 |  |  |  |  |  |  |  |  |  |  |  |  |  |  |  |  |  |  |
| DUKHCONI2BZ1IRGL5265 |  | Excavation for irrigation line | 25d | 2013-12-24 | 2014-01-21 | DUKHCONI2BZ1ELGL5225, DUKHENGI2BDWIRAP5490 | 30d | 0d | LABOR - CIVIL [78 h]; EXCAVATION QTY [127 Cum]; LOADER [25 h]; TRUCK [25 h]; EQUIP OPERATORS [100 h]; POCLAIN [50 h] | 4,053 | 10 | 2BP1IRFR10 | DUKHCON2BP1IRGL5265 | DUKHCONI2BZ1IRGL5265 | DH | CON | 2BF | Z1 | FR | IR | B09 | B09-D07 | RES-2B |
| DUKHCONI2BZ1IRGL5270 |  | Laying of irrigationline | 25d | 2013-12-30 | 2014-01-27 | DUKHCONI2BZ1IRGL5265 SS+5d | 30d | 0d | LABOR- SUBCONTRACTOR [36 h]; MECHANICALS SK [64.8 h]; IRRIGATION PIPES QTY [217 lm] | 5,563 | 15 | 2BP1IRFR15 | DUKHCON2BP1IRGL5270 | DUKHCONI2BZ1IRGL5270 | DH | CON | 2BF | Z1 | FR | IR | B09 | B09-D07 | RES-2B |
| DUKHCONI2BZ1IRGL5275 |  | Testing of irrigation line | 25d | 2014-01-05 | 2014-02-02 | DUKHCONI2BZ1IRGL5270 SS+5d | 30d | 0d | LABOR- SUBCONTRACTOR [30 h]; MECHANICALS SK [54 h]; DRAINAGE PIPES TEST QTY [217 lm] | 585.5 | 20 | 2BP1IRFR20 | DUKHCON2BP1IRGL5275 | DUKHCONI2BZ1IRGL5275 | DH | CON | 2BF | Z1 | FR | IR | B09 | B09-D07 | RES-2B |
| DUKHCONI2BZ1IRGL5280 |  | Backfilling irrigation line | 25d | 2014-01-11 | 2014-02-08 | DUKHCONI2BZ1IRGL5275 SS+5d | 30d | 0d | LABOR - CIVIL [30 h]; BACKFILLING QTY [127 Cum]; BOBCAT [50 h]; PLATE COMPACTOR [50 h]; TRUCK [10 h]; EQUIP OPERATORS [110 h] | 1,013 | 25 | 2BP1IRFR25 | DUKHCON2BP1IRGL5280 | DUKHCONI2BZ1IRGL5280 | DH | CON | 2BF | Z1 | FR | IR | B09 | B09-D07 | RES-2B |
| DUKHCONI2BZ1IRGL5285 |  | Construction of Thrust Blocks,Pull boxes | 25d | 2014-01-22 | 2014-02-20 | DUKHCONI2BZ1IRGL5280 FF+10d, DUKHCONI2BZ1ELGL5225 SS+10d | 35d | 0d | LABOR- SUBCONTRACTOR [72 h]; ELECTRICIANS SK [89.6 h]; THRUST BLOCKS QTY [8 ea]; PULL BOX QTY [19 ea]; PULL BOX SK [152 h] | 3,780 | 30 | 2BP1IRFR30 | DUKHCON2BP1IRGL5285 | DUKHCONI2BZ1IRGL5285 | DH | CON | 2BF | Z1 | FR | IR | B09 | B09-D07 | RES-2B |
| DUKHCONI2BZ1IRGL5290 |  | Irrigation Fittings (Nozzle,Values) | 25d | 2014-01-30 | 2014-03-01 | DUKHCONI2BZ1IRGL5280 SS+10d, DUKHCONI2BZ1IRGL5285 SS+7d | 35d | 1d | LABOR- SUBCONTRACTOR [36 h]; MECHANICALS SK [64.8 h]; IRRIGATION PIPES QTY [217 lm] | 47,899.5 | 35 | 2BP1IRFR35 | DUKHCON2BP1IRGL5290 | DUKHCONI2BZ1IRGL5290 | DH | CON | 2BF | Z1 | FR | IR | B09 | B09-D07 | RES-2B |
|  | 45 | **TELECOMMUNICATION LINES** |  | 2013-12-03 | 2014-01-23 |  |  |  |  |  |  |  |  |  |  |  |  |  |  |  |  |  |  |
| DUKHCONI2BZ1TCGL5295 |  | Excavation Telecommunication trenches | 20d | 2013-12-03 | 2013-12-26 | DUKHENGI2BDWTCAP5480, DUKHCONI2BZ1STGL5250 SS+10d | 19d | 0d | LABOR - CIVIL [162 h]; EXCAVATION QTY [265 Cum]; LOADER [50 h]; POCLAIN [100 h]; TRUCK [50 h]; EQUIP OPERATORS [200 h] | 7,328 | 10 | 2BP1TCFR10 | DUKHCON2BP1TCGL5295 | DUKHCONI2BZ1TCGL5295 | DH | CON | 2BF | Z1 | FR | TC | B09 | B09-D05 | RES-2B |
| DUKHCONI2BZ1TCGL5300 |  | Laying of cables | 20d | 2013-12-09 | 2014-01-01 | DUKHCONI2BZ1TCGL5295 SS+5d | 19d | 0d | LABOR- SUBCONTRACTOR [204 h]; ELECTRICIANS SK [750.4 h]; CABLE QTY [663 lm] | 2,226 | 15 | 2BP1TCFR15 | DUKHCON2BP1TCGL5300 | DUKHCONI2BZ1TCGL5300 | DH | CON | 2BF | Z1 | FR | TC | B09 | B09-D05 | RES-2B |
| DUKHCONI2BZ1TCGL5305 |  | Backfilling telecommunication trench | 20d | 2013-12-15 | 2014-01-07 | DUKHCONI2BZ1TCGL5300 SS+5d | 19d | 0d | LABOR - CIVIL [66 h]; BACKFILLING QTY [265 Cum]; BOBCAT [100 h]; PLATE COMPACTOR [100 h]; TRUCK [20 h]; EQUIP OPERATORS [220 h] | 3,140 | 20 | 2BP1TCFR20 | DUKHCON2BP1TCGL5305 | DUKHCONI2BZ1TCGL5305 | DH | CON | 2BF | Z1 | FR | TC | B09 | B09-D05 | RES-2B |
| DUKHCONI2BZ1TCGL5310 |  | Connection & Installation | 20d | 2014-01-01 | 2014-01-23 | DUKHCONI2BZ1TCGL5305 SS+14d | 60d | 18d | LABOR- SUBCONTRACTOR [12 h]; ELECTRICIANS SK [67.2 h]; TELEPHONE SOCKETS QTY [6 ea] | 53,762 | 25 | 2BP1TCFR25 | DUKHCON2BP1TCGL5310 | DUKHCONI2BZ1TCGL5310 | DH | CON | 2BF | Z1 | FR | TC | B09 | B09-D05 | RES-2B |
|  | 50 | **BOUNDARY WALL** |  | 2013-12-03 | 2014-03-01 |  |  |  |  |  |  |  |  |  |  |  |  |  |  |  |  |  |  |
| DUKHCONI2BZ1BWGL5315 |  | Construction of Boundary Wall (Ht-3m) | 25d | 2013-12-03 | 2014-01-01 | DUKHCONI2BZ1STGL5250 SS+10d, DUKHENGI2BDWBWAP5510 | 43d | 0d | STEEL FIXERS SK [104 h]; LABOR - CIVIL [78 h]; BOUNDARY WIRE MESH QTY [264 Sqm] | 425,409 | 10 | 2BP1BWFR10 | DUKHCON2BP1ARGL5315 | DUKHCONI2BZ1BWGL5315 | DH | CON | 2BF | Z1 | FR | BW | B09 | B09-D10 | RES-2B |
| DUKHCONI2BZ1BWGL5320 |  | Install.Steel Gate,Entance Barrier (3m Wall) | 25d | 2013-12-21 | 2014-01-18 | DUKHCONI2BZ1BWGL5315 SS+14d | 43d | 0d | LABOR- SUBCONTRACTOR [6 h]; GATE QTY [1 ea]; GATE ERECTOR SK [8 h] | 1,430 | 15 | 2BP1BWFR15 | DUKHCON2BP1ARGL5320 | DUKHCONI2BZ1BWGL5320 | DH | CON | 2BF | Z1 | FR | BW | B09 | B09-D10 | RES-2B |
| DUKHCONI2BZ1BWGL5325 |  | Const. of Villa Front Boundary Wall (Ht-2m) | 25d | 2014-01-19 | 2014-02-17 | DUKHCONI2BZ1BWGL5320, DUKHCONI2BZ1BWGL5315 SS+5d | 43d | 0d | STEEL FIXERS SK [64 h]; LABOR - CIVIL [48 h]; BOUNDARY WIRE MESH QTY [150 Sqm] | 250,738.5 | 20 | 2BP1BWFR20 | DUKHCON2BP1ARGL5325 | DUKHCONI2BZ1BWGL5325 | DH | CON | 2BF | Z1 | FR | BW | B09 | B09-D10 | RES-2B |
| DUKHCONI2BZ1BWGL5330 |  | Const. of Blockwork fence Wall (Ht-1.85m) | 25d | 2014-01-30 | 2014-03-01 | DUKHCONI2BZ1BWGL5325 SS+10d | 60d | 17d | LABOR - CIVIL [18 h]; BOUNDARY WIRE MESH QTY [52 Sqm]; STEEL FIXERS SK [24 h] | 42,459 | 30 | 2BP1BWFR30 | DUKHCON2BP1ARGL5330 | DUKHCONI2BZ1BWGL5330 | DH | CON | 2BF | Z1 | FR | BW | B09 | B09-D10 | RES-2B |

Notes:
- DUKHCONI2BZ1STGL5235: Expenses: I2B-Street lighting 1410
- DUKHCONI2BZ1STGL5240: Expenses: I2B-Street lighting 63508.5
- DUKHCONI2BZ1STGL5245: Expenses: I2B-Street lighting 20891
- DUKHCONI2BZ1STGL5250: Expenses: I2B-Street lighting 1410
- DUKHCONI2BZ1STGL5255: Expenses: I2B-Street lighting 250520
- DUKHCONI2BZ1STGL5260: Expenses: I2B-Street lighting 14806.5
- DUKHCONI2BZ1IRGL5265: Expenses: I2B-Water supply system 4053
- DUKHCONI2BZ1IRGL5270: Expenses: I2B-Water supply system 5563
- DUKHCONI2BZ1IRGL5275: Expenses: I2B-Water supply system 585.5
- DUKHCONI2BZ1IRGL5280: Expenses: I2B-Water supply system 1013
- DUKHCONI2BZ1IRGL5285: Expenses: I2B-Water supply system 3780
- DUKHCONI2BZ1IRGL5290: Expenses: I2B-Water supply system 47899.5
- DUKHCONI2BZ1TCGL5295: Expenses: I2B-Telecommunication 7328
- DUKHCONI2BZ1TCGL5300: Expenses: I2B-Telecommunication 2226
- DUKHCONI2BZ1TCGL5305: Expenses: I2B-Telecommunication 3140
- DUKHCONI2BZ1TCGL5310: Expenses: I2B-Telecommunication 53762
- DUKHCONI2BZ1BWGL5315: Expenses: I2B-Hard and soft landscaping 425409
- DUKHCONI2BZ1BWGL5320: Expenses: I2B-Hard and soft landscaping 1430
- DUKHCONI2BZ1BWGL5325: Expenses: I2B-Hard and soft landscaping 250738
- DUKHCONI2BZ1BWGL5330: Expenses: I2B-Hard and soft landscaping 42459

| ID | WBS | Activity | Duration | Start | Finish | Predecessors | Total float | Free float | Resources | Cost | CODE | P3 ACTID | P6 ID (old) | NP61D | PROJECT | PHASES | PACKAGE | PART | ELEMENTS | STEP | BILL NOS | BILL DIVISION | RES PACK |
| --- | --- | --- | --- | --- | --- | --- | --- | --- | --- | --- | --- | --- | --- | --- | --- | --- | --- | --- | --- | --- | --- | --- | --- |
|  | 55 | **ROAD WORKS** |  | 2013-12-28 | 2014-03-13 |  |  |  |  |  |  |  |  |  |  |  |  |  |  |  |  |  |  |
| DUKHCONI2BZ1RWGL6000 |  | Excavation & Earth Filling | 10d | 2013-12-28 | 2014-01-07 | DUKHCONI2BZ1ELGL5225, DUKHCONI2BZ1FFGL5210, DUKHENGI2BDWBWAP5510, DUKHCONI2BZ1FFGL5200, DUKHCONI2BZ1STGL5250, DUKHCONI2BZ1SAGL5150, DUKHCONI2BZ1TCGL5305 SS+10d | 19d | 0d | LABOR - CIVIL [690 h]; EXCAVATION QTY [1067 Cum]; BACKFILLING QTY [212 Cum]; LOADER [125 h]; POCLAIN [250 h]; TRUCK [125 h]; EQUIP OPERATORS [500 h] | 102,150.5 | 10 | 2BP1RDFR10 | DUKHCON2BP1RDGL6000 | DUKHCONI2BZ1RWGL6000 | DH | CON | 2BF | Z1 | FR | RD | B09 | B09-D08 | RES-2B |
| DUKHCONI2BZ1RWGL6005 |  | Laying of Sub Grade | 25d | 2014-01-08 | 2014-02-05 | DUKHCONI2BZ1RWGL6000 | 19d | 0d | LABOR- SUBCONTRACTOR [24 h]; SUBGRADE QTY [350 Sqm] | 116,544 | 15 | 2BP1RDFR15 | DUKHCON2BP1RDGL6005 | DUKHCONI2BZ1RWGL6005 | DH | CON | 2BF | Z1 | FR | RD | B09 | B09-D08 | RES-2B |
| DUKHCONI2BZ1RWGL6010 |  | Laying of Precast Kerbs | 25d | 2014-01-20 | 2014-02-18 | DUKHCONI2BZ1RWGL6005 SS+10d | 19d | 0d | LABOR- SUBCONTRACTOR [24 h]; GRANULAR SUBBASE QTY [350 Sqm] | 103,939 | 20 | 2BP1RDFR20 | DUKHCON2BP1RDGL6010 | DUKHCONI2BZ1RWGL6010 | DH | CON | 2BF | Z1 | FR | RD | B09 | B09-D08 | RES-2B |
| DUKHCONI2BZ1RWGL6015 |  | Laying of Granular Sub Base Coarse | 20d | 2014-02-01 | 2014-02-24 | DUKHCONI2BZ1RWGL6010 SS+10d | 19d | 0d | LOADER [100 h]; TRUCK [100 h]; EQUIP OPERATORS [600 h]; KERBSTONE MASON SK [600 h]; LABOR- SUBCONTRACTOR [336 h]; KERBSTONE QTY [373 lm]; EDGE STONE QTY [373 Sqm]; HEAVY ROLLER [400 h] | 58,272 | 25 | 2BP1RDFR25 | DUKHCON2BP1RDGL6015 | DUKHCONI2BZ1RWGL6015 | DH | CON | 2BF | Z1 | FR | RD | B09 | B09-D08 | RES-2B |
| DUKHCONI2BZ1RWGL6020 |  | Laying of Road Base Asphalt Concrete | 5d | 2014-02-25 | 2014-03-02 | DUKHCONI2BZ1RWGL6015 | 34d | 0d | LABOR- SUBCONTRACTOR [24 h]; ASPHALT CONCRETE QTY [1750 Cum]; ASPHALT PAVER MACHINE [50 h]; HAND ROLLER [100 h]; EQUIP OPERATORS [150 h] | 148,204 | 30 | 2BP1RDFR30 | DUKHCON2BP1RDGL6020 | DUKHCONI2BZ1RWGL6020 | DH | CON | 2BF | Z1 | FR | RD | B09 | B09-D08 | RES-2B |
| DUKHCONI2BZ1RWGL6025 |  | Laying of Asphalt Wearing Coarse | 5d | 2014-03-03 | 2014-03-08 | DUKHCONI2BZ1RWGL6020 | 49d | 0d | LABOR- SUBCONTRACTOR [24 h]; ASPHALT WEARING COURSE QTY [1750 Sqm]; ASPHALT PAVER MACHINE [50 h]; HAND ROLLER [100 h]; EQUIP OPERATORS [150 h] | 77,208 | 35 | 2BP1RDFR35 | DUKHCON2BP1RDGL6025 | DUKHCONI2BZ1RWGL6025 | DH | CON | 2BF | Z1 | FR | RD | B09 | B09-D08 | RES-2B |
| DUKHCONI2BZ1RWGL6030 |  | Traffic Signage & Road Marking | 5d | 2014-03-09 | 2014-03-13 | DUKHCONI2BZ1RWGL6025 | 49d | 15d | LABOR- SUBCONTRACTOR [240 h]; STEEL ERECTOR SK [288 h]; TRAFFIC SIGN QTY [178 ea]; ROAD MARKING QTY [92 lm]; ASPHALT SK [152 h] | 79,277 | 40 | 2BP1RDFR40 | DUKHCON2BP1RDGL6030 | DUKHCONI2BZ1RWGL6030 | DH | CON | 2BF | Z1 | FR | RD | B09 | B09-D08 | RES-2B |
|  | 60 | **PARKING SHED** |  | 2014-02-06 | 2014-04-06 |  |  |  |  |  |  |  |  |  |  |  |  |  |  |  |  |  |  |
| DUKHCONI2BZ1PSGL7000 |  | Excavation | 15d | 2014-02-06 | 2014-02-24 | DUKHCONI2BZ1RWGL6015 SS+5d, DUKHENGI2BDWPSAP5520 | 39d | 5d | LABOR - CIVIL [18 h]; EXCAVATION QTY [23 Cum]; LOADER [8 h]; POCLAIN [15 h]; TRUCK [8 h]; EQUIP OPERATORS [31 h] | 35,777 | 10 | 2BP1PSFR10 | DUKHCON2BP1PSGL7000 | DUKHCONI2BZ1PSGL7000 | DH | CON | 2BF | Z1 | FR | PS | B09 | B09-D08 | RES-2B |
| DUKHCONI2BZ1PSGL7005 |  | Foundation casting | 15d | 2014-02-19 | 2014-03-08 | DUKHCONI2BZ1PSGL7000 SS+5d, DUKHCONI2BZ1RWGL6015 FF+10d, DUKHCONI2BZ1PSGL7000 FF+5d | 34d | 0d | STEEL FIXERS SK [304 h]; CARPENTERS SK [672 h]; CONCRETE MASON SK [120 h]; LABOR - CIVIL [816 h]; REINFORCEMENT BARS QTY [3738 kg]; FORMWORK QTY [335 Sqm]; CONCRETE QTY [58 Cum] | 35,777 | 15 | 2BP1PSFR15 | DUKHCON2BP1PSGL7005 | DUKHCONI2BZ1PSGL7005 | DH | CON | 2BF | Z1 | FR | PS | B09 | B09-D08 | RES-2B |
| DUKHCONI2BZ1PSGL7010 |  | Column, Frame& Fabrics Erection | 25d | 2014-03-03 | 2014-03-31 | DUKHCONI2BZ1PSGL7005 SS+10d, DUKHCONI2BZ1BWGL5330 FF, DUKHCONI2BZ1RWGL6030 FF, DUKHCONI2BZ1RWGL6020 | 34d | 0d | LABOR- SUBCONTRACTOR [102 h]; STEEL ERECTOR SK [184 h]; PARKING SHED QTY [563 ea] | 178,884 | 20 | 2BP1PSFR20 | DUKHCON2BP1PSGL7010 | DUKHCONI2BZ1PSGL7010 | DH | CON | 2BF | Z1 | FR | PS | B09 | B09-D08 | RES-2B |
| DUKHCONI2BZ1PSGL7015 |  | Electrical Works-Parking Shed | 25d | 2014-03-09 | 2014-04-06 | DUKHCONI2BZ1PSGL7010 SS+5d, DUKHCONI2BZ1STGL5260 | 34d | 17d | LABOR- SUBCONTRACTOR [18 h]; ELECTRICIANS SK [33.6 h]; LIGHTS QTY [15 ea] | 17,887.5 | 25 | 2BP1PSFR25 | DUKHCON2BP1PSGL7015 | DUKHCONI2BZ1PSGL7015 | DH | CON | 2BF | Z1 | FR | PS | B09 | B09-D08 | RES-2B |
|  | 65 | **HARD LANDSCAPING** |  | 2013-12-28 | 2014-03-19 |  |  |  |  |  |  |  |  |  |  |  |  |  |  |  |  |  |  |
| DUKHCONI2BZ1HDGL7020 |  | Precast Concrete Kerbs works | 20d | 2013-12-28 | 2014-01-19 | DUKHENGI2BDWSLAP5500, DUKHCONI2BZ1RWGL6000 SS | 34d | 0d | KERBSTONE MASON SK [416 h]; LABOR- SUBCONTRACTOR [234 h]; KERBSTONE QTY [517 lm] | 61,885 | 10 | 2BP1HDFR10 | DUKHCON2BP1HDGL7020 | DUKHCONI2BZ1HDGL7020 | DH | CON | 2BF | Z1 | FR | HD | B09 | B09-D10 | RES-2B |
| DUKHCONI2BZ1HDGL7025 |  | Interlocking for Walkways | 25d | 2014-01-08 | 2014-02-05 | DUKHCONI2BZ1HDGL7020 SS+10d | 34d | 0d | INTERLOCK MASON SK [552 h]; LABOR- SUBCONTRACTOR [210 h]; INTERLOCK QTY [686 Sqm] | 92,408 | 15 | 2BP1HDFR15 | DUKHCON2BP1HDGL7025 | DUKHCONI2BZ1HDGL7025 | DH | CON | 2BF | Z1 | FR | HD | B09 | B09-D10 | RES-2B |
| DUKHCONI2BZ1HDGL7030 |  | Construction of Retaining wall | 25d | 2014-01-20 | 2014-02-18 | DUKHCONI2BZ1HDGL7025 SS+10d | 34d | 0d | STEEL FIXERS SK [8 h]; CARPENTERS SK [96 h]; CONCRETE MASON SK [16 h]; LABOR - CIVIL [96 h]; EXCAVATION QTY [11 Cum]; REINFORCEMENT BARS QTY [93 kg]; FORMWORK QTY [48 Sqm]; CONCRETE QTY [6 Cum] | 25,677 | 20 | 2BP1HDFR20 | DUKHCON2BP1HDGL7030 | DUKHCONI2BZ1HDGL7030 | DH | CON | 2BF | Z1 | FR | HD | B09 | B09-D10 | RES-2B |
| DUKHCONI2BZ1HDGL7035 |  | Construction of Wash Stone Boulders | 25d | 2014-01-20 | 2014-02-18 | DUKHCONI2BZ1HDGL7030 SS | 34d | 0d | TILE MASON SK [288 h]; LABOR- SUBCONTRACTOR [108 h]; STONE BOULDERS QTY [144 Sqm] | 70,109 | 25 | 2BP1HDFR25 | DUKHCON2BP1HDGL7035 | DUKHCONI2BZ1HDGL7035 | DH | CON | 2BF | Z1 | FR | HD | B09 | B09-D10 | RES-2B |
| DUKHCONI2BZ1HDGL7040 |  | Construction of Speed Humps | 10d | 2014-03-09 | 2014-03-19 | DUKHCONI2BZ1HDGL7035 SS, DUKHCONI2BZ1RWGL6025 | 64d | 32d | CONCRETE MASON SK [8 h]; LABOR - CIVIL [6 h]; SPEED HUMPS [2 ea] | 2,138 | 30 | 2BP1HDFR30 | DUKHCON2BP1HDGL7040 | DUKHCONI2BZ1HDGL7040 | DH | CON | 2BF | Z1 | FR | HD | B09 | B09-D10 | RES-2B |
|  | 70 | **SOFT LANDSCAPING** |  | 2014-02-01 | 2014-03-25 |  |  |  |  |  |  |  |  |  |  |  |  |  |  |  |  |  |  |
| DUKHCONI2BZ1SLGL7200 |  | Excavation | 25d | 2014-02-01 | 2014-03-02 | DUKHCONI2BZ1IRGL5290 SS, DUKHCONI2BZ1HDGL7035 SS+10d, DUKHENGI2BDWSLAP5500 | 34d | 0d | LABOR - CIVIL [1344 h]; EXCAVATION QTY [2233 Cum]; LOADER [375 h]; POCLAIN [750 h]; TRUCK [375 h]; EQUIP OPERATORS [1500 h] | 29,844 | 10 | 2BP1SLFR10 | DUKHCON2BP1SLGL7200 | DUKHCONI2BZ1SLGL7200 | DH | CON | 2BF | Z1 | FR | SL | B09 | B09-D10 | RES-2B |
| DUKHCONI2BZ1SLGL7205 |  | Sweet Soil Laying | 25d | 2014-02-13 | 2014-03-13 | DUKHCONI2BZ1SLGL7200 SS+10d | 34d | 0d | LABOR- SUBCONTRACTOR [270 h]; SWEET SOIL QTY [2233 Cum]; LANDSCAPING SK [360 h] | 169,116 | 15 | 2BP1SLFR15 | DUKHCON2BP1SLGL7205 | DUKHCONI2BZ1SLGL7205 | DH | CON | 2BF | Z1 | FR | SL | B09 | B09-D10 | RES-2B |
| DUKHCONI2BZ1SLGL7210 |  | Plantation works | 25d | 2014-02-25 | 2014-03-25 | DUKHCONI2BZ1SLGL7205 SS+10d | 44d | 17d | LABOR- SUBCONTRACTOR [246 h]; PLAM TREES QTY [28 ea]; LANDSCAPING SK [328 h]; GROUND COVER QTY [2143 Sqm]; SHRUBS QTY [53 ea] | 164,540 | 20 | 2BP1SLFR20 | DUKHCON2BP1SLGL7210 | DUKHCONI2BZ1SLGL7210 | DH | CON | 2BF | Z1 | FR | SL | B09 | B09-D10 | RES-2B |
|  | 15 | **ZONE - 2** |  | 2013-09-14 | 2014-05-25 |  |  |  |  |  |  |  |  |  |  |  |  |  |  |  |  |  |  |
|  | 10 | **INFRASTRUCTURE WORKS** |  | 2013-09-14 | 2014-05-25 |  |  |  |  |  |  |  |  |  |  |  |  |  |  |  |  |  |  |
|  | 10 | **DRAINAGE LINES** |  | 2013-09-14 | 2013-11-04 |  |  |  |  |  |  |  |  |  |  |  |  |  |  |  |  |  |  |
| DUKHCONI2BZ2DRGL5115 |  | Excavation for Drainage line | 25d | 2013-09-14 | 2013-10-12 | DUKHCONI2BZ1DRGL5130 SS+7d | 24d | 0d | LABOR - CIVIL [108 h]; EXCAVATION QTY [178 Cum]; LOADER [31 h]; POCLAIN [63 h]; TRUCK [31 h]; EQUIP OPERATORS [125 h] | 7,089 | 10 | 2BP2DRFR10 | DUKHCON2BP2DRGL5115 | DUKHCONI2BZ2DRGL5115 | DH | CON | 2BF | Z2 | FR | DR | B09 | B09-D06 | RES-2B |
| DUKHCONI2BZ2DRGL5120 |  | Laying of Drainage line | 25d | 2013-09-21 | 2013-10-21 | DUKHCONI2BZ2DRGL5115 SS+6d, DUKHCONI2BZ2DRGL5115 FF+6d | 24d | 0d | LABOR- SUBCONTRACTOR [30 h]; DRAINAGE PIPES QTY [178 lm]; MECHANICALS SK [97.2 h] | 24,313 | 15 | 2BP2DRFR15 | DUKHCON2BP2DRGL5120 | DUKHCONI2BZ2DRGL5120 | DH | CON | 2BF | Z2 | FR | DR | B09 | B09-D06 | RES-2B |
| DUKHCONI2BZ2DRGL5125 |  | Testing of Drainage line | 25d | 2013-09-29 | 2013-10-29 | DUKHCONI2BZ2DRGL5120 SS+7d, DUKHCONI2BZ2DRGL5120 FF+7d | 24d | 0d | LABOR- SUBCONTRACTOR [24 h]; MECHANICALS SK [43.2 h]; DRAINAGE PIPES TEST QTY [178 lm] | 2,701.5 | 20 | 2BP2DRFR20 | DUKHCON2BP2DRGL5125 | DUKHCONI2BZ2DRGL5125 | DH | CON | 2BF | Z2 | FR | DR | B09 | B09-D06 | RES-2B |
| DUKHCONI2BZ2DRGL5130 |  | Backfilling Drainage line | 15d | 2013-10-16 | 2013-11-04 | DUKHCONI2BZ2DRGL5125 SS+10d, DUKHCONI2BZ2DRGL5125 FF+5d | 24d | 0d | LABOR - CIVIL [42 h]; BACKFILLING QTY [178 Cum]; BOBCAT [75 h]; PLATE COMPACTOR [75 h]; TRUCK [15 h]; EQUIP OPERATORS [165 h] | 9,880 | 25 | 2BP2DRFR25 | DUKHCON2BP2DRGL5130 | DUKHCONI2BZ2DRGL5130 | DH | CON | 2BF | Z2 | FR | DR | B09 | B09-D06 | RES-2B |

Notes:
- DUKHCONI2BZ1RWGL6000: Expenses: I2B-Road work 102150
- DUKHCONI2BZ1RWGL6005: Expenses: I2B-Road work 116544
- DUKHCONI2BZ1RWGL6010: Expenses: I2B-Road work 103939
- DUKHCONI2BZ1RWGL6015: Expenses: I2B-Road work 58272
- DUKHCONI2BZ1RWGL6020: Expenses: I2B-Road work 148204
- DUKHCONI2BZ1RWGL6025: Expenses: I2B-Road work 77208
- DUKHCONI2BZ1RWGL6030: Expenses: I2B-Road work 79277
- DUKHCONI2BZ1PSGL7000: Expenses: I2B-Road work 35777
- DUKHCONI2BZ1PSGL7005: Expenses: I2B-Road work 35777
- DUKHCONI2BZ1PSGL7010: Expenses: I2B-Road work 178884
- DUKHCONI2BZ1PSGL7015: Expenses: I2B-Road work 17887.5
- DUKHCONI2BZ1HDGL7020: Expenses: I2B-Hard and soft landscaping 61885
- DUKHCONI2BZ1HDGL7025: Expenses: I2B-Hard and soft landscaping 92408
- DUKHCONI2BZ1HDGL7030: Expenses: I2B-Hard and soft landscaping 25677
- DUKHCONI2BZ1HDGL7035: Expenses: I2B-Hard and soft landscaping 70109
- DUKHCONI2BZ1HDGL7040: Expenses: I2B-Hard and soft landscaping 2138
- DUKHCONI2BZ1SLGL7200: Expenses: I2B-Hard and soft landscaping 29844
- DUKHCONI2BZ1SLGL7205: Expenses: I2B-Hard and soft landscaping 169116
- DUKHCONI2BZ1SLGL7210: Expenses: I2B-Hard and soft landscaping 164540
- DUKHCONI2BZ2DRGL5115: Expenses: I2B-Surface Water drainage and Sewerage system 7089
- DUKHCONI2BZ2DRGL5120: Expenses: I2B-Surface Water drainage and Sewerage system 24313
- DUKHCONI2BZ2DRGL5125: Expenses: I2B-Surface Water drainage and Sewerage system 2701.5
- DUKHCONI2BZ2DRGL5130: Expenses: I2B-Surface Water drainage and Sewerage system 9880

| ID | WBS | Activity | Duration | Start | Finish | Predecessors | Total float | Free float | Resources | Cost | CODE | P3 ACTID | P6 ID (old) | NP61D | PROJECT | PHASES | PACKAGE | PART | ELEMENTS | STEP | BILL NOS | BILL DIVISION | RES PACK |
| --- | --- | --- | --- | --- | --- | --- | --- | --- | --- | --- | --- | --- | --- | --- | --- | --- | --- | --- | --- | --- | --- | --- | --- |
|  | 15 | **MANHOLES & SOAKAWAY** |  | 2013-10-16 | 2014-01-08 |  |  |  |  |  |  |  |  |  |  |  |  |  |  |  |  |  |  |
| DUKHCONI2BZ2SAGL5135 |  | Construction of manholes Drainage | 25d | 2013-10-16 | 2013-11-16 | DUKHCONI2BZ2DRGL5130 FF+10d, DUKHCONI2BZ1SAGL5135, DUKHCONI2BZ2DRGL5115 | 73d | 25d | MANHOLES SK [32 h]; LABOR - CIVIL [12 h]; MANHOLES QTY [4 ea] | 10,637.5 | 10 | 2BP2SAFR10 | DUKHCON2BP2SAGL5135 | DUKHCONI2BZ2SAGL5135 | DH | CON | 2BF | Z2 | FR | SA | B09 | B09-D06 | RES-2B |
| DUKHCONI2BZ2SAGL5140 |  | Construction of soakaways | 25d | 2013-10-16 | 2013-11-16 | DUKHCONI2BZ2DRGL5115, DUKHCONI2BZ2DRGL5130 FF+10d | 24d | 0d | MANHOLES SK [136 h]; LABOR - CIVIL [54 h]; SOAKWAY QTY [17 ea] | 226,248 | 15 | 2BP2SAFR15 | DUKHCON2BP2SAGL5140 | DUKHCONI2BZ2SAGL5140 | DH | CON | 2BF | Z2 | FR | SA | B09 | B09-D06 | RES-2B |
| DUKHCONI2BZ2SAGL5145 |  | Construction of Road gullies | 25d | 2013-11-17 | 2013-12-15 | DUKHCONI2BZ2SAGL5140, DUKHCONI2BZ1SAGL5145 | 24d | 0d | MANHOLES SK [136 h]; LABOR - CIVIL [54 h]; ROAD GULLY QTY [17 ea] | 31,201.5 | 20 | 2BP2SAFR20 | DUKHCON2BP2SAGL5145 | DUKHCONI2BZ2SAGL5145 | DH | CON | 2BF | Z2 | FR | SA | B09 | B09-D06 | RES-2B |
| DUKHCONI2BZ2SAGL5150 |  | Connection with existing sewer manhole | 20d | 2013-12-16 | 2014-01-08 | DUKHCONI2BZ2SAGL5135, DUKHCONI2BZ2SAGL5145 | 48d | 31d | LABOR - CIVIL [12 h]; MANHOLES QTY [4 ea]; MANHOLES SK [32 h] | 5,676.5 | 25 | 2BP2SAFR25 | DUKHCON2BP2SAGL5150 | DUKHCONI2BZ2SAGL5150 | DH | CON | 2BF | Z2 | FR | SA | B09 | B09-D06 | RES-2B |
|  | 20 | **WATER SUPPLY SYSTEM** |  | 2013-11-05 | 2014-01-20 |  |  |  |  |  |  |  |  |  |  |  |  |  |  |  |  |  |  |
| DUKHCONI2BZ2WSGL5155 |  | Excavation for water line | 25d | 2013-11-05 | 2013-12-03 | DUKHCONI2BZ1WSGL5170, DUKHCONI2BZ2DRGL5130 SS+10d | 19d | 0d | LABOR - CIVIL [204 h]; EXCAVATION QTY [339 Cum]; LOADER [63 h]; POCLAIN [125 h]; TRUCK [63 h]; EQUIP OPERATORS [251 h] | 12,690 | 10 | 2BP2WSFR10 | DUKHCON2BP2WSGL5155 | DUKHCONI2BZ2WSGL5155 | DH | CON | 2BF | Z2 | FR | WS | B09 | B09-D07 | RES-2B |
| DUKHCONI2BZ2WSGL5160 |  | Laying of water line | 25d | 2013-11-11 | 2013-12-09 | DUKHCONI2BZ2WSGL5155 SS+5d | 19d | 0d | LABOR- SUBCONTRACTOR [138 h]; MECHANICALS SK [248.4 h]; WATER PIPES QTY [339 lm] | 57,255.5 | 15 | 2BP2WSFR15 | DUKHCON2BP2WSGL5160 | DUKHCONI2BZ2WSGL5160 | DH | CON | 2BF | Z2 | FR | WS | B09 | B09-D07 | RES-2B |
| DUKHCONI2BZ2WSGL5165 |  | Testing of potable water line | 25d | 2013-11-17 | 2013-12-15 | DUKHCONI2BZ2WSGL5160 SS+5d | 19d | 0d | LABOR- SUBCONTRACTOR [42 h]; MECHANICALS SK [75.6 h]; DRAINAGE PIPES TEST QTY [339 lm] | 5,458 | 20 | 2BP2WSFR20 | DUKHCON2BP2WSGL5165 | DUKHCONI2BZ2WSGL5165 | DH | CON | 2BF | Z2 | FR | WS | B09 | B09-D07 | RES-2B |
| DUKHCONI2BZ2WSGL5170 |  | Backfilling potable water line | 25d | 2013-11-23 | 2013-12-22 | DUKHCONI2BZ2SAGL5145 FF, DUKHCONI2BZ2WSGL5165 SS+5d | 19d | 0d | LABOR - CIVIL [84 h]; BACKFILLING QTY [339 Cum]; BOBCAT [125 h]; PLATE COMPACTOR [125 h]; TRUCK [25 h]; EQUIP OPERATORS [275 h] | 3,172 | 25 | 2BP2WSFR25 | DUKHCON2BP2WSGL5170 | DUKHCONI2BZ2WSGL5170 | DH | CON | 2BF | Z2 | FR | WS | B09 | B09-D07 | RES-2B |
| DUKHCONI2BZ2WSGL5175 |  | Construction of valve chambers & Thrust Blocks | 25d | 2013-11-28 | 2013-12-28 | DUKHCONI2BZ2WSGL5170 FF+5d, DUKHCONI2BZ2WSGL5155 SS+10d, DUKHCONI2BZ1WSGL5175 | 38d | 0d | MANHOLES SK [56 h]; LABOR - CIVIL [24 h]; MANHOLES QTY [7 ea] | 1,845 | 30 | 2BP2WSFR30 | DUKHCON2BP2WSGL5175 | DUKHCONI2BZ2WSGL5175 | DH | CON | 2BF | Z2 | FR | WS | B09 | B09-D07 | RES-2B |
| DUKHCONI2BZ2WSGL5180 |  | Installation of meter ,Accessories & Connection | 20d | 2013-12-29 | 2014-01-20 | DUKHCONI2BZ1WSGL5180, DUKHCONI2BZ2WSGL5175 | 38d | 9d | LABOR- SUBCONTRACTOR [12 h]; MECHANICALS SK [21.6 h]; CHAMPER QTY [7 lm] | 19,692.5 | 35 | 2BP2WSFR35 | DUKHCON2BP2WSGL5180 | DUKHCONI2BZ2WSGL5180 | DH | CON | 2BF | Z2 | FR | WS | B09 | B09-D07 | RES-2B |
|  | 25 | **FIREFIGHTING LINES** |  | 2013-12-01 | 2014-01-30 |  |  |  |  |  |  |  |  |  |  |  |  |  |  |  |  |  |  |
| DUKHCONI2BZ2FFGL5185 |  | Excavation for firefighting line | 25d | 2013-12-01 | 2013-12-30 | DUKHCONI2BZ2WSGL5170 SS+5d, DUKHCONI2BZ1FFGL5200 | 17d | 0d | EQUIP OPERATORS [100 h]; LABOR - CIVIL [72 h]; EXCAVATION QTY [115 Cum]; LOADER [25 h]; POCLAIN [50 h]; TRUCK [25 h] | 12,917 | 10 | 2BP2FFFR10 | DUKHCON2BP2FFGL5185 | DUKHCONI2BZ2FFGL5185 | DH | CON | 2BF | Z2 | FR | FF | B09 | B09-D07 | RES-2B |
| DUKHCONI2BZ2FFGL5190 |  | Laying of firefighting line | 25d | 2013-12-09 | 2014-01-07 | DUKHCONI2BZ2FFGL5185 SS+7d | 17d | 0d | LABOR- SUBCONTRACTOR [36 h]; MECHANICALS SK [129.6 h]; PLUMB PIPES QTY [115 lm] | 16,395 | 15 | 2BP2FFFR15 | DUKHCON2BP2FFGL5190 | DUKHCONI2BZ2FFGL5190 | DH | CON | 2BF | Z2 | FR | FF | B09 | B09-D07 | RES-2B |
| DUKHCONI2BZ2FFGL5195 |  | Testing of firefighting line | 25d | 2013-12-15 | 2014-01-13 | DUKHCONI2BZ2FFGL5190 SS+5d | 17d | 0d | LABOR- SUBCONTRACTOR [18 h]; MECHANICALS SK [64.8 h]; DRAINAGE PIPES QTY [115 lm] | 1,542.5 | 20 | 2BP2FFFR20 | DUKHCON2BP2FFGL5195 | DUKHCONI2BZ2FFGL5195 | DH | CON | 2BF | Z2 | FR | FF | B09 | B09-D07 | RES-2B |
| DUKHCONI2BZ2FFGL5200 |  | Backfilling firefighting line | 25d | 2013-12-22 | 2014-01-19 | DUKHCONI2BZ2FFGL5195 SS+5d | 17d | 0d | LABOR - CIVIL [30 h]; BACKFILLING QTY [115 Cum]; BOBCAT [50 h]; PLATE COMPACTOR [50 h]; TRUCK [10 h]; EQUIP OPERATORS [110 h] | 3,229 | 25 | 2BP2FFFR25 | DUKHCON2BP2FFGL5200 | DUKHCONI2BZ2FFGL5200 | DH | CON | 2BF | Z2 | FR | FF | B09 | B09-D07 | RES-2B |
| DUKHCONI2BZ2FFGL5205 |  | Construction of valve chambers & Thrust Blocks | 25d | 2013-12-28 | 2014-01-25 | DUKHCONI2BZ1FFGL5205, DUKHCONI2BZ2FFGL5185 SS+10d, DUKHCONI2BZ2FFGL5200 FF+5d | 29d | 0d | STEEL FIXERS SK [8 h]; CARPENTERS SK [56 h]; CONCRETE MASON SK [32 h]; LABOR - CIVIL [78 h]; EXCAVATION QTY [14 Cum]; REINFORCEMENT BARS QTY [58 kg]; FORMWORK QTY [25 Sqm]; CONCRETE QTY [15 Cum] | 1,987 | 30 | 2BP2FFFR30 | DUKHCON2BP2FFGL5205 | DUKHCONI2BZ2FFGL5205 | DH | CON | 2BF | Z2 | FR | FF | B09 | B09-D07 | RES-2B |
| DUKHCONI2BZ2FFGL5210 |  | Connection with existing Firewater System | 25d | 2014-01-02 | 2014-01-30 | DUKHCONI2BZ2FFGL5205 FF+5d, DUKHCONI2BZ2WSGL5180 FF, DUKHCONI2BZ1FFGL5210 | 29d | 12d | STEEL FIXERS SK [8 h]; CARPENTERS SK [56 h]; CONCRETE MASON SK [32 h]; LABOR - CIVIL [78 h]; EXCAVATION QTY [14 Cum]; REINFORCEMENT BARS QTY [55 kg]; FORMWORK QTY [25 Sqm]; CONCRETE QTY [15 Cum] | 21,275.5 | 35 | 2BP2FFFR35 | DUKHCON2BP2FFGL5210 | DUKHCONI2BZ2FFGL5210 | DH | CON | 2BF | Z2 | FR | FF | B09 | B09-D07 | RES-2B |
|  | 30 | **ELECTRICAL LINES** |  | 2013-12-30 | 2014-02-23 |  |  |  |  |  |  |  |  |  |  |  |  |  |  |  |  |  |  |
| DUKHCONI2BZ2ELGL5215 |  | Excavation Cable Trenches & Duct Banks | 25d | 2013-12-30 | 2014-01-27 | DUKHCONI2BZ2FFGL5200 SS+7d, DUKHCONI2BZ1ELGL5225 | 17d | 0d | LABOR - CIVIL [942 h]; EXCAVATION QTY [1571 Cum]; LOADER [163 h]; POCLAIN [325 h]; TRUCK [163 h]; EQUIP OPERATORS [651 h] | 21,081.5 | 10 | 2BP2ECFR10 | DUKHCON2BP2ELGL5215 | DUKHCONI2BZ2ELGL5215 | DH | CON | 2BF | Z2 | FR | EC | B09 | B09-D04 | RES-2B |
| DUKHCONI2BZ2ELGL5220 |  | Laying of electrical cables | 25d | 2014-01-05 | 2014-02-02 | DUKHCONI2BZ2ELGL5215 SS+5d | 20d | 0d | LABOR- SUBCONTRACTOR [474 h]; ELECTRICIANS SK [1758.4 h]; CABLE QTY [1571 lm] | 469,935.5 | 15 | 2BP2ECFR15 | DUKHCON2BP2ELGL5220 | DUKHCONI2BZ2ELGL5220 | DH | CON | 2BF | Z2 | FR | EC | B09 | B09-D04 | RES-2B |
| DUKHCONI2BZ2ELGL5225 |  | Backfilling Electrical trench | 25d | 2014-01-13 | 2014-02-10 | DUKHCONI2BZ2ELGL5215 FF+7d, DUKHCONI2BZ2ELGL5220 SS+7d | 20d | 0d | LABOR - CIVIL [378 h]; BACKFILLING QTY [1571 Cum]; BOBCAT [375 h]; PLATE COMPACTOR [375 h]; TRUCK [75 h]; EQUIP OPERATORS [825 h] | 9,036.5 | 20 | 2BP2ECFR20 | DUKHCON2BP2ELGL5225 | DUKHCONI2BZ2ELGL5225 | DH | CON | 2BF | Z2 | FR | EC | B09 | B09-D04 | RES-2B |
| DUKHCONI2BZ2ELGL5230 |  | Construction of Submain Board & Feeder Pillar | 25d | 2014-01-25 | 2014-02-23 | DUKHCONI2BZ2ELGL5225 FF+10d, DUKHCONI2BZ2ELGL5225 SS+10d, DUKHCONI2BZ1ELGL5230 | 45d | 0d | STEEL FIXERS SK [8 h]; CARPENTERS SK [88 h]; CONCRETE MASON SK [8 h]; LABOR - CIVIL [72 h]; LABOR- SUBCONTRACTOR [96 h]; REINFORCEMENT BARS QTY [53 kg]; FORMWORK QTY [42 Sqm]; CONCRETE QTY [3 Cum]; DOOR ERECTOR SK [24 h]; EXPANSION JOINT QTY [28 Sqm]; ALUMINIUM DOOR QTY [5 ea]; EXPANSION JOINT SKILLED SK [224 h] | 46,313.5 | 25 | 2BP2ECFR25 | DUKHCON2BP2ELGL5230 | DUKHCONI2BZ2ELGL5230 | DH | CON | 2BF | Z2 | FR | EC | B09 | B09-D04 | RES-2B |

Notes:
- DUKHCONI2BZ2SAGL5135: Expenses: I2B-Surface Water drainage and Sewerage system 10637.5
- DUKHCONI2BZ2SAGL5140: Expenses: I2B-Surface Water drainage and Sewerage system 226248
- DUKHCONI2BZ2SAGL5145: Expenses: I2B-Surface Water drainage and Sewerage system 31201.5
- DUKHCONI2BZ2SAGL5150: Expenses: I2B-Surface Water drainage and Sewerage system 5676.5
- DUKHCONI2BZ2WSGL5155: Expenses: I2B-Water supply system 12690
- DUKHCONI2BZ2WSGL5160: Expenses: I2B-Water supply system 57255.5
- DUKHCONI2BZ2WSGL5165: Expenses: I2B-Water supply system 5458
- DUKHCONI2BZ2WSGL5170: Expenses: I2B-Water supply system 3172
- DUKHCONI2BZ2WSGL5175: Expenses: I2B-Water supply system 1845
- DUKHCONI2BZ2WSGL5180: Expenses: I2B-Water supply system 19692.5
- DUKHCONI2BZ2FFGL5185: Expenses: I2B-Water supply system 12917
- DUKHCONI2BZ2FFGL5190: Expenses: I2B-Water supply system 16395
- DUKHCONI2BZ2FFGL5195: Expenses: I2B-Water supply system 1542.5
- DUKHCONI2BZ2FFGL5200: Expenses: I2B-Water supply system 3229
- DUKHCONI2BZ2FFGL5205: Expenses: I2B-Water supply system 1987
- DUKHCONI2BZ2FFGL5210: Expenses: I2B-Water supply system 21275.5
- DUKHCONI2BZ2ELGL5215: Expenses: I2B-Electrical power supply and distribution 21081.5
- DUKHCONI2BZ2ELGL5220: Expenses: I2B-Electrical power supply and distribution 469936
- DUKHCONI2BZ2ELGL5225: Expenses: I2B-Electrical power supply and distribution 9036.5
- DUKHCONI2BZ2ELGL5230: Expenses: I2B-Electrical power supply and distribution 46313.5

| ID | WBS | Activity | Duration | Start | Finish | Predecessors | Total float | Free float | Resources | Cost | CODE | P3 ACTID | P6 ID (old) | NP61D | PROJECT | PHASES | PACKAGE | PART | ELEMENTS | STEP | BILL NOS | BILL DIVISION | RES PACK |
| --- | --- | --- | --- | --- | --- | --- | --- | --- | --- | --- | --- | --- | --- | --- | --- | --- | --- | --- | --- | --- | --- | --- | --- |
|  | 35 | **STREET LIGHTING** |  | 2013-12-30 | 2014-03-24 |  |  |  |  |  |  |  |  |  |  |  |  |  |  |  |  |  |  |
| DUKHCONI2BZ2STGL5235 |  | Excavation for Street lighting | 25d | 2013-12-30 | 2014-01-27 | DUKHCONI2BZ1STGL5250, DUKHCONI2BZ2ELGL5215 SS | 17d | 0d | LABOR - CIVIL [96 h]; EXCAVATION QTY [158 Cum]; POCLAIN [75 h]; TRUCK [38 h]; EQUIP OPERATORS [151 h]; LOADER [38 h] | 1,410 | 10 | 2BP2STFR10 | DUKHCON2BP2STGL5235 | DUKHCONI2BZ2STGL5235 | DH | CON | 2BF | Z2 | FR | ST | B09 | B09-D09 | RES-2B |
| DUKHCONI2BZ2STGL5240 |  | Construction of Duct Banks | 25d | 2014-01-05 | 2014-02-02 | DUKHCONI2BZ2STGL5235 SS+5d | 17d | 0d | LABOR- SUBCONTRACTOR [96 h]; ELECTRICIANS SK [358.4 h]; DUCT BANK QTY [128 lm] | 63,508.5 | 15 | 2BP2STFR15 | DUKHCON2BP2STGL5240 | DUKHCONI2BZ2STGL5240 | DH | CON | 2BF | Z2 | FR | ST | B09 | B09-D09 | RES-2B |
| DUKHCONI2BZ2STGL5245 |  | Construction of Foundation | 25d | 2014-01-05 | 2014-02-02 | DUKHCONI2BZ2STGL5240 SS | 17d | 0d | MANHOLES SK [488 h]; LABOR - CIVIL [186 h]; COLUMN BASE QTY [31 ea] | 20,891 | 20 | 2BP2STFR20 | DUKHCON2BP2STGL5245 | DUKHCONI2BZ2STGL5245 | DH | CON | 2BF | Z2 | FR | ST | B09 | B09-D09 | RES-2B |
| DUKHCONI2BZ2STGL5250 |  | Backfilling Street Lighting | 25d | 2014-01-11 | 2014-02-08 | DUKHCONI2BZ2STGL5235 FF+5d, DUKHCONI2BZ2STGL5245 SS+5d | 17d | 0d | LABOR - CIVIL [42 h]; BACKFILLING QTY [158 Cum]; BOBCAT [50 h]; PLATE COMPACTOR [50 h]; TRUCK [10 h]; EQUIP OPERATORS [110 h] | 1,410 | 25 | 2BP2STFR25 | DUKHCON2BP2STGL5250 | DUKHCONI2BZ2STGL5250 | DH | CON | 2BF | Z2 | FR | ST | B09 | B09-D09 | RES-2B |
| DUKHCONI2BZ2STGL5255 |  | Installation of light Post | 25d | 2014-01-22 | 2014-02-20 | DUKHCONI2BZ1STGL5255, DUKHCONI2BZ2STGL5250 SS+10d | 65d | 20d | LABOR- SUBCONTRACTOR [48 h]; ELECTRICIANS SK [179.2 h]; LIGHTPOST COLUMN QTY [31 ea] | 250,520.5 | 30 | 2BP2STFR30 | DUKHCON2BP2STGL5255 | DUKHCONI2BZ2STGL5255 | DH | CON | 2BF | Z2 | FR | ST | B09 | B09-D09 | RES-2B |
| DUKHCONI2BZ2STGL5260 |  | Electrical Works | 25d | 2014-02-24 | 2014-03-24 | DUKHCONI2BZ1STGL5260, DUKHCONI2BZ2ELGL5230, DUKHCONI2BZ2STGL5255 SS+7d | 45d | 28d | LABOR- SUBCONTRACTOR [36 h]; ELECTRICIANS SK [134.4 h]; CABLE QTY [122 lm] | 14,806.5 | 35 | 2BP2STFR35 | DUKHCON2BP2STGL5260 | DUKHCONI2BZ2STGL5260 | DH | CON | 2BF | Z2 | FR | ST | B09 | B09-D09 | RES-2B |
|  | 40 | **IRRIGATION LINES** |  | 2014-02-12 | 2014-04-19 |  |  |  |  |  |  |  |  |  |  |  |  |  |  |  |  |  |  |
| DUKHCONI2BZ2IRGL5265 |  | Excavation for irrigation line | 25d | 2014-02-12 | 2014-03-12 | DUKHCONI2BZ2ELGL5225, DUKHCONI2BZ1IRGL5280 | 28d | 0d | LABOR - CIVIL [78 h]; EXCAVATION QTY [127 Cum]; LOADER [25 h]; POCLAIN [50 h]; TRUCK [25 h]; EQUIP OPERATORS [100 h] | 4,053 | 10 | 2BP2IRFR10 | DUKHCON2BP2IRGL5265 | DUKHCONI2BZ2IRGL5265 | DH | CON | 2BF | Z2 | FR | IR | B09 | B09-D07 | RES-2B |
| DUKHCONI2BZ2IRGL5270 |  | Laying of irrigationline | 25d | 2014-02-18 | 2014-03-18 | DUKHCONI2BZ2IRGL5265 SS+5d | 28d | 0d | LABOR- SUBCONTRACTOR [36 h]; MECHANICALS SK [64.8 h]; IRRIGATION PIPES QTY [217 lm] | 5,563 | 15 | 2BP2IRFR15 | DUKHCON2BP2IRGL5270 | DUKHCONI2BZ2IRGL5270 | DH | CON | 2BF | Z2 | FR | IR | B09 | B09-D07 | RES-2B |
| DUKHCONI2BZ2IRGL5275 |  | Testing of irrigation line | 25d | 2014-02-24 | 2014-03-24 | DUKHCONI2BZ2IRGL5270 SS+5d | 28d | 0d | LABOR- SUBCONTRACTOR [30 h]; MECHANICALS SK [54 h]; DRAINAGE PIPES TEST QTY [217 lm] | 585.5 | 20 | 2BP2IRFR20 | DUKHCON2BP2IRGL5275 | DUKHCONI2BZ2IRGL5275 | DH | CON | 2BF | Z2 | FR | IR | B09 | B09-D07 | RES-2B |
| DUKHCONI2BZ2IRGL5280 |  | Backfilling irrigation line | 25d | 2014-03-02 | 2014-03-30 | DUKHCONI2BZ2IRGL5275 SS+5d | 28d | 0d | EQUIP OPERATORS [110 h]; LABOR - CIVIL [30 h]; TRUCK [10 h]; BACKFILLING QTY [127 Cum]; BOBCAT [50 h]; PLATE COMPACTOR [50 h] | 1,013 | 25 | 2BP2IRFR25 | DUKHCON2BP2IRGL5280 | DUKHCONI2BZ2IRGL5280 | DH | CON | 2BF | Z2 | FR | IR | B09 | B09-D07 | RES-2B |
| DUKHCONI2BZ2IRGL5285 |  | Construction of Thrust Blocks,Pull boxes | 25d | 2014-03-13 | 2014-04-10 | DUKHCONI2BZ2IRGL5280 FF+10d, DUKHCONI2BZ2ELGL5225 SS+10d | 28d | 0d | LABOR- SUBCONTRACTOR [72 h]; ELECTRICIANS SK [89.6 h]; THRUST BLOCKS QTY [8 ea]; PULL BOX QTY [19 ea]; PULL BOX SK [152 h] | 3,780 | 30 | 2BP2IRFR30 | DUKHCON2BP2IRGL5285 | DUKHCONI2BZ2IRGL5285 | DH | CON | 2BF | Z2 | FR | IR | B09 | B09-D07 | RES-2B |
| DUKHCONI2BZ2IRGL5290 |  | Irrigation Fittings (Nozzle,Values) | 25d | 2014-03-22 | 2014-04-19 | DUKHCONI2BZ2IRGL5280 SS+10d, DUKHCONI2BZ2IRGL5285 SS+7d | 28d | 1d | LABOR- SUBCONTRACTOR [36 h]; MECHANICALS SK [64.8 h]; IRRIGATION PIPES QTY [217 lm] | 47,899.5 | 35 | 2BP2IRFR35 | DUKHCON2BP2IRGL5290 | DUKHCONI2BZ2IRGL5290 | DH | CON | 2BF | Z2 | FR | IR | B09 | B09-D07 | RES-2B |
|  | 45 | **TELECOMMUNICATION LINES** |  | 2014-01-22 | 2014-03-10 |  |  |  |  |  |  |  |  |  |  |  |  |  |  |  |  |  |  |
| DUKHCONI2BZ2TCGL5295 |  | Excavation Telecommunication trenches | 20d | 2014-01-22 | 2014-02-15 | DUKHCONI2BZ2STGL5250 SS+10d, DUKHCONI2BZ1TCGL5305 | 17d | 0d | LABOR - CIVIL [162 h]; EXCAVATION QTY [265 Cum]; LOADER [50 h]; POCLAIN [100 h]; TRUCK [50 h]; EQUIP OPERATORS [200 h] | 7,328 | 10 | 2BP2TCFR10 | DUKHCON2BP2TCGL5295 | DUKHCONI2BZ2TCGL5295 | DH | CON | 2BF | Z2 | FR | TC | B09 | B09-D05 | RES-2B |
| DUKHCONI2BZ2TCGL5300 |  | Laying of cables | 20d | 2014-01-28 | 2014-02-20 | DUKHCONI2BZ2TCGL5295 SS+5d | 17d | 0d | LABOR- SUBCONTRACTOR [204 h]; CABLE QTY [663 lm]; ELECTRICIANS SK [750.4 h] | 2,226 | 15 | 2BP2TCFR15 | DUKHCON2BP2TCGL5300 | DUKHCONI2BZ2TCGL5300 | DH | CON | 2BF | Z2 | FR | TC | B09 | B09-D05 | RES-2B |
| DUKHCONI2BZ2TCGL5305 |  | Backfilling telecommunication trench | 20d | 2014-02-03 | 2014-02-26 | DUKHCONI2BZ2TCGL5300 SS+5d | 17d | 0d | LABOR - CIVIL [66 h]; BACKFILLING QTY [265 Cum]; BOBCAT [100 h]; PLATE COMPACTOR [100 h]; TRUCK [20 h]; EQUIP OPERATORS [220 h] | 3,140 | 20 | 2BP2TCFR20 | DUKHCON2BP2TCGL5305 | DUKHCONI2BZ2TCGL5305 | DH | CON | 2BF | Z2 | FR | TC | B09 | B09-D05 | RES-2B |
| DUKHCONI2BZ2TCGL5310 |  | Connection & Installation | 20d | 2014-02-16 | 2014-03-10 | DUKHCONI2BZ1TCGL5310, DUKHCONI2BZ2TCGL5305 SS+10d | 42d | 23d | LABOR- SUBCONTRACTOR [12 h]; ELECTRICIANS SK [67.2 h]; TELEPHONE SOCKETS QTY [6 ea] | 53,762 | 25 | 2BP2TCFR25 | DUKHCON2BP2TCGL5310 | DUKHCONI2BZ2TCGL5310 | DH | CON | 2BF | Z2 | FR | TC | B09 | B09-D05 | RES-2B |
|  | 50 | **BOUNDARY WALL** |  | 2014-01-22 | 2014-04-19 |  |  |  |  |  |  |  |  |  |  |  |  |  |  |  |  |  |  |
| DUKHCONI2BZ2BWGL5315 |  | Construction of Boundary Wall (Ht-3m) | 25d | 2014-01-22 | 2014-02-20 | DUKHCONI2BZ1BWGL5315, DUKHCONI2BZ2STGL5250 SS+10d | 26d | 0d | STEEL FIXERS SK [104 h]; LABOR - CIVIL [78 h]; BOUNDARY WIRE MESH QTY [264 Sqm] | 425,409 | 10 | 2BP2BWFR10 | DUKHCON2BP2ARGL5315 | DUKHCONI2BZ2BWGL5315 | DH | CON | 2BF | Z2 | FR | BW | B09 | B09-D10 | RES-2B |
| DUKHCONI2BZ2BWGL5320 |  | Install.Steel Gate,Entance Barrier (3m Wall) | 25d | 2014-02-08 | 2014-03-09 | DUKHCONI2BZ2BWGL5315 SS+14d | 26d | 0d | LABOR- SUBCONTRACTOR [6 h]; GATE QTY [1 ea]; GATE ERECTOR SK [8 h] | 1,430 | 15 | 2BP2BWFR15 | DUKHCON2BP2ARGL5320 | DUKHCONI2BZ2BWGL5320 | DH | CON | 2BF | Z2 | FR | BW | B09 | B09-D10 | RES-2B |
| DUKHCONI2BZ2BWGL5325 |  | Const. of Villa Front Boundary Wall (Ht-2m) | 25d | 2014-03-10 | 2014-04-07 | DUKHCONI2BZ2BWGL5320, DUKHCONI2BZ1BWGL5325, DUKHCONI2BZ2BWGL5315 SS+5d | 26d | 0d | STEEL FIXERS SK [64 h]; LABOR - CIVIL [48 h]; BOUNDARY WIRE MESH QTY [150 Sqm] | 250,738.5 | 20 | 2BP2BWFR20 | DUKHCON2BP2ARGL5325 | DUKHCONI2BZ2BWGL5325 | DH | CON | 2BF | Z2 | FR | BW | B09 | B09-D10 | RES-2B |
| DUKHCONI2BZ2BWGL5330 |  | Const. of Blockwork fence Wall (Ht-1.85m) | 25d | 2014-03-22 | 2014-04-19 | DUKHCONI2BZ1BWGL5330, DUKHCONI2BZ2BWGL5325 SS+10d | 43d | 26d | STEEL FIXERS SK [24 h]; LABOR - CIVIL [18 h]; BOUNDARY WIRE MESH QTY [52 Sqm] | 42,459 | 30 | 2BP2BWFR30 | DUKHCON2BP2ARGL5330 | DUKHCONI2BZ2BWGL5330 | DH | CON | 2BF | Z2 | FR | BW | B09 | B09-D10 | RES-2B |

Notes:
- DUKHCONI2BZ2STGL5235: Expenses: I2B-Street lighting 1410
- DUKHCONI2BZ2STGL5240: Expenses: I2B-Street lighting 63508.5
- DUKHCONI2BZ2STGL5245: Expenses: I2B-Street lighting 20891
- DUKHCONI2BZ2STGL5250: Expenses: I2B-Street lighting 1410
- DUKHCONI2BZ2STGL5255: Expenses: I2B-Street lighting 250520
- DUKHCONI2BZ2STGL5260: Expenses: I2B-Street lighting 14806.5
- DUKHCONI2BZ2IRGL5265: Expenses: I2B-Water supply system 4053
- DUKHCONI2BZ2IRGL5270: Expenses: I2B-Water supply system 5563
- DUKHCONI2BZ2IRGL5275: Expenses: I2B-Water supply system 585.5
- DUKHCONI2BZ2IRGL5280: Expenses: I2B-Water supply system 1013
- DUKHCONI2BZ2IRGL5285: Expenses: I2B-Water supply system 3780
- DUKHCONI2BZ2IRGL5290: Expenses: I2B-Water supply system 47899.5
- DUKHCONI2BZ2TCGL5295: Expenses: I2B-Telecommunication 7328
- DUKHCONI2BZ2TCGL5300: Expenses: I2B-Telecommunication 2226
- DUKHCONI2BZ2TCGL5305: Expenses: I2B-Telecommunication 3140
- DUKHCONI2BZ2TCGL5310: Expenses: I2B-Telecommunication 53762
- DUKHCONI2BZ2BWGL5315: Expenses: I2B-Hard and soft landscaping 425409
- DUKHCONI2BZ2BWGL5320: Expenses: I2B-Hard and soft landscaping 1430
- DUKHCONI2BZ2BWGL5325: Expenses: I2B-Hard and soft landscaping 250738
- DUKHCONI2BZ2BWGL5330: Expenses: I2B-Hard and soft landscaping 42459

| ID | WBS | Activity | Duration | Start | Finish | Predecessors | Total float | Free float | Resources | Cost | CODE | P3 ACTID | P6 ID (old) | NP61D | PROJECT | PHASES | PACKAGE | PART | ELEMENTS | STEP | BILL NOS | BILL DIVISION | RES PACK |
| --- | --- | --- | --- | --- | --- | --- | --- | --- | --- | --- | --- | --- | --- | --- | --- | --- | --- | --- | --- | --- | --- | --- | --- |
|  | 55 | **ROAD WORKS** |  | 2014-02-16 | 2014-05-01 |  |  |  |  |  |  |  |  |  |  |  |  |  |  |  |  |  |  |
| DUKHCONI2BZ2RWGL6000 |  | Excavation & Earth Filling | 10d | 2014-02-16 | 2014-02-26 | DUKHCONI2BZ2STGL5250, DUKHCONI2BZ2FFGL5200, DUKHCONI2BZ2ELGL5225, DUKHCONI2BZ2SAGL5150, DUKHCONI2BZ1RWGL6015 SS+10d, DUKHCONI2BZ2TCGL5305 SS+10d, DUKHCONI2BZ2FFGL5210 | 17d | 0d | LABOR - CIVIL [690 h]; EXCAVATION QTY [1067 Cum]; BACKFILLING QTY [212 Cum]; LOADER [125 h]; POCLAIN [250 h]; TRUCK [125 h]; EQUIP OPERATORS [500 h] | 102,150.5 | 10 | 2BP2RDFR10 | DUKHCON2BP2RDGL6000 | DUKHCONI2BZ2RWGL6000 | DH | CON | 2BF | Z2 | FR | RD | B09 | B09-D08 | RES-2B |
| DUKHCONI2BZ2RWGL6005 |  | Laying of Sub Grade | 25d | 2014-02-27 | 2014-03-27 | DUKHCONI2BZ2RWGL6000 | 17d | 0d | LABOR- SUBCONTRACTOR [24 h]; SUBGRADE QTY [350 Sqm] | 116,544 | 15 | 2BP2RDFR15 | DUKHCON2BP2RDGL6005 | DUKHCONI2BZ2RWGL6005 | DH | CON | 2BF | Z2 | FR | RD | B09 | B09-D08 | RES-2B |
| DUKHCONI2BZ2RWGL6010 |  | Laying of Precast Kerbs | 25d | 2014-03-11 | 2014-04-08 | DUKHCONI2BZ2RWGL6005 SS+10d | 17d | 0d | LABOR- SUBCONTRACTOR [24 h]; GRANULAR SUBBASE QTY [350 Sqm] | 103,939 | 20 | 2BP2RDFR20 | DUKHCON2BP2RDGL6010 | DUKHCONI2BZ2RWGL6010 | DH | CON | 2BF | Z2 | FR | RD | B09 | B09-D08 | RES-2B |
| DUKHCONI2BZ2RWGL6015 |  | Laying of Granular Sub Base Coarse | 20d | 2014-03-23 | 2014-04-14 | DUKHCONI2BZ2RWGL6010 SS+10d | 17d | 0d | KERBSTONE MASON SK [600 h]; LABOR- SUBCONTRACTOR [336 h]; KERBSTONE QTY [373 lm]; EDGE STONE QTY [373 Sqm]; HEAVY ROLLER [400 h]; LOADER [100 h]; TRUCK [100 h]; EQUIP OPERATORS [600 h] | 58,272 | 25 | 2BP2RDFR25 | DUKHCON2BP2RDGL6015 | DUKHCONI2BZ2RWGL6015 | DH | CON | 2BF | Z2 | FR | RD | B09 | B09-D08 | RES-2B |
| DUKHCONI2BZ2RWGL6020 |  | Laying of Road Base Asphalt Concrete | 5d | 2014-04-15 | 2014-04-20 | DUKHCONI2BZ2RWGL6015 | 17d | 0d | LABOR- SUBCONTRACTOR [24 h]; ASPHALT CONCRETE QTY [1750 Cum]; ASPHALT PAVER MACHINE [50 h]; HAND ROLLER [100 h]; EQUIP OPERATORS [150 h] | 148,204 | 30 | 2BP2RDFR30 | DUKHCON2BP2RDGL6020 | DUKHCONI2BZ2RWGL6020 | DH | CON | 2BF | Z2 | FR | RD | B09 | B09-D08 | RES-2B |
| DUKHCONI2BZ2RWGL6025 |  | Laying of Asphalt Wearing Coarse | 5d | 2014-04-21 | 2014-04-26 | DUKHCONI2BZ1RWGL6025, DUKHCONI2BZ2RWGL6020 | 32d | 0d | HAND ROLLER [100 h]; EQUIP OPERATORS [150 h]; LABOR- SUBCONTRACTOR [24 h]; ASPHALT WEARING COURSE QTY [1750 Sqm]; ASPHALT PAVER MACHINE [50 h] | 77,208 | 35 | 2BP2RDFR35 | DUKHCON2BP2RDGL6025 | DUKHCONI2BZ2RWGL6025 | DH | CON | 2BF | Z2 | FR | RD | B09 | B09-D08 | RES-2B |
| DUKHCONI2BZ2RWGL6030 |  | Traffic Signage & Road Marking | 5d | 2014-04-27 | 2014-05-01 | DUKHCONI2BZ2RWGL6025, DUKHCONI2BZ1RWGL6030 | 32d | 15d | LABOR- SUBCONTRACTOR [240 h]; STEEL ERECTOR SK [288 h]; TRAFFIC SIGN QTY [178 ea]; ROAD MARKING QTY [92 lm]; ASPHALT SK [152 h] | 79,277 | 40 | 2BP2RDFR40 | DUKHCON2BP2RDGL6030 | DUKHCONI2BZ2RWGL6030 | DH | CON | 2BF | Z2 | FR | RD | B09 | B09-D08 | RES-2B |
|  | 60 | **PARKING SHED** |  | 2014-03-29 | 2014-05-25 |  |  |  |  |  |  |  |  |  |  |  |  |  |  |  |  |  |  |
| DUKHCONI2BZ2PSGL7000 |  | Excavation | 15d | 2014-03-29 | 2014-04-14 | DUKHCONI2BZ1PSGL7005, DUKHCONI2BZ2RWGL6015 SS+5d | 22d | 5d | LABOR - CIVIL [18 h]; EXCAVATION QTY [23 Cum]; LOADER [8 h]; POCLAIN [15 h]; TRUCK [8 h]; EQUIP OPERATORS [31 h] | 35,777 | 10 | 2BP2PSFR10 | DUKHCON2BP2PSGL7000 | DUKHCONI2BZ2PSGL7000 | DH | CON | 2BF | Z2 | FR | PS | B09 | B09-D08 | RES-2B |
| DUKHCONI2BZ2PSGL7005 |  | Foundation casting | 15d | 2014-04-09 | 2014-04-26 | DUKHCONI2BZ2PSGL7000 FF+5d, DUKHCONI2BZ2RWGL6015 FF+10d, DUKHCONI2BZ2PSGL7000 SS+5d | 17d | 0d | STEEL FIXERS SK [304 h]; CARPENTERS SK [672 h]; CONCRETE MASON SK [120 h]; LABOR - CIVIL [816 h]; REINFORCEMENT BARS QTY [3738 kg]; FORMWORK QTY [335 Sqm]; CONCRETE QTY [58 Cum] | 35,777 | 15 | 2BP2PSFR15 | DUKHCON2BP2PSGL7005 | DUKHCONI2BZ2PSGL7005 | DH | CON | 2BF | Z2 | FR | PS | B09 | B09-D08 | RES-2B |
| DUKHCONI2BZ2PSGL7010 |  | Column, Frame& Fabrics Erection | 25d | 2014-04-21 | 2014-05-19 | DUKHCONI2BZ2RWGL6030 FF, DUKHCONI2BZ2RWGL6020, DUKHCONI2BZ2PSGL7005 SS+10d, DUKHCONI2BZ2BWGL5330 FF, DUKHCONI2BZ1PSGL7010 | 17d | 0d | LABOR- SUBCONTRACTOR [102 h]; STEEL ERECTOR SK [184 h]; PARKING SHED QTY [563 ea] | 178,884 | 20 | 2BP2PSFR20 | DUKHCON2BP2PSGL7010 | DUKHCONI2BZ2PSGL7010 | DH | CON | 2BF | Z2 | FR | PS | B09 | B09-D08 | RES-2B |
| DUKHCONI2BZ2PSGL7015 |  | Electrical Works-Parking Shed | 25d | 2014-04-27 | 2014-05-25 | DUKHCONI2BZ2STGL5260, DUKHCONI2BZ2PSGL7010 SS+5d, DUKHCONI2BZ1PSGL7015 | 17d |  | LABOR- SUBCONTRACTOR [18 h]; ELECTRICIANS SK [33.6 h]; LIGHTS QTY [15 ea] | 17,887.5 | 25 | 2BP2PSFR25 | DUKHCON2BP2PSGL7015 | DUKHCONI2BZ2PSGL7015 | DH | CON | 2BF | Z2 | FR | PS | B09 | B09-D08 | RES-2B |
|  | 65 | **HARD LANDSCAPING** |  | 2014-02-16 | 2014-05-07 |  |  |  |  |  |  |  |  |  |  |  |  |  |  |  |  |  |  |
| DUKHCONI2BZ2HDGL7020 |  | Precast Concrete Kerbs works | 20d | 2014-02-16 | 2014-03-10 | DUKHCONI2BZ2RWGL6000 SS | 27d | 0d | KERBSTONE MASON SK [416 h]; LABOR- SUBCONTRACTOR [234 h]; KERBSTONE QTY [517 lm] | 61,885 | 10 | 2BP2HDFR10 | DUKHCON2BP2HDGL7020 | DUKHCONI2BZ2HDGL7020 | DH | CON | 2BF | Z2 | FR | HD | B09 | B09-D10 | RES-2B |
| DUKHCONI2BZ2HDGL7025 |  | Interlocking for Walkways | 25d | 2014-02-27 | 2014-03-27 | DUKHCONI2BZ2HDGL7020 SS+10d, DUKHCONI2BSBGZGL7910 FF | 27d | 0d | INTERLOCK MASON SK [552 h]; LABOR- SUBCONTRACTOR [210 h]; INTERLOCK QTY [686 Sqm] | 88,711.96 | 15 | 2BP2HDFR15 | DUKHCON2BP2HDGL7025 | DUKHCONI2BZ2HDGL7025 | DH | CON | 2BF | Z2 | FR | HD | B09 | B09-D10 | RES-2B |
| DUKHCONI2BZ2HDGL7030 |  | Construction of Retaining wall | 25d | 2014-03-11 | 2014-04-08 | DUKHCONI2BZ1HDGL7030, DUKHCONI2BZ2HDGL7025 SS+10d | 27d | 0d | STEEL FIXERS SK [8 h]; CARPENTERS SK [96 h]; CONCRETE MASON SK [16 h]; LABOR - CIVIL [96 h]; EXCAVATION QTY [11 Cum]; REINFORCEMENT BARS QTY [93 kg]; FORMWORK QTY [48 Sqm]; CONCRETE QTY [6 Cum] | 25,677 | 20 | 2BP2HDFR20 | DUKHCON2BP2HDGL7030 | DUKHCONI2BZ2HDGL7030 | DH | CON | 2BF | Z2 | FR | HD | B09 | B09-D10 | RES-2B |
| DUKHCONI2BZ2HDGL7035 |  | Construction of Wash Stone Boulders | 25d | 2014-03-11 | 2014-04-08 | DUKHCONI2BZ2HDGL7030 SS, DUKHCONI2BZ1HDGL7035 | 27d | 0d | TILE MASON SK [288 h]; LABOR- SUBCONTRACTOR [108 h]; STONE BOULDERS QTY [144 Sqm] | 70,109 | 25 | 2BP2HDFR25 | DUKHCON2BP2HDGL7035 | DUKHCONI2BZ2HDGL7035 | DH | CON | 2BF | Z2 | FR | HD | B09 | B09-D10 | RES-2B |
| DUKHCONI2BZ2HDGL7040 |  | Construction of Speed Humps | 10d | 2014-04-27 | 2014-05-07 | DUKHCONI2BZ1HDGL7040, DUKHCONI2BZ2HDGL7035 SS, DUKHCONI2BZ2RWGL6025 | 32d |  | CONCRETE MASON SK [8 h]; LABOR - CIVIL [6 h]; SPEED HUMPS [2 ea] | 2,138 | 30 | 2BP2HDFR30 | DUKHCON2BP2HDGL7040 | DUKHCONI2BZ2HDGL7040 | DH | CON | 2BF | Z2 | FR | HD | B09 | B09-D10 | RES-2B |
|  | 70 | **SOFT LANDSCAPING** |  | 2014-03-23 | 2014-05-13 |  |  |  |  |  |  |  |  |  |  |  |  |  |  |  |  |  |  |
| DUKHCONI2BZ2SLGL7200 |  | Excavation for Landscaping | 25d | 2014-03-23 | 2014-04-20 | DUKHCONI2BZ1SLGL7205, DUKHCONI2BZ2HDGL7035 SS+10d, DUKHCONI2BZ2IRGL5290 SS | 27d | 0d | LABOR - CIVIL [1344 h]; EXCAVATION QTY [2233 Cum]; LOADER [375 h]; POCLAIN [750 h]; TRUCK [375 h]; EQUIP OPERATORS [1500 h] | 29,844 | 10 | 2BP2SLFR10 | DUKHCON2BP2SLGL7200 | DUKHCONI2BZ2SLGL7200 | DH | CON | 2BF | Z2 | FR | SL | B09 | B09-D10 | RES-2B |
| DUKHCONI2BZ2SLGL7205 |  | Sweet Soil Laying | 25d | 2014-04-03 | 2014-05-01 | DUKHCONI2BZ2SLGL7200 SS+10d | 27d | 0d | LABOR- SUBCONTRACTOR [270 h]; SWEET SOIL QTY [2233 Cum]; LANDSCAPING SK [360 h] | 169,116 | 15 | 2BP2SLFR15 | DUKHCON2BP2SLGL7205 | DUKHCONI2BZ2SLGL7205 | DH | CON | 2BF | Z2 | FR | SL | B09 | B09-D10 | RES-2B |
| DUKHCONI2BZ2SLGL7210 |  | Plantation works | 25d | 2014-04-15 | 2014-05-13 | DUKHCONI2BZ1SLGL7210, DUKHCONI2BZ2SLGL7205 SS+10d | 27d |  | LABOR- SUBCONTRACTOR [246 h]; PLAM TREES QTY [28 ea]; LANDSCAPING SK [328 h]; GROUND COVER QTY [2143 Sqm]; SHRUBS QTY [53 ea] | 164,540 | 20 | 2BP2SLFR20 | DUKHCON2BP2SLGL7210 | DUKHCONI2BZ2SLGL7210 | DH | CON | 2BF | Z2 | FR | SL | B09 | B09-D10 | RES-2B |
|  | 25 | **SECONDARY BUILDINGS** |  | 2013-12-02 | 2014-05-22 |  |  |  |  |  |  |  |  |  |  |  |  |  |  |  |  |  |  |
|  | 10 | **INFRASTRUCTURE WORKS** |  | 2013-12-02 | 2014-05-22 |  |  |  |  |  |  |  |  |  |  |  |  |  |  |  |  |  |  |
|  | 10 | **IRRIGATION WATER TANK & PUMP ROOM** |  | 2013-12-02 | 2014-05-22 |  |  |  |  |  |  |  |  |  |  |  |  |  |  |  |  |  |  |
| DUKHCONI2BSBIWGL7400 |  | Excavation | 15d | 2013-12-02 | 2013-12-19 | DUKHCONP2BZ5STRF2060, DUKHENGI2BDWIWAP5540 | 19d | 0d | EQUIP OPERATORS [300 h]; LABOR - CIVIL [144 h]; EXCAVATION QTY [235 Cum]; LOADER [75 h]; POCLAIN [150 h]; TRUCK [75 h] | 25,532 | 10 | 2BOBIWFR10 | DUKHCON2BOBIWGL7400 | DUKHCONI2BSBIWGL7400 | DH | CON | 2BF | OB | FR | IW | B09 | B09-D07 | RES-2B |
| DUKHCONI2BSBIWGL7405 |  | Blinding & base waterproofing | 10d | 2013-12-21 | 2013-12-31 | DUKHCONI2BSBIWGL7400 | 19d | 0d | BLINDING MASON SK [64 h]; LABOR - CIVIL [48 h]; LABOR- SUBCONTRACTOR [24 h]; BLINDING QTY [78 Sqm]; WATERPROOFING QTY [78 Sqm]; WATERPROOFING SPECIALIST SK [64 h] | 11,821 | 15 | 2BOBIWFR15 | DUKHCON2BOBIWGL7405 | DUKHCONI2BSBIWGL7405 | DH | CON | 2BF | OB | FR | IW | B09 | B09-D07 | RES-2B |
| DUKHCONI2BSBIWGL7410 |  | Construction of Raft slab | 10d | 2014-01-01 | 2014-01-12 | DUKHCONI2BSBIWGL7405 | 19d | 0d | STEEL FIXERS SK [264 h]; CARPENTERS SK [32 h]; CONCRETE MASON SK [64 h]; LABOR - CIVIL [270 h]; REINFORCEMENT BARS QTY [3300 kg]; FORMWORK QTY [17 Sqm]; CONCRETE QTY [33 Cum] | 28,096 | 20 | 2BOBIWFR20 | DUKHCON2BOBIWGL7410 | DUKHCONI2BSBIWGL7410 | DH | CON | 2BF | OB | FR | IW | B09 | B09-D07 | RES-2B |
| DUKHCONI2BSBIWGL7415 |  | Construction of RCC Wall | 25d | 2014-01-13 | 2014-02-10 | DUKHCONI2BSBIWGL7410 | 19d | 0d | STEEL FIXERS SK [424 h]; CARPENTERS SK [448 h]; CONCRETE MASON SK [104 h]; LABOR - CIVIL [732 h]; REINFORCEMENT BARS QTY [5300 kg]; FORMWORK QTY [222 Sqm]; CONCRETE QTY [53 Cum] | 85,171 | 25 | 2BOBIWFR25 | DUKHCON2BOBIWGL7415 | DUKHCONI2BSBIWGL7415 | DH | CON | 2BF | OB | FR | IW | B09 | B09-D07 | RES-2B |
| DUKHCONI2BSBIWGL7420 |  | Construction of Roof Slab | 20d | 2014-02-12 | 2014-03-06 | DUKHCONI2BSBIWGL7415 | 19d | 0d | STEEL FIXERS SK [112 h]; CARPENTERS SK [136 h]; CONCRETE MASON SK [32 h]; LABOR - CIVIL [210 h]; REINFORCEMENT BARS QTY [1400 kg]; FORMWORK QTY [66 Sqm]; CONCRETE QTY [14 Cum] | 26,221 | 30 | 2BOBIWFR30 | DUKHCON2BOBIWGL7420 | DUKHCONI2BSBIWGL7420 | DH | CON | 2BF | OB | FR | IW | B09 | B09-D07 | RES-2B |
| DUKHCONI2BSBIWGL7425 |  | Waterproofing & Backfilling | 15d | 2014-03-08 | 2014-03-24 | DUKHCONI2BSBIWGL7420 | 25d | 0d | LABOR - CIVIL [6 h]; LABOR- SUBCONTRACTOR [30 h]; WATERPROOFING QTY [93 Sqm]; BACKFILLING QTY [33 Cum]; WATERPROOFING SPECIALIST SK [72 h]; BOBCAT [45 h]; PLATE COMPACTOR [45 h]; TRUCK [9 h]; EQUIP OPERATORS [99 h] | 25,340 | 35 | 2BOBIWFR35 | DUKHCON2BOBIWGL7425 | DUKHCONI2BSBIWGL7425 | DH | CON | 2BF | OB | FR | IW | B09 | B09-D07 | RES-2B |
| DUKHCONI2BSBIWGL7950 |  | Laying of Interlock | 10d | 2014-03-25 | 2014-04-05 | DUKHCONI2BSBIWGL7425 | 40d | 0d | INTERLOCK MASON SK [40 h]; LABOR- SUBCONTRACTOR [18 h]; INTERLOCK QTY [48 Sqm] | 4,107.04 | 75 | 2BOBIWFR75 | DUKHCON2BOBIWGL7950 | DUKHCONI2BSBIWGL7950 | DH | CON | 2BF | OB | FR | IW | B09 | B09-D10 | RES-2B |
| DUKHCONI2BSBIWGL7430 |  | Floor screed | 5d | 2014-04-01 | 2014-04-06 | DUKHCONI2BSBIWGL7425, DUKHCONI2BSBIWGL7420 FS+21d | 19d | 0d | SCREED MASON SK [48 h]; LABOR - CIVIL [18 h]; FLOORING SCREED QTY [64 Sqm] | 2,072 | 40 | 2BOBIWFR40 | DUKHCON2BOBIWGL7430 | DUKHCONI2BSBIWGL7430 | DH | CON | 2BF | OB | FR | IW | B09 | B09-D07 | RES-2B |
| DUKHCONI2BSBIWGL7435 |  | Installation of Boundary Fences | 15d | 2014-04-06 | 2014-04-22 | DUKHCONI2BSBIWGL7950 | 40d | 21d | STEEL FIXERS SK [24 h]; BOUNDARY WIRE MESH QTY [55 Sqm]; LABOR - CIVIL [18 h] | 32,769 | 80 | 2BOBIWFR80 | DUKHCON2BOBIWGL7435 | DUKHCONI2BSBIWGL7435 | DH | CON | 2BF | OB | FR | IW | B09 | B09-D07 | RES-2B |
| DUKHCONI2BSBIWGL7440 |  | Plumbing , Drainage & Firefighting works | 25d | 2014-04-07 | 2014-05-05 | DUKHCONI2BSBIWGL7430, DUKHCONI2BZ2FFGL5210, DUKHCONI2BZ1FFGL5210 | 19d | 0d | LABOR- SUBCONTRACTOR [18 h]; MECHANICALS SK [32.4 h]; PUMP QTY [3 ea] | 153,477 | 60 | 2BOBIWFR60 | DUKHCON2BOBIWGL7440 | DUKHCONI2BSBIWGL7440 | DH | CON | 2BF | OB | FR | IW | B09 | B09-D07 | RES-2B |
| DUKHCONI2BSBIWGL7445 |  | AC Works | 25d | 2014-04-07 | 2014-05-05 | DUKHCONI2BSBIWGL7440 SS | 19d | 0d | LABOR- SUBCONTRACTOR [36 h]; AC TECHNICIAN SK [123.2 h]; AC PIPES QTY [17 lm]; VENTILIATION EQP QTY [1 ea] | 2,017 | 65 | 2BOBIWFR65 | DUKHCON2BOBIWGL7445 | DUKHCONI2BSBIWGL7445 | DH | CON | 2BF | OB | FR | IW | B09 | B09-D07 | RES-2B |
| DUKHCONI2BSBIWGL7450 |  | Electrical Works | 25d | 2014-04-07 | 2014-05-05 | DUKHCONI2BSBIWGL7445 SS, DUKHCONI2BZ2STGL5260 SS, DUKHCONI2BZ2TCGL5310, DUKHCONI2BZ2ELGL5230 | 19d | 0d | LABOR- SUBCONTRACTOR [90 h]; ELECTRICIANS SK [235.2 h]; CODUITS QTY [60 lm]; CABLE QTY [50 lm]; DB QTY [2 ea]; LIGHTS QTY [31 ea]; ISOLATOR QTY [4 ea] | 9,783 | 70 | 2BOBIWFR70 | DUKHCON2BOBIWGL7450 | DUKHCONI2BSBIWGL7450 | DH | CON | 2BF | OB | FR | IW | B09 | B09-D07 | RES-2B |
| DUKHCONI2BSBIWGL7455 |  | Internal epoxy coating & Painting | 5d | 2014-05-06 | 2014-05-11 | DUKHCONI2BSBIWGL7450 | 19d | 0d | LABOR- SUBCONTRACTOR [12 h]; EPOXY QTY [64 Sqm]; EPOXY SK [32 h] | 6,198 | 45 | 2BOBIWFR45 | DUKHCON2BOBIWGL7455 | DUKHCONI2BSBIWGL7455 | DH | CON | 2BF | OB | FR | IW | B09 | B09-D07 | RES-2B |
| DUKHCONI2BSBIWGL7460 |  | Installation of Steel Ladder | 5d | 2014-05-12 | 2014-05-17 | DUKHCONI2BSBIWGL7455 | 19d | 0d | LABOR- SUBCONTRACTOR [6 h]; LADDER QTY [1 ea]; LADDER ERECTOR SK [8 h] | 3,970 | 50 | 2BOBIWFR50 | DUKHCON2BOBIWGL7460 | DUKHCONI2BSBIWGL7460 | DH | CON | 2BF | OB | FR | IW | B09 | B09-D07 | RES-2B |
| DUKHCONI2BSBIWGL7465 |  | Installation of G.I Handrails | 5d | 2014-05-18 | 2014-05-22 | DUKHCONI2BSBIWGL7460, DUKHCONI2BSBIWGL7435 | 19d |  | LABOR- SUBCONTRACTOR [60 h]; STEEL ERECTOR SK [104 h]; HANDRAIL QTY [50 lm] | 18,447 | 55 | 2BOBIWFR55 | DUKHCON2BOBIWGL7465 | DUKHCONI2BSBIWGL7465 | DH | CON | 2BF | OB | FR | IW | B09 | B09-D07 | RES-2B |

Notes:
- DUKHCONI2BZ2RWGL6000: Expenses: I2B-Road work 102150
- DUKHCONI2BZ2RWGL6005: Expenses: I2B-Road work 116544
- DUKHCONI2BZ2RWGL6010: Expenses: I2B-Road work 103939
- DUKHCONI2BZ2RWGL6015: Expenses: I2B-Road work 58272
- DUKHCONI2BZ2RWGL6020: Expenses: I2B-Road work 148204
- DUKHCONI2BZ2RWGL6025: Expenses: I2B-Road work 77208
- DUKHCONI2BZ2RWGL6030: Expenses: I2B-Road work 79277
- DUKHCONI2BZ2PSGL7000: Expenses: I2B-Road work 35777
- DUKHCONI2BZ2PSGL7005: Expenses: I2B-Road work 35777
- DUKHCONI2BZ2PSGL7010: Expenses: I2B-Road work 178884
- DUKHCONI2BZ2PSGL7015: Expenses: I2B-Road work 17887.5
- DUKHCONI2BZ2HDGL7020: Expenses: I2B-Hard and soft landscaping 61885
- DUKHCONI2BZ2HDGL7025: Expenses: I2B-Hard and soft landscaping 88712
- DUKHCONI2BZ2HDGL7030: Expenses: I2B-Hard and soft landscaping 25677
- DUKHCONI2BZ2HDGL7035: Expenses: I2B-Hard and soft landscaping 70109
- DUKHCONI2BZ2HDGL7040: Expenses: I2B-Hard and soft landscaping 2138
- DUKHCONI2BZ2SLGL7200: Expenses: I2B-Hard and soft landscaping 29844
- DUKHCONI2BZ2SLGL7205: Expenses: I2B-Hard and soft landscaping 169116
- DUKHCONI2BZ2SLGL7210: Expenses: I2B-Hard and soft landscaping 164540
- DUKHCONI2BSBIWGL7400: Expenses: I2B-Water supply system 25532
- DUKHCONI2BSBIWGL7405: Expenses: I2B-Water supply system 11821
- DUKHCONI2BSBIWGL7410: Expenses: I2B-Water supply system 28096
- DUKHCONI2BSBIWGL7415: Expenses: I2B-Water supply system 85171
- DUKHCONI2BSBIWGL7420: Expenses: I2B-Water supply system 26221
- DUKHCONI2BSBIWGL7425: Expenses: I2B-Water supply system 25340
- DUKHCONI2BSBIWGL7950: Expenses: I2B-Hard and soft landscaping 4107.04
- DUKHCONI2BSBIWGL7430: Expenses: I2B-Water supply system 2072
- DUKHCONI2BSBIWGL7435: Expenses: I2B-Water supply system 32769
- DUKHCONI2BSBIWGL7440: Expenses: I2B-Water supply system 153477
- DUKHCONI2BSBIWGL7445: Expenses: I2B-Water supply system 2017
- DUKHCONI2BSBIWGL7450: Expenses: I2B-Water supply system 9783
- DUKHCONI2BSBIWGL7455: Expenses: I2B-Water supply system 6198
- DUKHCONI2BSBIWGL7460: Expenses: I2B-Water supply system 3970
- DUKHCONI2BSBIWGL7465: Expenses: I2B-Water supply system 18447

| ID | WBS | Activity | Duration | Start | Finish | Predecessors | Total float | Free float | Resources | Cost | CODE | P3 ACTID | P6 ID (old) | NP61D | PROJECT | PHASES | PACKAGE | PART | ELEMENTS | STEP | BILL NOS | BILL DIVISION | RES PACK | rem | FLOORS | EXECUTER |
| --- | --- | --- | --- | --- | --- | --- | --- | --- | --- | --- | --- | --- | --- | --- | --- | --- | --- | --- | --- | --- | --- | --- | --- | --- | --- | --- |
|  | 25 | **GAZEBO** |  | 2014-01-20 | 2014-03-19 |  |  |  |  |  |  |  |  |  |  |  |  |  |  |  |  |  |  |  |  |  |
| DUKHCONI2BSBGZGL7900 |  | Construction of Concrete structure | 20d | 2014-01-20 | 2014-02-12 | DUKHENGI2BDWGZAP5550, DUKHCONI2BZ1HDGL7020 | 34d | 0d | STEEL FIXERS SK [8 h]; CARPENTERS SK [32 h]; CONCRETE MASON SK [24 h]; LABOR - CIVIL [60 h]; EXCAVATION QTY [20 Cum]; REINFORCEMENT BARS QTY [85 kg]; FORMWORK QTY [15 Sqm]; CONCRETE QTY [10 Cum] | 4,276 | 10 | 2BOBGZFR10 | DUKHCON2BOBGZGL7900 | DUKHCONI2BSBGZGL7900 | DH | CON | 2BF | OB | FR | GZ | B09 | B09-D10 | RES-2B |  |  |  |
| DUKHCONI2BSBGZGL7905 |  | Installation of Wooden Works | 25d | 2014-02-01 | 2014-03-02 | DUKHCONI2BSBGZGL7900 SS+10d | 34d | 0d | LABOR- SUBCONTRACTOR [100 h]; WOODEN WORKS QTY [1 ea]; DOOR WORK SK [200 h] | 42,754 | 15 | 2BOBGZFR15 | DUKHCON2BOBGZGL7905 | DUKHCONI2BSBGZGL7905 | DH | CON | 2BF | OB | FR | GZ | B09 | B09-D10 | RES-2B |  |  |  |
| DUKHCONI2BSBGZGL7915 |  | Park Benches Installation | 15d | 2014-02-01 | 2014-02-18 | DUKHCONI2BSBGZGL7905 SS | 44d | 10d | LABOR- SUBCONTRACTOR [120 h]; WOODEN WORKS QTY [5 ea] | 42,754 | 15 | 2BOBGZFR30 | DUKHCON2BOBGZGL7915 | DUKHCONI2BSBGZGL7915 | DH | CON | 2BF | OB | FR | GZ | B09 | B09-D10 | RES-2B |  |  |  |
| DUKHCONI2BSBGZGL7910 |  | Electrical Works-Gazebo | 15d | 2014-03-03 | 2014-03-19 | DUKHCONI2BSBGZGL7905, DUKHCONI2BSBGZGL7915 | 34d | 7d | LABOR- SUBCONTRACTOR [36 h]; ELECTRICIANS SK [89.6 h]; CABLE QTY [50 lm]; LIGHTS QTY [15 ea] | 17,102 | 20 | 2BOBGZFR20 | DUKHCON2BOBGZGL7910 | DUKHCONI2BSBGZGL7910 | DH | CON | 2BF | OB | FR | GZ | B09 | B09-D10 | RES-2B |  |  |  |
|  | L55 | **PACKAGE-3** |  | 2012-12-01 | 2014-08-14 |  |  |  |  |  |  |  |  |  |  |  |  |  |  |  |  |  |  |  |  |  |
|  | 03 | **SITE PREPARATORY WORKS** |  | 2012-12-01 | 2013-02-20 |  |  |  |  |  |  |  |  |  |  |  |  |  |  |  |  |  |  |  |  |  |
| DUKHCONP03GNSP001000 |  | Survey works, | 20d | 2012-12-01 | 2012-12-24 | DUKHMOBP030000004000 | 0d |  | SURVEYOR SK [50 h]; LABOR - CIVIL [37.5 h] | 8,553 |  | P3SP031000 | DUKHCON3PGNCI001000 | DUKHCONP03GNSP001000 | DH | CON | P3 | SP |  |  | B11 | B11-D02 | RES-3 |  |  |  |
| DUKHCONP03GNSP002000 |  | Scanning for Existing Services for rerouting | 10d | 2012-12-01 | 2012-12-11 | DUKHCONP03GNSP001000 SS | 0d |  | ELECTRICIANS SK [70 h]; MECHANICALS SK [67.5 h]; LABOR - CIVIL [187.5 h] | 7,600 |  | P3SP031010 | DUKHCON3PGNCI002000 | DUKHCONP03GNSP002000 | DH | CON | P3 | SP |  |  | B11 | B11-D02 | RES-3 |  |  |  |
| DUKHCONP03GNSP003000 |  | Site stripping | 20d | 2012-12-08 | 2012-12-31 | DUKHCONP03GNSP002000 SS+6d | 29d | 0d | LABOR - CIVIL [375 h]; BOBCAT [100 h]; LOADER [100 h]; TRUCK [100 h]; EQUIP OPERATORS [300 h] | 869,341 |  | P3SP031020 | DUKHCON3PGNCI003000 | DUKHCONP03GNSP003000 | DH | CON | P3 | SP |  |  | B11 | B11-D03 | RES-3 |  |  |  |
| DUKHCONP03GNSP002100 |  | Submission of Scanning Reports | 5d | 2012-12-12 | 2012-12-17 | DUKHCONP03GNSP002000 | 0d |  | QUANTITY SURVEYOUR [40 h] | 1,901 |  | P3SP031010 | DUKHCON3PGNCI002000 | DUKHCONP03GNSP002000 | DH | CON | P3 | SP |  |  | B11 | B11-D02 | RES-3 |  |  |  |
| DUKHCONP03GNSP004000 |  | Demolition of Existing building & landscaping | 20d | 2012-12-13 | 2013-01-06 | DUKHCONP03GNSP003000 SS+5d | 29d | 0d | LABOR - CIVIL [937.5 h]; POCLAIN [1000 h]; LOADER [250 h]; TRUCK [250 h]; EQUIP OPERATORS [1750 h]; BREAKER [250 h] | 407,122 |  | P3SP031030 | DUKHCON3PGNCI004000 | DUKHCONP03GNSP004000 | DH | CON | P3 | SP |  |  | B11 | B11-D02 | RES-3 |  |  |  |
| DUKHCONP03GNSP002200 |  | Information Required for Rerouting | 14d | 2012-12-19 | 2013-01-03 | DUKHCONP03GNSP002100 | 0d |  |  |  |  | P3SP031010 | DUKHCON3PGNCI002000 | DUKHCONP03GNSP002000 | DH | CON | P3 | SP |  |  | B11 | B11-D02 | RES-3 |  |  |  |
| DUKHCONP03GNSP005000 |  | Demolition of existing services works | 20d | 2012-12-20 | 2013-01-12 | DUKHCONP03GNSP004000 SS+5d | 29d |  | LABOR - CIVIL [375 h]; POCLAIN [100 h]; LOADER [100 h]; TRUCK [100 h]; EQUIP OPERATORS [400 h]; BREAKER [100 h] | 302,135 |  | P3SP031040 | DUKHCON3PGNCI005000 | DUKHCONP03GNSP005000 | DH | CON | P3 | SP |  |  | B11 | B11-D02 | RES-3 |  |  |  |
| DUKHCONP03GNSP002300 |  | Preparation & Submission for New Layout | 5d | 2013-01-05 | 2013-01-09 | DUKHCONP03GNSP002200 | 0d |  | QUANTITY SURVEYOUR [32 h] | 1,901 |  | P3SP031010 | DUKHCON3PGNCI002000 | DUKHCONP03GNSP002000 | DH | CON | P3 | SP |  |  | B11 | B11-D02 | RES-3 |  |  |  |
| DUKHCONP03GNSP002400 |  | Approval for new Layout for rerouting | 10d | 2013-01-10 | 2013-01-21 | DUKHCONP03GNSP002300 | 0d |  |  |  |  | P3SP031010 | DUKHCON3PGNCI002000 | DUKHCONP03GNSP002000 | DH | CON | P3 | SP |  |  | B11 | B11-D02 | RES-3 |  |  |  |
| DUKHCONP03GNSP002500 |  | Rerouting Works | 25d | 2013-01-22 | 2013-02-20 | DUKHCONP03GNSP002400 | 0d |  | ELECTRICIANS SK [70 h]; MECHANICALS SK [67.5 h]; LABOR - CIVIL [187.5 h] | 7,600 |  | P3SP031010 | DUKHCON3PGNCI002000 | DUKHCONP03GNSP002000 | DH | CON | P3 | SP |  |  | B11 | B11-D02 | RES-3 |  |  |  |
|  | 05 | **MOCK UP** |  | 2013-08-06 | 2014-01-04 |  |  |  |  |  |  |  |  |  |  |  |  |  |  |  |  |  |  |  |  |  |
|  | 15 | **FINISHING WORKS** |  | 2013-08-06 | 2014-01-04 |  |  |  |  |  |  |  |  |  |  |  |  |  |  |  |  |  |  |  |  |  |
|  | 10 | **INTERNAL FINISHES** |  | 2013-08-06 | 2014-01-04 |  |  |  |  |  |  |  |  |  |  |  |  |  |  |  |  |  |  |  |  |  |
|  | 10 | **GROUND FLOOR** |  | 2013-08-06 | 2013-12-09 |  |  |  |  |  |  |  |  |  |  |  |  |  |  |  |  |  |  |  |  |  |
| DUKHCONP03MKARGF3000 |  | Block work | 6d | 2013-08-06 | 2013-08-15 | DUKHCONP03Z1STGF2015 SS+21d | 35d | 0d | BLOCK MASON SK [1518 h]; LABOR - CIVIL [854.25 h]; BLOCK QTY [759 Sqm] | 53,812 |  | P3MKIFGF10 | DUKHCON3PMKARGF3000 | DUKHCONP03MKARGF3000 | DH | CON | P3 | MK | FIN | IF | B10 | B10-D03 | RES-3 | REM | GF |  |
| DUKHCONP03MKARGF3005 |  | Plastering work | 7d | 2013-08-22 | 2013-08-29 | DUKHPROGEN00PRDV3040, DUKHCONP03MKELGF4000, DUKHCONP03MKARGF3000 | 42d | 0d | PLASTER MASON SK [1338 h]; LABOR - CIVIL [753 h]; PLASTER QTY [836 Sqm] | 10,892 |  | P3MKIFGF12 | DUKHCON3PMKARGF3005 | DUKHCONP03MKARGF3005 | DH | CON | P3 | MK | FIN | IF | B10 | B10-D10 | RES-3 | REM | GF |  |
| DUKHCONP03MKARGF3010 |  | Flooring screed | 7d | 2013-08-26 | 2013-09-02 | DUKHCONP03MKARGF3005 SS+3d | 51d | 0d | SCREED MASON SK [300 h]; LABOR - CIVIL [112.5 h]; FLOORING SCREED QTY [374 Sqm] | 12,423 |  | P3MKIFGF15 | DUKHCON3PMKARGF3010 | DUKHCONP03MKARGF3010 | DH | CON | P3 | MK | FIN | IF | B10 | B10-D10 | RES-3 | REM | GF |  |
| DUKHCONP03MKARGF3015 |  | Wet area waterproofing & Protection Screed | 5d | 2013-08-29 | 2013-09-03 | DUKHCONP03MKARGF3010 SS+3d, DUKHCONP03MKARGF3005 FF+3d | 51d | 0d | LABOR- SUBCONTRACTOR [53.25 h]; WETAREA WATERPROOFING QTY [176 Sqm]; WATERPROOFING SPECIALIST SK [141 h] | 5,984 |  | P3MKIFGF18 | DUKHCON3PMKARGF3015 | DUKHCONP03MKARGF3015 | DH | CON | P3 | MK | FIN | IF | B10 | B10-D10 | RES-3 | REM | GF |  |
| DUKHCONP03MKARGF3020 |  | Ceramic Wall Tiling | 6d | 2013-09-04 | 2013-09-10 | DUKHCONP03MKARGF3015, DUKHCONP03MKPLGF4310, DUKHPROGEN00PRDV3120 | 51d | 0d | TILE MASON SK [556 h]; LABOR- SUBCONTRACTOR [312.75 h]; CERAMIC WALL TILE QTY [278 Sqm] | 16,162 |  | P3MKIFGF24 | DUKHCON3PMKARGF3020 | DUKHCONP03MKARGF3020 | DH | CON | P3 | MK | FIN | IF | B10 | B10-D10 | RES-3 | REM | GF |  |
| DUKHCONP03MKARGF3025 |  | Porcelain Tile flooring | 6d | 2013-09-11 | 2013-09-17 | DUKHPROGEN00PRDV3130, DUKHCONP03MKARGF3020, DUKHCONP03MKARGF3010 | 51d | 0d | TILE MASON SK [382 h]; LABOR- SUBCONTRACTOR [215.25 h]; PORCELAIN FLOORING QTY [334 Sqm] | 26,142 |  | P3MKIFGF27 | DUKHCON3PMKARGF3025 | DUKHCONP03MKARGF3025 | DH | CON | P3 | MK | FIN | IF | B10 | B10-D10 | RES-3 | REM | GF |  |
| DUKHCONP03MKARGF3040 |  | Cobble Tile flooring | 5d | 2013-09-18 | 2013-09-23 | DUKHPROGEN00PRDV3090, DUKHCONP03MKARGF3010, DUKHCONP03MKARGF3025 | 65d | 0d | TILE MASON SK [15 h]; LABOR- SUBCONTRACTOR [9 h]; COBBLE STONE QTY [9 Sqm] | 750 |  | P3MKIFGF30 | DUKHCON3PMKARGF3040 | DUKHCONP03MKARGF3040 | DH | CON | P3 | MK | FIN | IF | B10 | B10-D10 | RES-3 | REM | GF |  |
| DUKHCONP03MKARGF3035 |  | Slate Tile Flooring & Skirting | 5d | 2013-09-24 | 2013-09-29 | DUKHCONP03MKARGF3040, DUKHPROGEN00PRDV3100, DUKHCONP03MKARGF3010 | 65d | 23d | TILE MASON SK [10 h]; LABOR- SUBCONTRACTOR [6 h]; SLATE TILE QTY [6 Sqm] | 1,400 |  | P3MKIFGF33 | DUKHCON3PMKARGF3035 | DUKHCONP03MKARGF3035 | DH | CON | P3 | MK | FIN | IF | B10 | B10-D10 | RES-3 | REM | GF |  |
| DUKHCONP03MKARGF3030 |  | Paint First coat | 5d | 2013-09-25 | 2013-09-30 | DUKHPROGEN00PRDV3320, DUKHCONP03MKARGF3005 SS+14d | 43d | 0d | LABOR- SUBCONTRACTOR [376.05 h]; FIRSTCOAT PAINT QTY [1253.5 Sqm]; PAINTERS SK [1002.8 h] | 6,001 |  | P3MKIFGF21 | DUKHCON3PMKARGF3030 | DUKHCONP03MKARGF3030 | DH | CON | P3 | MK | FIN | IF | B10 | B10-D11 | RES-3 | REM | GF | ENT |
| DUKHCONP03MKARGF3045 |  | Fixing of Suspension systems | 7d | 2013-10-01 | 2013-10-08 | DUKHCONP03MKELGF4010, DUKHCONP03MKARGF3030, DUKHCONP03MKARGF3025 | 48d | 0d | LABOR- SUBCONTRACTOR [172.5 h]; SUSPENSION QTY [382.5 Sqm]; FALSE CEILING SKILLED SK [306 h] | 7,348 |  | P3MKIFGF39 | DUKHCON3PMKARGF3045 | DUKHCONP03MKARGF3045 | DH | CON | P3 | MK | FIN | IF | B10 | B10-D10 | RES-3 | REM | GF | SUS |
| DUKHCONP03MKARGF3060 |  | Gypsum board false ceiling | 7d | 2013-10-09 | 2013-10-16 | DUKHCONP03MKACGF4600, DUKHPROGEN00PRDV3300, DUKHCONP03MKARGF3045 | 51d | 7d | LABOR- SUBCONTRACTOR [156 h]; FALSE CEILING QTY [346.3 Sqm]; FALSE CEILING SKILLED SK [277 h] | 19,137 |  | P3MKIFGF45 | DUKHCON3PMKARGF3060 | DUKHCONP03MKARGF3060 | DH | CON | P3 | MK | FIN | IF | B10 | B10-D10 | RES-3 | REM | GF | GYP |
| DUKHCONP03MKARGF3050 |  | Granite - Stair case flooring & Skirting | 7d | 2013-10-20 | 2013-10-27 | DUKHPROGEN00PRDV3480, DUKHCONP03MKARGF3040, DUKHCONP03MKARGF3025 | 54d | 0d | GRANITE MASON SK [108 h]; LABOR- SUBCONTRACTOR [60.75 h]; GRANITE QTY [27 Sqm] | 16,217 |  | P3MKIFGF36 | DUKHCON3PMKARGF3050 | DUKHCONP03MKARGF3050 | DH | CON | P3 | MK | FIN | IF | B10 | B10-D10 | RES-3 | REM | GF |  |
| DUKHCONP03MKARGF3055 |  | Aluminum tile false ceiling | 7d | 2013-10-20 | 2013-10-27 | DUKHCONP03MKACGF4600, DUKHCONP03MKARGF3045, DUKHPROGEN00PRDV3310 | 45d | 0d | LABOR- SUBCONTRACTOR [18.75 h]; FALSE CEILING QTY [41.5 Sqm]; FALSE CEILING SKILLED SK [33.2 h] | 2,863 |  | P3MKIFGF42 | DUKHCON3PMKARGF3055 | DUKHCONP03MKARGF3055 | DH | CON | P3 | MK | FIN | IF | B10 | B10-D10 | RES-3 | REM | GF | ALU |
| DUKHCONP03MKARGF3065 |  | Wooden door | 5d | 2013-10-28 | 2013-11-02 | DUKHCONP03MKARGF3060, DUKHPROGEN00PRDV3490, DUKHPROGEN00PRDV3450, DUKHCONP03MKARGF3050, DUKHCONP03MKARGF3055 | 56d | 0d | LABOR- SUBCONTRACTOR [37.5 h]; WOODEN DOOR QTY [25 ea]; DOOR ERECTOR SK [100 h] | 75,176 |  | P3MKIFGF48 | DUKHCON3PMKARGF3065 | DUKHCONP03MKARGF3065 | DH | CON | P3 | MK | FIN | IF | B10 | B10-D05 | RES-3 | REM | GF |  |
| DUKHCONP03MKARGF3070 |  | Aluminum doors | 5d | 2013-11-03 | 2013-11-07 | DUKHCONP03MKARGF3065, DUKHPROGEN00PRDV3440, DUKHPROGEN00PRDV3460 | 56d | 0d | LABOR- SUBCONTRACTOR [9 h]; ALUMINIUM DOOR QTY [6 ea]; DOOR ERECTOR SK [24 h] | 7,356 |  | P3MKIFGF51 | DUKHCON3PMKARGF3070 | DUKHCONP03MKARGF3070 | DH | CON | P3 | MK | FIN | IF | B10 | B10-D06 | RES-3 | REM | GF |  |
| DUKHCONP03MKARGF3080 |  | Aluminum windows | 5d | 2013-11-09 | 2013-11-13 | DUKHPROGEN00PRDV3470, DUKHCONP03MKARGF3070 | 72d | 15d | LABOR- SUBCONTRACTOR [20.25 h]; ALUMINIUM WINDOWS QTY [20 ea]; WINDOW ERECTOR SK [54 h] | 15,116 |  | P3MKIFGF54 | DUKHCON3PMKARGF3080 | DUKHCONP03MKARGF3080 | DH | CON | P3 | MK | FIN | IF | B10 | B10-D06 | RES-3 | REM | GF |  |
| DUKHCONP03MKARGF3075 |  | Carpentry & Joinery Works | 10d | 2013-11-12 | 2013-11-23 | DUKHCONP03MKARGF3070, DUKHPROGEN00PRDV3550, DUKHPROGEN00PRDV3560, DUKHPROGEN00PRDV3570 | 53d | 0d | LABOR- SUBCONTRACTOR [72 h]; CABINET QTY [18 ea]; WARDROBE QTY [6 ea]; JOINERY WORK SK [192 h] | 42,895 |  | P3MKIFGF57 | DUKHCON3PMKARGF3075 | DUKHCONP03MKARGF3075 | DH | CON | P3 | MK | FIN | IF | B10 | B10-D05 | RES-3 | REM | GF |  |
| DUKHCONP03MKARGF3085 |  | S.S.Handrails & Balustrade | 7d | 2013-11-24 | 2013-12-01 | DUKHCONP03MKARGF3075, DUKHCONP03MKARGF3050 | 58d | 0d | LABOR- SUBCONTRACTOR [6 h]; S.S.BALUSTRADE QTY [5 lm]; HANDRAIL ERECTOR SKILLED [10 h] | 5,422 |  | P3MKIFGF63 | DUKHCON3PMKARGF3085 | DUKHCONP03MKARGF3085 | DH | CON | P3 | MK | FIN | IF | B10 | B10-D06 | RES-3 | REM | GF |  |
| DUKHCONP03MKARGF3090 |  | Installation of Granite Counter Top | 7d | 2013-11-24 | 2013-12-01 | DUKHCONP03MKARGF3075 | 57d | 0d | GRANITE MASON SK [32 h]; LABOR- SUBCONTRACTOR [12 h]; GRANITE COUNTER TOP QTY [8 ea] | 7,753 |  | P3MKIFGF60 | DUKHCON3PMKARGF3090 | DUKHCONP03MKARGF3090 | DH | CON | P3 | MK | FIN | IF | B10 | B10-D10 | RES-3 | REM | GF |  |
| DUKHCONP03MKARGF3095 |  | Final Painting | 7d | 2013-12-02 | 2013-12-09 | DUKHCONP03MKARGF3030, DUKHCONP03MKARGF3060, DUKHCONP03MKARGF3085, DUKHCONP03MKARGF3035, DUKHCONP03MKARGF3080, DUKHCONP03MKARGF3090, DUKHPROGEN00PRDV3420, DUKHCONP03MKARGF3040, DUKHCONP03MKARGF3070 | 58d | 18d | LABOR- SUBCONTRACTOR [376.05 h]; PAINT QTY [1253.5 Sqm]; PAINTERS SK [1002.8 h] | 16,949 |  | P3MKIFGF66 | DUKHCON3PMKARGF3095 | DUKHCONP03MKARGF3095 | DH | CON | P3 | MK | FIN | IF | B10 | B10-D11 | RES-3 | REM | GF | PNT |

Notes:
- DUKHCONI2BSBGZGL7900: Expenses: I2B-Hard and soft landscaping 4276
- DUKHCONI2BSBGZGL7905: Expenses: I2B-Hard and soft landscaping 42754
- DUKHCONI2BSBGZGL7915: Expenses: I2B-Hard and soft landscaping 42754
- DUKHCONI2BSBGZGL7910: Expenses: I2B-Hard and soft landscaping 17102
- DUKHCONP03GNSP001000: Expenses: I03-Demolition 8553
- DUKHCONP03GNSP002000: Expenses: I03-Demolition 7600
- DUKHCONP03GNSP003000: Expenses: I03-Site clearance general excavation and earthwork 869341
- DUKHCONP03GNSP002100: Expenses: I03-Demolition 1901
- DUKHCONP03GNSP004000: Expenses: I03-Demolition 407122
- DUKHCONP03GNSP005000: Expenses: I03-Demolition 302135
- DUKHCONP03GNSP002300: Expenses: I03-Demolition 1901
- DUKHCONP03GNSP002500: Expenses: I03-Demolition 7600
- DUKHCONP03MKARGF3000: Expenses: P03-Block work 53812
- DUKHCONP03MKARGF3005: Expenses: P03-Finishes 10892
- DUKHCONP03MKARGF3010: Expenses: P03-Finishes 12423
- DUKHCONP03MKARGF3015: Expenses: P03-Finishes 5984
- DUKHCONP03MKARGF3020: Expenses: P03-Finishes 16162
- DUKHCONP03MKARGF3025: Expenses: P03-Finishes 26142
- DUKHCONP03MKARGF3040: Expenses: P03-Finishes 750
- DUKHCONP03MKARGF3035: Expenses: P03-Finishes 1400
- DUKHCONP03MKARGF3030: Expenses: P03-Painting and Decorating 6001
- DUKHCONP03MKARGF3045: Expenses: P03-Finishes 7348
- DUKHCONP03MKARGF3060: Expenses: P03-Finishes 19137
- DUKHCONP03MKARGF3050: Expenses: P03-Finishes 16217
- DUKHCONP03MKARGF3055: Expenses: P03-Finishes 2863
- DUKHCONP03MKARGF3065: Expenses: P03-Carpentry and Joinery 75176
- DUKHCONP03MKARGF3070: Expenses: P03-Metal work 7356
- DUKHCONP03MKARGF3080: Expenses: P03-Metal work 15116
- DUKHCONP03MKARGF3075: Expenses: P03-Carpentry and Joinery 42895
- DUKHCONP03MKARGF3085: Expenses: P03-Metal work 5422
- DUKHCONP03MKARGF3090: Expenses: P03-Finishes 7753
- DUKHCONP03MKARGF3095: Expenses: P03-Painting and Decorating 16949

| ID | WBS | Activity | Duration | Start | Finish | Predecessors | Total float | Free float | Resources | Cost | rem | P3 ACTID | P6 ID (old) | NP61D | PROJECT | PHASES | PACKAGE | PART | ELEMENTS | STEP | FLOORS | BILL NOS | BILL DIVISION | RES PACK | EXECUTER |
| --- | --- | --- | --- | --- | --- | --- | --- | --- | --- | --- | --- | --- | --- | --- | --- | --- | --- | --- | --- | --- | --- | --- | --- | --- | --- |
|  | 15 | **FIRST FLOORS** |  | 2013-09-22 | 2013-12-29 |  |  |  |  |  |  |  |  |  |  |  |  |  |  |  |  |  |  |  |  |
| DUKHCONP03MKARFF3300 |  | Block work | 6d | 2013-09-22 | 2013-09-28 | DUKHPROGEN00PRDV3010, DUKHCONP03Z1STFF2035 SS+21d, DUKHENGP03DWARAP5610 | 0d |  | BLOCK MASON SK [1184 h]; LABOR - CIVIL [666 h]; BLOCK QTY [592 Sqm] | 46,692 | REM | P3MKIFFF10 | DUKHCON3PMKARFF3300 | DUKHCONP03MKARFF3300 | DH | CON | P3 | MK | FIN | IF | FF | B10 | B10-D03 | RES-3 |  |
| DUKHCONP03MKARFF3305 |  | Plastering work | 7d | 2013-10-05 | 2013-10-12 | DUKHCONP03MKARFF3300, DUKHPROGEN00PRDV3040, DUKHCONP03MKELFF4035 | 8d | 0d | PLASTER MASON SK [1176 h]; LABOR - CIVIL [661.5 h]; PLASTER QTY [735 Sqm] | 11,067 | REM | P3MKIFFF12 | DUKHCON3PMKARFF3305 | DUKHCONP03MKARFF3305 | DH | CON | P3 | MK | FIN | IF | FF | B10 | B10-D10 | RES-3 |  |
| DUKHCONP03MKARFF3310 |  | Flooring screed | 7d | 2013-10-08 | 2013-10-15 | DUKHCONP03MKARFF3305 SS+3d | 22d | 0d | SCREED MASON SK [250 h]; LABOR - CIVIL [93.75 h]; FLOORING SCREED QTY [312 Sqm] | 10,306 | REM | P3MKIFFF15 | DUKHCON3PMKARFF3310 | DUKHCONP03MKARFF3310 | DH | CON | P3 | MK | FIN | IF | FF | B10 | B10-D10 | RES-3 |  |
| DUKHCONP03MKARFF3315 |  | Wet area waterproofing & Protection Screed | 5d | 2013-10-12 | 2013-10-16 | DUKHCONP03MKARFF3310 SS+3d, DUKHCONP03MKARFF3305 FF+3d | 22d | 0d | LABOR- SUBCONTRACTOR [53.25 h]; WETAREA WATERPROOFING QTY [176 Sqm]; WATERPROOFING SPECIALIST SK [141 h] | 6,935 | REM | P3MKIFFF18 | DUKHCON3PMKARFF3315 | DUKHCONP03MKARFF3315 | DH | CON | P3 | MK | FIN | IF | FF | B10 | B10-D10 | RES-3 |  |
| DUKHCONP03MKARFF3320 |  | Ceramic Wall Tiling | 6d | 2013-10-20 | 2013-10-26 | DUKHCONP03MKPLFF4330, DUKHCONP03MKARFF3315, DUKHPROGEN00PRDV3120, DUKHCONP03MKPLFF4325 | 24d | 0d | TILE MASON SK [556 h]; LABOR- SUBCONTRACTOR [312.75 h]; CERAMIC WALL TILE QTY [278 Sqm] | 16,162 | REM | P3MKIFFF24 | DUKHCON3PMKARFF3320 | DUKHCONP03MKARFF3320 | DH | CON | P3 | MK | FIN | IF | FF | B10 | B10-D10 | RES-3 |  |
| DUKHCONP03MKARFF3330 |  | Paint First coat | 5d | 2013-10-23 | 2013-10-28 | DUKHCONP03MKARFF3305 SS+14d, DUKHPROGEN00PRDV3320 | 28d | 4d | LABOR- SUBCONTRACTOR [331.5 h]; PAINTERS SK [1104.5 h] | 6,001 | REM | P3MKIFFF21 | DUKHCON3PMKARFF3330 | DUKHCONP03MKARFF3330 | DH | CON | P3 | MK | FIN | IF | FF | B10 | B10-D11 | RES-3 | ENT |
| DUKHCONP03MKARFF3325 |  | Porcelain Tile flooring | 6d | 2013-10-27 | 2013-11-02 | DUKHCONP03MKARFF3320, DUKHPROGEN00PRDV3130, DUKHCONP03MKARFF3310 | 24d | 0d | TILE MASON SK [382 h]; LABOR- SUBCONTRACTOR [215.25 h]; PORCELAIN FLOORING QTY [334 Sqm] | 26,141 | REM | P3MKIFFF27 | DUKHCON3PMKARFF3325 | DUKHCONP03MKARFF3325 | DH | CON | P3 | MK | FIN | IF | FF | B10 | B10-D10 | RES-3 |  |
| DUKHCONP03MKARFF3335 |  | Slate Tile Flooring & Skirting | 5d | 2013-11-03 | 2013-11-07 | DUKHCONP03MKARFF3310, DUKHCONP03MKARFF3325, DUKHPROGEN00PRDV3100 | 44d | 0d | LABOR - CIVIL [75 h]; TILE MASON SK [200 h]; SLATE TILE QTY [6 Sqm] | 1,400 |  | P3MKIFFF30 | DUKHCON3PMKARFF3335 | DUKHCONP03MKARFF3335 | DH | CON | P3 | MK | FIN | IF | FF | B10 | B10-D10 | RES-3 |  |
| DUKHCONP03MKARFF3345 |  | Fixing of Suspension systems | 7d | 2013-11-03 | 2013-11-10 | DUKHCONP03MKELFF4045, DUKHCONP03MKARFF3325, DUKHCONP03MKARFF3330 | 29d | 0d | LABOR- SUBCONTRACTOR [172.5 h]; SUSPENSION QTY [382.5 Sqm]; FALSE CEILING SKILLED SK [306 h] | 7,348 | REM | P3MKIFFF36 | DUKHCON3PMKARFF3345 | DUKHCONP03MKARFF3345 | DH | CON | P3 | MK | FIN | IF | FF | B10 | B10-D10 | RES-3 | SUS |
| DUKHCONP03MKARFF3350 |  | Granite - Stair case flooring & Skirting | 7d | 2013-11-03 | 2013-11-10 | DUKHPROGEN00PRDV3480, DUKHCONP03MKARFF3325, DUKHCONP03MKARFF3310 | 37d | 7d | LABOR - CIVIL [75 h]; SCREED MASON SK [200 h] | 879 |  | P3MKIFFF33 | DUKHCON3PMKARFF3350 | DUKHCONP03MKARFF3350 | DH | CON | P3 | MK | FIN | IF | FF | B10 | B10-D10 | RES-3 |  |
| DUKHCONP03MKARFF3355 |  | Aluminum tile false ceiling | 7d | 2013-11-11 | 2013-11-18 | DUKHCONP03MKACFF4615, DUKHCONP03MKARFF3345, DUKHPROGEN00PRDV3310 | 34d | 0d | LABOR- SUBCONTRACTOR [18.75 h]; FALSE CEILING SKILLED SK [33.2 h]; FALSE CEILING QTY [41.5 Sqm] | 2,862 | REM | P3MKIFIF38 | DUKHCON3PMKARFF3355 | DUKHCONP03MKARFF3355 | DH | CON | P3 | MK | FIN | IF | FF | B10 | B10-D10 | RES-3 | ALU |
| DUKHCONP03MKARFF3360 |  | Gypsum board false ceiling | 7d | 2013-11-11 | 2013-11-18 | DUKHCONP03MKACFF4615, DUKHCONP03MKARFF3345, DUKHPROGEN00PRDV3300 | 29d | 0d | LABOR- SUBCONTRACTOR [156 h]; FALSE CEILING SKILLED SK [277 h]; FALSE CEILING QTY [346.3 Sqm] | 19,137 | REM | P3MKIFFF39 | DUKHCON3PMKARFF3360 | DUKHCONP03MKARFF3360 | DH | CON | P3 | MK | FIN | IF | FF | B10 | B10-D10 | RES-3 | GYP |
| DUKHCONP03MKARFF3365 |  | Wooden door | 5d | 2013-11-19 | 2013-11-24 | DUKHPROGEN00PRDV3490, DUKHPROGEN00PRDV3450, DUKHCONP03MKARFF3350, DUKHCONP03MKARFF3360, DUKHCONP03MKARFF3355 | 36d | 0d | LABOR- SUBCONTRACTOR [30 h]; WOODEN DOOR QTY [20 ea]; DOOR ERECTOR SK [80 h] | 59,545 | REM | P3MKIFFF42 | DUKHCON3PMKARFF3365 | DUKHCONP03MKARFF3365 | DH | CON | P3 | MK | FIN | IF | FF | B10 | B10-D05 | RES-3 |  |
| DUKHCONP03MKARFF3370 |  | Aluminum doors | 5d | 2013-11-25 | 2013-11-30 | DUKHCONP03MKARFF3365, DUKHPROGEN00PRDV3460 | 36d | 0d | LABOR- SUBCONTRACTOR [9 h]; ALUMINIUM DOOR QTY [6 ea]; DOOR ERECTOR SK [24 h] | 10,594 | REM | P3MKIFFF45 | DUKHCON3PMKARFF3370 | DUKHCONP03MKARFF3370 | DH | CON | P3 | MK | FIN | IF | FF | B10 | B10-D06 | RES-3 |  |
| DUKHCONP03MKARFF3375 |  | Carpentry & Joinery Works | 10d | 2013-12-01 | 2013-12-11 | DUKHPROGEN00PRDV3550, DUKHPROGEN00PRDV3560, DUKHCONP03MKARFF3370 | 36d | 0d | LABOR- SUBCONTRACTOR [12 h]; S.S.BALUSTRADE QTY [8 lm]; HANDRAIL ERECTOR SKILLED [16 h]; CABINET QTY [14 ea] | 42,894 |  | P3MKIFFF51 | DUKHCON3PMKARFF3375 | DUKHCONP03MKARFF3375 | DH | CON | P3 | MK | FIN | IF | FF | B10 | B10-D05 | RES-3 |  |
| DUKHCONP03MKARFF3380 |  | Aluminum windows | 5d | 2013-12-01 | 2013-12-05 | DUKHPROGEN00PRDV3470, DUKHCONP03MKARFF3370 | 49d | 12d | LABOR- SUBCONTRACTOR [24 h]; ALUMINIUM WINDOWS QTY [24 ea]; WINDOW ERECTOR SK [64 h] | 18,578 | REM | P3MKIFFF48 | DUKHCON3PMKARFF3380 | DUKHCONP03MKARFF3380 | DH | CON | P3 | MK | FIN | IF | FF | B10 | B10-D06 | RES-3 |  |
| DUKHCONP03MKARFF3385 |  | S.S.Handrails & Balustrade | 7d | 2013-12-12 | 2013-12-21 | DUKHCONP03MKARFF3350, DUKHPROGEN00PRDV3570, DUKHCONP03MKARFF3375, DUKHPROGEN00PRDV3580 | 37d | 0d | S.S.BALUSTRADE QTY [5 lm]; LABOR- SUBCONTRACTOR [75 h]; HANDRAIL ERECTOR SKILLED [200 h] | 5,422 |  | P3MKIFFF57 | DUKHCON3PMKARFF3385 | DUKHCONP03MKARFF3385 | DH | CON | P3 | MK | FIN | IF | FF | B10 | B10-D06 | RES-3 |  |
| DUKHCONP03MKARFF3390 |  | Installation of Granite Counter Top | 7d | 2013-12-12 | 2013-12-21 | DUKHCONP03MKARFF3375 | 37d | 0d | GRANITE MASON SK [32 h]; LABOR- SUBCONTRACTOR [12 h]; GRANITE COUNTER TOP QTY [8 ea] | 7,753 | REM | P3MKIFFF54 | DUKHCON3PMKARFF3390 | DUKHCONP03MKARFF3390 | DH | CON | P3 | MK | FIN | IF | FF | B10 | B10-D10 | RES-3 |  |
| DUKHCONP03MKARFF3395 |  | Final Painting | 7d | 2013-12-22 | 2013-12-29 | DUKHCONP03MKARFF3370, DUKHCONP03MKARFF3355, DUKHCONP03MKARFF3390, DUKHCONP03MKARFF3360, DUKHCONP03MKARFF3335, DUKHCONP03MKARFF3385, DUKHCONP03MKARFF3330, DUKHCONP03MKARFF3325, DUKHCONP03MKARFF3310, DUKHCONP03MKARFF3380 | 37d | 0d | LABOR- SUBCONTRACTOR [331.5 h]; PAINTERS SK [1104.5 h] | 14,381 | REM | P3MKIFFF60 | DUKHCON3PMKARFF3395 | DUKHCONP03MKARFF3395 | DH | CON | P3 | MK | FIN | IF | FF | B10 | B10-D11 | RES-3 | PNT |
|  | 20 | **ROOF** |  | 2013-10-10 | 2014-01-04 |  |  |  |  |  |  |  |  |  |  |  |  |  |  |  |  |  |  |  |  |
| DUKHCONP03MKARRF3600 |  | Block work | 5d | 2013-10-10 | 2013-10-15 | DUKHCONP03Z1STRF2055 SS+21d | 3d | 0d | BLOCK MASON SK [104 h]; LABOR - CIVIL [58.5 h]; BLOCK QTY [52 Sqm] | 4,306 | REM | P3MKIFRF10 | DUKHCON3PMKARRF3600 | DUKHCONP03MKARRF3600 | DH | CON | P3 | MK | FIN | IF | RF | B10 | B10-D03 | RES-3 |  |
| DUKHCONP03MKARRF3605 |  | Plastering work | 5d | 2013-10-14 | 2013-10-21 | DUKHCONP03MKARRF3600 SS+3d, DUKHCONP03MKARRF3600 FF+3d | 3d | 0d | PLASTER MASON SK [416 h]; LABOR - CIVIL [234 h]; PLASTER QTY [260 Sqm] | 3,380 | REM | P3MKIFRF20 | DUKHCON3PMKARRF3605 | DUKHCONP03MKARRF3605 | DH | CON | P3 | MK | FIN | IF | RF | B10 | B10-D10 | RES-3 |  |
| DUKHCONP03MKARRF3610 |  | Flooring screed | 6d | 2013-11-04 | 2013-11-10 | DUKHCONP03MKARFF3335 FF+2d, DUKHCONP03MKARRF3605 | 73d | 36d | SCREED MASON SK [28 h]; LABOR - CIVIL [10.5 h]; FLOORING SCREED QTY [35 Sqm] | 1,145 | REM | P3MKIFRF30 | DUKHCON3PMKARRF3610 | DUKHCONP03MKARRF3610 | DH | CON | P3 | MK | FIN | IF | RF | B10 | B10-D10 | RES-3 |  |
| DUKHCONP03MKARRF3695 |  | Painting | 5d | 2013-12-24 | 2013-12-29 | DUKHCONP03MKARRF3605 FS+7d, DUKHCONP03MKARFF3395 FF, DUKHCONP03MKARRF3610 | 37d | 0d | LABOR- SUBCONTRACTOR [12 h]; PAINT QTY [38 Sqm]; PAINTERS SK [32 h] | 2,067 |  | P3MKIFRF40 | DUKHCON3PMKARRF3695 | DUKHCONP03MKARRF3695 | DH | CON | P3 | MK | FIN | IF | RF | B10 | B10-D11 | RES-3 |  |
| DUKHCONP03MKARRF3620 |  | Epoxy Painting | 5d | 2013-12-30 | 2014-01-04 | DUKHCONP03MKARRF3695, DUKHCONP03MKARFF3395 FF, DUKHPROGEN00PRDV3420 | 47d | 10d | LABOR- SUBCONTRACTOR [2.25 h]; EPOXY QTY [11 Sqm]; EPOXY SK [6 h] | 784 | REM | P3MKIFRF50 | DUKHCON3PMKARRF3620 | DUKHCONP03MKARRF3620 | DH | CON | P3 | MK | FIN | IF | RF | B10 | B10-D11 | RES-3 |  |

Notes:
- DUKHCONP03MKARFF3300: Expenses: P03-Block work 46692
- DUKHCONP03MKARFF3305: Expenses: P03-Finishes 11067
- DUKHCONP03MKARFF3310: Expenses: P03-Finishes 10306
- DUKHCONP03MKARFF3315: Expenses: P03-Finishes 6935
- DUKHCONP03MKARFF3320: Expenses: P03-Finishes 16162
- DUKHCONP03MKARFF3330: Expenses: P03-Painting and Decorating 6001
- DUKHCONP03MKARFF3325: Expenses: P03-Finishes 26141
- DUKHCONP03MKARFF3335: Expenses: P03-Finishes 1400
- DUKHCONP03MKARFF3345: Expenses: P03-Finishes 7348
- DUKHCONP03MKARFF3350: Expenses: P03-Finishes 879
- DUKHCONP03MKARFF3355: Expenses: P03-Finishes 2862
- DUKHCONP03MKARFF3360: Expenses: P03-Finishes 19137
- DUKHCONP03MKARFF3365: Expenses: P03-Carpentry and Joinery 59545
- DUKHCONP03MKARFF3370: Expenses: P03-Metal work 10594
- DUKHCONP03MKARFF3375: Expenses: P03-Carpentry and Joinery 42894
- DUKHCONP03MKARFF3380: Expenses: P03-Metal work 18578
- DUKHCONP03MKARFF3385: Expenses: P03-Metal work 5422
- DUKHCONP03MKARFF3390: Expenses: P03-Finishes 7753
- DUKHCONP03MKARFF3395: Expenses: P03-Painting and Decorating 14381
- DUKHCONP03MKARRF3600: Expenses: P03-Block work 4306
- DUKHCONP03MKARRF3605: Expenses: P03-Finishes 3380
- DUKHCONP03MKARRF3610: Expenses: P03-Finishes 1145
- DUKHCONP03MKARRF3695: Expenses: P03-Painting and Decorating 2067
- DUKHCONP03MKARRF3620: Expenses: P03-Painting and Decorating 784

| ID | WBS | Activity | Duration | Start | Finish | Predecessors | Total float | Free float | Resources | Cost | rem | P3 ACTID | P6 ID (old) | NP61D | PROJECT | PHASES | PACKAGE | PART | ELEMENTS | STEP | FLOORS | BILL NOS | BILL DIVISION | RES PACK |
| --- | --- | --- | --- | --- | --- | --- | --- | --- | --- | --- | --- | --- | --- | --- | --- | --- | --- | --- | --- | --- | --- | --- | --- | --- |
|  | 15 | **EXTERNAL FINISHES** |  | 2013-10-22 | 2013-12-05 |  |  |  |  |  |  |  |  |  |  |  |  |  |  |  |  |  |  |  |
|  | 10 | **ROOF** |  | 2013-10-22 | 2013-11-27 |  |  |  |  |  |  |  |  |  |  |  |  |  |  |  |  |  |  |  |
| DUKHCONP03MKARRF3630 |  | Leveling Screed for Waterproofing | 2d | 2013-10-22 | 2013-10-23 | DUKHCONP03MKARRF3605, DUKHCONP03Z1STRF2060 SS+10d, DUKHCONP03Z1STRF2065 SS+7d, DUKHCONP03Z1STRF2055 SS+10d | 3d | 0d | SCREED MASON SK [157 h]; LABOR- SUBCONTRACTOR [88.5 h]; ROOF WP SCREED QTY [391 Sqm] | 15,568 | REM | P3MKEFRF10 | DUKHCON3PMKARRF3630 | DUKHCONP03MKARRF3630 | DH | CON | P3 | MK | FIN | EF | RF | B10 | B10-D04 | RES-3 |
| DUKHCONP03MKARRF3635 |  | Laying of Waterproofing Membrane | 5d | 2013-10-24 | 2013-10-29 | DUKHCONP03MKARRF3630 | 3d | 0d | LABOR- SUBCONTRACTOR [186 h]; ROOF WP MEMBRANE QTY [928 Sqm]; WATERPROOFING SPECIALIST SK [495 h] | 20,503 | REM | P3MKEFRF15 | DUKHCON3PMKARRF3635 | DUKHCONP03MKARRF3635 | DH | CON | P3 | MK | FIN | EF | RF | B10 | B10-D04 | RES-3 |
| DUKHCONP03MKARRF3640 |  | Installation of Insulation & Protection | 4d | 2013-10-30 | 2013-11-03 | DUKHCONP03MKARRF3635 | 3d | 0d | LABOR- SUBCONTRACTOR [117.75 h]; ROOF WP INSULATION QTY [782 Sqm]; WATERPROOFING SPECIALIST SK [313 h] | 11,483 | REM | P3MKEFRF20 | DUKHCON3PMKARRF3640 | DUKHCONP03MKARRF3640 | DH | CON | P3 | MK | FIN | EF | RF | B10 | B10-D04 | RES-3 |
| DUKHCONP03MKARRF3645 |  | Lime Stone Chips & Paving slab Installation | 4d | 2013-11-04 | 2013-11-07 | DUKHCONP03MKARRF3640 | 3d | 0d | TILE MASON SK [32 h]; LABOR- SUBCONTRACTOR [67.5 h]; LIME STONE QTY [79 Sqm]; PRECAST PAVING SLAB QTY [370 Sqm]; PRE CAST CONCRETE SK [148 h] | 28,166 | REM | P3MKEFRF25 | DUKHCON3PMKARRF3645 | DUKHCONP03MKARRF3645 | DH | CON | P3 | MK | FIN | EF | RF | B10 | B10-D04 | RES-3 |
| DUKHCONP03MKARRF3650 |  | Install. of Gal. Frame & Aluminum Slat Screen | 6d | 2013-11-09 | 2013-11-14 | DUKHPROGEN00PRDV3410, DUKHCONP03MKARRF3645 | 61d | 0d | LABOR- SUBCONTRACTOR [126 h]; ALUMINIUM SCREEN QTY [63 Sqm]; DOOR ERECTOR SK [168 h] | 17,816 | REM | P3MKEFRF35 | DUKHCON3PMKARRF3650 | DUKHCONP03MKARRF3650 | DH | CON | P3 | MK | FIN | EF | RF | B10 | B10-D06 | RES-3 |
| DUKHCONP03MKARRF3655 |  | Installation of Pumps Protection cabinets | 6d | 2013-11-16 | 2013-11-21 | DUKHCONP03MKARRF3645, DUKHCONP03MKARRF3650 | 66d | 0d | LABOR- SUBCONTRACTOR [21 h]; CABINET QTY [7 ea]; JOINERY WORK SK [56 h] | 3,325 | REM | P3MKEFRF30 | DUKHCON3PMKARRF3655 | DUKHCONP03MKARRF3655 | DH | CON | P3 | MK | FIN | EF | RF | B10 | B10-D04 | RES-3 |
| DUKHCONP03MKARRF3660 |  | Installation of Access Ladder | 5d | 2013-11-23 | 2013-11-27 | DUKHCONP03MKARRF3655, DUKHPROGEN00PRDV3400 | 78d | 13d | LABOR- SUBCONTRACTOR [18 h]; LADDER QTY [6 ea]; LADDER ERECTOR SK [48 h] | 6,399 | REM | P3MKEFRF40 | DUKHCON3PMKARRF3660 | DUKHCONP03MKARRF3660 | DH | CON | P3 | MK | FIN | EF | RF | B10 | B10-D06 | RES-3 |
|  | 15 | **ELEVATION** |  | 2013-11-09 | 2013-12-05 |  |  |  |  |  |  |  |  |  |  |  |  |  |  |  |  |  |  |  |
| DUKHCONP03MKAREL3665 |  | External Plastering | 10d | 2013-11-09 | 2013-11-19 | DUKHCONP03MKARRF3645, DUKHCONP03MKARRF3605, DUKHCONP03Z1STRF2060 SS+10d | 19d | 0d | PLASTER MASON SK [1954 h]; LABOR - CIVIL [1099.5 h]; EXTERNAL PLASTER QTY [977 Sqm] | 23,891 | REM | P3MKEFEL10 | DUKHCON3PMKAREL3665 | DUKHCONP03MKAREL3665 | DH | CON | P3 | MK | FIN | EF | EL | B10 | B10-D10 | RES-3 |
| DUKHCONP03MKAREL3675 |  | GRC Panel Works | 7d | 2013-11-20 | 2013-11-27 | DUKHPROGEN00PRDV3390, DUKHCONP03MKAREL3665 | 19d | 0d | LABOR- SUBCONTRACTOR [150 h]; GRC SK [400 h] | 6,685 |  | P3MKEFEL18 | DUKHCON3PMKAREL3675 | DUKHCONP03MKAREL3675 | DH | CON | P3 | MK | FIN | EF | EL | B10 | B10-D10 | RES-3 |
| DUKHCONP03MKAREL3680 |  | External Painting | 7d | 2013-11-28 | 2013-12-05 | DUKHCONP03MKAREL3675 | 66d | 23d | LABOR- SUBCONTRACTOR [72 h]; PAINT QTY [244 Sqm]; PAINTERS SK [200 h] | 35,338 |  | P3MKEFEL20 | DUKHCON3PMKAREL3680 | DUKHCONP03MKAREL3680 | DH | CON | P3 | MK | FIN | EF | EL | B10 | B10-D11 | RES-3 |
|  | 20 | **MEP WORKS** |  | 2013-08-17 | 2013-12-16 |  |  |  |  |  |  |  |  |  |  |  |  |  |  |  |  |  |  |  |
|  | 10 | **ELECTRICAL WORKS** |  | 2013-08-17 | 2013-12-14 |  |  |  |  |  |  |  |  |  |  |  |  |  |  |  |  |  |  |  |
|  | 10 | **GROUND FLOOR** |  | 2013-08-17 | 2013-11-09 |  |  |  |  |  |  |  |  |  |  |  |  |  |  |  |  |  |  |  |
| DUKHCONP03MKELGF4000 |  | Fixing of wall conduits & switch socket boxes | 5d | 2013-08-17 | 2013-08-21 | DUKHCONP03MKARGF3000 | 42d | 0d | LABOR- SUBCONTRACTOR [12 h]; ELECTRICIANS SK [78.4 h]; SOCKET BOXES QTY [54 ea]; CODUITS QTY [15 lm] | 9,588 |  | P3MKEWGF10 | DUKHCON3PMKELGF4000 | DUKHCONP03MKELGF4000 | DH | CON | P3 | MK | MEP | EW | GF | B10 | B10-D09 | RES-3 |
| DUKHCONP03MKELGF4005 |  | Cable tray & trunking installation | 5d | 2013-08-31 | 2013-09-04 | DUKHCONP03MKELGF4000, DUKHCONP03MKARGF3005 | 60d | 0d | LABOR- SUBCONTRACTOR [36 h]; ELECTRICIANS SK [123.2 h]; CABLE TRAY QTY [21 lm] | 6,592 |  | P3MKEWGF15 | DUKHCON3PMKELGF4005 | DUKHCONP03MKELGF4005 | DH | CON | P3 | MK | MEP | EW | GF | B10 | B10-D09 | RES-3 |
| DUKHCONP03MKELGF4010 |  | Installation of wiring & Main Cabling | 5d | 2013-09-05 | 2013-09-10 | DUKHPROGEN00PRDV3180, DUKHCONP03MKELGF4005 | 62d | 2d | LABOR- SUBCONTRACTOR [12 h]; ELECTRICIANS SK [44.8 h]; CABLE QTY [38 lm] | 35,069 |  | P3MKEWGF20 | DUKHCON3PMKELGF4010 | DUKHCONP03MKELGF4010 | DH | CON | P3 | MK | MEP | EW | GF | B10 | B10-D09 | RES-3 |
| DUKHCONP03MKELGF4020 |  | Installation of DBS,MCCB Accessories. | 5d | 2013-10-28 | 2013-11-02 | DUKHPROGEN00PRDV3170, DUKHCONP03MKELGF4010, DUKHCONP03MKARGF3055, DUKHCONP03MKARGF3060 | 52d | 0d | LABOR- SUBCONTRACTOR [6 h]; ELECTRICIANS SK [11.2 h]; MCCB QTY [1 ea]; DB QTY [1 ea] | 41,111 |  | P3MKEWGF25 | DUKHCON3PMKELGF4020 | DUKHCONP03MKELGF4020 | DH | CON | P3 | MK | MEP | EW | GF | B10 | B10-D09 | RES-3 |
| DUKHCONP03MKELGF4015 |  | Install. of CAMS & Fire Fighting Accessories | 7d | 2013-11-02 | 2013-11-09 | DUKHPROGEN00PRDV3260, DUKHPROGEN00PRDV3380, DUKHPROGEN00PRDV3210, DUKHPROGEN00PRDV3360, DUKHCONP03MKARGF3055, DUKHPROGEN00PRDV3370, DUKHCONP03MKARGF3060 | 52d | 5d | LABOR- SUBCONTRACTOR [42 h]; MECHANICALS SK [75.6 h]; SMOKE DETECTOR POINTS QTY [13 ea]; FIRE EXTINGUISHER QTY [2 ea] | 25,619 |  | P3MKEWGF35 | DUKHCON3PMKELGF4015 | DUKHCONP03MKELGF4015 | DH | CON | P3 | MK | MEP | EW | GF | B10 | B10-D09 | RES-3 |
| DUKHCONP03MKELGF4025 |  | Installation of Lighting fixtures & Accessories | 5d | 2013-11-03 | 2013-11-07 | DUKHCONP03MKARGF3055, DUKHPROGEN00PRDV3190, DUKHCONP03MKELGF4020, DUKHCONP03MKARGF3060 | 58d | 14d | LABOR- SUBCONTRACTOR [78 h]; ELECTRICIANS SK [145.6 h]; LIGHTS QTY [62 ea] | 39,596 |  | P3MKEWGF30 | DUKHCON3PMKELGF4025 | DUKHCONP03MKELGF4025 | DH | CON | P3 | MK | MEP | EW | GF | B10 | B10-D09 | RES-3 |
| DUKHCONP03MKELGF4030 |  | Installation of Telephone System | 5d | 2013-11-03 | 2013-11-07 | DUKHPROGEN00PRDV3270, DUKHPROGEN00PRDV3280, DUKHCONP03MKELGF4020, DUKHCONP03MKARGF3055, DUKHCONP03MKARGF3060 | 57d | 14d | LABOR- SUBCONTRACTOR [6 h]; ELECTRICIANS SK [44.8 h]; TELEPHONE SOCKETS QTY [4 ea] | 8,454 |  | P3MKEWGF40 | DUKHCON3PMKELGF4030 | DUKHCONP03MKELGF4030 | DH | CON | P3 | MK | MEP | EW | GF | B10 | B10-D09 | RES-3 |
|  | 15 | **FIRST FLOORS** |  | 2013-09-29 | 2013-11-30 |  |  |  |  |  |  |  |  |  |  |  |  |  |  |  |  |  |  |  |
| DUKHCONP03MKELFF4035 |  | Fixing of wall conduits & switch socket boxes | 5d | 2013-09-29 | 2013-10-03 | DUKHCONP03MKARFF3300 | 8d | 0d | LABOR- SUBCONTRACTOR [12 h]; ELECTRICIANS SK [78.4 h]; SOCKET BOXES QTY [54 ea]; CODUITS QTY [15 lm] | 9,389 |  | P3MKEWFF10 | DUKHCON3PMKELFF4035 | DUKHCONP03MKELFF4035 | DH | CON | P3 | MK | MEP | EW | FF | B10 | B10-D09 | RES-3 |
| DUKHCONP03MKELFF4040 |  | Cable tray & trunking installation | 5d | 2013-10-13 | 2013-10-20 | DUKHCONP03MKARFF3305, DUKHCONP03MKELFF4035 | 30d | 0d | LABOR- SUBCONTRACTOR [36 h]; ELECTRICIANS SK [123.2 h]; CABLE TRAY QTY [21 lm] | 6,590 |  | P3MKEWFF15 | DUKHCON3PMKELFF4040 | DUKHCONP03MKELFF4040 | DH | CON | P3 | MK | MEP | EW | FF | B10 | B10-D09 | RES-3 |
| DUKHCONP03MKELFF4045 |  | Installation of wiring & Main Cabling | 5d | 2013-10-21 | 2013-10-26 | DUKHPROGEN00PRDV3180, DUKHCONP03MKELFF4040 | 32d | 2d | LABOR- SUBCONTRACTOR [12 h]; ELECTRICIANS SK [44.8 h]; CABLE QTY [37 lm] | 34,268 |  | P3MKEWFF20 | DUKHCON3PMKELFF4045 | DUKHCONP03MKELFF4045 | DH | CON | P3 | MK | MEP | EW | FF | B10 | B10-D09 | RES-3 |
| DUKHCONP03MKELFF4055 |  | Install. of CAMS & Fire Fighting Accessories | 7d | 2013-11-19 | 2013-11-26 | DUKHCONP03MKARFF3360, DUKHCONP03MKELGF4015, DUKHCONP03MKARFF3355, DUKHPROGEN00PRDV3210, DUKHPROGEN00PRDV3260, DUKHPROGEN00PRDV3360 | 44d | 32d | LABOR- SUBCONTRACTOR [48 h]; MECHANICALS SK [86.4 h]; SMOKE DETECTOR POINTS QTY [12 ea]; FIRE EXTINGUISHER QTY [4 ea] | 25,619 |  | P3MKEWFF35 | DUKHCON3PMKELFF4055 | DUKHCONP03MKELFF4055 | DH | CON | P3 | MK | MEP | EW | FF | B10 | B10-D09 | RES-3 |
| DUKHCONP03MKELFF4060 |  | Installation of DBS,MCCB Accessories. | 5d | 2013-11-19 | 2013-11-24 | DUKHCONP03MKELFF4045, DUKHCONP03MKARFF3360, DUKHCONP03MKARFF3355, DUKHPROGEN00PRDV3170 | 38d | 0d | LABOR- SUBCONTRACTOR [6 h]; ELECTRICIANS SK [11.2 h]; MCCB QTY [1 ea]; DB QTY [1 ea] | 4,613 |  | P3MKEWFF25 | DUKHCON3PMKELFF4060 | DUKHCONP03MKELFF4060 | DH | CON | P3 | MK | MEP | EW | FF | B10 | B10-D09 | RES-3 |
| DUKHCONP03MKELFF4050 |  | Installation of Telephone System | 5d | 2013-11-25 | 2013-11-30 | DUKHCONP03MKELGF4030, DUKHCONP03MKELFF4060, DUKHPROGEN00PRDV3280, DUKHCONP03MKARFF3360, DUKHPROGEN00PRDV3270, DUKHCONP03MKARFF3355 | 48d | 0d | LABOR- SUBCONTRACTOR [6 h]; ELECTRICIANS SK [44.8 h]; TELEPHONE SOCKETS QTY [4 ea] | 8,246 |  | P3MKEWFF40 | DUKHCON3PMKELFF4050 | DUKHCONP03MKELFF4050 | DH | CON | P3 | MK | MEP | EW | FF | B10 | B10-D09 | RES-3 |
| DUKHCONP03MKELFF4065 |  | Installation of Lighting fixtures & Accessories | 5d | 2013-11-25 | 2013-11-30 | DUKHPROGEN00PRDV3190, DUKHCONP03MKARFF3360, DUKHCONP03MKELGF4025, DUKHCONP03MKARFF3355, DUKHCONP03MKELFF4060 | 44d | 0d | LABOR- SUBCONTRACTOR [72 h]; ELECTRICIANS SK [134.4 h]; LIGHTS QTY [62 ea] | 39,596 |  | P3MKEWFF30 | DUKHCON3PMKELFF4065 | DUKHCONP03MKELFF4065 | DH | CON | P3 | MK | MEP | EW | FF | B10 | B10-D09 | RES-3 |

Notes:
- DUKHCONP03MKARRF3630: Expenses: P03-Roofing 15568
- DUKHCONP03MKARRF3635: Expenses: P03-Roofing 20503
- DUKHCONP03MKARRF3640: Expenses: P03-Roofing 11483
- DUKHCONP03MKARRF3645: Expenses: P03-Roofing 28166
- DUKHCONP03MKARRF3650: Expenses: P03-Metal work 17816
- DUKHCONP03MKARRF3655: Expenses: P03-Roofing 3325
- DUKHCONP03MKARRF3660: Expenses: P03-Metal work 6399
- DUKHCONP03MKAREL3665: Expenses: P03-Finishes 23891
- DUKHCONP03MKAREL3675: Expenses: P03-Finishes 6685
- DUKHCONP03MKAREL3680: Expenses: P03-Painting and Decorating 35338
- DUKHCONP03MKELGF4000: Expenses: P03-Electrical Installations 9588
- DUKHCONP03MKELGF4005: Expenses: P03-Electrical Installations 6592
- DUKHCONP03MKELGF4010: Expenses: P03-Electrical Installations 35069
- DUKHCONP03MKELGF4020: Expenses: P03-Electrical Installations 41111
- DUKHCONP03MKELGF4015: Expenses: P03-Electrical Installations 25619
- DUKHCONP03MKELGF4025: Expenses: P03-Electrical Installations 39596
- DUKHCONP03MKELGF4030: Expenses: P03-Electrical Installations 8454
- DUKHCONP03MKELFF4035: Expenses: P03-Electrical Installations 9389
- DUKHCONP03MKELFF4040: Expenses: P03-Electrical Installations 6590
- DUKHCONP03MKELFF4045: Expenses: P03-Electrical Installations 34268
- DUKHCONP03MKELFF4055: Expenses: P03-Electrical Installations 25619
- DUKHCONP03MKELFF4060: Expenses: P03-Electrical Installations 4613
- DUKHCONP03MKELFF4050: Expenses: P03-Electrical Installations 8246
- DUKHCONP03MKELFF4065: Expenses: P03-Electrical Installations 39596

| ID | WBS | Activity | Duration | Start | Finish | Predecessors | Total float | Free float | Resources | Cost | P3 ACTID | P6 ID (old) | NP61D | PROJECT | PHASES | PACKAGE | PART | ELEMENTS | STEP | FLOORS | BILL NOS | BILL DIVISION | RES PACK |
| --- | --- | --- | --- | --- | --- | --- | --- | --- | --- | --- | --- | --- | --- | --- | --- | --- | --- | --- | --- | --- | --- | --- | --- |
|  | 20 | **ROOF** |  | 2013-12-01 | 2013-12-14 |  |  |  |  |  |  |  |  |  |  |  |  |  |  |  |  |  |  |
| DUKHCONP03MKELRF4070 |  | Installation of Isolator | 5d | 2013-12-01 | 2013-12-05 | DUKHCONP03MKELFF4065, DUKHCONP03MKARRF3645, DUKHPROGEN00PRDV3200, DUKHCONP03MKELFF4045, DUKHCONP03MKELFF4050 | 56d | 0d | LABOR- SUBCONTRACTOR [12 h]; ELECTRICIANS SK [22.4 h]; ISOLATOR QTY [3 ea] | 13,798 | P3MKEWRF10 | DUKHCON3PMKELRF4070 | DUKHCONP03MKELRF4070 | DH | CON | P3 | MK | MEP | EW | RF | B10 | B10-D09 | RES-3 |
| DUKHCONP03MKELRF4075 |  | Installation of TV Dish Antenna | 7d | 2013-12-07 | 2013-12-14 | DUKHCONP03MKELRF4070, DUKHPROGEN00PRDV3290 | 56d | 54d | LABOR- SUBCONTRACTOR [114 h]; ELECTRICIANS SK [280 h]; CONTROL BOX QTY [14 ea]; SWITCHING BOX QTY [12 ea] | 10,114 | P3MKEWRF15 | DUKHCON3PMKELRF4075 | DUKHCONP03MKELRF4075 | DH | CON | P3 | MK | MEP | EW | RF | B10 | B10-D09 | RES-3 |
|  | 15 | **PLUMBING, DRAINAGE & FIRE FIGHTING WORKS** |  | 2013-08-17 | 2013-12-16 |  |  |  |  |  |  |  |  |  |  |  |  |  |  |  |  |  |  |
|  | 10 | **GROUND FLOOR** |  | 2013-08-17 | 2013-11-28 |  |  |  |  |  |  |  |  |  |  |  |  |  |  |  |  |  |  |
| DUKHCONP03MKPLGF4305 |  | Installation of Plumbing pipes & testing | 5d | 2013-08-17 | 2013-08-21 | DUKHCONP03MKARGF3000 | 44d | 0d | LABOR- SUBCONTRACTOR [48 h]; MECHANICALS SK [183.6 h]; PLUMB PIPES QTY [166 lm] | 28,254 | P3MKPLGF10 | DUKHCON3PMKPLGF4305 | DUKHCONP03MKPLGF4305 | DH | CON | P3 | MK | MEP | PL | GF | B10 | B10-D07 | RES-3 |
| DUKHCONP03MKPLGF4310 |  | Installation of Drainage pipes &testing | 5d | 2013-08-17 | 2013-08-21 | DUKHCONP03MKPLGF4305 SS, DUKHCONP03MKARGF3000 | 62d | 9d | LABOR- SUBCONTRACTOR [6 h]; MECHANICALS SK [10.8 h]; DRAINAGE PIPES QTY [27 lm] | 637 | P3MKPLGF15 | DUKHCON3PMKPLGF4310 | DUKHCONP03MKPLGF4310 | DH | CON | P3 | MK | MEP | PL | GF | B10 | B10-D07 | RES-3 |
| DUKHCONP03MKPLGF4315 |  | Sanitary Fittings & Accessories | 7d | 2013-11-16 | 2013-11-23 | DUKHPROGEN00PRDV3150, DUKHPROGEN00PRDV3230, DUKHCONP03MKPLGF4310, DUKHPROGEN00PRDV3770, DUKHCONP03MKARGF3065 | 50d | 0d | LABOR- SUBCONTRACTOR [12 h]; MECHANICALS SK [21.6 h]; SANITARY ACC QTY [18 ea] | 30,669 | P3MKPLGF20 | DUKHCON3PMKPLGF4315 | DUKHCONP03MKPLGF4315 | DH | CON | P3 | MK | MEP | PL | GF | B10 | B10-D07 | RES-3 |
| DUKHCONP03MKPLGF4320 |  | Installation of Water Heater | 5d | 2013-11-24 | 2013-11-28 | DUKHCONP03MKPLGF4315, DUKHCONP03MKARGF3060, DUKHCONP03MKARGF3055 | 77d | 13d | WATER HEATER QTY [1 ea] | 352 | P3MKPLGF25 | DUKHCON3PMKPLGF4320 | DUKHCONP03MKPLGF4320 | DH | CON | P3 | MK | MEP | PL | GF | B10 | B10-D07 | RES-3 |
|  | 15 | **FIRST FLOORS** |  | 2013-09-29 | 2013-12-08 |  |  |  |  |  |  |  |  |  |  |  |  |  |  |  |  |  |  |
| DUKHCONP03MKPLFF4325 |  | Installation of Plumbing pipes & testing | 5d | 2013-09-29 | 2013-10-03 | DUKHCONP03MKARFF3300, DUKHPROGEN00PRDV3080 | 9d | 0d | LABOR- SUBCONTRACTOR [48 h]; MECHANICALS SK [183.6 h]; PLUMB PIPES QTY [166 lm] | 26,157 | P3MKPLFF10 | DUKHCON3PMKPLFF4325 | DUKHCONP03MKPLFF4325 | DH | CON | P3 | MK | MEP | PL | FF | B10 | B10-D07 | RES-3 |
| DUKHCONP03MKPLFF4330 |  | Installation of Drainage pipes & testing | 5d | 2013-09-29 | 2013-10-03 | DUKHCONP03MKPLFF4325 SS | 34d | 9d | LABOR- SUBCONTRACTOR [6 h]; MECHANICALS SK [10.8 h]; DRAINAGE PIPES QTY [27 lm] | 546 | P3MKPLFF15 | DUKHCON3PMKPLFF4330 | DUKHCONP03MKPLFF4330 | DH | CON | P3 | MK | MEP | PL | FF | B10 | B10-D07 | RES-3 |
| DUKHCONP03MKPLFF4335 |  | Sanitary Fittings & Accessories | 7d | 2013-11-25 | 2013-12-02 | DUKHCONP03MKPLFF4330, DUKHCONP03MKPLGF4315, DUKHCONP03MKARFF3365 | 49d | 0d | LABOR- SUBCONTRACTOR [12 h]; MECHANICALS SK [21.6 h]; SANITARY ACC QTY [18 ea] | 30,669 | P3MKPLFF20 | DUKHCON3PMKPLFF4335 | DUKHCONP03MKPLFF4335 | DH | CON | P3 | MK | MEP | PL | FF | B10 | B10-D07 | RES-3 |
| DUKHCONP03MKPLFF4340 |  | Installation of Water Heater | 5d | 2013-12-03 | 2013-12-08 | DUKHCONP03MKARFF3360, DUKHCONP03MKPLFF4335, DUKHCONP03MKARFF3355 | 52d | 0d | WATER HEATER QTY [1 ea] | 352 | P3MKPLFF25 | DUKHCON3PMKPLFF4340 | DUKHCONP03MKPLFF4340 | DH | CON | P3 | MK | MEP | PL | FF | B10 | B10-D07 | RES-3 |
|  | 20 | **ROOF** |  | 2013-11-09 | 2013-12-16 |  |  |  |  |  |  |  |  |  |  |  |  |  |  |  |  |  |  |
| DUKHCONP03MKPLRF4345 |  | Installation of Plumbing pipes & fittings | 5d | 2013-11-09 | 2013-11-13 | DUKHCONP03MKARRF3645, DUKHCONP03MKARRF3605 | 3d | 0d | PLUMB PIPES QTY [96 lm]; LABOR- SUBCONTRACTOR [30 h]; MECHANICALS SK [108 h] | 4,125 | P3MKPLRF10 | DUKHCON3PMKPLRF4345 | DUKHCONP03MKPLRF4345 | DH | CON | P3 | MK | MEP | PL | RF | B10 | B10-D07 | RES-3 |
| DUKHCONP03MKPLRF4350 |  | Installation of Rain water Pipes | 5d | 2013-11-14 | 2013-11-19 | DUKHCONP03MKPLRF4345, DUKHCONP03MKPLFF4330 | 68d | 16d | DRAINAGE PIPES QTY [9 lm]; MECHANICALS SK [10.8 h] | 29,533 | P3MKPLRF15 | DUKHCON3PMKPLRF4350 | DUKHCONP03MKPLRF4350 | DH | CON | P3 | MK | MEP | PL | RF | B10 | B10-D07 | RES-3 |
| DUKHCONP03MKPLRF4355 |  | Roof Water Tank Installation & Connections | 7d | 2013-12-09 | 2013-12-16 | DUKHCONP03MKPLRF4345, DUKHCONP03MKPLRF4350, DUKHCONP03MKARRF3645, DUKHCONP03MKARRF3655, DUKHCONP03MKPLFF4340 | 52d | 38d | LABOR- SUBCONTRACTOR [6 h]; MECHANICALS SK [10.8 h]; WATER TANK QTY [1 ea] | 293,322 | P3MKPLRF20 | DUKHCON3PMKPLRF4355 | DUKHCONP03MKPLRF4355 | DH | CON | P3 | MK | MEP | PL | RF | B10 | B10-D07 | RES-3 |
|  | 20 | **AC WORKS** |  | 2013-08-31 | 2013-12-05 |  |  |  |  |  |  |  |  |  |  |  |  |  |  |  |  |  |  |
|  | 10 | **GROUND FLOOR** |  | 2013-08-31 | 2013-11-07 |  |  |  |  |  |  |  |  |  |  |  |  |  |  |  |  |  |  |
| DUKHCONP03MKACGF4600 |  | Installation AC Pipes | 5d | 2013-08-31 | 2013-09-04 | DUKHCONP03MKARGF3005, DUKHPROGEN00PRDV3160 | 79d | 14d | LABOR- SUBCONTRACTOR [6 h]; AC TECHNICIAN SK [22.4 h]; AC PIPES QTY [57 lm] | 3,622 | P3MKACGF10 | DUKHCON3PMKACGF4600 | DUKHCONP03MKACGF4600 | DH | CON | P3 | MK | MEP | AC | GF | B10 | B10-D08 | RES-3 |
| DUKHCONP03MKACGF4605 |  | Fixing of Ventilation Equipments | 5d | 2013-10-28 | 2013-11-02 | DUKHPROGEN00PRDV3340, DUKHCONP03MKACGF4600, DUKHCONP03MKARGF3060, DUKHPROGEN00PRDV3530, DUKHCONP03MKARGF3055 | 57d | 0d | LABOR- SUBCONTRACTOR [6 h]; AC TECHNICIAN SK [11.2 h]; VENTILIATION EQP QTY [3 ea] | 9,257 | P3MKACGF15 | DUKHCON3PMKACGF4605 | DUKHCONP03MKACGF4605 | DH | CON | P3 | MK | MEP | AC | GF | B10 | B10-D08 | RES-3 |
| DUKHCONP03MKACGF4610 |  | Fixing of Split AC | 5d | 2013-11-03 | 2013-11-07 | DUKHPROGEN00PRDV3240, DUKHCONP03MKACGF4605 | 70d | 14d | LABOR- SUBCONTRACTOR [12 h]; AC TECHNICIAN SK [22.4 h]; SPILIT UNIT QTY [3 ea] | 13,488 | P3MKACGF20 | DUKHCON3PMKACGF4610 | DUKHCONP03MKACGF4610 | DH | CON | P3 | MK | MEP | AC | GF | B10 | B10-D08 | RES-3 |
|  | 15 | **FIRST FLOORS** |  | 2013-10-13 | 2013-11-30 |  |  |  |  |  |  |  |  |  |  |  |  |  |  |  |  |  |  |
| DUKHCONP03MKACFF4615 |  | Installation AC Pipes | 5d | 2013-10-13 | 2013-10-20 | DUKHPROGEN00PRDV3160, DUKHCONP03MKACGF4600, DUKHCONP03MKARFF3305 | 47d | 15d | LABOR- SUBCONTRACTOR [6 h]; AC TECHNICIAN SK [22.4 h]; AC PIPES QTY [57 lm] | 3,260 | P3MKACFF10 | DUKHCON3PMKACFF4615 | DUKHCONP03MKACFF4615 | DH | CON | P3 | MK | MEP | AC | FF | B10 | B10-D08 | RES-3 |
| DUKHCONP03MKACFF4620 |  | Fixing of Ventilation Equipments | 5d | 2013-11-19 | 2013-11-24 | DUKHCONP03MKARFF3360, DUKHCONP03MKACGF4605, DUKHCONP03MKACFF4615, DUKHCONP03MKARFF3355, DUKHPROGEN00PRDV3340 | 43d | 0d | LABOR- SUBCONTRACTOR [6 h]; AC TECHNICIAN SK [11.2 h]; VENTILIATION EQP QTY [3 ea] | 7,749 | P3MKACFF15 | DUKHCON3PMKACFF4620 | DUKHCONP03MKACFF4620 | DH | CON | P3 | MK | MEP | AC | FF | B10 | B10-D08 | RES-3 |
| DUKHCONP03MKACFF4625 |  | Fixing of Split AC | 5d | 2013-11-25 | 2013-11-30 | DUKHCONP03MKACGF4610, DUKHCONP03MKACFF4620, DUKHPROGEN00PRDV3240 | 56d | 0d | LABOR- SUBCONTRACTOR [12 h]; AC TECHNICIAN SK [22.4 h]; SPILIT UNIT QTY [3 ea] | 14,076 | P3MKACFF20 | DUKHCON3PMKACFF4625 | DUKHCONP03MKACFF4625 | DH | CON | P3 | MK | MEP | AC | FF | B10 | B10-D08 | RES-3 |

Notes:
- DUKHCONP03MKELRF4070: Expenses: P03-Electrical Installations 13798
- DUKHCONP03MKELRF4075: Expenses: P03-Electrical Installations 10114
- DUKHCONP03MKPLGF4305: Expenses: P03-Plumbing and Drainage works 28254
- DUKHCONP03MKPLGF4310: Expenses: P03-Plumbing and Drainage works 637
- DUKHCONP03MKPLGF4315: Expenses: P03-Plumbing and Drainage works 30669
- DUKHCONP03MKPLGF4320: Expenses: P03-Plumbing and Drainage works 352
- DUKHCONP03MKPLFF4325: Expenses: P03-Plumbing and Drainage works 26157
- DUKHCONP03MKPLFF4330: Expenses: P03-Plumbing and Drainage works 546
- DUKHCONP03MKPLFF4335: Expenses: P03-Plumbing and Drainage works 30669
- DUKHCONP03MKPLFF4340: Expenses: P03-Plumbing and Drainage works 352
- DUKHCONP03MKPLRF4345: Expenses: P03-Plumbing and Drainage works 4125
- DUKHCONP03MKPLRF4350: Expenses: P03-Plumbing and Drainage works 29533
- DUKHCONP03MKPLRF4355: Expenses: P03-Plumbing and Drainage works 293322
- DUKHCONP03MKACGF4600: Expenses: P03-Air-conditioning and Ventilation works 3622
- DUKHCONP03MKACGF4605: Expenses: P03-Air-conditioning and Ventilation works 9257
- DUKHCONP03MKACGF4610: Expenses: P03-Air-conditioning and Ventilation works 13488
- DUKHCONP03MKACFF4615: Expenses: P03-Air-conditioning and Ventilation works 3260
- DUKHCONP03MKACFF4620: Expenses: P03-Air-conditioning and Ventilation works 7749
- DUKHCONP03MKACFF4625: Expenses: P03-Air-conditioning and Ventilation works 14076

| ID | WBS | Activity | Duration | Start | Finish | Predecessors | Total float | Free float | Resources | Cost | P3 ACTID | P6 ID (old) | NP61D | PROJECT | PHASES | PACKAGE | PART | ELEMENTS | STEP | FLOORS | BILL NOS | BILL DIVISION | RES PACK | CODE | rem |
| --- | --- | --- | --- | --- | --- | --- | --- | --- | --- | --- | --- | --- | --- | --- | --- | --- | --- | --- | --- | --- | --- | --- | --- | --- | --- |
|  | 20 | **ROOF** |  | 2013-11-09 | 2013-12-05 |  |  |  |  |  |  |  |  |  |  |  |  |  |  |  |  |  |  |  |  |
| DUKHCONP03MKACRF4630 |  | Installation of Refrigerant Pipes | 7d | 2013-11-09 | 2013-11-16 | DUKHCONP03MKARRF3645, DUKHCONP03MKACGF4600, DUKHCONP03MKACFF4615 | 73d | 0d | LABOR- SUBCONTRACTOR [6 h]; AC TECHNICIAN SK [11.2 h]; AC PIPES QTY [29 lm] | 6,838 | P3MKACRF10 | DUKHCON3PMKACRF4630 | DUKHCONP03MKACRF4630 | DH | CON | P3 | MK | MEP | AC | RF | B10 | B10-D08 | RES-3 |  |  |
| DUKHCONP03MKACRF4635 |  | Installation of Condensing Unit | 5d | 2013-12-01 | 2013-12-05 | DUKHCONP03MKACGF4610, DUKHCONP03MKACRF4630, DUKHCONP03MKACFF4625, DUKHCONP03MKARRF3645 | 61d | 47d | LABOR- SUBCONTRACTOR [12 h]; AC TECHNICIAN SK [33.6 h]; AC UNITS QTY [7 ea] | 35,500 | P3MKACRF15 | DUKHCON3PMKACRF4635 | DUKHCONP03MKACRF4635 | DH | CON | P3 | MK | MEP | AC | RF | B10 | B10-D08 | RES-3 |  |  |
|  | 25 | **EXTERNAL WORKS** |  | 2013-11-14 | 2013-12-11 |  |  |  |  |  |  |  |  |  |  |  |  |  |  |  |  |  |  |  |  |
|  | 10 | **MISCELLANEOUS** |  | 2013-11-14 | 2013-12-11 |  |  |  |  |  |  |  |  |  |  |  |  |  |  |  |  |  |  |  |  |
| DUKHCONP03MKMSEX5000 |  | Construction of Manholes | 7d | 2013-11-14 | 2013-11-21 | DUKHCONP03MKPLFF4330, DUKHCONP03MKPLGF4310, DUKHCONP03MKPLRF4345 | 3d | 0d | LABOR- SUBCONTRACTOR [6 h]; CABINET QTY [1 ea]; JOINERY WORK SK [8 h] | 2,269 | P3MKMSEX25 | DUKHCON3PMKMS005000 | DUKHCONP03MKMSEX5000 | DH | CON | P3 | MK | EX | MS |  | B10 | B10-D12 | RES-3 |  |  |
| DUKHCONP03MKMSEX5005 |  | Construction of Soak pit, Chambers | 7d | 2013-11-23 | 2013-11-30 | DUKHCONP03MKMSEX5000 | 23d | 0d | MANHOLES SK [200 h]; LABOR - CIVIL [75 h] | 4,029 | P3MKMSEX30 | DUKHCON3PMKMS005005 | DUKHCONP03MKMSEX5005 | DH | CON | P3 | MK | EX | MS |  | B10 | B10-D12 | RES-3 |  |  |
| DUKHCONP03MKMSEX5020 |  | Construction Entrance Ramp | 7d | 2013-11-28 | 2013-12-05 | DUKHCONP03MKAREL3665, DUKHCONP03MKAREL3675 | 19d | 0d | SCREED MASON SK [8 h]; CONCRETE MASON SK [8 h]; INTERLOCK MASON SK [8 h]; LABOR - CIVIL [6 h]; SCREED QTY [4 Sqm]; CONCRETE QTY [2 Cum]; INTERLOCK QTY [5 Sqm] | 3,553 | P3MKMSEX10 | DUKHCON3PMKMS005020 | DUKHCONP03MKMSEX5020 | DH | CON | P3 | MK | EX | MS |  | B10 | B10-D12 | RES-3 |  |  |
| DUKHCONP03MKMSEX5015 |  | Construction of grease Trap | 7d | 2013-12-01 | 2013-12-08 | DUKHCONP03MKMSEX5005 | 54d | 15d | GREASE TRAP QTY [1 lm] | 5,674 | P3MKMSEX20 | DUKHCON3PMKMS005015 | DUKHCONP03MKMSEX5015 | DH | CON | P3 | MK | EX | MS |  | B10 | B10-D12 | RES-3 |  |  |
| DUKHCONP03MKMSEX5025 |  | SS.Handrails and Balustrades | 5d | 2013-12-07 | 2013-12-11 | DUKHCONP03MKMSEX5020 | 31d | 12d | LABOR- SUBCONTRACTOR [6 h]; S.S.BALUSTRADE QTY [3 lm]; HANDRAIL ERECTOR SKILLED [8 h] | 10,178 | P3MKMSEX15 | DUKHCON3PMKMS005025 | DUKHCONP03MKMSEX5025 | DH | CON | P3 | MK | EX | MS |  | B10 | B10-D12 | RES-3 |  |  |
|  | 10 | **ZONE - 1 (3 Apartments)** |  | 2013-01-29 | 2014-04-16 |  |  |  |  |  |  |  |  |  |  |  |  |  |  |  |  |  |  |  |  |
|  | 10 | **STRUCTURAL WORKS** |  | 2013-01-29 | 2013-10-24 |  |  |  |  |  |  |  |  |  |  |  |  |  |  |  |  |  |  |  |  |
|  | 10 | **SUB STRUCTURE** |  | 2013-01-29 | 2013-06-15 |  |  |  |  |  |  |  |  |  |  |  |  |  |  |  |  |  |  |  |  |
|  | 10 | **UPTO GRADE SLAB** |  | 2013-01-29 | 2013-06-15 |  |  |  |  |  |  |  |  |  |  |  |  |  |  |  |  |  |  |  |  |
| DUKHCONP03Z1STUG1000 |  | Footing Excavation | 25d | 2013-01-29 | 2013-02-27 | DUKHMOBP030000004050 SS+10d, DUKHCONP03GNSP005000 SS+5d, DUKHCONP03GNSP002500 SS+6d | 0d |  | LABOR - CIVIL [824 h]; EXCAVATION QTY [1374 Cum]; LOADER [183 h]; POCLAIN [366 h]; TRUCK [183 h]; EQUIP OPERATORS [732 h] | 68,040 | P3P1SBUG10 | DUKHCON3PP1STUG1000 | DUKHCONP03Z1STUG1000 | DH | CON | P3 | Z1 | ST | SB | UG | B10 | B10-D01 | RES-3 | 10 |  |
| DUKHCONP03Z1STUG1005 |  | Footing Antitermite | 23d | 2013-02-09 | 2013-03-07 | DUKHCONP03Z1STUG1000 SS+9d, DUKHCONP03Z1STUG1000 FF+5d | 0d |  | LABOR- SUBCONTRACTOR [173.25 h]; ANTITERMITE QTY [1152 sqft]; ANTITERMITE SK [461 h] | 3,456 | P3P1SBUG15 | DUKHCON3PP1STUG1005 | DUKHCONP03Z1STUG1005 | DH | CON | P3 | Z1 | ST | SB | UG | B10 | B10-D01 | RES-3 | 15 | REM |
| DUKHCONP03Z1STUG1010 |  | Footing Blinding | 23d | 2013-02-13 | 2013-03-11 | DUKHCONP03Z1STUG1005 SS+3d, DUKHCONP03Z1STUG1005 FF+3d | 0d |  | LABOR - CIVIL [252 h]; BLINDING QTY [420 Sqm]; BLINDING MASON SK [336 h] | 10,587 | P3P1SBUG18 | DUKHCON3PP1STUG1010 | DUKHCONP03Z1STUG1010 | DH | CON | P3 | Z1 | ST | SB | UG | B10 | B10-D02 | RES-3 | 15 | REM |
| DUKHCONP03Z1STUG1015 |  | Footing Waterproofing & Screed | 25d | 2013-02-19 | 2013-03-19 | DUKHENGP03DWSTAP5560, DUKHPROGEN00PRDV3020, DUKHCONP03Z1STUG1010 SS+5d, DUKHCONP03Z1STUG1010 FF+5d | 0d |  | LABOR- SUBCONTRACTOR [247.5 h]; WATERPROOFING QTY [823 Sqm]; WATERPROOFING SPECIALIST SK [659 h] | 31,497 | P3P1SBUG20 | DUKHCON3PP1STUG1015 | DUKHCONP03Z1STUG1015 | DH | CON | P3 | Z1 | ST | SB | UG | B10 | B10-D02 | RES-3 | 20 | REM |
| DUKHCONP03Z1STUG1020 |  | Construction of foundations | 20d | 2013-03-06 | 2013-03-28 | DUKHMOBP030000004060 SS, DUKHMOBP030000004080 SS, DUKHMOBP030000004070 SS, DUKHMOBP030000004090, DUKHCONP03Z1STUG1015 FF+8d, DUKHCONP03Z1STUG1015 SS+7d | 0d |  | STEEL FIXERS SK [1819 h]; CARPENTERS SK [646 h]; CONCRETE MASON SK [288 h]; LABOR - CIVIL [2064.75 h]; REINFORCEMENT BARS QTY [22733 kg]; FORMWORK QTY [323 Sqm]; CONCRETE QTY [144 Cum] | 125,011 | P3P1SBUG25 | DUKHCON3PP1STUG1020 | DUKHCONP03Z1STUG1020 | DH | CON | P3 | Z1 | ST | SB | UG | B10 | B10-D02 | RES-3 | 25 | REM |
| DUKHCONP03Z1STUG1025 |  | Construction of neck of columns | 25d | 2013-03-16 | 2013-04-13 | DUKHCONP03Z1STUG1020 SS+8d, DUKHCONP03Z1STUG1020 FF+7d | 0d |  | STEEL FIXERS SK [152 h]; CARPENTERS SK [630 h]; CONCRETE MASON SK [18 h]; LABOR - CIVIL [600 h]; REINFORCEMENT BARS QTY [1891 kg]; FORMWORK QTY [315 Sqm]; CONCRETE QTY [9 Cum] | 27,559 | P3P1SBUG30 | DUKHCON3PP1STUG1025 | DUKHCONP03Z1STUG1025 | DH | CON | P3 | Z1 | ST | SB | UG | B10 | B10-D02 | RES-3 | 30 | REM |
| DUKHCONP03Z1STUG1030 |  | Waterproofing Footing & Neck Column | 25d | 2013-03-25 | 2013-04-22 | DUKHCONP03Z1STUG1025 FF+8d, DUKHCONP03Z1STUG1025 SS+8d | 0d |  | LABOR- SUBCONTRACTOR [58.5 h]; WATERPROOFING QTY [193 Sqm]; WATERPROOFING SPECIALIST SK [155 h] | 10,965 | P3P1SBUG35 | DUKHCON3PP1STUG1030 | DUKHCONP03Z1STUG1030 | DH | CON | P3 | Z1 | ST | SB | UG | B10 | B10-D02 | RES-3 | 35 | REM |
| DUKHCONP03Z1STUG1035 |  | Backfilling Upto Grade Beam Bottom | 25d | 2013-04-04 | 2013-05-02 | DUKHCONP03Z1STUG1030 SS+9d, DUKHCONP03Z1STUG1030 FF+9d | 0d |  | LABOR - CIVIL [360 h]; BACKFILLING QTY [1512 Cum]; BOBCAT [1000 h]; PLATE COMPACTOR [1000 h]; TRUCK [200 h]; EQUIP OPERATORS [2200 h] | 25,326 | P3P1SBUG40 | DUKHCON3PP1STUG1035 | DUKHCONP03Z1STUG1035 | DH | CON | P3 | Z1 | ST | SB | UG | B10 | B10-D01 | RES-3 | 40 |  |
| DUKHCONP03Z1STUG1040 |  | Construction of Grade Beams | 25d | 2013-04-21 | 2013-05-19 | DUKHENGP03DWSTAP5570, DUKHCONP03Z1STUG1035 FF+14d, DUKHCONP03Z1STUG1035 SS+14d | 0d |  | BLINDING MASON SK [180 h]; SCREED MASON SK [180 h]; STEEL FIXERS SK [1062 h]; CARPENTERS SK [1202 h]; CONCRETE MASON SK [126 h]; LABOR - CIVIL [1995 h]; BLINDING QTY [225 Sqm]; SCREED QTY [225 Sqm]; REINFORCEMENT BARS QTY [13269 kg]; FORMWORK QTY [601 Sqm]; CONCRETE QTY [63 Cum] | 199,651 | P3P1SBUG45 | DUKHCON3PP1STUG1040 | DUKHCONP03Z1STUG1040 | DH | CON | P3 | Z1 | ST | SB | UG | B10 | B10-D02 | RES-3 | 45 | REM |
| DUKHCONP03Z1STUG1045 |  | Construction of slab on grade | 25d | 2013-05-18 | 2013-06-15 | DUKHENGP03DWSTAP5570, DUKHCONP03Z1PLUG4300 FF+8d, DUKHCONP03Z1STUG1040 FF+10d, DUKHCONP03Z1PLUG4300 SS+8d, DUKHCONP03Z1STUG1040 SS+10d | 0d |  | CONCRETE QTY [186 Cum]; WELDED WIRE MESH [1155 Sqm]; BLINDING MASON SK [684 h]; SCREED MASON SK [684 h]; STEEL FIXERS SK [308 h]; CONCRETE MASON SK [372 h]; LABOR - CIVIL [1279.5 h]; BLINDING QTY [855 Sqm]; SCREED QTY [855 Sqm] | 181,661 | P3P1SBUG50 | DUKHCON3PP1STUG1045 | DUKHCONP03Z1STUG1045 | DH | CON | P3 | Z1 | ST | SB | UG | B10 | B10-D02 | RES-3 | 50 | REM |

Notes:
- DUKHCONP03MKACRF4630: Expenses: P03-Air-conditioning and Ventilation works 6838
- DUKHCONP03MKACRF4635: Expenses: P03-Air-conditioning and Ventilation works 35500
- DUKHCONP03MKMSEX5000: Expenses: P03-External works within the Plot Curtilage 2269
- DUKHCONP03MKMSEX5005: Expenses: P03-External works within the Plot Curtilage 4029
- DUKHCONP03MKMSEX5020: Expenses: P03-External works within the Plot Curtilage 3553
- DUKHCONP03MKMSEX5015: Expenses: P03-External works within the Plot Curtilage 5674
- DUKHCONP03MKMSEX5025: Expenses: P03-External works within the Plot Curtilage 10178
- DUKHCONP03Z1STUG1000: Expenses: P03-Excavation and Earth Works 68040
- DUKHCONP03Z1STUG1005: Expenses: P03-Excavation and Earth Works 3456
- DUKHCONP03Z1STUG1010: Expenses: P03-Concrete Works 10587
- DUKHCONP03Z1STUG1015: Expenses: P03-Concrete Works 31497
- DUKHCONP03Z1STUG1020: Expenses: P03-Concrete Works 125011
- DUKHCONP03Z1STUG1025: Expenses: P03-Concrete Works 27559
- DUKHCONP03Z1STUG1030: Expenses: P03-Concrete Works 10965
- DUKHCONP03Z1STUG1035: Expenses: P03-Excavation and Earth Works 25326
- DUKHCONP03Z1STUG1040: Expenses: P03-Concrete Works 199651
- DUKHCONP03Z1STUG1045: Expenses: P03-Concrete Works 181661

| ID | WBS | Activity | Duration | Start | Finish | Predecessors | Total float | Free float | Resources | Cost | CODE | rem | P3 ACTID | P6 ID (old) | NP61D | PROJECT | PHASES | PACKAGE | PART | ELEMENTS | STEP | FLOORS | BILL NOS | BILL DIVISION | RES PACK | EXECUTER |
| --- | --- | --- | --- | --- | --- | --- | --- | --- | --- | --- | --- | --- | --- | --- | --- | --- | --- | --- | --- | --- | --- | --- | --- | --- | --- | --- |
|  | 15 | **SUPERSTRUCTURE** |  | 2013-06-03 | 2013-10-24 |  |  |  |  |  |  |  |  |  |  |  |  |  |  |  |  |  |  |  |  |  |
|  | 10 | **GROUND FLOOR** |  | 2013-06-03 | 2013-07-29 |  |  |  |  |  |  |  |  |  |  |  |  |  |  |  |  |  |  |  |  |  |
| DUKHCONP03Z1STGF2000 |  | Column-Rebar & Formwork | 25d | 2013-06-03 | 2013-07-01 | DUKHENGP03DWSTAP5580, DUKHCONP03Z1STUG1045 SS+14d, DUKHCONP03Z1STUG1045 FF+7d | 0d |  | STEEL FIXERS SK [199 h]; CARPENTERS SK [766 h]; LABOR - CIVIL [723.75 h]; REINFORCEMENT BARS QTY [2482 kg]; FORMWORK QTY [383 Sqm] | 29,754 | 10 | REM | P3P1SPGF10 | DUKHCON3PP1STGF2000 | DUKHCONP03Z1STGF2000 | DH | CON | P3 | Z1 | ST | SP | GF | B10 | B10-D02 | RES-3 |  |
| DUKHCONP03Z1STGF2005 |  | Column-Concrete | 24d | 2013-06-12 | 2013-07-09 | DUKHCONP03Z1STGF2000 FF+2d, DUKHCONP03Z1STGF2000 SS+8d | 0d |  | CONCRETE MASON SK [58 h]; LABOR - CIVIL [43.5 h]; CONCRETE QTY [29 Cum] | 8,267 | 15 | REM | P3P1SPGF15 | DUKHCON3PP1STGF2005 | DUKHCONP03Z1STGF2005 | DH | CON | P3 | Z1 | ST | SP | GF | B10 | B10-D02 | RES-3 |  |
| DUKHCONP03Z1STGF2010 |  | Beam, Stairs ,Slab-Rebar & Formwork | 25d | 2013-06-27 | 2013-07-25 | DUKHCONP03Z1STGF2005 FF+14d, DUKHCONP03Z1STGF2005 SS+2d, DUKHENGP03DWSTAP5590 | 0d |  | STEEL FIXERS SK [1905 h]; CARPENTERS SK [4148 h]; LABOR - CIVIL [4539.75 h]; REINFORCEMENT BARS QTY [23804 kg]; FORMWORK QTY [2074 Sqm] | 173,534 | 20 | REM | P3P1SPGF20 | DUKHCON3PP1STGF2010 | DUKHCONP03Z1STGF2010 | DH | CON | P3 | Z1 | ST | SP | GF | B10 | B10-D02 | RES-3 |  |
| DUKHCONP03Z1STGF2015 |  | Beam, Stairs ,Slab-Concrete | 15d | 2013-07-13 | 2013-07-29 | DUKHCONP03Z1STGF2010 SS+10d, DUKHCONP03Z1STGF2010 FF+3d | 0d |  | CONCRETE MASON SK [496 h]; LABOR - CIVIL [372 h]; CONCRETE QTY [248 Cum] | 84,518 | 25 | REM | P3P1SPGF25 | DUKHCON3PP1STGF2015 | DUKHCONP03Z1STGF2015 | DH | CON | P3 | Z1 | ST | SP | GF | B10 | B10-D02 | RES-3 |  |
|  | 15 | **FIRST FLOORS** |  | 2013-07-15 | 2013-09-14 |  |  |  |  |  |  |  |  |  |  |  |  |  |  |  |  |  |  |  |  |  |
| DUKHCONP03Z1STFF2020 |  | Column-Rebar & Formwork | 25d | 2013-07-15 | 2013-08-15 | DUKHCONP03Z1STGF2015 SS+2d, DUKHCONP03Z1STGF2015 FF+5d, DUKHENGP03DWSTAP5600 | 0d |  | STEEL FIXERS SK [241 h]; CARPENTERS SK [682 h]; LABOR - CIVIL [692.25 h]; REINFORCEMENT BARS QTY [3012 kg]; FORMWORK QTY [341 Sqm] | 29,055 | 10 | REM | P3P1SPFF10 | DUKHCON3PP1STFF2020 | DUKHCONP03Z1STFF2020 | DH | CON | P3 | Z1 | ST | SP | FF | B10 | B10-D02 | RES-3 |  |
| DUKHCONP03Z1STFF2025 |  | Column-Concrete | 24d | 2013-07-25 | 2013-08-25 | DUKHCONP03Z1STFF2020 FF+2d, DUKHCONP03Z1STFF2020 SS+9d | 0d |  | CONCRETE MASON SK [50 h]; LABOR - CIVIL [37.5 h]; CONCRETE QTY [25 Cum] | 7,236 | 15 | REM | P3P1SPFF15 | DUKHCON3PP1STFF2025 | DUKHCONP03Z1STFF2025 | DH | CON | P3 | Z1 | ST | SP | FF | B10 | B10-D02 | RES-3 |  |
| DUKHCONP03Z1STFF2030 |  | Beam, Stairs ,Slab-Rebar & Formwork | 25d | 2013-08-13 | 2013-09-10 | DUKHCONP03Z1STFF2025 FF+14d, DUKHCONP03Z1STFF2025 SS+2d | 0d |  | STEEL FIXERS SK [1613 h]; CARPENTERS SK [4148 h]; LABOR - CIVIL [4320.75 h]; REINFORCEMENT BARS QTY [20151 kg]; FORMWORK QTY [2074 Sqm] | 183,422 | 20 | REM | P3P1SPFF20 | DUKHCON3PP1STFF2030 | DUKHCONP03Z1STFF2030 | DH | CON | P3 | Z1 | ST | SP | FF | B10 | B10-D02 | RES-3 |  |
| DUKHCONP03Z1STFF2035 |  | Beam, Stairs ,Slab-Concrete | 15d | 2013-08-28 | 2013-09-14 | DUKHCONP03Z1STFF2030 SS+10d, DUKHCONP03Z1STFF2030 FF+3d | 0d |  | CONCRETE MASON SK [418 h]; LABOR - CIVIL [313.5 h]; CONCRETE QTY [209 Cum] | 83,819 | 25 | REM | P3P1SPFF25 | DUKHCON3PP1STFF2035 | DUKHCONP03Z1STFF2035 | DH | CON | P3 | Z1 | ST | SP | FF | B10 | B10-D02 | RES-3 |  |
|  | 20 | **ROOF** |  | 2013-08-31 | 2013-10-24 |  |  |  |  |  |  |  |  |  |  |  |  |  |  |  |  |  |  |  |  |  |
| DUKHCONP03Z1STRF2040 |  | Column-Rebar & Formwork | 18d | 2013-08-31 | 2013-09-19 | DUKHCONP03Z1STFF2035 SS+2d, DUKHCONP03Z1STFF2035 FF+3d | 3d | 0d | STEEL FIXERS SK [58 h]; CARPENTERS SK [256 h]; LABOR - CIVIL [235.5 h]; REINFORCEMENT BARS QTY [717 kg]; FORMWORK QTY [128 Sqm] | 9,566 | 10 | REM | P3P1SPRF10 | DUKHCON3PP1STRF2040 | DUKHCONP03Z1STRF2040 | DH | CON | P3 | Z1 | ST | SP | RF | B10 | B10-D02 | RES-3 |  |
| DUKHCONP03Z1STRF2045 |  | Column-Concrete | 17d | 2013-09-03 | 2013-09-22 | DUKHCONP03Z1STRF2040 FF+1d, DUKHCONP03Z1STRF2040 SS+3d | 3d | 0d | CONCRETE MASON SK [12 h]; LABOR - CIVIL [9 h]; CONCRETE QTY [6 Cum] | 1,723 | 15 | REM | P3P1SPRF15 | DUKHCON3PP1STRF2045 | DUKHCONP03Z1STRF2045 | DH | CON | P3 | Z1 | ST | SP | RF | B10 | B10-D02 | RES-3 |  |
| DUKHCONP03Z1STRF2050 |  | Slab-Rebar & Formwork | 20d | 2013-09-05 | 2013-09-28 | DUKHCONP03Z1STRF2045 SS+2d, DUKHCONP03Z1STRF2045 FF+5d | 3d | 0d | STEEL FIXERS SK [383 h]; CARPENTERS SK [518 h]; LABOR - CIVIL [675.75 h]; REINFORCEMENT BARS QTY [4777 kg]; FORMWORK QTY [259 Sqm] | 33,570 | 20 | REM | P3P1SPRF20 | DUKHCON3PP1STRF2050 | DUKHCONP03Z1STRF2050 | DH | CON | P3 | Z1 | ST | SP | RF | B10 | B10-D02 | RES-3 |  |
| DUKHCONP03Z1STRF2055 |  | Slab-Concrete | 13d | 2013-09-16 | 2013-09-30 | DUKHCONP03Z1STRF2050 FF+2d, DUKHCONP03Z1STRF2050 SS+5d | 3d | 0d | CONCRETE MASON SK [100 h]; LABOR - CIVIL [75 h]; CONCRETE QTY [50 Cum] | 16,065 | 25 | REM | P3P1SPRF25 | DUKHCON3PP1STRF2055 | DUKHCONP03Z1STRF2055 | DH | CON | P3 | Z1 | ST | SP | RF | B10 | B10-D02 | RES-3 |  |
| DUKHCONP03Z1STRF2060 |  | Construction of Parapets | 25d | 2013-09-18 | 2013-10-16 | DUKHCONP03Z1STRF2055 SS+2d, DUKHCONP03Z1STRF2055 FF+10d | 18d | 0d | BLOCK MASON SK [924 h]; LABOR - CIVIL [517 h]; BLOCK QTY [462 Sqm] | 28,644 | 30 |  | P3P1SPRF30 | DUKHCON3PP1STRF2060 | DUKHCONP03Z1STRF2060 | DH | CON | P3 | Z1 | ST | SP | RF | B10 | B10-D03 | RES-3 |  |
| DUKHCONP03Z1STRF2065 |  | Construction of up stands/Plinth | 25d | 2013-09-24 | 2013-10-24 | DUKHCONP03Z1STRF2060 FF+5d, DUKHCONP03Z1STRF2060 SS+5d | 18d | 0d | STEEL FIXERS SK [6 h]; CARPENTERS SK [126 h]; CONCRETE MASON SK [30 h]; LABOR - CIVIL [121.5 h]; REINFORCEMENT BARS QTY [68 kg]; FORMWORK QTY [63 Sqm]; CONCRETE QTY [15 Cum] | 8,997 | 35 | REM | P3P1SPRF35 | DUKHCON3PP1STRF2065 | DUKHCONP03Z1STRF2065 | DH | CON | P3 | Z1 | ST | SP | RF | B10 | B10-D02 | RES-3 |  |
|  | 15 | **FINISHING WORKS** |  | 2013-08-17 | 2014-03-18 |  |  |  |  |  |  |  |  |  |  |  |  |  |  |  |  |  |  |  |  |  |
|  | 10 | **INTERNAL FINISHES** |  | 2013-08-17 | 2014-03-18 |  |  |  |  |  |  |  |  |  |  |  |  |  |  |  |  |  |  |  |  |  |
|  | 10 | **GROUND FLOOR** |  | 2013-08-17 | 2014-01-29 |  |  |  |  |  |  |  |  |  |  |  |  |  |  |  |  |  |  |  |  |  |
| DUKHCONP03Z1ARGF3000 |  | Block work | 25d | 2013-08-17 | 2013-09-14 | DUKHCONP03MKARGF3000, DUKHCONP03Z1STGF2015 FF+21d, DUKHCONP03Z1STGF2015 SS+21d | 35d | 0d | BLOCK MASON SK [3034 h]; LABOR - CIVIL [1707 h]; BLOCK QTY [1517 Sqm] | 107,623 | 10 | REM | P3P1IFGF10 | DUKHCON3PP1ARGF3000 | DUKHCONP03Z1ARGF3000 | DH | CON | P3 | Z1 | FIN | IF | GF | B10 | B10-D03 | RES-3 |  |
| DUKHCONP03Z1ARGF3005 |  | Plastering work | 25d | 2013-09-08 | 2013-10-06 | DUKHCONP03MKARGF3005, DUKHCONP03Z1ELGF4000 FF+5d, DUKHCONP03Z1PLGF4305 FF+5d, DUKHCONP03Z1ARGF3000 SS+7d, DUKHCONP03Z1ELGF4000 SS+5d, DUKHCONP03Z1PLGF4305 SS+5d, DUKHCONP03Z1ARGF3000 FF+7d | 35d | 0d | PLASTER MASON SK [2674 h]; LABOR - CIVIL [1504.5 h]; PLASTER QTY [1671 Sqm] | 21,784 | 12 | REM | P3P1IFGF12 | DUKHCON3PP1ARGF3005 | DUKHCONP03Z1ARGF3005 | DH | CON | P3 | Z1 | FIN | IF | GF | B10 | B10-D10 | RES-3 |  |
| DUKHCONP03Z1ARGF3010 |  | Flooring screed | 21d | 2013-09-16 | 2013-10-09 | DUKHCONP03Z1ARGF3005 SS+7d, DUKHCONP03Z1ARGF3005 FF+3d, DUKHCONP03MKARGF3010 | 43d | 8d | SCREED MASON SK [599 h]; LABOR - CIVIL [225 h]; FLOORING SCREED QTY [748 Sqm] | 24,846 | 15 | REM | P3P1IFGF15 | DUKHCON3PP1ARGF3010 | DUKHCONP03Z1ARGF3010 | DH | CON | P3 | Z1 | FIN | IF | GF | B10 | B10-D10 | RES-3 |  |
| DUKHCONP03Z1ARGF3015 |  | Wet area waterproofing & Protection Screed | 15d | 2013-09-25 | 2013-10-12 | DUKHCONP03Z1ARGF3005 SS+7d, DUKHCONP03Z1ARGF3005 FF+5d, DUKHCONP03MKARGF3015 | 35d | 0d | LABOR- SUBCONTRACTOR [105.75 h]; WETAREA WATERPROOFING QTY [352 Sqm]; WATERPROOFING SPECIALIST SK [282 h] | 11,968 | 18 | REM | P3P1IFGF18 | DUKHCON3PP1ARGF3015 | DUKHCONP03Z1ARGF3015 | DH | CON | P3 | Z1 | FIN | IF | GF | B10 | B10-D10 | RES-3 |  |
| DUKHCONP03Z1ARGF3020 |  | Ceramic Wall Tiling | 25d | 2013-10-01 | 2013-10-31 | DUKHCONP03Z1PLGF4310 FF+4d, DUKHCONP03Z1PLGF4305 FF+4d, DUKHCONP03Z1PLGF4305 SS+4d, DUKHCONP03Z1ARGF3015 FF+5d, DUKHCONP03MKARGF3020, DUKHCONP03Z1PLGF4310 SS+4d, DUKHCONP03Z1ARGF3015 SS+5d | 35d | 0d | TILE MASON SK [1110 h]; LABOR- SUBCONTRACTOR [624.75 h]; CERAMIC WALL TILE QTY [555 Sqm] | 32,325 | 24 | REM | P3P1IFGF24 | DUKHCON3PP1ARGF3020 | DUKHCONP03Z1ARGF3020 | DH | CON | P3 | Z1 | FIN | IF | GF | B10 | B10-D10 | RES-3 |  |
| DUKHCONP03Z1ARGF3030 |  | Paint First coat | 25d | 2013-10-01 | 2013-10-31 | DUKHCONP03MKARGF3030, DUKHCONP03Z1ARGF3005 FF+14d, DUKHCONP03Z1ARGF3005 SS+14d | 43d | 0d | LABOR- SUBCONTRACTOR [752.25 h]; FIRSTCOAT PAINT QTY [2507 Sqm]; PAINTERS SK [2006 h] | 12,000 | 21 | REM | P3P1IFGF21 | DUKHCON3PP1ARGF3030 | DUKHCONP03Z1ARGF3030 | DH | CON | P3 | Z1 | FIN | IF | GF | B10 | B10-D11 | RES-3 | ENT |
| DUKHCONP03Z1ARGF3025 |  | Porcelain Tile flooring | 25d | 2013-10-07 | 2013-11-06 | DUKHCONP03Z1ARGF3010 FF+10d, DUKHCONP03MKARGF3025, DUKHCONP03Z1ARGF3020 SS+5d, DUKHCONP03Z1ARGF3020 FF+5d, DUKHCONP03Z1ARGF3010 SS+10d | 35d | 0d | TILE MASON SK [763 h]; LABOR- SUBCONTRACTOR [429.75 h]; PORCELAIN FLOORING QTY [667 Sqm] | 52,286 | 27 | REM | P3P1IFGF27 | DUKHCON3PP1ARGF3025 | DUKHCONP03Z1ARGF3025 | DH | CON | P3 | Z1 | FIN | IF | GF | B10 | B10-D10 | RES-3 |  |
| DUKHCONP03Z1ARGF3045 |  | Fixing of Suspension systems | 20d | 2013-10-27 | 2013-11-18 | DUKHCONP03Z1ARGF3030 FF+7d, DUKHCONP03Z1ARGF3025 FF+10d, DUKHCONP03Z1ARGF3030 SS+7d, DUKHCONP03Z1ELGF4010 SS+5d, DUKHCONP03MKARGF3045, DUKHCONP03Z1ARGF3025 SS+10d, DUKHCONP03Z1ELGF4010 FF+5d | 35d | 0d | LABOR- SUBCONTRACTOR [344.25 h]; SUSPENSION QTY [765.01 Sqm]; FALSE CEILING SKILLED SK [612 h] | 14,696 | 39 | REM | P3P1IFGF39 | DUKHCON3PP1ARGF3045 | DUKHCONP03Z1ARGF3045 | DH | CON | P3 | Z1 | FIN | IF | GF | B10 | B10-D10 | RES-3 | SUS |
| DUKHCONP03Z1ARGF3035 |  | Slate Tile Flooring & Skirting | 15d | 2013-10-29 | 2013-11-14 | DUKHCONP03Z1ARGF3025 FF+7d, DUKHCONP03MKARGF3035, DUKHCONP03Z1ARGF3010 FF+13d, DUKHCONP03Z1ARGF3010 SS+13d, DUKHCONP03Z1ARGF3025 SS+13d | 42d | 2d | TILE MASON SK [20 h]; LABOR- SUBCONTRACTOR [11.25 h]; SLATE TILE QTY [12 Sqm] | 2,801 | 33 | REM | P3P1IFGF33 | DUKHCON3PP1ARGF3035 | DUKHCONP03Z1ARGF3035 | DH | CON | P3 | Z1 | FIN | IF | GF | B10 | B10-D10 | RES-3 |  |
| DUKHCONP03Z1ARGF3055 |  | Aluminum tile false ceiling | 25d | 2013-11-04 | 2013-12-02 | DUKHCONP03Z1ACGF4600 FF+7d, DUKHCONP03Z1ARGF3045 SS+7d, DUKHCONP03MKARGF3055, DUKHCONP03Z1ACGF4600 SS+7d, DUKHCONP03Z1ARGF3045 FF+7d | 39d | 3d | LABOR- SUBCONTRACTOR [37.5 h]; FALSE CEILING QTY [83 Sqm]; FALSE CEILING SKILLED SK [66.4 h] | 5,722 | 42 | REM | P3P1IFGF42 | DUKHCON3PP1ARGF3055 | DUKHCONP03Z1ARGF3055 | DH | CON | P3 | Z1 | FIN | IF | GF | B10 | B10-D10 | RES-3 | ALU |
| DUKHCONP03Z1ARGF3040 |  | Cobble Tile flooring | 15d | 2013-11-05 | 2013-11-21 | DUKHCONP03Z1ARGF3035 SS+4d, DUKHCONP03Z1ARGF3010 FF+13d, DUKHCONP03Z1ARGF3025 FF+13d, DUKHCONP03MKARGF3040, DUKHCONP03Z1ARGF3010 SS+13d, DUKHCONP03Z1ARGF3025 SS+13d, DUKHCONP03Z1ARGF3035 FF+4d | 40d | 0d | TILE MASON SK [29 h]; LABOR- SUBCONTRACTOR [16.5 h]; COBBLE STONE QTY [18 Sqm] | 1,502 | 30 | REM | P3P1IFGF30 | DUKHCON3PP1ARGF3040 | DUKHCONP03Z1ARGF3040 | DH | CON | P3 | Z1 | FIN | IF | GF | B10 | B10-D10 | RES-3 |  |
| DUKHCONP03Z1ARGF3060 |  | Gypsum board false ceiling | 25d | 2013-11-07 | 2013-12-05 | DUKHCONP03Z1ARGF3045 FF+10d, DUKHCONP03MKARGF3060, DUKHCONP03Z1ACGF4600 FF+7d, DUKHCONP03Z1ARGF3045 SS+10d, DUKHCONP03Z1ACGF4600 SS+7d | 35d | 0d | LABOR- SUBCONTRACTOR [312 h]; FALSE CEILING QTY [692.6 Sqm]; FALSE CEILING SKILLED SK [554 h] | 38,269 | 45 | REM | P3P1IFGF45 | DUKHCON3PP1ARGF3060 | DUKHCONP03Z1ARGF3060 | DH | CON | P3 | Z1 | FIN | IF | GF | B10 | B10-D10 | RES-3 | GYP |
| DUKHCONP03Z1ARGF3050 |  | Granite - Stair case flooring & Skirting | 20d | 2013-11-13 | 2013-12-05 | DUKHCONP03Z1ARGF3025 SS+13d, DUKHCONP03Z1ARGF3040 FF+7d, DUKHCONP03Z1ARGF3040 SS+7d, DUKHCONP03Z1ARGF3025 FF+13d, DUKHCONP03MKARGF3050 | 40d | 0d | GRANITE MASON SK [216 h]; LABOR- SUBCONTRACTOR [121.5 h]; GRANITE QTY [54 Sqm] | 32,434 | 36 | REM | P3P1IFGF36 | DUKHCON3PP1ARGF3050 | DUKHCONP03Z1ARGF3050 | DH | CON | P3 | Z1 | FIN | IF | GF | B10 | B10-D10 | RES-3 |  |
| DUKHCONP03Z1ARGF3065 |  | Wooden door | 15d | 2013-11-27 | 2013-12-14 | DUKHCONP03Z1ARGF3035 SS+7d, DUKHCONP03Z1ARGF3050 FF+7d, DUKHCONP03Z1ARGF3035 FF+7d, DUKHCONP03MKARGF3065, DUKHCONP03Z1ARGF3050 SS+7d | 40d | 0d | LABOR- SUBCONTRACTOR [75 h]; WOODEN DOOR QTY [50 ea]; DOOR ERECTOR SK [200 h] | 150,350 | 48 | REM | P3P1IFGF48 | DUKHCON3PP1ARGF3065 | DUKHCONP03Z1ARGF3065 | DH | CON | P3 | Z1 | FIN | IF | GF | B10 | B10-D05 | RES-3 |  |
| DUKHCONP03Z1ARGF3070 |  | Aluminum doors | 15d | 2013-12-03 | 2013-12-21 | DUKHCONP03MKARGF3070, DUKHCONP03Z1ARGF3065 FF+5d, DUKHCONP03Z1ARGF3065 SS+5d | 40d | 0d | LABOR- SUBCONTRACTOR [18 h]; ALUMINIUM DOOR QTY [12 ea]; DOOR ERECTOR SK [48 h] | 14,709 | 51 | REM | P3P1IFGF51 | DUKHCON3PP1ARGF3070 | DUKHCONP03Z1ARGF3070 | DH | CON | P3 | Z1 | FIN | IF | GF | B10 | B10-D06 | RES-3 |  |
| DUKHCONP03Z1ARGF3075 |  | Carpentry & Joinery Works | 20d | 2013-12-09 | 2014-01-01 | DUKHCONP03Z1ARGF3070 FF+7d, DUKHCONP03Z1ARGF3070 SS+5d, DUKHCONP03MKARGF3075 | 40d | 0d | LABOR- SUBCONTRACTOR [144 h]; CABINET QTY [36 ea]; WARDROBE QTY [12 ea]; JOINERY WORK SK [384 h] | 85,786 | 57 | REM | P3P1IFGF57 | DUKHCON3PP1ARGF3075 | DUKHCONP03Z1ARGF3075 | DH | CON | P3 | Z1 | FIN | IF | GF | B10 | B10-D05 | RES-3 |  |
| DUKHCONP03Z1ARGF3080 |  | Aluminum windows | 20d | 2013-12-10 | 2014-01-02 | DUKHCONP03MKARGF3080, DUKHCONP03Z1ARGF3070 SS+6d, DUKHCONP03Z1ARGF3070 FF+6d | 50d | 5d | LABOR- SUBCONTRACTOR [40.5 h]; ALUMINIUM WINDOWS QTY [40 ea]; WINDOW ERECTOR SK [107 h] | 30,231 | 54 | REM | P3P1IFGF54 | DUKHCON3PP1ARGF3080 | DUKHCONP03Z1ARGF3080 | DH | CON | P3 | Z1 | FIN | IF | GF | B10 | B10-D06 | RES-3 |  |
| DUKHCONP03Z1ARGF3085 |  | S.S.Balustrade | 20d | 2013-12-17 | 2014-01-09 | DUKHCONP03Z1ARGF3050 SS+7d, DUKHCONP03Z1ARGF3050 FF+7d, DUKHCONP03Z1ARGF3075 FF+7d, DUKHCONP03MKARGF3085, DUKHCONP03Z1ARGF3075 SS+7d | 45d | 5d | LABOR- SUBCONTRACTOR [11.25 h]; S.S.BALUSTRADE QTY [10 lm]; HANDRAIL ERECTOR SKILLED [20 h] | 14,460 | 63 | REM | P3P1IFGF63 | DUKHCON3PP1ARGF3085 | DUKHCONP03Z1ARGF3085 | DH | CON | P3 | Z1 | FIN | IF | GF | B10 | B10-D06 | RES-3 |  |
| DUKHCONP03Z1ARGF3090 |  | Installation of Granite Counter Top | 15d | 2013-12-23 | 2014-01-08 | DUKHCONP03Z1ARGF3075 FF+6d, DUKHCONP03Z1ARGF3075 SS+7d, DUKHCONP03MKARGF3090 | 40d | 0d | GRANITE MASON SK [64 h]; LABOR- SUBCONTRACTOR [24 h]; GRANITE COUNTER TOP QTY [16 ea] | 15,506 | 60 | REM | P3P1IFGF60 | DUKHCON3PP1ARGF3090 | DUKHCONP03Z1ARGF3090 | DH | CON | P3 | Z1 | FIN | IF | GF | B10 | B10-D10 | RES-3 |  |
| DUKHCONP03Z1ARGF3095 |  | Final Painting | 25d | 2014-01-01 | 2014-01-29 | DUKHCONP03Z1ARGF3090 FF+8d, DUKHCONP03MKARGF3095, DUKHCONP03Z1ACGF4610 SS+10d, DUKHCONP03Z1ARGF3080 SS+8d, DUKHCONP03Z1ARGF3085 SS+7d, DUKHCONP03Z1ARGF3040 SS+13d, DUKHCONP03Z1ARGF3035 SS+13d, DUKHCONP03Z1ARGF3080 FF+8d, DUKHCONP03Z1ARGF3085 FF+7d, DUKHCONP03Z1ACGF4610 FF+10d, DUKHCONP03Z1ARGF3060 SS+8d, DUKHCONP03Z1ARGF3070 SS+5d, DUKHCONP03Z1ARGF3030 SS+10d, DUKHCONP03Z1ARGF3090 SS+8d, DUKHCONP03Z1ARGF3030 FF+10d, DUKHCONP03Z1ARGF3060 FF+8d, DUKHCONP03Z1ARGF3070 FF+5d, DUKHCONP03Z1ARGF3040 FF+13d, DUKHCONP03Z1ARGF3035 FF+13d | 40d | 0d | LABOR- SUBCONTRACTOR [752.25 h]; PAINT QTY [2507 Sqm]; PAINTERS SK [2006 h] | 33,896 | 66 | REM | P3P1IFGF66 | DUKHCON3PP1ARGF3095 | DUKHCONP03Z1ARGF3095 | DH | CON | P3 | Z1 | FIN | IF | GF | B10 | B10-D11 | RES-3 | PNT |

Notes:
- DUKHCONP03Z1STGF2000: Expenses: P03-Concrete Works 29754
- DUKHCONP03Z1STGF2005: Expenses: P03-Concrete Works 8267
- DUKHCONP03Z1STGF2010: Expenses: P03-Concrete Works 173534
- DUKHCONP03Z1STGF2015: Expenses: P03-Concrete Works 84518
- DUKHCONP03Z1STFF2020: Expenses: P03-Concrete Works 29055
- DUKHCONP03Z1STFF2025: Expenses: P03-Concrete Works 7236
- DUKHCONP03Z1STFF2030: Expenses: P03-Concrete Works 183422
- DUKHCONP03Z1STFF2035: Expenses: P03-Concrete Works 83819
- DUKHCONP03Z1STRF2040: Expenses: P03-Concrete Works 9566
- DUKHCONP03Z1STRF2045: Expenses: P03-Concrete Works 1723
- DUKHCONP03Z1STRF2050: Expenses: P03-Concrete Works 33570
- DUKHCONP03Z1STRF2055: Expenses: P03-Concrete Works 16065
- DUKHCONP03Z1STRF2060: Expenses: P03-Block work 28644
- DUKHCONP03Z1STRF2065: Expenses: P03-Concrete Works 8997
- DUKHCONP03Z1ARGF3000: Expenses: P03-Block work 107623
- DUKHCONP03Z1ARGF3005: Expenses: P03-Finishes 21784
- DUKHCONP03Z1ARGF3010: Expenses: P03-Finishes 24846
- DUKHCONP03Z1ARGF3015: Expenses: P03-Finishes 11968
- DUKHCONP03Z1ARGF3020: Expenses: P03-Finishes 32325
- DUKHCONP03Z1ARGF3030: Expenses: P03-Painting and Decorating 12000
- DUKHCONP03Z1ARGF3025: Expenses: P03-Finishes 52286
- DUKHCONP03Z1ARGF3045: Expenses: P03-Finishes 14696
- DUKHCONP03Z1ARGF3035: Expenses: P03-Finishes 2801
- DUKHCONP03Z1ARGF3055: Expenses: P03-Finishes 5722
- DUKHCONP03Z1ARGF3040: Expenses: P03-Finishes 1502
- DUKHCONP03Z1ARGF3060: Expenses: P03-Finishes 38269
- DUKHCONP03Z1ARGF3050: Expenses: P03-Finishes 32434
- DUKHCONP03Z1ARGF3065: Expenses: P03-Carpentry and Joinery 150350
- DUKHCONP03Z1ARGF3070: Expenses: P03-Metal work 14709
- DUKHCONP03Z1ARGF3075: Expenses: P03-Carpentry and Joinery 85786
- DUKHCONP03Z1ARGF3080: Expenses: P03-Metal work 30231
- DUKHCONP03Z1ARGF3085: Expenses: P03-Metal work 14460
- DUKHCONP03Z1ARGF3090: Expenses: P03-Finishes 15506
- DUKHCONP03Z1ARGF3095: Expenses: P03-Painting and Decorating 33896

| ID | WBS | Activity | Duration | Start | Finish | Predecessors | Total float | Free float | Resources | Cost | CODE | rem | P3 ACTID | P6 ID (old) | NP61D | PROJECT | PHASES | PACKAGE | PART | ELEMENTS | STEP | FLOORS | BILL NOS | BILL DIVISION | RES PACK | EXECUTER |
| --- | --- | --- | --- | --- | --- | --- | --- | --- | --- | --- | --- | --- | --- | --- | --- | --- | --- | --- | --- | --- | --- | --- | --- | --- | --- | --- |
|  | 15 | **FIRST FLOORS** |  | 2013-09-29 | 2014-03-18 |  |  |  |  |  |  |  |  |  |  |  |  |  |  |  |  |  |  |  |  |  |
| DUKHCONP03Z1ARFF3300 |  | Block work | 24d | 2013-09-29 | 2013-10-28 | DUKHCONP03Z1STFF2035 SS+21d, DUKHCONP03Z1STFF2020 FF+21d, DUKHCONP03Z1STFF2035 FF+21d, DUKHCONP03Z1STFF2020 SS+21d, DUKHCONP03MKARFF3300 | 0d |  | BLOCK MASON SK [2370 h]; LABOR - CIVIL [1333.5 h]; BLOCK QTY [1185 Sqm] | 93,385 | 10 | REM | P3P1IFFF10 | DUKHCON3PP1ARFF3300 | DUKHCONP03Z1ARFF3300 | DH | CON | P3 | Z1 | FIN | IF | FF | B10 | B10-D03 | RES-3 |  |
| DUKHCONP03Z1ARFF3305 |  | Plastering work | 25d | 2013-10-24 | 2013-11-21 | DUKHCONP03MKARFF3305, DUKHCONP03Z1ELFF4035 SS+5d, DUKHCONP03Z1PLFF4325 SS+6d, DUKHCONP03Z1ELFF4035 FF+5d, DUKHCONP03Z1ARFF3300 SS+7d, DUKHCONP03Z1ARFF3300 FF+7d, DUKHCONP03Z1PLFF4325 FF+6d | 0d |  | PLASTER MASON SK [2354 h]; LABOR - CIVIL [1324.5 h]; PLASTER QTY [1471 Sqm] | 22,134 | 12 | REM | P3P1IFFF12 | DUKHCON3PP1ARFF3305 | DUKHCONP03Z1ARFF3305 | DH | CON | P3 | Z1 | FIN | IF | FF | B10 | B10-D10 | RES-3 |  |
| DUKHCONP03Z1ARFF3310 |  | Flooring screed | 21d | 2013-11-02 | 2013-11-25 | DUKHCONP03Z1ARFF3305 SS+7d, DUKHCONP03MKARFF3310, DUKHCONP03Z1ARFF3305 FF+3d | 15d |  | SCREED MASON SK [500 h]; LABOR - CIVIL [187.5 h]; FLOORING SCREED QTY [625 Sqm] | 20,612 | 15 | REM | P3P1IFFF15 | DUKHCON3PP1ARFF3310 | DUKHCONP03Z1ARFF3310 | DH | CON | P3 | Z1 | FIN | IF | FF | B10 | B10-D10 | RES-3 |  |
| DUKHCONP03Z1ARFF3330 |  | Paint First coat | 25d | 2013-11-10 | 2013-12-08 | DUKHCONP03Z1ARFF3305 SS+14d, DUKHCONP03MKARFF3330, DUKHCONP03Z1ARFF3305 FF+14d | 18d |  | LABOR- SUBCONTRACTOR [663 h]; PAINTERS SK [2209 h] | 12,000 | 21 | REM | P3P1IFFF21 | DUKHCON3PP1ARFF3330 | DUKHCONP03Z1ARFF3330 | DH | CON | P3 | Z1 | FIN | IF | FF | B10 | B10-D11 | RES-3 | ENT |
| DUKHCONP03Z1ARFF3315 |  | Wet area waterproofing | 15d | 2013-11-14 | 2013-12-01 | DUKHCONP03Z1ARFF3305 SS+7d, DUKHCONP03Z1ARFF3305 FF+8d, DUKHCONP03MKARFF3315 | 0d |  | LABOR- SUBCONTRACTOR [105.75 h]; WETAREA WATERPROOFING QTY [352 Sqm]; WATERPROOFING SPECIALIST SK [282 h] | 13,870 | 18 | REM | P3P1IFFF18 | DUKHCON3PP1ARFF3315 | DUKHCONP03Z1ARFF3315 | DH | CON | P3 | Z1 | FIN | IF | FF | B10 | B10-D10 | RES-3 |  |
| DUKHCONP03Z1ARFF3320 |  | Ceramic Wall Tiling | 25d | 2013-11-24 | 2013-12-23 | DUKHCONP03Z1PLFF4330 SS+7d, DUKHCONP03Z1PLFF4325 FF+4d, DUKHCONP03Z1ARFF3315 SS+8d, DUKHCONP03Z1PLFF4325 SS+4d, DUKHCONP03MKARFF3320, DUKHCONP03Z1PLFF4330 FF+7d, DUKHCONP03Z1ARFF3315 FF+7d | 0d |  | TILE MASON SK [1110 h]; LABOR- SUBCONTRACTOR [624.75 h]; CERAMIC WALL TILE QTY [555 Sqm] | 32,325 | 24 | REM | P3P1IFFF24 | DUKHCON3PP1ARFF3320 | DUKHCONP03Z1ARFF3320 | DH | CON | P3 | Z1 | FIN | IF | FF | B10 | B10-D10 | RES-3 |  |
| DUKHCONP03Z1ARFF3325 |  | Porcelain Tile flooring | 25d | 2013-12-01 | 2013-12-30 | DUKHCONP03Z1ARFF3320 FF+6d, DUKHCONP03Z1ARFF3310 FF+10d, DUKHCONP03Z1ARFF3310 SS+10d, DUKHCONP03MKARFF3325, DUKHCONP03Z1ARFF3320 SS+6d | 0d |  | TILE MASON SK [763 h]; LABOR- SUBCONTRACTOR [429.75 h]; PORCELAIN FLOORING QTY [667 Sqm] | 52,284 | 27 | REM | P3P1IFFF27 | DUKHCON3PP1ARFF3325 | DUKHCONP03Z1ARFF3325 | DH | CON | P3 | Z1 | FIN | IF | FF | B10 | B10-D10 | RES-3 |  |
| DUKHCONP03Z1ARFF3345 |  | Fixing of Suspension systems | 20d | 2013-12-15 | 2014-01-07 | DUKHCONP03Z1ARFF3325 FF+7d, DUKHCONP03MKARFF3345, DUKHCONP03Z1ARFF3330 SS+7d, DUKHCONP03Z1ELFF4045 FF+5d, DUKHCONP03Z1ARFF3325 SS+7d, DUKHCONP03Z1ARFF3330 FF+7d, DUKHCONP03Z1ELFF4045 SS+5d | 0d |  | LABOR- SUBCONTRACTOR [344.25 h]; SUSPENSION QTY [765.01 Sqm]; FALSE CEILING SKILLED SK [612 h] | 14,696 | 36 | REM | P3P1IFFF36 | DUKHCON3PP1ARFF3345 | DUKHCONP03Z1ARFF3345 | DH | CON | P3 | Z1 | FIN | IF | FF | B10 | B10-D10 | RES-3 | SUS |
| DUKHCONP03Z1ARFF3335 |  | Slate Tile Flooring & Skirting | 15d | 2013-12-19 | 2014-01-05 | DUKHCONP03Z1ARFF3310 FF+13d, DUKHCONP03MKARFF3335, DUKHCONP03Z1ARFF3325 FF+5d, DUKHCONP03Z1ARFF3325 SS+13d, DUKHCONP03Z1ARFF3310 SS+13d | 10d |  | LABOR- SUBCONTRACTOR [486 h]; SUSPENSION QTY [1065 Sqm]; FALSE CEILING SKILLED SK [864 h]; SLATE TILE QTY [12 Sqm] | 2,801 | 30 |  | P3P1IFFF30 | DUKHCON3PP1ARFF3335 | DUKHCONP03Z1ARFF3335 | DH | CON | P3 | Z1 | FIN | IF | FF | B10 | B10-D10 | RES-3 |  |
| DUKHCONP03Z1ARFF3350 |  | Granite - Stair case flooring & Skirting | 20d | 2013-12-23 | 2014-01-14 | DUKHCONP03Z1ARFF3325 SS+13d, DUKHCONP03MKARFF3350, DUKHCONP03Z1ARFF3325 FF+13d | 2d |  | LABOR- SUBCONTRACTOR [54 h]; FALSE CEILING QTY [126 Sqm]; FALSE CEILING SKILLED SK [96 h] | 1,754 | 33 |  | P3P1IFFF33 | DUKHCON3PP1ARFF3350 | DUKHCONP03Z1ARFF3350 | DH | CON | P3 | Z1 | FIN | IF | FF | B10 | B10-D10 | RES-3 |  |
| DUKHCONP03Z1ARFF3360 |  | Gypsum board false ceiling | 25d | 2013-12-24 | 2014-01-21 | DUKHCONP03Z1ARFF3345 SS+7d, DUKHCONP03MKARFF3360, DUKHCONP03Z1ACFF4615 FF+7d, DUKHCONP03Z1ACFF4615 SS+7d, DUKHCONP03Z1ARFF3345 FF+7d | 0d |  | LABOR- SUBCONTRACTOR [312 h]; FALSE CEILING SKILLED SK [554 h]; FALSE CEILING QTY [692 Sqm] | 38,269 | 39 | REM | P3P1IFFF39 | DUKHCON3PP1ARFF3360 | DUKHCONP03Z1ARFF3360 | DH | CON | P3 | Z1 | FIN | IF | FF | B10 | B10-D10 | RES-3 | GYP |
| DUKHCONP03Z1ARFF3355 |  | Aluminum tile false ceiling | 20d | 2013-12-28 | 2014-01-19 | DUKHCONP03Z1ACFF4615 SS+7d, DUKHCONP03Z1ACFF4615 FF+7d, DUKHCONP03MKARFF3355, DUKHCONP03Z1ARFF3345 SS+10d, DUKHCONP03Z1ARFF3345 FF+10d | 2d | 0d | LABOR- SUBCONTRACTOR [37.5 h]; FALSE CEILING SKILLED SK [66.4 h]; FALSE CEILING QTY [83 Sqm] | 5,724 | 39 | REM | P3P1IFFF38 | DUKHCON3PP1ARFF3355 | DUKHCONP03Z1ARFF3355 | DH | CON | P3 | Z1 | FIN | IF | FF | B10 | B10-D10 | RES-3 | ALU |
| DUKHCONP03Z1ARFF3365 |  | Wooden door | 15d | 2014-01-08 | 2014-01-25 | DUKHCONP03Z1ARFF3350 SS+7d, DUKHCONP03Z1ARFF3355 SS+3d, DUKHCONP03Z1ARFF3335 FF+7d, DUKHCONP03Z1ARFF3350 FF+7d, DUKHCONP03Z1ARFF3360 SS+3d, DUKHCONP03Z1ARFF3360 FF+3d, DUKHCONP03MKARFF3365, DUKHCONP03Z1ARFF3335 SS+7d, DUKHCONP03Z1ARFF3355 FF+3d | 0d |  | LABOR- SUBCONTRACTOR [60 h]; WOODEN DOOR QTY [40 ea]; DOOR ERECTOR SK [160 h] | 119,092 | 42 | REM | P3P1IFFF42 | DUKHCON3PP1ARFF3365 | DUKHCONP03Z1ARFF3365 | DH | CON | P3 | Z1 | FIN | IF | FF | B10 | B10-D05 | RES-3 |  |
| DUKHCONP03Z1ARFF3370 |  | Aluminum Door | 20d | 2014-01-16 | 2014-02-08 | DUKHCONP03MKARFF3370, DUKHCONP03Z1ARFF3365 SS+7d, DUKHCONP03Z1ARFF3365 FF+5d | 0d |  | LABOR- SUBCONTRACTOR [18 h]; ALUMINIUM DOOR QTY [12 ea]; DOOR ERECTOR SK [48 h] | 31,779 | 45 | REM | P3P1IFFF45 | DUKHCON3PP1ARFF3370 | DUKHCONP03Z1ARFF3370 | DH | CON | P3 | Z1 | FIN | IF | FF | B10 | B10-D06 | RES-3 |  |
| DUKHCONP03Z1ARFF3380 |  | Aluminum windows | 20d | 2014-01-23 | 2014-02-16 | DUKHCONP03Z1ARFF3370 FF+6d, DUKHCONP03Z1ARFF3370 SS+6d, DUKHCONP03MKARFF3380 | 11d |  | LABOR- SUBCONTRACTOR [48 h]; ALUMINIUM WINDOWS QTY [48 ea]; WINDOW ERECTOR SK [128 h] | 37,155 | 48 | REM | P3P1IFFF48 | DUKHCON3PP1ARFF3380 | DUKHCONP03Z1ARFF3380 | DH | CON | P3 | Z1 | FIN | IF | FF | B10 | B10-D06 | RES-3 |  |
| DUKHCONP03Z1ARFF3375 |  | Carpentry & Joinery Works | 25d | 2014-01-25 | 2014-02-23 | DUKHCONP03Z1ARFF3370 SS+7d, DUKHCONP03MKARFF3375, DUKHCONP03Z1ARFF3370 FF+5d | 0d |  | LABOR- SUBCONTRACTOR [102 h]; S.S.BALUSTRADE QTY [88 lm]; HANDRAIL ERECTOR SKILLED [176 h]; CABINET QTY [24 ea] | 85,786 | 51 |  | P3P1IFFF51 | DUKHCON3PP1ARFF3375 | DUKHCONP03Z1ARFF3375 | DH | CON | P3 | Z1 | FIN | IF | FF | B10 | B10-D05 | RES-3 |  |
| DUKHCONP03Z1ARFF3385 |  | Handrail & Balustrade | 20d | 2014-02-05 | 2014-03-01 | DUKHCONP03Z1ARFF3350 SS+7d, DUKHCONP03Z1ARFF3350 FF+7d, DUKHCONP03Z1ARFF3375 SS+5d, DUKHCONP03MKARFF3385, DUKHCONP03Z1ARFF3375 FF+5d | 1d |  | HANDRAIL ERECTOR SKILLED [100 h]; LABOR- SUBCONTRACTOR [150 h]; S.S.BALUSTRADE QTY [10 lm] | 10,844 | 57 |  | P3P1IFFF57 | DUKHCON3PP1ARFF3385 | DUKHCONP03Z1ARFF3385 | DH | CON | P3 | Z1 | FIN | IF | FF | B10 | B10-D06 | RES-3 |  |
| DUKHCONP03Z1ARFF3390 |  | Installation of Granite Counter Top | 20d | 2014-02-08 | 2014-03-03 | DUKHCONP03Z1ARFF3375 FF+7d, DUKHCONP03MKARFF3390, DUKHCONP03Z1ARFF3375 SS+7d | 0d |  | GRANITE MASON SK [64 h]; LABOR- SUBCONTRACTOR [24 h]; GRANITE COUNTER TOP QTY [16 ea] | 15,506 | 54 | REM | P3P1IFFF54 | DUKHCON3PP1ARFF3390 | DUKHCONP03Z1ARFF3390 | DH | CON | P3 | Z1 | FIN | IF | FF | B10 | B10-D10 | RES-3 |  |
| DUKHCONP03Z1ARFF3395 |  | Final Painting | 25d | 2014-02-18 | 2014-03-18 | DUKHCONP03Z1ARFF3380 SS+10d, DUKHCONP03Z1ACFF4625 FF+10d, DUKHCONP03Z1ARFF3355 SS+10d, DUKHCONP03Z1ARFF3385 SS+9d, DUKHCONP03Z1ARFF3355 FF+10d, DUKHCONP03Z1ARFF3365 SS+8d, DUKHCONP03Z1ARFF3330 SS+10d, DUKHCONP03Z1ARFF3330 FF+10d, DUKHCONP03Z1ACFF4625 SS+10d, DUKHCONP03Z1ARFF3380 FF+10d, DUKHCONP03Z1ARFF3375 SS+8d, DUKHCONP03Z1ARFF3390 SS+8d, DUKHCONP03Z1ARFF3385 FF+10d, DUKHCONP03Z1ARFF3335 SS+8d, DUKHCONP03Z1ARFF3350 FF+8d, DUKHCONP03Z1ARFF3360 SS+10d, DUKHCONP03Z1ARFF3375 FF+8d, DUKHCONP03Z1ARFF3335 FF+8d, DUKHCONP03MKARFF3395, DUKHCONP03Z1ARFF3350 SS+8d, DUKHCONP03Z1ARFF3360 FF+10d, DUKHCONP03Z1ARFF3365 FF+8d, DUKHCONP03Z1ARFF3390 FF+8d | 0d |  | LABOR- SUBCONTRACTOR [663 h]; PAINTERS SK [2209 h] | 28,762 | 60 | REM | P3P1IFFF60 | DUKHCON3PP1ARFF3395 | DUKHCONP03Z1ARFF3395 | DH | CON | P3 | Z1 | FIN | IF | FF | B10 | B10-D11 | RES-3 | PNT |
|  | 20 | **ROOF** |  | 2013-10-16 | 2014-02-02 |  |  |  |  |  |  |  |  |  |  |  |  |  |  |  |  |  |  |  |  |  |
| DUKHCONP03Z1ARRF3600 |  | Block work | 20d | 2013-10-16 | 2013-11-10 | DUKHCONP03Z1STRF2055 SS+21d, DUKHCONP03MKARRF3600, DUKHCONP03Z1STRF2055 FF+21d | 67d | 0d | BLOCK MASON SK [208 h]; LABOR - CIVIL [117 h]; BLOCK QTY [104 Sqm] | 8,611 | 10 | REM | P3P1IFRF10 | DUKHCON3PP1ARRF3600 | DUKHCONP03Z1ARRF3600 | DH | CON | P3 | Z1 | FIN | IF | RF | B10 | B10-D03 | RES-3 |  |
| DUKHCONP03Z1ARRF3605 |  | Plastering work | 20d | 2013-10-27 | 2013-11-18 | DUKHCONP03MKARRF3605, DUKHCONP03Z1ARRF3600 SS+7d, DUKHCONP03Z1ARRF3600 FF+7d | 67d | 0d | PLASTER MASON SK [832 h]; LABOR - CIVIL [468 h]; PLASTER QTY [520 Sqm] | 6,760 | 20 | REM | P3P1IFRF20 | DUKHCON3PP1ARRF3605 | DUKHCONP03Z1ARRF3605 | DH | CON | P3 | Z1 | FIN | IF | RF | B10 | B10-D10 | RES-3 |  |
| DUKHCONP03Z1ARRF3610 |  | Flooring screed | 15d | 2013-11-10 | 2013-11-26 | DUKHCONP03Z1ARRF3605 SS+7d, DUKHCONP03Z1ARRF3605 FF+7d | 72d | 35d | SCREED MASON SK [56 h]; LABOR - CIVIL [21 h]; FLOORING SCREED QTY [69 Sqm] | 2,290 | 30 | REM | P3P1IFRF30 | DUKHCON3PP1ARRF3610 | DUKHCONP03Z1ARRF3610 | DH | CON | P3 | Z1 | FIN | IF | RF | B10 | B10-D10 | RES-3 |  |
| DUKHCONP03Z1ARRF3695 |  | Painting | 20d | 2013-12-30 | 2014-01-21 | DUKHCONP03Z1ARRF3610 SS+7d, DUKHCONP03Z1ARRF3610 FF+7d, DUKHCONP03MKARRF3695 | 37d | 0d | LABOR- SUBCONTRACTOR [132 h]; PAINT QTY [413 Sqm]; PAINTERS SK [328 h] | 4,134 | 40 |  | P3P1IFRF40 | DUKHCON3PP1ARRF3695 | DUKHCONP03Z1ARRF3695 | DH | CON | P3 | Z1 | FIN | IF | RF | B10 | B10-D11 | RES-3 |  |
| DUKHCONP03Z1ARRF3620 |  | Epoxy Painting | 15d | 2014-01-16 | 2014-02-02 | DUKHCONP03MKARRF3620, DUKHCONP03Z1ARRF3695 FF+10d, DUKHCONP03Z1ARRF3695 SS+10d | 37d |  | LABOR- SUBCONTRACTOR [4.5 h]; EPOXY QTY [22 Sqm]; EPOXY SK [12 h] | 1,568 | 50 | REM | P3P1IFRF50 | DUKHCON3PP1ARRF3620 | DUKHCONP03Z1ARRF3620 | DH | CON | P3 | Z1 | FIN | IF | RF | B10 | B10-D11 | RES-3 |  |

Notes:
- DUKHCONP03Z1ARFF3300: Expenses: P03-Block work 93385
- DUKHCONP03Z1ARFF3305: Expenses: P03-Finishes 22134
- DUKHCONP03Z1ARFF3310: Expenses: P03-Finishes 20612
- DUKHCONP03Z1ARFF3330: Expenses: P03-Painting and Decorating 12000
- DUKHCONP03Z1ARFF3315: Expenses: P03-Finishes 13870
- DUKHCONP03Z1ARFF3320: Expenses: P03-Finishes 32325
- DUKHCONP03Z1ARFF3325: Expenses: P03-Finishes 52284
- DUKHCONP03Z1ARFF3345: Expenses: P03-Finishes 14696
- DUKHCONP03Z1ARFF3335: Expenses: P03-Finishes 2801
- DUKHCONP03Z1ARFF3350: Expenses: P03-Finishes 1754
- DUKHCONP03Z1ARFF3360: Expenses: P03-Finishes 38269
- DUKHCONP03Z1ARFF3355: Expenses: P03-Finishes 5724
- DUKHCONP03Z1ARFF3365: Expenses: P03-Carpentry and Joinery 119092
- DUKHCONP03Z1ARFF3370: Expenses: P03-Metal work 31779
- DUKHCONP03Z1ARFF3380: Expenses: P03-Metal work 37155
- DUKHCONP03Z1ARFF3375: Expenses: P03-Carpentry and Joinery 85786
- DUKHCONP03Z1ARFF3385: Expenses: P03-Metal work 10844
- DUKHCONP03Z1ARFF3390: Expenses: P03-Finishes 15506
- DUKHCONP03Z1ARFF3395: Expenses: P03-Painting and Decorating 28762
- DUKHCONP03Z1ARRF3600: Expenses: P03-Block work 8611
- DUKHCONP03Z1ARRF3605: Expenses: P03-Finishes 6760
- DUKHCONP03Z1ARRF3610: Expenses: P03-Finishes 2290
- DUKHCONP03Z1ARRF3695: Expenses: P03-Painting and Decorating 4134
- DUKHCONP03Z1ARRF3620: Expenses: P03-Painting and Decorating 1568

| ID | WBS | Activity | Duration | Start | Finish | Predecessors | Total float | Free float | Resources | Cost | CODE | rem | P3 ACTID | P6 ID (old) | NP61D | PROJECT | PHASES | PACKAGE | PART | ELEMENTS | STEP | FLOORS | BILL NOS | BILL DIVISION | RES PACK |
| --- | --- | --- | --- | --- | --- | --- | --- | --- | --- | --- | --- | --- | --- | --- | --- | --- | --- | --- | --- | --- | --- | --- | --- | --- | --- |
|  | 15 | **EXTERNAL FINISHES** |  | 2013-10-24 | 2014-01-26 |  |  |  |  |  |  |  |  |  |  |  |  |  |  |  |  |  |  |  |  |
|  | 10 | **ROOF** |  | 2013-10-24 | 2013-12-31 |  |  |  |  |  |  |  |  |  |  |  |  |  |  |  |  |  |  |  |  |
| DUKHCONP03Z1ARRF3630 |  | Leveling Screed for Waterproofing | 25d | 2013-10-24 | 2013-11-21 | DUKHCONP03Z1STRF2065 SS+10d, DUKHCONP03Z1STRF2065 FF+10d, DUKHCONP03Z1STRF2060 FF+10d, DUKHCONP03Z1STRF2060 SS+10d, DUKHCONP03MKARRF3630 | 62d | 0d | SCREED MASON SK [313 h]; LABOR- SUBCONTRACTOR [176.25 h]; ROOF WP SCREED QTY [782 Sqm] | 31,136 | 10 | REM | P3P1EFRF10 | DUKHCON3PP1ARRF3630 | DUKHCONP03Z1ARRF3630 | DH | CON | P3 | Z1 | FIN | EF | RF | B10 | B10-D04 | RES-3 |
| DUKHCONP03Z1ARRF3635 |  | Laying of Waterproofing Membrane | 25d | 2013-10-30 | 2013-11-27 | DUKHPROGEN00PRDV3050, DUKHCONP03Z1ARRF3630 SS+3d, DUKHCONP03MKARRF3635, DUKHCONP03Z1ARRF3630 FF+3d | 60d | 0d | LABOR- SUBCONTRACTOR [371.25 h]; ROOF WP MEMBRANE QTY [1856 Sqm]; WATERPROOFING SPECIALIST SK [990 h] | 41,005 | 15 | REM | P3P1EFRF15 | DUKHCON3PP1ARRF3635 | DUKHCONP03Z1ARRF3635 | DH | CON | P3 | Z1 | FIN | EF | RF | B10 | B10-D04 | RES-3 |
| DUKHCONP03Z1ARRF3640 |  | Installation of Insulation & Protection | 25d | 2013-11-04 | 2013-12-02 | DUKHCONP03Z1ARRF3635 FF+4d, DUKHCONP03Z1ARRF3635 SS+4d, DUKHCONP03MKARRF3640 | 60d | 0d | LABOR- SUBCONTRACTOR [234.75 h]; ROOF WP INSULATION QTY [1564 Sqm]; WATERPROOFING SPECIALIST SK [626 h] | 22,966 | 20 | REM | P3P1EFRF20 | DUKHCON3PP1ARRF3640 | DUKHCONP03Z1ARRF3640 | DH | CON | P3 | Z1 | FIN | EF | RF | B10 | B10-D04 | RES-3 |
| DUKHCONP03Z1ARRF3645 |  | Lime Stone Chips & Paving slab Installation | 25d | 2013-11-09 | 2013-12-07 | DUKHCONP03Z1ARRF3640 FF+4d, DUKHCONP03Z1ARRF3640 SS+4d, DUKHCONP03MKARRF3645 | 60d | 0d | TILE MASON SK [64 h]; LABOR- SUBCONTRACTOR [135 h]; LIME STONE QTY [158 Sqm]; PRECAST PAVING SLAB QTY [740 Sqm]; PRE CAST CONCRETE SK [296 h] | 56,332 | 25 | REM | P3P1EFRF25 | DUKHCON3PP1ARRF3645 | DUKHCONP03Z1ARRF3645 | DH | CON | P3 | Z1 | FIN | EF | RF | B10 | B10-D04 | RES-3 |
| DUKHCONP03Z1ARRF3650 |  | Install. of Gal. Frame & Aluminum Slat Screen | 25d | 2013-11-17 | 2013-12-15 | DUKHCONP03MKARRF3650, DUKHCONP03Z1ARRF3645 SS+7d, DUKHCONP03Z1ARRF3645 FF+7d | 60d | 0d | LABOR- SUBCONTRACTOR [252 h]; ALUMINIUM SCREEN QTY [126 Sqm]; DOOR ERECTOR SK [336 h] | 35,633 | 35 | REM | P3P1EFRF35 | DUKHCON3PP1ARRF3650 | DUKHCONP03Z1ARRF3650 | DH | CON | P3 | Z1 | FIN | EF | RF | B10 | B10-D06 | RES-3 |
| DUKHCONP03Z1ARRF3655 |  | Installation of Pumps Protection cabinets | 20d | 2013-12-02 | 2013-12-25 | DUKHCONP03Z1ARRF3645 FF+7d, DUKHCONP03Z1ARRF3650 SS+8d, DUKHCONP03Z1ARRF3650 FF+8d, DUKHCONP03MKARRF3655, DUKHCONP03Z1ARRF3645 SS+7d | 60d | 0d | LABOR- SUBCONTRACTOR [42 h]; CABINET QTY [14 ea]; JOINERY WORK SK [112 h] | 6,650 | 30 | REM | P3P1EFRF30 | DUKHCON3PP1ARRF3655 | DUKHCONP03Z1ARRF3655 | DH | CON | P3 | Z1 | FIN | EF | RF | B10 | B10-D04 | RES-3 |
| DUKHCONP03Z1ARRF3660 |  | Installation of Access Ladder | 15d | 2013-12-14 | 2013-12-31 | DUKHCONP03MKARRF3660, DUKHCONP03Z1ARRF3655 FF+5d, DUKHCONP03Z1ARRF3655 SS+5d | 65d |  | LABOR- SUBCONTRACTOR [36 h]; LADDER QTY [12 ea]; LADDER ERECTOR SK [96 h] | 12,798 | 40 | REM | P3P1EFRF40 | DUKHCON3PP1ARRF3660 | DUKHCONP03Z1ARRF3660 | DH | CON | P3 | Z1 | FIN | EF | RF | B10 | B10-D06 | RES-3 |
|  | 15 | **ELEVATION** |  | 2013-11-20 | 2014-01-26 |  |  |  |  |  |  |  |  |  |  |  |  |  |  |  |  |  |  |  |  |
| DUKHCONP03Z1AREL3665 |  | External Plastering | 25d | 2013-11-20 | 2013-12-19 | DUKHCONP03Z1STRF2065 SS+7d, DUKHCONP03Z1ARFF3305 SS+7d, DUKHCONP03MKAREL3665, DUKHCONP03Z1STRF2065 FF+7d, DUKHCONP03Z1ARFF3305 FF+7d, DUKHCONP03Z1ARRF3605 SS+7d | 53d | 0d | PLASTER MASON SK [3908 h]; LABOR - CIVIL [2198.25 h]; EXTERNAL PLASTER QTY [1954 Sqm] | 47,780 | 10 | REM | P3P1EFEL10 | DUKHCON3PP1AREL3665 | DUKHCONP03Z1AREL3665 | DH | CON | P3 | Z1 | FIN | EF | EL | B10 | B10-D10 | RES-3 |
| DUKHCONP03Z1AREL3675 |  | GRC Panel Works | 20d | 2013-12-08 | 2013-12-31 | DUKHPROGEN00PRDV3390, DUKHCONP03Z1AREL3665 FF+10d, DUKHCONP03Z1AREL3665 SS+10d, DUKHCONP03MKAREL3675 | 55d | 5d | LABOR- SUBCONTRACTOR [150 h]; GRC SK [400 h] | 13,370 | 15 |  | P3P1EFEL18 | DUKHCON3PP1AREL3675 | DUKHCONP03Z1AREL3675 | DH | CON | P3 | Z1 | FIN | EF | EL | B10 | B10-D10 | RES-3 |
| DUKHCONP03Z1AREL3680 |  | External Painting | 20d | 2014-01-04 | 2014-01-26 | DUKHCONP03Z1ARRF3695 FF+4d, DUKHCONP03MKAREL3680, DUKHCONP03Z1ARRF3695 SS+4d, DUKHCONP03Z1AREL3675 SS+10d, DUKHCONP03Z1AREL3675 FF+10d | 43d | 0d | LABOR- SUBCONTRACTOR [810 h]; PAINT QTY [2687 Sqm]; PAINTERS SK [2160 h] | 70,673 | 20 |  | P3P1EFEL20 | DUKHCON3PP1AREL3680 | DUKHCONP03Z1AREL3680 | DH | CON | P3 | Z1 | FIN | EF | EL | B10 | B10-D11 | RES-3 |
|  | 20 | **MEP WORKS** |  | 2013-05-08 | 2014-03-16 |  |  |  |  |  |  |  |  |  |  |  |  |  |  |  |  |  |  |  |  |
|  | 10 | **ELECTRICAL WORKS** |  | 2013-08-22 | 2014-03-16 |  |  |  |  |  |  |  |  |  |  |  |  |  |  |  |  |  |  |  |  |
|  | 10 | **GROUND FLOOR** |  | 2013-08-22 | 2014-01-01 |  |  |  |  |  |  |  |  |  |  |  |  |  |  |  |  |  |  |  |  |
| DUKHCONP03Z1ELGF4000 |  | Fixing of wall conduits & switch socket boxes | 25d | 2013-08-22 | 2013-09-19 | DUKHCONP03MKELGF4000, DUKHCONP03Z1ARGF3000 SS+5d, DUKHCONP03Z1ARGF3000 FF+5d | 44d | 2d | LABOR- SUBCONTRACTOR [150 h]; ELECTRICIANS SK [862.4 h]; SOCKET BOXES QTY [591 ea]; CODUITS QTY [165 lm] | 19,175 | 10 |  | P3P1EWGF10 | DUKHCON3PP1ELGF4000 | DUKHCONP03Z1ELGF4000 | DH | CON | P3 | Z1 | MEP | EW | GF | B10 | B10-D09 | RES-3 |
| DUKHCONP03Z1ELGF4005 |  | Cable tray & trunking installation | 20d | 2013-09-05 | 2013-09-28 | DUKHCONP03MKELGF4005, DUKHCONP03Z1ELGF4000 SS+5d, DUKHCONP03Z1ELGF4000 FF+5d | 60d | 0d | LABOR- SUBCONTRACTOR [366 h]; ELECTRICIANS SK [1321.6 h]; CABLE TRAY QTY [234 lm] | 13,184 | 15 |  | P3P1EWGF15 | DUKHCON3PP1ELGF4005 | DUKHCONP03Z1ELGF4005 | DH | CON | P3 | Z1 | MEP | EW | GF | B10 | B10-D09 | RES-3 |
| DUKHCONP03Z1ELGF4010 |  | Installation of wiring & Main Cabling | 25d | 2013-09-14 | 2013-10-12 | DUKHCONP03Z1ELGF4005 SS+7d, DUKHCONP03Z1ELGF4005 FF+7d, DUKHCONP03MKELGF4010 | 60d | 25d | LABOR- SUBCONTRACTOR [132 h]; ELECTRICIANS SK [459.2 h]; CABLE QTY [413 lm] | 70,139 | 20 |  | P3P1EWGF20 | DUKHCON3PP1ELGF4010 | DUKHCONP03Z1ELGF4010 | DH | CON | P3 | Z1 | MEP | EW | GF | B10 | B10-D09 | RES-3 |
| DUKHCONP03Z1ELGF4015 |  | Install. of CAMS & Fire Fighting Accessories | 25d | 2013-11-16 | 2013-12-14 | DUKHCONP03Z1ARGF3060 SS+7d, DUKHCONP03Z1ARGF3055 FF+7d, DUKHCONP03MKELGF4015, DUKHCONP03Z1ARGF3055 SS+7d, DUKHCONP03Z1ARGF3060 FF+7d | 49d | 0d | LABOR- SUBCONTRACTOR [480 h]; MECHANICALS SK [864 h]; SMOKE DETECTOR POINTS QTY [138 ea]; FIRE EXTINGUISHER QTY [19 ea] | 42,701 | 35 |  | P3P1EWGF35 | DUKHCON3PP1ELGF4015 | DUKHCONP03Z1ELGF4015 | DH | CON | P3 | Z1 | MEP | EW | GF | B10 | B10-D09 | RES-3 |
| DUKHCONP03Z1ELGF4020 |  | Installation of DBS,MCCB Accessories. | 20d | 2013-11-21 | 2013-12-14 | DUKHCONP03MKELGF4020, DUKHCONP03Z1ELGF4010 SS+5d, DUKHCONP03Z1ARGF3060 FF+7d, DUKHCONP03Z1ELGF4010 FF+5d, DUKHCONP03Z1ARGF3055 SS+7d, DUKHCONP03Z1ARGF3060 SS+7d, DUKHCONP03Z1ARGF3055 FF+7d | 36d | 0d | LABOR- SUBCONTRACTOR [48 h]; ELECTRICIANS SK [156.8 h]; MCCB QTY [14 ea]; DB QTY [11 ea] | 54,814 | 25 |  | P3P1EWGF25 | DUKHCON3PP1ELGF4020 | DUKHCONP03Z1ELGF4020 | DH | CON | P3 | Z1 | MEP | EW | GF | B10 | B10-D09 | RES-3 |
| DUKHCONP03Z1ELGF4025 |  | Installation of Lighting fixtures & Accessories | 25d | 2013-12-03 | 2014-01-01 | DUKHCONP03Z1ELGF4020 FF+10d, DUKHCONP03Z1ARGF3055 SS+10d, DUKHCONP03MKELGF4025, DUKHCONP03Z1ARGF3055 FF+10d, DUKHCONP03Z1ARGF3060 FF+10d, DUKHCONP03Z1ELGF4020 SS+10d, DUKHCONP03Z1ARGF3060 SS+10d | 37d | 0d | LABOR- SUBCONTRACTOR [828 h]; ELECTRICIANS SK [1545.6 h]; LIGHTS QTY [682 ea] | 79,193 | 30 |  | P3P1EWGF30 | DUKHCON3PP1ELGF4025 | DUKHCONP03Z1ELGF4025 | DH | CON | P3 | Z1 | MEP | EW | GF | B10 | B10-D09 | RES-3 |
| DUKHCONP03Z1ELGF4030 |  | Installation of Telephone System | 20d | 2013-12-03 | 2013-12-26 | DUKHCONP03Z1ELGF4020 SS+10d, DUKHCONP03Z1ELGF4020 FF+10d, DUKHCONP03Z1ARGF3060 FF+5d, DUKHCONP03MKELGF4030, DUKHCONP03Z1ARGF3060 SS+5d | 36d | 5d | TELEPHONE SOCKETS QTY [39 ea]; LABOR- SUBCONTRACTOR [66 h]; ELECTRICIANS SK [436.8 h] | 16,904 | 40 |  | P3P1EWGF40 | DUKHCON3PP1ELGF4030 | DUKHCONP03Z1ELGF4030 | DH | CON | P3 | Z1 | MEP | EW | GF | B10 | B10-D09 | RES-3 |
|  | 15 | **FIRST FLOORS** |  | 2013-10-05 | 2014-02-19 |  |  |  |  |  |  |  |  |  |  |  |  |  |  |  |  |  |  |  |  |
| DUKHCONP03Z1ELFF4035 |  | Fixing of wall conduits & switch socket boxes | 25d | 2013-10-05 | 2013-11-04 | DUKHCONP03Z1ARFF3300 FF+5d, DUKHCONP03MKELFF4035, DUKHCONP03Z1ARFF3300 SS+5d | 10d | 2d | LABOR- SUBCONTRACTOR [150 h]; ELECTRICIANS SK [862.4 h]; SOCKET BOXES QTY [591 ea]; CODUITS QTY [165 lm] | 18,778 | 10 |  | P3P1EWFF10 | DUKHCON3PP1ELFF4035 | DUKHCONP03Z1ELFF4035 | DH | CON | P3 | Z1 | MEP | EW | FF | B10 | B10-D09 | RES-3 |
| DUKHCONP03Z1ELFF4040 |  | Cable tray & trunking installation | 20d | 2013-10-21 | 2013-11-12 | DUKHCONP03Z1ELFF4035 SS+5d, DUKHCONP03MKELFF4040, DUKHCONP03Z1ELFF4035 FF+5d | 30d | 0d | LABOR- SUBCONTRACTOR [366 h]; ELECTRICIANS SK [1321.6 h]; CABLE TRAY QTY [234 lm] | 13,180 | 15 |  | P3P1EWFF15 | DUKHCON3PP1ELFF4040 | DUKHCONP03Z1ELFF4040 | DH | CON | P3 | Z1 | MEP | EW | FF | B10 | B10-D09 | RES-3 |
| DUKHCONP03Z1ELFF4045 |  | Installation of wiring & Main Cabling | 25d | 2013-10-29 | 2013-11-26 | DUKHCONP03MKELFF4045, DUKHCONP03Z1ELFF4040 FF+7d, DUKHCONP03Z1ELFF4040 SS+7d | 30d | 0d | LABOR- SUBCONTRACTOR [132 h]; ELECTRICIANS SK [459.2 h]; CABLE QTY [407 lm] | 68,537 | 20 |  | P3P1EWFF20 | DUKHCON3PP1ELFF4045 | DUKHCONP03Z1ELFF4045 | DH | CON | P3 | Z1 | MEP | EW | FF | B10 | B10-D09 | RES-3 |
| DUKHCONP03Z1ELFF4055 |  | Install. of CAMS & Fire Fighting Accessories | 25d | 2014-01-05 | 2014-02-02 | DUKHCONP03Z1ELGF4015 FF+5d, DUKHCONP03Z1ARFF3355 FF+7d, DUKHCONP03Z1ELGF4015 SS+5d, DUKHCONP03Z1ARFF3360 SS+7d, DUKHCONP03Z1ARFF3360 FF+7d, DUKHCONP03MKELFF4055, DUKHCONP03Z1ARFF3355 SS+7d | 12d | 0d | LABOR- SUBCONTRACTOR [528 h]; MECHANICALS SK [950.4 h]; SMOKE DETECTOR POINTS QTY [134.75 ea]; FIRE EXTINGUISHER QTY [38.5 ea] | 42,701 | 35 |  | P3P1EWFF35 | DUKHCON3PP1ELFF4055 | DUKHCONP03Z1ELFF4055 | DH | CON | P3 | Z1 | MEP | EW | FF | B10 | B10-D09 | RES-3 |
| DUKHCONP03Z1ELFF4050 |  | Installation of Telephone System | 25d | 2014-01-06 | 2014-02-03 | DUKHCONP03Z1ELGF4030 SS+10d, DUKHCONP03Z1ARFF3355 SS+5d, DUKHCONP03Z1ARFF3360 FF+5d, DUKHCONP03Z1ARFF3360 SS+5d, DUKHCONP03MKELFF4050, DUKHCONP03Z1ELGF4030 FF+10d, DUKHCONP03Z1ARFF3355 FF+5d, DUKHCONP03Z1MSEX5010 FF | 18d | 16d | LABOR- SUBCONTRACTOR [66 h]; ELECTRICIANS SK [431.2 h]; TELEPHONE SOCKETS QTY [38.5 ea] | 16,498 | 40 |  | P3P1EWFF40 | DUKHCON3PP1ELFF4050 | DUKHCONP03Z1ELFF4050 | DH | CON | P3 | Z1 | MEP | EW | FF | B10 | B10-D09 | RES-3 |
| DUKHCONP03Z1ELFF4060 |  | Installation of DBS,MCCB Accessories. | 20d | 2014-01-08 | 2014-01-30 | DUKHCONP03Z1ARFF3360 FF+8d, DUKHCONP03Z1ELFF4045 FF+5d, DUKHCONP03Z1ARFF3360 SS+8d, DUKHCONP03Z1ELFF4045 SS+5d, DUKHCONP03Z1ARFF3355 SS+8d, DUKHCONP03MKELFF4060, DUKHCONP03Z1ARFF3355 FF+8d | 1d | 0d | LABOR- SUBCONTRACTOR [48 h]; ELECTRICIANS SK [123.2 h]; MCCB QTY [14 ea]; DB QTY [8 ea] | 6,151 | 25 |  | P3P1EWFF25 | DUKHCON3PP1ELFF4060 | DUKHCONP03Z1ELFF4060 | DH | CON | P3 | Z1 | MEP | EW | FF | B10 | B10-D09 | RES-3 |
| DUKHCONP03Z1ELFF4065 |  | Installation of Lighting fixtures & Accessories | 25d | 2014-01-21 | 2014-02-19 | DUKHCONP03MKELFF4065, DUKHCONP03Z1ELFF4060 SS+11d, DUKHCONP03Z1ARFF3360 FF+10d, DUKHCONP03Z1ELGF4025 SS+5d, DUKHCONP03Z1ELFF4060 FF+11d, DUKHCONP03Z1ARFF3360 SS+10d, DUKHCONP03Z1ARFF3355 FF+10d, DUKHCONP03Z1ELGF4025 FF+5d, DUKHCONP03Z1ARFF3355 SS+10d | 1d | 0d | LABOR- SUBCONTRACTOR [810 h]; ELECTRICIANS SK [1512 h]; LIGHTS QTY [679.25 ea] | 79,193 | 30 |  | P3P1EWFF30 | DUKHCON3PP1ELFF4065 | DUKHCONP03Z1ELFF4065 | DH | CON | P3 | Z1 | MEP | EW | FF | B10 | B10-D09 | RES-3 |

Notes:
- DUKHCONP03Z1ARRF3630: Expenses: P03-Roofing 31136
- DUKHCONP03Z1ARRF3635: Expenses: P03-Roofing 41005
- DUKHCONP03Z1ARRF3640: Expenses: P03-Roofing 22966
- DUKHCONP03Z1ARRF3645: Expenses: P03-Roofing 56332
- DUKHCONP03Z1ARRF3650: Expenses: P03-Metal work 35633
- DUKHCONP03Z1ARRF3655: Expenses: P03-Roofing 6650
- DUKHCONP03Z1ARRF3660: Expenses: P03-Metal work 12798
- DUKHCONP03Z1AREL3665: Expenses: P03-Finishes 47780
- DUKHCONP03Z1AREL3675: Expenses: P03-Finishes 13370
- DUKHCONP03Z1AREL3680: Expenses: P03-Painting and Decorating 70673
- DUKHCONP03Z1ELGF4000: Expenses: P03-Electrical Installations 19175
- DUKHCONP03Z1ELGF4005: Expenses: P03-Electrical Installations 13184
- DUKHCONP03Z1ELGF4010: Expenses: P03-Electrical Installations 70139
- DUKHCONP03Z1ELGF4015: Expenses: P03-Electrical Installations 42701
- DUKHCONP03Z1ELGF4020: Expenses: P03-Electrical Installations 54814
- DUKHCONP03Z1ELGF4025: Expenses: P03-Electrical Installations 79193
- DUKHCONP03Z1ELGF4030: Expenses: P03-Electrical Installations 16904
- DUKHCONP03Z1ELFF4035: Expenses: P03-Electrical Installations 18778
- DUKHCONP03Z1ELFF4040: Expenses: P03-Electrical Installations 13180
- DUKHCONP03Z1ELFF4045: Expenses: P03-Electrical Installations 68537
- DUKHCONP03Z1ELFF4055: Expenses: P03-Electrical Installations 42701
- DUKHCONP03Z1ELFF4050: Expenses: P03-Electrical Installations 16498
- DUKHCONP03Z1ELFF4060: Expenses: P03-Electrical Installations 6151
- DUKHCONP03Z1ELFF4065: Expenses: P03-Electrical Installations 79193

| ID | WBS | Activity | Duration | Start | Finish | Predecessors | Total float | Free float | Resources | Cost | CODE | P3 ACTID | P6 ID (old) | NP61D | PROJECT | PHASES | PACKAGE | PART | ELEMENTS | STEP | FLOORS | BILL NOS | BILL DIVISION | RES PACK |
| --- | --- | --- | --- | --- | --- | --- | --- | --- | --- | --- | --- | --- | --- | --- | --- | --- | --- | --- | --- | --- | --- | --- | --- | --- |
|  | 20 | **ROOF** |  | 2014-02-10 | 2014-03-16 |  |  |  |  |  |  |  |  |  |  |  |  |  |  |  |  |  |  |  |
| DUKHCONP03Z1ELRF4070 |  | Installation of Isolator | 18d | 2014-02-10 | 2014-03-03 | DUKHCONP03Z1ELFF4045 SS+10d, DUKHCONP03Z1ELFF4050 SS+5d, DUKHCONP03Z1ARRF3645 SS+7d, DUKHCONP03Z1ELFF4065 SS+10d, DUKHCONP03Z1ARRF3645 FF+7d, DUKHCONP03MKELRF4070, DUKHCONP03Z1ELFF4065 FF+10d, DUKHCONP03Z1ELFF4045 FF+10d, DUKHCONP03Z1ELFF4050 FF+7d | 2d | 0d | LABOR- SUBCONTRACTOR [99 h]; ELECTRICIANS SK [184.8 h]; ISOLATOR QTY [33 ea] | 27,597 | 10 | P3P1EWRF10 | DUKHCON3PP1ELRF4070 | DUKHCONP03Z1ELRF4070 | DH | CON | P3 | Z1 | MEP | EW | RF | B10 | B10-D09 | RES-3 |
| DUKHCONP03Z1ELRF4075 |  | Installation of TV Dish Antenna | 23d | 2014-02-18 | 2014-03-16 | DUKHCONP03Z1ELRF4070 FF+10d, DUKHCONP03MKELRF4075, DUKHCONP03Z1ELRF4070 SS+6d | 2d |  | LABOR- SUBCONTRACTOR [1221 h]; ELECTRICIANS SK [3110.8 h]; CONTROL BOX QTY [148.5 ea]; SWITCHING BOX QTY [129.25 ea] | 20,228 | 15 | P3P1EWRF15 | DUKHCON3PP1ELRF4075 | DUKHCONP03Z1ELRF4075 | DH | CON | P3 | Z1 | MEP | EW | RF | B10 | B10-D09 | RES-3 |
|  | 15 | **PLUMBING, DRAINAGE & FIRE FIGHTING WORKS** |  | 2013-05-08 | 2014-03-02 |  |  |  |  |  |  |  |  |  |  |  |  |  |  |  |  |  |  |  |
|  | 10 | **GROUND FLOOR** |  | 2013-05-08 | 2014-01-01 |  |  |  |  |  |  |  |  |  |  |  |  |  |  |  |  |  |  |  |
| DUKHCONP03Z1PLUG4300 |  | Drainage / Storm Pipes in Grade Slab | 20d | 2013-05-08 | 2013-05-30 | DUKHCONP03Z1STUG1040 FF+10d, DUKHPROGEN00PRDV3060, DUKHPROGEN00PRDV3070, DUKHCONP03Z1STUG1040 SS+10d | 0d |  | LABOR- SUBCONTRACTOR [36 h]; MECHANICALS SK [129.6 h]; DRAINAGE PIPES QTY [234 lm] | 14,418 | 10 | P3P1PLUG10 | DUKHCON3PP1PLUG4300 | DUKHCONP03Z1PLUG4300 | DH | CON | P3 | Z1 | ST | SB | UG | B10 | B10-D07 | RES-3 |
| DUKHCONP03Z1PLGF4305 |  | Installation of Plumbing pipes & testing | 18d | 2013-09-02 | 2013-09-22 | DUKHCONP03Z1ARGF3000 SS+7d, DUKHCONP03Z1ARGF3000 FF+7d, DUKHCONP03MKPLGF4305 | 35d | 0d | LABOR- SUBCONTRACTOR [544.5 h]; MECHANICALS SK [1960.2 h]; PLUMB PIPES QTY [1820.5 lm] | 56,510 | 10 | P3P1PLGF10 | DUKHCON3PP1PLGF4305 | DUKHCONP03Z1PLGF4305 | DH | CON | P3 | Z1 | MEP | PL | GF | B10 | B10-D07 | RES-3 |
| DUKHCONP03Z1PLGF4310 |  | Installation of Drainage pipes &testing | 18d | 2013-09-02 | 2013-09-22 | DUKHCONP03MKPLGF4310, DUKHCONP03Z1ARGF3000 FF+7d, DUKHCONP03Z1ARGF3000 SS+7d, DUKHCONP03Z1PLGF4305 SS, DUKHCONP03Z1PLGF4305 FF | 56d | 21d | LABOR- SUBCONTRACTOR [49.5 h]; MECHANICALS SK [148.5 h]; DRAINAGE PIPES QTY [297 lm] | 1,274 | 15 | P3P1PLGF15 | DUKHCON3PP1PLGF4310 | DUKHCONP03Z1PLGF4310 | DH | CON | P3 | Z1 | MEP | PL | GF | B10 | B10-D07 | RES-3 |
| DUKHCONP03Z1PLGF4315 |  | Sanitary Fittings & Accessories | 20d | 2013-12-03 | 2013-12-26 | DUKHCONP03MKPLGF4315, DUKHCONP03Z1ARGF3065 SS+5d, DUKHCONP03Z1ARGF3065 FF+5d, DUKHCONP03Z1PLGF4310 FF+5d, DUKHCONP03Z1PLGF4310 SS+5d | 64d | 0d | LABOR- SUBCONTRACTOR [115.5 h]; MECHANICALS SK [207.9 h]; SANITARY ACC QTY [198 ea] | 61,341 | 20 | P3P1PLGF20 | DUKHCON3PP1PLGF4315 | DUKHCONP03Z1PLGF4315 | DH | CON | P3 | Z1 | MEP | PL | GF | B10 | B10-D07 | RES-3 |
| DUKHCONP03Z1PLGF4320 |  | Installation of Water Heater | 15d | 2013-12-15 | 2014-01-01 | DUKHCONP03Z1PLGF4315 SS+5d, DUKHCONP03Z1ARGF3060 FF+5d, DUKHCONP03MKPLGF4320, DUKHCONP03Z1ARGF3060 SS+5d, DUKHCONP03Z1PLGF4315 FF+5d | 64d | 10d | LABOR- SUBCONTRACTOR [16.5 h]; MECHANICALS SK [29.7 h]; WATER HEATER QTY [5.5 ea] | 703 | 25 | P3P1PLGF25 | DUKHCON3PP1PLGF4320 | DUKHCONP03Z1PLGF4320 | DH | CON | P3 | Z1 | MEP | PL | GF | B10 | B10-D07 | RES-3 |
|  | 15 | **FIRST FLOORS** |  | 2013-10-15 | 2014-02-12 |  |  |  |  |  |  |  |  |  |  |  |  |  |  |  |  |  |  |  |
| DUKHCONP03Z1PLFF4325 |  | Installation of Plumbing pipes & testing | 18d | 2013-10-15 | 2013-11-06 | DUKHCONP03MKPLFF4325, DUKHCONP03Z1ARFF3300 FF+8d, DUKHCONP03Z1ARFF3300 SS+8d | 0d |  | LABOR- SUBCONTRACTOR [544.5 h]; MECHANICALS SK [1960.2 h]; PLUMB PIPES QTY [1820.5 lm] | 52,315 | 10 | P3P1PLFF10 | DUKHCON3PP1PLFF4325 | DUKHCONP03Z1PLFF4325 | DH | CON | P3 | Z1 | MEP | PL | FF | B10 | B10-D07 | RES-3 |
| DUKHCONP03Z1PLFF4330 |  | Installation of Drainage pipes & testing | 18d | 2013-10-15 | 2013-11-06 | DUKHCONP03Z1ARFF3300 SS+7d, DUKHCONP03Z1ARFF3300 FF+7d, DUKHCONP03MKPLFF4330, DUKHCONP03Z1PLFF4325 FF, DUKHCONP03Z1PLFF4325 SS | 25d | 6d | LABOR- SUBCONTRACTOR [49.5 h]; MECHANICALS SK [148.5 h]; DRAINAGE PIPES QTY [297 lm] | 1,093 | 15 | P3P1PLFF15 | DUKHCON3PP1PLFF4330 | DUKHCONP03Z1PLFF4330 | DH | CON | P3 | Z1 | MEP | PL | FF | B10 | B10-D07 | RES-3 |
| DUKHCONP03Z1PLFF4335 |  | Sanitary Fittings & Accessories | 20d | 2014-01-14 | 2014-02-05 | DUKHCONP03MKPLFF4335, DUKHCONP03Z1PLFF4330 FF+5d, DUKHCONP03Z1ARFF3365 SS+5d, DUKHCONP03Z1ARFF3365 FF+5d, DUKHCONP03Z1PLFF4330 SS+5d | 14d | 0d | MECHANICALS SK [207.9 h]; SANITARY ACC QTY [198 ea]; LABOR- SUBCONTRACTOR [115.5 h] | 61,341 | 20 | P3P1PLFF20 | DUKHCON3PP1PLFF4335 | DUKHCONP03Z1PLFF4335 | DH | CON | P3 | Z1 | MEP | PL | FF | B10 | B10-D07 | RES-3 |
| DUKHCONP03Z1PLFF4340 |  | Installation of Water Heater | 15d | 2014-01-26 | 2014-02-12 | DUKHCONP03MKPLFF4340, DUKHCONP03Z1ARFF3355 SS+5d, DUKHCONP03Z1ARFF3360 SS+5d, DUKHCONP03Z1PLFF4335 FF+5d, DUKHCONP03Z1ARFF3355 FF+5d, DUKHCONP03Z1PLFF4335 SS+5d, DUKHCONP03Z1ARFF3360 FF+5d | 14d | 0d | LABOR- SUBCONTRACTOR [16.5 h]; MECHANICALS SK [29.7 h]; WATER HEATER QTY [5.5 ea] | 703 | 25 | P3P1PLFF25 | DUKHCON3PP1PLFF4340 | DUKHCONP03Z1PLFF4340 | DH | CON | P3 | Z1 | MEP | PL | FF | B10 | B10-D07 | RES-3 |
|  | 20 | **ROOF** |  | 2013-11-14 | 2014-03-02 |  |  |  |  |  |  |  |  |  |  |  |  |  |  |  |  |  |  |  |
| DUKHCONP03Z1PLRF4345 |  | Installation of Plumbing pipes & fittings | 15d | 2013-11-14 | 2013-12-01 | DUKHCONP03MKPLRF4345, DUKHCONP03Z1ARRF3605 SS+7d, DUKHCONP03Z1ARRF3605 FF+7d | 67d | 14d | LABOR- SUBCONTRACTOR [330 h]; MECHANICALS SK [1158.3 h]; PLUMB PIPES QTY [1058.75 lm] | 8,249 | 10 | P3P1PLRF10 | DUKHCON3PP1PLRF4345 | DUKHCONP03Z1PLRF4345 | DH | CON | P3 | Z1 | MEP | PL | RF | B10 | B10-D07 | RES-3 |
| DUKHCONP03Z1PLRF4350 |  | Installation of Rain water Pipes | 15d | 2013-12-10 | 2013-12-28 | DUKHCONP03Z1PLFF4330 FF+5d, DUKHCONP03Z1PLRF4345 SS+8d, DUKHCONP03Z1PLRF4345 FF+8d, DUKHCONP03MKPLRF4350, DUKHCONP03Z1ARRF3645 FF+5d, DUKHCONP03Z1AREL3665 SS+7d, DUKHCONP03Z1PLFF4330 SS+5d, DUKHCONP03Z1ARRF3645 SS+5d, DUKHCONP03Z1AREL3665 FF+7d | 53d | 10d | LABOR- SUBCONTRACTOR [16.5 h]; MECHANICALS SK [59.4 h]; DRAINAGE PIPES QTY [96 lm] | 59,067 | 15 | P3P1PLRF15 | DUKHCON3PP1PLRF4350 | DUKHCONP03Z1PLRF4350 | DH | CON | P3 | Z1 | MEP | PL | RF | B10 | B10-D07 | RES-3 |
| DUKHCONP03Z1PLRF4355 |  | Roof Water Tank Installation & Connections | 25d | 2014-02-01 | 2014-03-02 | DUKHCONP03Z1PLRF4345 FF+8d, DUKHCONP03Z1PLRF4350 FF+5d, DUKHCONP03Z1ARRF3655 FF+5d, DUKHCONP03MKPLRF4355, DUKHCONP03Z1PLRF4345 SS+8d, DUKHCONP03Z1PLFF4340 SS+5d, DUKHCONP03Z1ARRF3655 SS+5d, DUKHCONP03Z1PLRF4350 SS+5d, DUKHCONP03Z1PLFF4340 FF+5d | 14d | 0d | LABOR- SUBCONTRACTOR [36 h]; MECHANICALS SK [64.8 h]; WATER TANK QTY [6 ea] | 586,638 | 20 | P3P1PLRF20 | DUKHCON3PP1PLRF4355 | DUKHCONP03Z1PLRF4355 | DH | CON | P3 | Z1 | MEP | PL | RF | B10 | B10-D07 | RES-3 |
|  | 20 | **AC WORKS** |  | 2013-09-22 | 2014-03-02 |  |  |  |  |  |  |  |  |  |  |  |  |  |  |  |  |  |  |  |
|  | 10 | **GROUND FLOOR** |  | 2013-09-22 | 2013-12-30 |  |  |  |  |  |  |  |  |  |  |  |  |  |  |  |  |  |  |  |
| DUKHCONP03Z1ACGF4600 |  | Installation AC Pipes | 20d | 2013-09-22 | 2013-10-14 | DUKHCONP03Z1ARGF3005 SS+7d, DUKHCONP03Z1ARGF3005 FF+7d, DUKHCONP03MKACGF4600 | 66d | 5d | LABOR- SUBCONTRACTOR [66 h]; AC TECHNICIAN SK [246.4 h]; AC PIPES QTY [627 lm] | 4,829 | 10 | P3P1ACGF10 | DUKHCON3PP1ACGF4600 | DUKHCONP03Z1ACGF4600 | DH | CON | P3 | Z1 | MEP | AC | GF | B10 | B10-D08 | RES-3 |
| DUKHCONP03Z1ACGF4605 |  | Fixing of Ventilation Equipments | 25d | 2013-11-16 | 2013-12-14 | DUKHCONP03Z1ARGF3060 FF+7d, DUKHCONP03Z1ACGF4600 FF+10d, DUKHCONP03Z1ARGF3055 FF+7d, DUKHCONP03MKACGF4605, DUKHCONP03Z1ACGF4600 SS+10d, DUKHCONP03Z1ARGF3055 SS+7d, DUKHCONP03Z1ARGF3060 SS+7d | 51d | 0d | LABOR- SUBCONTRACTOR [33 h]; AC TECHNICIAN SK [92.4 h]; VENTILIATION EQP QTY [35.75 ea] | 18,509 | 15 | P3P1ACGF15 | DUKHCON3PP1ACGF4605 | DUKHCONP03Z1ACGF4605 | DH | CON | P3 | Z1 | MEP | AC | GF | B10 | B10-D08 | RES-3 |
| DUKHCONP03Z1ACGF4610 |  | Fixing of Split AC | 20d | 2013-12-07 | 2013-12-30 | DUKHCONP03Z1ACGF4605 SS+13d, DUKHCONP03Z1ACGF4605 FF+13d, DUKHCONP03MKACGF4610 | 51d | 5d | LABOR- SUBCONTRACTOR [115.5 h]; AC TECHNICIAN SK [215.6 h]; SPILIT UNIT QTY [35.75 ea] | 26,975 | 20 | P3P1ACGF20 | DUKHCON3PP1ACGF4610 | DUKHCONP03Z1ACGF4610 | DH | CON | P3 | Z1 | MEP | AC | GF | B10 | B10-D08 | RES-3 |

Notes:
- DUKHCONP03Z1ELRF4070: Expenses: P03-Electrical Installations 27597
- DUKHCONP03Z1ELRF4075: Expenses: P03-Electrical Installations 20228
- DUKHCONP03Z1PLUG4300: Expenses: P03-Plumbing and Drainage works 14418
- DUKHCONP03Z1PLGF4305: Expenses: P03-Plumbing and Drainage works 56510
- DUKHCONP03Z1PLGF4310: Expenses: P03-Plumbing and Drainage works 1274
- DUKHCONP03Z1PLGF4315: Expenses: P03-Plumbing and Drainage works 61341
- DUKHCONP03Z1PLGF4320: Expenses: P03-Plumbing and Drainage works 703
- DUKHCONP03Z1PLFF4325: Expenses: P03-Plumbing and Drainage works 52315
- DUKHCONP03Z1PLFF4330: Expenses: P03-Plumbing and Drainage works 1093
- DUKHCONP03Z1PLFF4335: Expenses: P03-Plumbing and Drainage works 61341
- DUKHCONP03Z1PLFF4340: Expenses: P03-Plumbing and Drainage works 703
- DUKHCONP03Z1PLRF4345: Expenses: P03-Plumbing and Drainage works 8249
- DUKHCONP03Z1PLRF4350: Expenses: P03-Plumbing and Drainage works 59067
- DUKHCONP03Z1PLRF4355: Expenses: P03-Plumbing and Drainage works 586638
- DUKHCONP03Z1ACGF4600: Expenses: P03-Air-conditioning and Ventilation works 4829
- DUKHCONP03Z1ACGF4605: Expenses: P03-Air-conditioning and Ventilation works 18509
- DUKHCONP03Z1ACGF4610: Expenses: P03-Air-conditioning and Ventilation works 26975

| ID | WBS | Activity | Duration | Start | Finish | Predecessors | Total float | Free float | Resources | Cost | CODE | P3 ACTID | P6 ID (old) | NP61D | PROJECT | PHASES | PACKAGE | PART | ELEMENTS | STEP | FLOORS | BILL NOS | BILL DIVISION | RES PACK |
| --- | --- | --- | --- | --- | --- | --- | --- | --- | --- | --- | --- | --- | --- | --- | --- | --- | --- | --- | --- | --- | --- | --- | --- | --- |
|  | 15 | **FIRST FLOORS** |  | 2013-11-07 | 2014-02-18 |  |  |  |  |  |  |  |  |  |  |  |  |  |  |  |  |  |  |  |
| DUKHCONP03Z1ACFF4615 |  | Installation AC Pipes | 20d | 2013-11-07 | 2013-11-30 | DUKHCONP03MKACFF4615, DUKHCONP03Z1ARFF3305 SS+7d, DUKHCONP03Z1ARFF3305 FF+7d | 32d | 1d | LABOR- SUBCONTRACTOR [66 h]; AC TECHNICIAN SK [246.4 h]; AC PIPES QTY [627 lm] | 4,347 | 10 | P3P1ACFF10 | DUKHCON3PP1ACFF4615 | DUKHCONP03Z1ACFF4615 | DH | CON | P3 | Z1 | MEP | AC | FF | B10 | B10-D08 | RES-3 |
| DUKHCONP03Z1ACFF4620 |  | Fixing of Ventilation Equipments | 25d | 2014-01-05 | 2014-02-02 | DUKHCONP03Z1ARFF3355 SS+7d, DUKHCONP03Z1ARFF3355 FF+7d, DUKHCONP03Z1ARFF3360 FF+7d, DUKHCONP03Z1ACFF4615 SS+10d, DUKHCONP03Z1ACFF4615 FF+10d, DUKHCONP03Z1ARFF3360 SS+7d, DUKHCONP03MKACFF4620 | 9d | 0d | LABOR- SUBCONTRACTOR [33 h]; AC TECHNICIAN SK [92.4 h]; VENTILIATION EQP QTY [35.75 ea] | 15,498 | 15 | P3P1ACFF15 | DUKHCON3PP1ACFF4620 | DUKHCONP03Z1ACFF4620 | DH | CON | P3 | Z1 | MEP | AC | FF | B10 | B10-D08 | RES-3 |
| DUKHCONP03Z1ACFF4625 |  | Fixing of Split AC | 20d | 2014-01-26 | 2014-02-18 | DUKHCONP03MKACFF4625, DUKHCONP03Z1ACFF4620 SS+13d, DUKHCONP03Z1ACFF4620 FF+13d | 9d | 0d | LABOR- SUBCONTRACTOR [115.5 h]; AC TECHNICIAN SK [215.6 h]; SPILIT UNIT QTY [35.75 ea] | 28,151 | 20 | P3P1ACFF20 | DUKHCON3PP1ACFF4625 | DUKHCONP03Z1ACFF4625 | DH | CON | P3 | Z1 | MEP | AC | FF | B10 | B10-D08 | RES-3 |
|  | 20 | **ROOF** |  | 2013-11-17 | 2014-03-02 |  |  |  |  |  |  |  |  |  |  |  |  |  |  |  |  |  |  |  |
| DUKHCONP03Z1ACRF4630 |  | Installation of Refrigerant Pipes | 25d | 2013-11-17 | 2013-12-15 | DUKHCONP03MKACRF4630, DUKHCONP03Z1ACGF4600 FF+7d, DUKHCONP03Z1ACFF4615 SS+7d, DUKHCONP03Z1ACFF4615 FF+7d, DUKHCONP03Z1ARRF3645 SS+7d, DUKHCONP03Z1ACGF4600 SS+7d, DUKHCONP03Z1ARRF3645 FF+7d | 73d | 0d | LABOR- SUBCONTRACTOR [33 h]; AC TECHNICIAN SK [123.2 h]; AC PIPES QTY [313.5 lm] | 13,676 | 10 | P3P1ACRF10 | DUKHCON3PP1ACRF4630 | DUKHCONP03Z1ACRF4630 | DH | CON | P3 | Z1 | MEP | AC | RF | B10 | B10-D08 | RES-3 |
| DUKHCONP03Z1ACRF4635 |  | Installation of Condensing Unit | 25d | 2014-02-01 | 2014-03-02 | DUKHCONP03Z1ACFF4625 FF+5d, DUKHCONP03Z1ACGF4610 FF+5d, DUKHCONP03Z1ACFF4625 SS+5d, DUKHCONP03MKACRF4635, DUKHCONP03Z1ACRF4630 SS+5d, DUKHCONP03Z1ACRF4630 FF+5d, DUKHCONP03Z1ACGF4610 SS+5d | 14d | 0d | LABOR- SUBCONTRACTOR [115.5 h]; AC TECHNICIAN SK [400.4 h]; AC UNITS QTY [71.5 ea] | 71,001 | 15 | P3P1ACRF15 | DUKHCON3PP1ACRF4635 | DUKHCONP03Z1ACRF4635 | DH | CON | P3 | Z1 | MEP | AC | RF | B10 | B10-D08 | RES-3 |
|  | 25 | **EXTERNAL WORKS** |  | 2013-09-30 | 2014-02-24 |  |  |  |  |  |  |  |  |  |  |  |  |  |  |  |  |  |  |  |
|  | 10 | **MISCELLANEOUS** |  | 2013-11-23 | 2014-02-03 |  |  |  |  |  |  |  |  |  |  |  |  |  |  |  |  |  |  |  |
| DUKHCONP03Z1MSEX5000 |  | Construction of Manholes | 25d | 2013-11-23 | 2013-12-22 | DUKHCONP03Z1PLGF4310 SS+10d, DUKHCONP03Z1STRF2055 FF+5d, DUKHCONP03MKMSEX5000, DUKHCONP03Z1STRF2055 SS+5d, DUKHCONP03Z1PLGF4310 FF+10d | 3d | 0d | LABOR- SUBCONTRACTOR [33 h]; CABINET QTY [11 ea]; JOINERY WORK SK [88 h] | 4,540 | 25 | P3P1MSEX25 | DUKHCON3PP1MS005000 | DUKHCONP03Z1MSEX5000 | DH | CON | P3 | Z1 | EX | MS |  | B10 | B10-D12 | RES-3 |
| DUKHCONP03Z1MSEX5005 |  | Construction of Soak pit, Chambers | 25d | 2013-12-07 | 2014-01-05 | DUKHCONP03Z1MSEX5000 FF+12d, DUKHCONP03Z1MSEX5000 SS+12d, DUKHCONP03MKMSEX5005 | 18d | 0d | LABOR - CIVIL [75 h]; MANHOLES SK [200 h] | 8,058 | 30 | P3P1MSEX30 | DUKHCON3PP1MS005005 | DUKHCONP03Z1MSEX5005 | DH | CON | P3 | Z1 | EX | MS |  | B10 | B10-D12 | RES-3 |
| DUKHCONP03Z1MSEX5020 |  | Construction Entrance Ramp | 25d | 2013-12-07 | 2014-01-05 | DUKHCONP03Z1STRF2055 SS, DUKHCONP03Z1STRF2055 FF, DUKHCONP03MKMSEX5020 | 19d | 0d | LABOR - CIVIL [49.5 h]; LABOR- SUBCONTRACTOR [16.5 h]; SCREED QTY [46.75 Sqm]; CONCRETE QTY [24.75 Cum]; INTERLOCK QTY [55 Sqm]; SCREED MASON SK [44 h]; CONCRETE MASON SK [44 h]; INTERLOCK MASON SK [44 h] | 7,106 | 10 | P3P1MSEX10 | DUKHCON3PP1MS005020 | DUKHCONP03Z1MSEX5020 | DH | CON | P3 | Z1 | EX | MS |  | B10 | B10-D12 | RES-3 |
| DUKHCONP03Z1MSEX5015 |  | Construction of grease Trap | 20d | 2013-12-28 | 2014-01-19 | DUKHCONP03Z1MSEX5005 FF+12d, DUKHCONP03MKMSEX5015, DUKHCONP03Z1MSEX5005 SS+12d | 39d | 20d | LABOR- SUBCONTRACTOR [16.5 h]; GREASE TRAP QTY [5.5 lm]; HANDRAIL ERECTOR SKILLED [22 h] | 11,348 | 20 | P3P1MSEX20 | DUKHCON3PP1MS005015 | DUKHCONP03Z1MSEX5015 | DH | CON | P3 | Z1 | EX | MS |  | B10 | B10-D12 | RES-3 |
| DUKHCONP03Z1MSEX5025 |  | SS.Handrails and Balustrades | 20d | 2013-12-28 | 2014-01-19 | DUKHCONP03MKMSEX5025, DUKHCONP03Z1MSEX5020 SS+12d, DUKHCONP03Z1MSEX5020 FF+12d | 19d | 0d | LABOR- SUBCONTRACTOR [33 h]; S.S.BALUSTRADE QTY [27.5 lm]; HANDRAIL ERECTOR SKILLED [66 h] | 20,354 | 15 | P3P1MSEX15 | DUKHCON3PP1MS005025 | DUKHCONP03Z1MSEX5025 | DH | CON | P3 | Z1 | EX | MS |  | B10 | B10-D12 | RES-3 |
| DUKHCONP03Z1MSEX5010 |  | Telephone Cable laying | 25d | 2014-01-06 | 2014-02-03 | DUKHCONP03Z1MSEX5005 | 18d | 0d | LABOR - CIVIL [125 h]; LABOR- SUBCONTRACTOR [125 h]; ELECTRICIANS SK [125 h]; CONCRETE MASON SK [125 h] | 1,114 |  | P3P1MSEX40 | DUKHCON3PP1MS005010 | DUKHCONP03Z1MSEX5010 | DH | CON | P3 | Z1 | EX | MS |  | B10 | B10-D12 | RES-3 |
|  | 15 | **DOMESTIC WATER TANK & PUMP ROOM** |  | 2013-09-30 | 2014-02-24 |  |  |  |  |  |  |  |  |  |  |  |  |  |  |  |  |  |  |  |
| DUKHCONP03Z1WTEX5030 |  | Excavation | 20d | 2013-09-30 | 2013-10-24 | DUKHCONP03Z1STRF2065 SS+5d, DUKHCONP03Z1STRF2055 FF+5d, DUKHCONP03Z1STRF2055 SS+5d | 63d | 0d | LABOR - CIVIL [33 h]; EXCAVATION QTY [49.5 Cum]; LOADER [20 h]; POCLAIN [40 h]; TRUCK [20 h]; EQUIP OPERATORS [80 h] | 1,647 | 10 | P3P1WEEX10 | DUKHCON3PP1WE005030 | DUKHCONP03Z1WTEX5030 | DH | CON | P3 | Z1 | EX | WE |  | B10 | B10-D12 | RES-3 |
| DUKHCONP03Z1WTEX5035 |  | Construction of Raft & slab | 25d | 2013-10-06 | 2013-11-05 | DUKHCONP03Z1WTEX5030 FF+10d, DUKHCONP03Z1WTEX5030 SS+5d | 63d | 0d | CONCRETE MASON SK [110 h]; LABOR - CIVIL [82.5 h]; CONCRETE QTY [55 Cum] | 25,770 | 15 | P3P1WEEX15 | DUKHCON3PP1WE005035 | DUKHCONP03Z1WTEX5035 | DH | CON | P3 | Z1 | EX | WE |  | B10 | B10-D12 | RES-3 |
| DUKHCONP03Z1WTEX5040 |  | Block works & Plastering | 25d | 2013-10-15 | 2013-11-14 | DUKHCONP03Z1WTEX5035 FF+8d, DUKHCONP03Z1WTEX5035 SS+8d | 63d | 0d | BLOCK MASON SK [418 h]; PLASTER MASON SK [1012 h]; LABOR - CIVIL [808.5 h]; BLOCK QTY [206.25 Sqm]; PLASTER QTY [632.5 Sqm] | 46,391 | 20 | P3P1WEEX20 | DUKHCON3PP1WE005040 | DUKHCONP03Z1WTEX5040 | DH | CON | P3 | Z1 | EX | WE |  | B10 | B10-D12 | RES-3 |
| DUKHCONP03Z1WTEX5070 |  | Domestic Water Tank Plumbings works | 25d | 2013-10-26 | 2013-11-23 | DUKHCONP03Z1WTEX5080 SS | 63d | 0d | LABOR- SUBCONTRACTOR [100 h]; MECHANICALS SK [100 h] | 125,964 |  | P3P1WEEX70 | DUKHCON3PP1WE005070 | DUKHCONP03Z1WTEX5070 | DH | CON | P3 | Z1 | EX | WE |  | B10 | B10-D12 | RES-3 |
| DUKHCONP03Z1WTEX5075 |  | Domestic Water Tank AC works | 25d | 2013-10-26 | 2013-11-23 | DUKHCONP03Z1WTEX5070 SS | 63d | 0d | LABOR- SUBCONTRACTOR [100 h]; AC TECHNICIAN SK [75 h] | 8,274 | 40 | P3P1WEEX80 | DUKHCON3PP1WE005075 | DUKHCONP03Z1WTEX5075 | DH | CON | P3 | Z1 | EX | WE |  | B10 | B10-D12 | RES-3 |
| DUKHCONP03Z1WTEX5080 |  | Domestic Water Tank Electrical works | 25d | 2013-10-26 | 2013-11-23 | DUKHCONP03Z1WTEX5040 SS+7d | 63d | 0d | LABOR- SUBCONTRACTOR [100 h]; ELECTRICIANS SK [75 h] | 22,233 |  | P3P1WEEX60 | DUKHCON3PP1WE005080 | DUKHCONP03Z1WTEX5080 | DH | CON | P3 | Z1 | EX | WE |  | B10 | B10-D12 | RES-3 |
| DUKHCONP03Z1WTEX5085 |  | Domestic Water Tank Firefighting works | 25d | 2013-10-26 | 2013-11-23 | DUKHCONP03Z1WTEX5075 SS | 63d | 0d | LABOR- SUBCONTRACTOR [54 h]; MECHANICALS SK [62.5 h] | 12,708 | 40 | P3P1WEEX90 | DUKHCON3PP1WE005085 | DUKHCONP03Z1WTEX5085 | DH | CON | P3 | Z1 | EX | WE |  | B10 | B10-D12 | RES-3 |
| DUKHCONP03Z1WTEX5045 |  | Flooring & Painting | 25d | 2013-10-30 | 2013-11-27 | DUKHCONP03Z1WTEX5040 FF+10d, DUKHCONP03Z1WTEX5085 FF+4d, DUKHCONP03Z1WTEX5040 SS+10d | 63d | 44d | SCREED MASON SK [88 h]; LABOR - CIVIL [33 h]; LABOR- SUBCONTRACTOR [198 h]; SCREED QTY [104.5 Sqm]; PAINT QTY [632.5 Sqm]; PAINTERS SK [506 h] | 35,064 | 25 | P3P1WEEX25 | DUKHCON3PP1WE005045 | DUKHCONP03Z1WTEX5045 | DH | CON | P3 | Z1 | EX | WE |  | B10 | B10-D12 | RES-3 |
| DUKHCONP03Z1WTEX5050 |  | Installation of Steel Gate | 20d | 2014-01-08 | 2014-01-30 | DUKHPROGEN00PRDV3500, DUKHCONP03Z1WTEX5045 SS+5d, DUKHCONP03Z1WTEX5045 FF+10d, DUKHCONP03Z1MSEX5025 FF+10d | 19d | 0d | LABOR- SUBCONTRACTOR [33 h]; LADDER QTY [2.75 ea]; GATE QTY [3 ea]; LADDER ERECTOR SK [24 h]; GATE ERECTOR SK [24 h] | 19,575 | 30 | P3P1WEEX30 | DUKHCON3PP1WE005050 | DUKHCONP03Z1WTEX5050 | DH | CON | P3 | Z1 | EX | WE |  | B10 | B10-D12 | RES-3 |
| DUKHCONP03Z1WTEX5060 |  | SS Shed cover installation | 25d | 2014-01-14 | 2014-02-12 | DUKHCONP03Z1MSEX5025 FF+10d, DUKHCONP03Z1WTEX5050 SS+5d, DUKHCONP03Z1WTEX5050 FF+10d, DUKHPROGEN00PRDV3610 | 19d | 0d | LABOR- SUBCONTRACTOR [234 h]; SS SHED COVER QTY [74 Sqm]; STEEL ERECTOR SK [312 h] | 30,780 | 35 | P3P1WEEX35 | DUKHCON3PP1WE005060 | DUKHCONP03Z1WTEX5060 | DH | CON | P3 | Z1 | EX | WE |  | B10 | B10-D12 | RES-3 |
| DUKHCONP03Z1WTEX5065 |  | Install. of Water Tank,Chiller,Pump & Meter | 25d | 2014-01-26 | 2014-02-24 | DUKHCONP03Z1PLRF4350 SS+5d, DUKHCONP03Z1WTEX5060 SS+10d, DUKHCONP03Z1WTEX5060 FF+10d, DUKHPROGEN00PRDV3330, DUKHCONP03Z1MSEX5015 SS+5d, DUKHCONP03Z1MSEX5015 FF+5d, DUKHCONP03Z1PLRF4350 FF+5d, DUKHPROGEN00PRDV3220 | 19d | 0d | LABOR- SUBCONTRACTOR [48 h]; AC TECHNICIAN SK [33.6 h]; MECHANICALS SK [64.8 h]; WATER TANK QTY [3 ea]; CHILLER QTY [28 ea]; PUMP QTY [3 ea] | 212,221 | 40 | P3P1WEEX40 | DUKHCON3PP1WE005065 | DUKHCONP03Z1WTEX5065 | DH | CON | P3 | Z1 | EX | WE |  | B10 | B10-D12 | RES-3 |

Notes:
- DUKHCONP03Z1ACFF4615: Expenses: P03-Air-conditioning and Ventilation works 4347
- DUKHCONP03Z1ACFF4620: Expenses: P03-Air-conditioning and Ventilation works 15498
- DUKHCONP03Z1ACFF4625: Expenses: P03-Air-conditioning and Ventilation works 28151
- DUKHCONP03Z1ACRF4630: Expenses: P03-Air-conditioning and Ventilation works 13676
- DUKHCONP03Z1ACRF4635: Expenses: P03-Air-conditioning and Ventilation works 71001
- DUKHCONP03Z1MSEX5000: Expenses: P03-External works within the Plot Curtilage 4540
- DUKHCONP03Z1MSEX5005: Expenses: P03-External works within the Plot Curtilage 8058
- DUKHCONP03Z1MSEX5020: Expenses: P03-External works within the Plot Curtilage 7106
- DUKHCONP03Z1MSEX5015: Expenses: P03-External works within the Plot Curtilage 11348
- DUKHCONP03Z1MSEX5025: Expenses: P03-External works within the Plot Curtilage 20354
- DUKHCONP03Z1MSEX5010: Expenses: P03-External works within the Plot Curtilage 1114
- DUKHCONP03Z1WTEX5030: Expenses: P03-External works within the Plot Curtilage 1647
- DUKHCONP03Z1WTEX5035: Expenses: P03-External works within the Plot Curtilage 25770
- DUKHCONP03Z1WTEX5040: Expenses: P03-External works within the Plot Curtilage 46391
- DUKHCONP03Z1WTEX5070: Expenses: P03-External works within the Plot Curtilage 125964
- DUKHCONP03Z1WTEX5075: Expenses: P03-External works within the Plot Curtilage 8274
- DUKHCONP03Z1WTEX5080: Expenses: P03-External works within the Plot Curtilage 22233
- DUKHCONP03Z1WTEX5085: Expenses: P03-External works within the Plot Curtilage 12708
- DUKHCONP03Z1WTEX5045: Expenses: P03-External works within the Plot Curtilage 35064
- DUKHCONP03Z1WTEX5050: Expenses: P03-External works within the Plot Curtilage 19575
- DUKHCONP03Z1WTEX5060: Expenses: P03-External works within the Plot Curtilage 30780
- DUKHCONP03Z1WTEX5065: Expenses: P03-External works within the Plot Curtilage 212221

| ID | WBS | Activity | Duration | Start | Finish | Predecessors | Total float | Resources | Cost | P3 ACTID | P6 ID (old) | NP61D | PROJECT | PHASES | PACKAGE | PART | ELEMENTS | BILL NOS | BILL DIVISION | RES PACK | CODE | STEP | FLOORS | rem |
| --- | --- | --- | --- | --- | --- | --- | --- | --- | --- | --- | --- | --- | --- | --- | --- | --- | --- | --- | --- | --- | --- | --- | --- | --- |
|  | 30 | **TESTING AND COMMISSIONING** |  | 2014-03-19 | 2014-04-16 |  |  |  |  |  |  |  |  |  |  |  |  |  |  |  |  |  |  |  |
| DUKHCONP03Z1ACTC8000 |  | Pre-Commissioning & Testing of AC Works | 25d | 2014-03-19 | 2014-04-16 | DUKHMOBP03PS00002310 FF, DUKHCONP03MKELFF4065, DUKHCONP03MKACRF4635, DUKHCONP03MKACFF4625, DUKHCONP03MKELGF4015, DUKHCONP03MKELFF4050, DUKHCONP03Z1MSEX5005, DUKHCONP03MKARFF3395, DUKHMOBI03PS00002345 FF, DUKHCONP03MKELGF4025, DUKHCONP03MKELFF4055, DUKHCONP03MKPLRF4350, DUKHCONP03MKARRF3620, DUKHCONP03MKAREL3680, DUKHCONP03MKPLRF4355, DUKHCONP03MKPLGF4320, DUKHCONP03Z1ACFF4625, DUKHCONP03MKELGF4030, DUKHCONP03Z1ACRF4635, DUKHCONP03MKARRF3655, DUKHCONP03Z1ARGF3095, DUKHCONP03Z1ARFF3395, DUKHCONP03MKELRF4075, DUKHCONP03Z1ARRF3620, DUKHCONP03MKMSEX5005, DUKHCONP03Z1AREL3680, DUKHCONP03MKARGF3095 | 0d | LABOR- SUBCONTRACTOR [500 h]; AC TECHNICIAN SK [1000 h] | 915 | P3P1ACU100 | DUKHCON3PP1AC008000 | DUKHCONP03Z1ACTC8000 | DH | CON | P3 | Z1 | TES | B10 | B10-D08 | RES-3 |  |  |  |  |
| DUKHCONP03Z1ELTC8010 |  | Pre-Commissioning & Testing of Electrical Works | 25d | 2014-03-19 | 2014-04-16 | DUKHCONP03Z1ELGF4030, DUKHCONP03Z1ARRF3660, DUKHCONP03MKELFF4055, DUKHCONP03MKARRF3620, DUKHMOBP03PS00002310 FF, DUKHCONP03MKACRF4635, DUKHCONP03Z1ELRF4075, DUKHCONP03Z1AREL3680, DUKHCONP03MKARGF3095, DUKHCONP03MKELGF4015, DUKHCONP03MKELGF4030, DUKHCONP03MKELFF4065, DUKHCONP03Z1ELFF4055, DUKHCONP03Z1ELFF4050, DUKHCONP03Z1ARFF3395, DUKHCONP03Z1ARRF3620, DUKHCONP03Z1ARRF3655, DUKHCONP03MKMSEX5005, DUKHCONP03MKARFF3395, DUKHCONP03MKARRF3655, DUKHCONP03MKELRF4075, DUKHCONP03MKPLRF4350, DUKHCONP03Z1MSEX5005, DUKHCONP03Z1ARGF3095, DUKHCONP03MKAREL3680, DUKHCONP03MKELGF4025, DUKHCONP03MKPLRF4355, DUKHCONP03MKPLGF4320, DUKHCONP03Z1ELFF4065, DUKHMOBI03PS00002345 FF, DUKHCONP03MKELFF4050, DUKHCONP03Z1ELGF4025, DUKHCONP03Z1ELGF4015, DUKHCONP03MKACFF4625 | 0d | LABOR- SUBCONTRACTOR [1000 h]; ELECTRICIANS SK [2000 h] | 41,901 | P3P1ELE100 | DUKHCON3PP1EL008010 | DUKHCONP03Z1ELTC8010 | DH | CON | P3 | Z1 | TES | B10 | B10-D09 | RES-3 |  |  |  |  |
| DUKHCONP03Z1PLTC8005 |  | Pre-Commissioning & Testing of Plumbing Works | 25d | 2014-03-19 | 2014-04-16 | DUKHCONP03Z1ARRF3655, DUKHMOBI03PS00002345 FF, DUKHCONP03Z1PLRF4350, DUKHCONP03Z1PLGF4320, DUKHCONP03Z1ARRF3620, DUKHCONP03MKARGF3095, DUKHCONP03Z1ARGF3095, DUKHCONP03Z1ARRF3660, DUKHMOBP03PS00002310 FF, DUKHCONP03MKPLRF4350, DUKHCONP03MKPLRF4355, DUKHCONP03MKPLGF4320, DUKHCONP03MKAREL3680, DUKHCONP03MKELFF4065, DUKHCONP03MKELFF4055, DUKHCONP03MKACRF4635, DUKHCONP03Z1MSEX5005, DUKHCONP03MKELRF4075, DUKHCONP03Z1ARFF3395, DUKHCONP03MKMSEX5005, DUKHCONP03MKELGF4025, DUKHCONP03MKELGF4015, DUKHCONP03MKELGF4030, DUKHCONP03MKACFF4625, DUKHCONP03Z1WTEX5065, DUKHCONP03Z1PLRF4355, DUKHCONP03MKARRF3655, DUKHCONP03MKELFF4050, DUKHCONP03Z1AREL3680, DUKHCONP03MKARFF3395, DUKHCONP03MKARRF3620 | 0d | LABOR- SUBCONTRACTOR [1000 h]; MECHANICALS SK [2000 h] | 7,665 | P3P1PLU100 | DUKHCON3PP1PL008005 | DUKHCONP03Z1PLTC8005 | DH | CON | P3 | Z1 | TES | B10 | B10-D07 | RES-3 |  |  |  |  |
|  | 15 | **ZONE - 2 (3 Apartments)** |  | 2013-02-28 | 2014-05-15 |  |  |  |  |  |  |  |  |  |  |  |  |  |  |  |  |  |  |  |
|  | 10 | **STRUCTURAL WORKS** |  | 2013-02-28 | 2013-11-28 |  |  |  |  |  |  |  |  |  |  |  |  |  |  |  |  |  |  |  |
|  | 10 | **SUB STRUCTURE** |  | 2013-02-28 | 2013-07-14 |  |  |  |  |  |  |  |  |  |  |  |  |  |  |  |  |  |  |  |
|  | 10 | **UPTO GRADE SLAB** |  | 2013-02-28 | 2013-07-14 |  |  |  |  |  |  |  |  |  |  |  |  |  |  |  |  |  |  |  |
| DUKHCONP03Z2STUG1000 |  | Footing Excavation | 25d | 2013-02-28 | 2013-03-28 | DUKHCONP03Z1STUG1000 | 0d | LABOR - CIVIL [824 h]; EXCAVATION QTY [1374 Cum]; LOADER [183 h]; POCLAIN [366 h]; TRUCK [183 h]; EQUIP OPERATORS [732 h] | 68,040 | P3P2SBUG10 | DUKHCON3PP2STUG1000 | DUKHCONP03Z2STUG1000 | DH | CON | P3 | Z2 | ST | B10 | B10-D01 | RES-3 | 10 | SB | UG |  |
| DUKHCONP03Z2STUG1005 |  | Footing Antitermite | 23d | 2013-03-11 | 2013-04-06 | DUKHCONP03Z2STUG1000 FF+5d, DUKHCONP03Z2STUG1000 SS+9d | 0d | ANTITERMITE QTY [1152 sqft]; ANTITERMITE SK [461 h]; LABOR- SUBCONTRACTOR [173.25 h] | 3,456 | P3P2SBUG15 | DUKHCON3PP2STUG1005 | DUKHCONP03Z2STUG1005 | DH | CON | P3 | Z2 | ST | B10 | B10-D01 | RES-3 | 15 | SB | UG | REM |
| DUKHCONP03Z2STUG1010 |  | Footing Blinding | 23d | 2013-03-14 | 2013-04-09 | DUKHCONP03Z2STUG1005 SS+3d, DUKHCONP03Z2STUG1005 FF+3d | 0d | BLINDING MASON SK [336 h]; LABOR - CIVIL [252 h]; BLINDING QTY [420 Sqm] | 10,587 | P3P2SBUG18 | DUKHCON3PP2STUG1010 | DUKHCONP03Z2STUG1010 | DH | CON | P3 | Z2 | ST | B10 | B10-D02 | RES-3 | 15 | SB | UG | REM |
| DUKHCONP03Z2STUG1015 |  | Footing Waterproofing & Screed | 25d | 2013-03-20 | 2013-04-17 | DUKHCONP03Z2STUG1010 SS+5d, DUKHCONP03Z2STUG1010 FF+5d | 0d | SCREED MASON SK [336 h]; LABOR - CIVIL [126 h]; LABOR- SUBCONTRACTOR [247.5 h]; SCREED QTY [420 Sqm]; WATERPROOFING QTY [823 Sqm]; WATERPROOFING SPECIALIST SK [659 h] | 31,497 | P3P2SBUG20 | DUKHCON3PP2STUG1015 | DUKHCONP03Z2STUG1015 | DH | CON | P3 | Z2 | ST | B10 | B10-D02 | RES-3 | 20 | SB | UG | REM |
| DUKHCONP03Z2STUG1020 |  | Construction of foundations | 20d | 2013-04-04 | 2013-04-27 | DUKHCONP03Z2STUG1015 SS+7d, DUKHCONP03Z2STUG1015 FF+8d | 0d | STEEL FIXERS SK [1819 h]; CARPENTERS SK [646 h]; CONCRETE MASON SK [288 h]; LABOR - CIVIL [2064.75 h]; REINFORCEMENT BARS QTY [22733 kg]; FORMWORK QTY [323 Sqm]; CONCRETE QTY [144 Cum] | 125,011 | P3P2SBUG25 | DUKHCON3PP2STUG1020 | DUKHCONP03Z2STUG1020 | DH | CON | P3 | Z2 | ST | B10 | B10-D02 | RES-3 | 25 | SB | UG | REM |
| DUKHCONP03Z2STUG1025 |  | Construction of neck of columns | 25d | 2013-04-14 | 2013-05-12 | DUKHCONP03Z2STUG1020 SS+8d, DUKHCONP03Z2STUG1020 FF+7d, DUKHCONP03Z1STUG1025 | 0d | STEEL FIXERS SK [152 h]; CARPENTERS SK [630 h]; CONCRETE MASON SK [18 h]; LABOR - CIVIL [600 h]; REINFORCEMENT BARS QTY [1891 kg]; FORMWORK QTY [315 Sqm]; CONCRETE QTY [9 Cum] | 27,559 | P3P2SBUG30 | DUKHCON3PP2STUG1025 | DUKHCONP03Z2STUG1025 | DH | CON | P3 | Z2 | ST | B10 | B10-D02 | RES-3 | 30 | SB | UG | REM |
| DUKHCONP03Z2STUG1030 |  | Waterproofing Footing & Neck Column | 25d | 2013-04-23 | 2013-05-21 | DUKHCONP03Z2STUG1025 SS+8d, DUKHCONP03Z2STUG1025 FF+8d | 0d | LABOR- SUBCONTRACTOR [58.5 h]; WATERPROOFING QTY [193 Sqm]; WATERPROOFING SPECIALIST SK [155 h] | 10,965 | P3P2SBUG35 | DUKHCON3PP2STUG1030 | DUKHCONP03Z2STUG1030 | DH | CON | P3 | Z2 | ST | B10 | B10-D02 | RES-3 | 35 | SB | UG | REM |
| DUKHCONP03Z2STUG1035 |  | Backfilling Upto Grade Beam Bottom | 25d | 2013-05-04 | 2013-06-01 | DUKHCONP03Z2STUG1030 SS+9d, DUKHCONP03Z1STUG1035, DUKHCONP03Z2STUG1030 FF+9d | 0d | LABOR - CIVIL [360 h]; BACKFILLING QTY [1512 Cum]; BOBCAT [1000 h]; PLATE COMPACTOR [1000 h]; TRUCK [200 h]; EQUIP OPERATORS [2200 h] | 25,326 | P3P2SBUG40 | DUKHCON3PP2STUG1035 | DUKHCONP03Z2STUG1035 | DH | CON | P3 | Z2 | ST | B10 | B10-D01 | RES-3 | 40 | SB | UG |  |
| DUKHCONP03Z2STUG1040 |  | Construction of Grade Beams | 25d | 2013-05-20 | 2013-06-17 | DUKHCONP03Z2STUG1035 FF+14d, DUKHCONP03Z2STUG1035 SS+14d | 0d | BLINDING MASON SK [180 h]; SCREED MASON SK [180 h]; STEEL FIXERS SK [1062 h]; CARPENTERS SK [1202 h]; CONCRETE MASON SK [126 h]; LABOR - CIVIL [1995 h]; BLINDING QTY [225 Sqm]; SCREED QTY [225 Sqm]; REINFORCEMENT BARS QTY [13269 kg]; FORMWORK QTY [601 Sqm]; CONCRETE QTY [63 Cum] | 199,651 | P3P2SBUG45 | DUKHCON3PP2STUG1040 | DUKHCONP03Z2STUG1040 | DH | CON | P3 | Z2 | ST | B10 | B10-D02 | RES-3 | 45 | SB | UG | REM |
| DUKHCONP03Z2STUG1045 |  | Construction of slab on grade | 25d | 2013-06-16 | 2013-07-14 | DUKHCONP03Z1STUG1045, DUKHCONP03Z2STUG1040 FF+10d, DUKHCONP03Z2PLUG4300 SS+8d, DUKHCONP03Z2PLUG4300 FF+8d, DUKHCONP03Z2STUG1040 SS+10d | 0d | BLINDING MASON SK [684 h]; SCREED MASON SK [684 h]; STEEL FIXERS SK [308 h]; CONCRETE MASON SK [372 h]; LABOR - CIVIL [1279.5 h]; BLINDING QTY [855 Sqm]; SCREED QTY [855 Sqm]; CONCRETE QTY [186 Cum]; WELDED WIRE MESH [1155 Sqm] | 181,661 | P3P2SBUG50 | DUKHCON3PP2STUG1045 | DUKHCONP03Z2STUG1045 | DH | CON | P3 | Z2 | ST | B10 | B10-D02 | RES-3 | 50 | SB | UG | REM |
|  | 15 | **SUPERSTRUCTURE** |  | 2013-07-02 | 2013-11-28 |  |  |  |  |  |  |  |  |  |  |  |  |  |  |  |  |  |  |  |
|  | 10 | **GROUND FLOOR** |  | 2013-07-02 | 2013-08-31 |  |  |  |  |  |  |  |  |  |  |  |  |  |  |  |  |  |  |  |
| DUKHCONP03Z2STGF2000 |  | Column-Rebar & Formwork | 25d | 2013-07-02 | 2013-07-30 | DUKHCONP03Z2STUG1045 SS+14d, DUKHCONP03Z1STGF2000, DUKHCONP03Z2STUG1045 FF+7d | 0d | STEEL FIXERS SK [199 h]; CARPENTERS SK [766 h]; LABOR - CIVIL [723.75 h]; REINFORCEMENT BARS QTY [2482 kg]; FORMWORK QTY [383 Sqm] | 29,754 | P3P2SPGF10 | DUKHCON3PP2STGF2000 | DUKHCONP03Z2STGF2000 | DH | CON | P3 | Z2 | ST | B10 | B10-D02 | RES-3 | 10 | SP | GF | REM |
| DUKHCONP03Z2STGF2005 |  | Column-Concrete | 24d | 2013-07-11 | 2013-08-07 | DUKHCONP03Z2STGF2000 SS+8d, DUKHCONP03Z2STGF2000 FF+2d | 0d | CONCRETE MASON SK [58 h]; LABOR - CIVIL [43.5 h]; CONCRETE QTY [29 Cum] | 8,267 | P3P2SPGF15 | DUKHCON3PP2STGF2005 | DUKHCONP03Z2STGF2005 | DH | CON | P3 | Z2 | ST | B10 | B10-D02 | RES-3 | 15 | SP | GF | REM |
| DUKHCONP03Z2STGF2010 |  | Beam, Stairs ,Slab-Rebar & Formwork | 25d | 2013-07-27 | 2013-08-27 | DUKHCONP03Z2STGF2005 SS+2d, DUKHCONP03Z2STGF2005 FF+14d | 0d | STEEL FIXERS SK [1905 h]; CARPENTERS SK [4148 h]; LABOR - CIVIL [4539.75 h]; REINFORCEMENT BARS QTY [23804 kg]; FORMWORK QTY [2074 Sqm] | 173,534 | P3P2SPGF20 | DUKHCON3PP2STGF2010 | DUKHCONP03Z2STGF2010 | DH | CON | P3 | Z2 | ST | B10 | B10-D02 | RES-3 | 20 | SP | GF | REM |
| DUKHCONP03Z2STGF2015 |  | Beam, Stairs ,Slab-Concrete | 15d | 2013-08-14 | 2013-08-31 | DUKHCONP03Z2STGF2010 FF+3d, DUKHCONP03Z1STGF2015, DUKHCONP03Z2STGF2010 SS+10d | 0d | CONCRETE MASON SK [496 h]; LABOR - CIVIL [372 h]; CONCRETE QTY [248 Cum] | 84,518 | P3P2SPGF25 | DUKHCON3PP2STGF2015 | DUKHCONP03Z2STGF2015 | DH | CON | P3 | Z2 | ST | B10 | B10-D02 | RES-3 | 25 | SP | GF | REM |

Notes:
- DUKHCONP03Z1ACTC8000: Expenses: P03-Air-conditioning and Ventilation works 915
- DUKHCONP03Z1ELTC8010: Expenses: P03-Electrical Installations 41901
- DUKHCONP03Z1PLTC8005: Expenses: P03-Plumbing and Drainage works 7665
- DUKHCONP03Z2STUG1000: Expenses: P03-Excavation and Earth Works 68040
- DUKHCONP03Z2STUG1005: Expenses: P03-Excavation and Earth Works 3456
- DUKHCONP03Z2STUG1010: Expenses: P03-Concrete Works 10587
- DUKHCONP03Z2STUG1015: Expenses: P03-Concrete Works 31497
- DUKHCONP03Z2STUG1020: Expenses: P03-Concrete Works 125011
- DUKHCONP03Z2STUG1025: Expenses: P03-Concrete Works 27559
- DUKHCONP03Z2STUG1030: Expenses: P03-Concrete Works 10965
- DUKHCONP03Z2STUG1035: Expenses: P03-Excavation and Earth Works 25326
- DUKHCONP03Z2STUG1040: Expenses: P03-Concrete Works 199651
- DUKHCONP03Z2STUG1045: Expenses: P03-Concrete Works 181661
- DUKHCONP03Z2STGF2000: Expenses: P03-Concrete Works 29754
- DUKHCONP03Z2STGF2005: Expenses: P03-Concrete Works 8267
- DUKHCONP03Z2STGF2010: Expenses: P03-Concrete Works 173534
- DUKHCONP03Z2STGF2015: Expenses: P03-Concrete Works 84518

| ID | WBS | Activity | Duration | Start | Finish | Predecessors | Total float | Free float | Resources | Cost | CODE | rem | P3 ACTID | P6 ID (old) | NP61D | PROJECT | PHASES | PACKAGE | PART | ELEMENTS | STEP | FLOORS | BILL NOS | BILL DIVISION | RES PACK | EXECUTER |
| --- | --- | --- | --- | --- | --- | --- | --- | --- | --- | --- | --- | --- | --- | --- | --- | --- | --- | --- | --- | --- | --- | --- | --- | --- | --- | --- |
|  | 15 | **FIRST FLOORS** |  | 2013-08-17 | 2013-10-21 |  |  |  |  |  |  |  |  |  |  |  |  |  |  |  |  |  |  |  |  |  |
| DUKHCONP03Z2STFF2020 |  | Column-Rebar & Formwork | 25d | 2013-08-17 | 2013-09-14 | DUKHCONP03Z2STGF2015 SS+2d, DUKHCONP03Z2STGF2015 FF+5d, DUKHCONP03Z1STFF2020 | 0d |  | STEEL FIXERS SK [241 h]; CARPENTERS SK [682 h]; LABOR - CIVIL [692.25 h]; REINFORCEMENT BARS QTY [3012 kg]; FORMWORK QTY [341 Sqm] | 29,055 | 10 | REM | P3P2SPFF10 | DUKHCON3PP2STFF2020 | DUKHCONP03Z2STFF2020 | DH | CON | P3 | Z2 | ST | SP | FF | B10 | B10-D02 | RES-3 |  |
| DUKHCONP03Z2STFF2025 |  | Column-Concrete | 24d | 2013-08-27 | 2013-09-23 | DUKHCONP03Z2STFF2020 SS+9d, DUKHCONP03Z2STFF2020 FF+2d | 0d |  | CONCRETE MASON SK [50 h]; LABOR - CIVIL [37.5 h]; CONCRETE QTY [25 Cum] | 7,236 | 15 | REM | P3P2SPFF15 | DUKHCON3PP2STFF2025 | DUKHCONP03Z2STFF2025 | DH | CON | P3 | Z2 | ST | SP | FF | B10 | B10-D02 | RES-3 |  |
| DUKHCONP03Z2STFF2030 |  | Beam, Stairs ,Slab-Rebar & Formwork | 25d | 2013-09-11 | 2013-10-09 | DUKHCONP03Z2STFF2025 SS+2d, DUKHCONP03Z2STFF2025 FF+14d | 0d |  | STEEL FIXERS SK [1613 h]; CARPENTERS SK [4148 h]; LABOR - CIVIL [4320.75 h]; REINFORCEMENT BARS QTY [20151 kg]; FORMWORK QTY [2074 Sqm] | 183,422 | 20 | REM | P3P2SPFF20 | DUKHCON3PP2STFF2030 | DUKHCONP03Z2STFF2030 | DH | CON | P3 | Z2 | ST | SP | FF | B10 | B10-D02 | RES-3 |  |
| DUKHCONP03Z2STFF2035 |  | Beam, Stairs ,Slab-Concrete | 15d | 2013-10-02 | 2013-10-21 | DUKHCONP03Z1STFF2035, DUKHCONP03Z2STFF2030 FF+8d, DUKHCONP03Z2STFF2030 SS+10d | 0d |  | CONCRETE MASON SK [418 h]; LABOR - CIVIL [313.5 h]; CONCRETE QTY [209 Cum] | 83,819 | 25 | REM | P3P2SPFF25 | DUKHCON3PP2STFF2035 | DUKHCONP03Z2STFF2035 | DH | CON | P3 | Z2 | ST | SP | FF | B10 | B10-D02 | RES-3 |  |
|  | 20 | **ROOF** |  | 2013-10-05 | 2013-11-28 |  |  |  |  |  |  |  |  |  |  |  |  |  |  |  |  |  |  |  |  |  |
| DUKHCONP03Z2STRF2040 |  | Column-Rebar & Formwork | 18d | 2013-10-05 | 2013-10-27 | DUKHCONP03Z2STFF2035 FF+3d, DUKHCONP03Z1STRF2040, DUKHCONP03Z2STFF2035 SS+2d | 36d | 0d | STEEL FIXERS SK [58 h]; CARPENTERS SK [256 h]; LABOR - CIVIL [235.5 h]; REINFORCEMENT BARS QTY [717 kg]; FORMWORK QTY [128 Sqm] | 9,566 | 10 | REM | P3P2SPRF10 | DUKHCON3PP2STRF2040 | DUKHCONP03Z2STRF2040 | DH | CON | P3 | Z2 | ST | SP | RF | B10 | B10-D02 | RES-3 |  |
| DUKHCONP03Z2STRF2045 |  | Column-Concrete | 17d | 2013-10-08 | 2013-10-29 | DUKHCONP03Z2STRF2040 FF+1d, DUKHCONP03Z2STRF2040 SS+3d | 51d | 0d | CONCRETE MASON SK [12 h]; LABOR - CIVIL [9 h]; CONCRETE QTY [6 Cum] | 1,723 | 15 | REM | P3P2SPRF15 | DUKHCON3PP2STRF2045 | DUKHCONP03Z2STRF2045 | DH | CON | P3 | Z2 | ST | SP | RF | B10 | B10-D02 | RES-3 |  |
| DUKHCONP03Z2STRF2050 |  | Slab-Rebar & Formwork | 20d | 2013-10-10 | 2013-11-04 | DUKHCONP03Z2STRF2045 FF+5d, DUKHCONP03Z2STRF2045 SS+2d | 51d | 0d | CARPENTERS SK [518 h]; LABOR - CIVIL [675.75 h]; REINFORCEMENT BARS QTY [4777 kg]; FORMWORK QTY [259 Sqm]; STEEL FIXERS SK [383 h] | 33,570 | 20 | REM | P3P2SPRF20 | DUKHCON3PP2STRF2050 | DUKHCONP03Z2STRF2050 | DH | CON | P3 | Z2 | ST | SP | RF | B10 | B10-D02 | RES-3 |  |
| DUKHCONP03Z2STRF2055 |  | Slab-Concrete | 13d | 2013-10-23 | 2013-11-06 | DUKHCONP03Z2STRF2050 SS+5d, DUKHCONP03Z2STRF2050 FF+2d, DUKHCONP03Z1STRF2055 | 51d | 0d | CONCRETE MASON SK [100 h]; LABOR - CIVIL [75 h]; CONCRETE QTY [50 Cum] | 16,065 | 25 | REM | P3P2SPRF25 | DUKHCON3PP2STRF2055 | DUKHCONP03Z2STRF2055 | DH | CON | P3 | Z2 | ST | SP | RF | B10 | B10-D02 | RES-3 |  |
| DUKHCONP03Z2STRF2060 |  | Construction of Parapets | 25d | 2013-10-26 | 2013-11-23 | DUKHCONP03Z2STRF2055 SS+2d, DUKHCONP03Z2STRF2055 FF+10d | 58d | 0d | BLOCK MASON SK [924 h]; LABOR - CIVIL [517 h]; BLOCK QTY [462 Sqm] | 28,644 | 30 |  | P3P2SPRF30 | DUKHCON3PP2STRF2060 | DUKHCONP03Z2STRF2060 | DH | CON | P3 | Z2 | ST | SP | RF | B10 | B10-D03 | RES-3 |  |
| DUKHCONP03Z2STRF2065 |  | Construction of up stands/Plinth | 25d | 2013-10-31 | 2013-11-28 | DUKHCONP03Z1STRF2065, DUKHCONP03Z2STRF2060 FF+5d, DUKHCONP03Z2STRF2060 SS+5d | 58d | 0d | STEEL FIXERS SK [6 h]; CARPENTERS SK [126 h]; CONCRETE MASON SK [30 h]; LABOR - CIVIL [121.5 h]; REINFORCEMENT BARS QTY [68 kg]; FORMWORK QTY [63 Sqm]; CONCRETE QTY [15 Cum] | 8,997 | 35 | REM | P3P2SPRF35 | DUKHCON3PP2STRF2065 | DUKHCONP03Z2STRF2065 | DH | CON | P3 | Z2 | ST | SP | RF | B10 | B10-D02 | RES-3 |  |
|  | 15 | **FINISHING WORKS** |  | 2013-09-15 | 2014-04-16 |  |  |  |  |  |  |  |  |  |  |  |  |  |  |  |  |  |  |  |  |  |
|  | 10 | **INTERNAL FINISHES** |  | 2013-09-15 | 2014-04-16 |  |  |  |  |  |  |  |  |  |  |  |  |  |  |  |  |  |  |  |  |  |
|  | 10 | **GROUND FLOOR** |  | 2013-09-15 | 2014-03-01 |  |  |  |  |  |  |  |  |  |  |  |  |  |  |  |  |  |  |  |  |  |
| DUKHCONP03Z2ARGF3000 |  | Block work | 25d | 2013-09-15 | 2013-10-13 | DUKHCONP03Z2STGF2015 SS+21d, DUKHCONP03Z2STGF2015 FF+21d, DUKHCONP03Z1ARGF3000 | 35d | 0d | BLOCK MASON SK [4552 h]; LABOR - CIVIL [2560.5 h]; BLOCK QTY [2276 Sqm] | 161,435 | 10 | REM | P3P2IFGF10 | DUKHCON3PP2ARGF3000 | DUKHCONP03Z2ARGF3000 | DH | CON | P3 | Z2 | FIN | IF | GF | B10 | B10-D03 | RES-3 |  |
| DUKHCONP03Z2ARGF3005 |  | Plastering work | 25d | 2013-10-07 | 2013-11-06 | DUKHCONP03Z2ELGF4000 FF+5d, DUKHCONP03Z2PLGF4305 FF+5d, DUKHCONP03Z2PLGF4305 SS+5d, DUKHCONP03Z2ARGF3000 SS+7d, DUKHCONP03Z2ARGF3000 FF+7d, DUKHCONP03Z1ARGF3005, DUKHCONP03Z2ELGF4000 SS+5d | 35d | 0d | PLASTER MASON SK [4012 h]; LABOR - CIVIL [2256.75 h]; PLASTER QTY [2507 Sqm] | 32,676 | 12 | REM | P3P2IFGF12 | DUKHCON3PP2ARGF3005 | DUKHCONP03Z2ARGF3005 | DH | CON | P3 | Z2 | FIN | IF | GF | B10 | B10-D10 | RES-3 |  |
| DUKHCONP03Z2ARGF3010 |  | Flooring screed | 21d | 2013-10-15 | 2013-11-10 | DUKHCONP03Z2ARGF3005 SS+7d, DUKHCONP03Z2ARGF3005 FF+3d | 43d | 8d | SCREED MASON SK [898 h]; LABOR - CIVIL [336.75 h]; FLOORING SCREED QTY [1122 Sqm] | 37,269 | 15 | REM | P3P2IFGF15 | DUKHCON3PP2ARGF3010 | DUKHCONP03Z2ARGF3010 | DH | CON | P3 | Z2 | FIN | IF | GF | B10 | B10-D10 | RES-3 |  |
| DUKHCONP03Z2ARGF3015 |  | Wet area waterproofing & Protection Screed | 15d | 2013-10-27 | 2013-11-12 | DUKHCONP03Z2ARGF3005 SS+7d, DUKHCONP03Z2ARGF3005 FF+5d, DUKHCONP03Z1ARGF3015 | 35d | 0d | LABOR- SUBCONTRACTOR [159 h]; WETAREA WATERPROOFING QTY [528 Sqm]; WATERPROOFING SPECIALIST SK [423 h] | 17,952 | 18 | REM | P3P2IFGF18 | DUKHCON3PP2ARGF3015 | DUKHCONP03Z2ARGF3015 | DH | CON | P3 | Z2 | FIN | IF | GF | B10 | B10-D10 | RES-3 |  |
| DUKHCONP03Z2ARGF3020 |  | Ceramic Wall Tiling | 25d | 2013-11-02 | 2013-11-30 | DUKHCONP03Z2ARGF3015 FF+5d, DUKHCONP03Z2PLGF4305 FF+4d, DUKHCONP03Z2PLGF4310 SS+4d, DUKHCONP03Z2PLGF4310 FF+4d, DUKHCONP03Z1ARGF3020, DUKHCONP03Z2PLGF4305 SS+4d, DUKHCONP03Z2ARGF3015 SS+5d | 35d | 0d | TILE MASON SK [1666 h]; LABOR- SUBCONTRACTOR [937.5 h]; CERAMIC WALL TILE QTY [833 Sqm] | 48,488 | 24 | REM | P3P2IFGF24 | DUKHCON3PP2ARGF3020 | DUKHCONP03Z2ARGF3020 | DH | CON | P3 | Z2 | FIN | IF | GF | B10 | B10-D10 | RES-3 |  |
| DUKHCONP03Z2ARGF3030 |  | Paint First coat | 25d | 2013-11-02 | 2013-11-30 | DUKHCONP03Z1ARGF3030, DUKHCONP03Z2ARGF3005 SS+14d, DUKHCONP03Z2ARGF3005 FF+14d | 43d | 0d | LABOR- SUBCONTRACTOR [1128.15 h]; FIRSTCOAT PAINT QTY [3760.5 Sqm]; PAINTERS SK [3008.4 h] | 18,001 | 21 | REM | P3P2IFGF21 | DUKHCON3PP2ARGF3030 | DUKHCONP03Z2ARGF3030 | DH | CON | P3 | Z2 | FIN | IF | GF | B10 | B10-D11 | RES-3 | ENT |
| DUKHCONP03Z2ARGF3025 |  | Porcelain Tile flooring | 25d | 2013-11-07 | 2013-12-05 | DUKHCONP03Z2ARGF3010 FF+10d, DUKHCONP03Z2ARGF3020 SS+5d, DUKHCONP03Z2ARGF3020 FF+5d, DUKHCONP03Z1ARGF3025, DUKHCONP03Z2ARGF3010 SS+10d | 35d | 0d | TILE MASON SK [1144 h]; LABOR- SUBCONTRACTOR [643.5 h]; PORCELAIN FLOORING QTY [1001 Sqm] | 78,427 | 27 | REM | P3P2IFGF27 | DUKHCON3PP2ARGF3025 | DUKHCONP03Z2ARGF3025 | DH | CON | P3 | Z2 | FIN | IF | GF | B10 | B10-D10 | RES-3 |  |
| DUKHCONP03Z2ARGF3045 |  | Fixing of Suspension systems | 20d | 2013-11-25 | 2013-12-17 | DUKHCONP03Z2ARGF3030 SS+7d, DUKHCONP03Z1ARGF3045, DUKHCONP03Z2ARGF3025 FF+10d, DUKHCONP03Z2ELGF4010 SS+5d, DUKHCONP03Z2ARGF3025 SS+10d, DUKHCONP03Z2ARGF3030 FF+7d, DUKHCONP03Z2ELGF4010 FF+5d | 35d | 0d | LABOR- SUBCONTRACTOR [516.75 h]; SUSPENSION QTY [1147.5 Sqm]; FALSE CEILING SKILLED SK [918 h] | 22,044 | 39 | REM | P3P2IFGF39 | DUKHCON3PP2ARGF3045 | DUKHCONP03Z2ARGF3045 | DH | CON | P3 | Z2 | FIN | IF | GF | B10 | B10-D10 | RES-3 | SUS |
| DUKHCONP03Z2ARGF3035 |  | Slate Tile Flooring & Skirting | 15d | 2013-11-27 | 2013-12-14 | DUKHCONP03Z2ARGF3010 SS+13d, DUKHCONP03Z2ARGF3010 FF+13d, DUKHCONP03Z2ARGF3025 FF+7d, DUKHCONP03Z2ARGF3025 SS+13d | 42d | 2d | TILE MASON SK [29 h]; LABOR- SUBCONTRACTOR [16.5 h]; SLATE TILE QTY [18 Sqm] | 4,202 | 33 | REM | P3P2IFGF33 | DUKHCON3PP2ARGF3035 | DUKHCONP03Z2ARGF3035 | DH | CON | P3 | Z2 | FIN | IF | GF | B10 | B10-D10 | RES-3 |  |
| DUKHCONP03Z2ARGF3055 |  | Aluminum tile false ceiling | 25d | 2013-12-03 | 2014-01-01 | DUKHCONP03Z2ARGF3045 FF+7d, DUKHCONP03Z2ACGF4600 FF+7d, DUKHCONP03Z2ARGF3045 SS+7d, DUKHCONP03Z2ACGF4600 SS+7d | 39d | 3d | LABOR- SUBCONTRACTOR [56.25 h]; FALSE CEILING QTY [125 Sqm]; FALSE CEILING SKILLED SK [100 h] | 8,585 | 42 | REM | P3P2IFGF42 | DUKHCON3PP2ARGF3055 | DUKHCONP03Z2ARGF3055 | DH | CON | P3 | Z2 | FIN | IF | GF | B10 | B10-D10 | RES-3 | ALU |
| DUKHCONP03Z2ARGF3040 |  | Cobble Tile flooring | 15d | 2013-12-04 | 2013-12-22 | DUKHCONP03Z2ARGF3035 SS+4d, DUKHCONP03Z2ARGF3035 FF+4d, DUKHCONP03Z2ARGF3025 FF+13d, DUKHCONP03Z2ARGF3010 SS+13d, DUKHCONP03Z2ARGF3025 SS+13d, DUKHCONP03Z2ARGF3010 FF+13d | 40d | 0d | TILE MASON SK [44 h]; LABOR- SUBCONTRACTOR [24.75 h]; COBBLE STONE QTY [27 Sqm] | 2,251 | 30 | REM | P3P2IFGF30 | DUKHCON3PP2ARGF3040 | DUKHCONP03Z2ARGF3040 | DH | CON | P3 | Z2 | FIN | IF | GF | B10 | B10-D10 | RES-3 |  |
| DUKHCONP03Z2ARGF3060 |  | Gypsum board false ceiling | 25d | 2013-12-07 | 2014-01-05 | DUKHCONP03Z2ACGF4600 SS+7d, DUKHCONP03Z2ACGF4600 FF+7d, DUKHCONP03Z2ARGF3045 SS+10d, DUKHCONP03Z1ARGF3060, DUKHCONP03Z2ARGF3045 FF+10d | 35d | 0d | LABOR- SUBCONTRACTOR [467.51 h]; FALSE CEILING QTY [1039 Sqm]; FALSE CEILING SKILLED SK [831.2 h] | 57,405 | 45 | REM | P3P2IFGF45 | DUKHCON3PP2ARGF3060 | DUKHCONP03Z2ARGF3060 | DH | CON | P3 | Z2 | FIN | IF | GF | B10 | B10-D10 | RES-3 | GYP |
| DUKHCONP03Z2ARGF3050 |  | Granite - Stair case flooring & Skirting | 20d | 2013-12-12 | 2014-01-05 | DUKHCONP03Z2ARGF3040 SS+7d, DUKHCONP03Z2ARGF3025 FF+13d, DUKHCONP03Z2ARGF3025 SS+13d, DUKHCONP03Z2ARGF3040 FF+7d | 40d | 0d | GRANITE MASON SK [324 h]; LABOR- SUBCONTRACTOR [182.25 h]; GRANITE QTY [81 Sqm] | 48,650 | 36 | REM | P3P2IFGF36 | DUKHCON3PP2ARGF3050 | DUKHCONP03Z2ARGF3050 | DH | CON | P3 | Z2 | FIN | IF | GF | B10 | B10-D10 | RES-3 |  |
| DUKHCONP03Z2ARGF3065 |  | Wooden door | 15d | 2013-12-28 | 2014-01-13 | DUKHCONP03Z2ARGF3050 SS+7d, DUKHCONP03Z1ARGF3065, DUKHCONP03Z2ARGF3050 FF+7d, DUKHCONP03Z2ARGF3035 FF+7d, DUKHCONP03Z2ARGF3035 SS+7d | 40d | 0d | LABOR- SUBCONTRACTOR [112.5 h]; WOODEN DOOR QTY [75 ea]; DOOR ERECTOR SK [300 h] | 225,525 | 48 | REM | P3P2IFGF48 | DUKHCON3PP2ARGF3065 | DUKHCONP03Z2ARGF3065 | DH | CON | P3 | Z2 | FIN | IF | GF | B10 | B10-D05 | RES-3 |  |
| DUKHCONP03Z2ARGF3070 |  | Aluminum doors | 15d | 2014-01-02 | 2014-01-19 | DUKHCONP03Z2ARGF3065 SS+5d, DUKHCONP03Z2ARGF3065 FF+5d, DUKHCONP03Z1ARGF3070 | 40d | 0d | LABOR- SUBCONTRACTOR [27 h]; ALUMINIUM DOOR QTY [18 ea]; DOOR ERECTOR SK [72 h] | 22,066 | 51 | REM | P3P2IFGF51 | DUKHCON3PP2ARGF3070 | DUKHCONP03Z2ARGF3070 | DH | CON | P3 | Z2 | FIN | IF | GF | B10 | B10-D06 | RES-3 |  |
| DUKHCONP03Z2ARGF3075 |  | Carpentry & Joinery Works | 20d | 2014-01-08 | 2014-01-30 | DUKHCONP03Z2ARGF3070 FF+7d, DUKHCONP03Z1ARGF3075, DUKHCONP03Z2ARGF3070 SS+5d | 40d | 0d | LABOR- SUBCONTRACTOR [216 h]; CABINET QTY [54 ea]; WARDROBE QTY [18 ea]; JOINERY WORK SK [576 h] | 128,681 | 57 | REM | P3P2IFGF57 | DUKHCON3PP2ARGF3075 | DUKHCONP03Z2ARGF3075 | DH | CON | P3 | Z2 | FIN | IF | GF | B10 | B10-D05 | RES-3 |  |
| DUKHCONP03Z2ARGF3080 |  | Aluminum windows | 20d | 2014-01-09 | 2014-02-01 | DUKHCONP03Z2ARGF3070 FF+6d, DUKHCONP03Z2ARGF3070 SS+6d, DUKHCONP03Z1ARGF3080 | 50d | 5d | LABOR- SUBCONTRACTOR [60 h]; ALUMINIUM WINDOWS QTY [60 ea]; WINDOW ERECTOR SK [160 h] | 45,348 | 54 | REM | P3P2IFGF54 | DUKHCON3PP2ARGF3080 | DUKHCONP03Z2ARGF3080 | DH | CON | P3 | Z2 | FIN | IF | GF | B10 | B10-D06 | RES-3 |  |
| DUKHCONP03Z2ARGF3085 |  | S.S.Balustrade | 20d | 2014-01-16 | 2014-02-08 | DUKHCONP03Z2ARGF3075 FF+7d, DUKHCONP03Z2ARGF3075 SS+7d, DUKHCONP03Z2ARGF3050 FF+7d, DUKHCONP03Z2ARGF3050 SS+7d | 45d | 5d | LABOR- SUBCONTRACTOR [17.25 h]; S.S.BALUSTRADE QTY [15 lm]; HANDRAIL ERECTOR SKILLED [30 h] | 21,690 | 63 | REM | P3P2IFGF63 | DUKHCON3PP2ARGF3085 | DUKHCONP03Z2ARGF3085 | DH | CON | P3 | Z2 | FIN | IF | GF | B10 | B10-D06 | RES-3 |  |
| DUKHCONP03Z2ARGF3090 |  | Installation of Granite Counter Top | 15d | 2014-01-21 | 2014-02-06 | DUKHCONP03Z2ARGF3075 SS+7d, DUKHCONP03Z2ARGF3075 FF+6d | 40d | 0d | GRANITE MASON SK [96 h]; LABOR- SUBCONTRACTOR [36 h]; GRANITE COUNTER TOP QTY [24 ea] | 23,258 | 60 | REM | P3P2IFGF60 | DUKHCON3PP2ARGF3090 | DUKHCONP03Z2ARGF3090 | DH | CON | P3 | Z2 | FIN | IF | GF | B10 | B10-D10 | RES-3 |  |
| DUKHCONP03Z2ARGF3095 |  | Final Painting | 25d | 2014-01-30 | 2014-03-01 | DUKHCONP03Z2ARGF3035 SS+13d, DUKHCONP03Z2ARGF3060 FF+8d, DUKHCONP03Z2ARGF3060 SS+8d, DUKHCONP03Z2ARGF3080 FF+8d, DUKHCONP03Z2ARGF3090 SS+8d, DUKHCONP03Z2ARGF3040 SS+13d, DUKHCONP03Z2ARGF3040 FF+13d, DUKHCONP03Z2ARGF3085 SS+7d, DUKHCONP03Z2ARGF3085 FF+7d, DUKHCONP03Z2ACGF4610 SS+10d, DUKHCONP03Z2ARGF3035 FF+13d, DUKHCONP03Z2ARGF3070 FF+5d, DUKHCONP03Z2ARGF3070 SS+5d, DUKHCONP03Z2ARGF3030 FF+10d, DUKHCONP03Z1ARGF3095, DUKHCONP03Z2ARGF3030 SS+10d, DUKHCONP03Z2ARGF3080 SS+8d, DUKHCONP03Z2ARGF3090 FF+8d, DUKHCONP03Z2ACGF4610 FF+10d | 40d | 0d | LABOR- SUBCONTRACTOR [1128.15 h]; PAINT QTY [3760.5 Sqm]; PAINTERS SK [3008.4 h] | 50,845 | 66 | REM | P3P2IFGF66 | DUKHCON3PP2ARGF3095 | DUKHCONP03Z2ARGF3095 | DH | CON | P3 | Z2 | FIN | IF | GF | B10 | B10-D11 | RES-3 | PNT |

Notes:
- DUKHCONP03Z2STFF2020: Expenses: P03-Concrete Works 29055
- DUKHCONP03Z2STFF2025: Expenses: P03-Concrete Works 7236
- DUKHCONP03Z2STFF2030: Expenses: P03-Concrete Works 183422
- DUKHCONP03Z2STFF2035: Expenses: P03-Concrete Works 83819
- DUKHCONP03Z2STRF2040: Expenses: P03-Concrete Works 9566
- DUKHCONP03Z2STRF2045: Expenses: P03-Concrete Works 1723
- DUKHCONP03Z2STRF2050: Expenses: P03-Concrete Works 33570
- DUKHCONP03Z2STRF2055: Expenses: P03-Concrete Works 16065
- DUKHCONP03Z2STRF2060: Expenses: P03-Block work 28644
- DUKHCONP03Z2STRF2065: Expenses: P03-Concrete Works 8997
- DUKHCONP03Z2ARGF3000: Expenses: P03-Block work 161435
- DUKHCONP03Z2ARGF3005: Expenses: P03-Finishes 32676
- DUKHCONP03Z2ARGF3010: Expenses: P03-Finishes 37269
- DUKHCONP03Z2ARGF3015: Expenses: P03-Finishes 17952
- DUKHCONP03Z2ARGF3020: Expenses: P03-Finishes 48488
- DUKHCONP03Z2ARGF3030: Expenses: P03-Painting and Decorating 18001
- DUKHCONP03Z2ARGF3025: Expenses: P03-Finishes 78427
- DUKHCONP03Z2ARGF3045: Expenses: P03-Finishes 22044
- DUKHCONP03Z2ARGF3035: Expenses: P03-Finishes 4202
- DUKHCONP03Z2ARGF3055: Expenses: P03-Finishes 8585
- DUKHCONP03Z2ARGF3040: Expenses: P03-Finishes 2251
- DUKHCONP03Z2ARGF3060: Expenses: P03-Finishes 57405
- DUKHCONP03Z2ARGF3050: Expenses: P03-Finishes 48650
- DUKHCONP03Z2ARGF3065: Expenses: P03-Carpentry and Joinery 225525
- DUKHCONP03Z2ARGF3070: Expenses: P03-Metal work 22066
- DUKHCONP03Z2ARGF3075: Expenses: P03-Carpentry and Joinery 128681
- DUKHCONP03Z2ARGF3080: Expenses: P03-Metal work 45348
- DUKHCONP03Z2ARGF3085: Expenses: P03-Metal work 21690
- DUKHCONP03Z2ARGF3090: Expenses: P03-Finishes 23258
- DUKHCONP03Z2ARGF3095: Expenses: P03-Painting and Decorating 50845

| ID | WBS | Activity | Duration | Start | Finish | Predecessors | Total float | Free float | Resources | Cost | CODE | rem | P3 ACTID | P6 ID (old) | NP61D | PROJECT | PHASES | PACKAGE | PART | ELEMENTS | STEP | FLOORS | BILL NOS | BILL DIVISION | RES PACK | EXECUTER |
| --- | --- | --- | --- | --- | --- | --- | --- | --- | --- | --- | --- | --- | --- | --- | --- | --- | --- | --- | --- | --- | --- | --- | --- | --- | --- | --- |
|  | 15 | **FIRST FLOORS** |  | 2013-10-29 | 2014-04-16 |  |  |  |  |  |  |  |  |  |  |  |  |  |  |  |  |  |  |  |  |  |
| DUKHCONP03Z2ARFF3300 |  | Block work | 25d | 2013-10-29 | 2013-11-26 | DUKHCONP03Z2STFF2035 FF+21d, DUKHCONP03Z2STFF2035 SS+21d, DUKHCONP03Z1ARFF3300, DUKHCONP03Z2STFF2020 FF+21d, DUKHCONP03Z2STFF2020 SS+21d | 0d |  | BLOCK MASON SK [3554 h]; LABOR - CIVIL [1999.5 h]; BLOCK QTY [1777 Sqm] | 140,077 | 10 | REM | P3P2IFFF10 | DUKHCON3PP2ARFF3300 | DUKHCONP03Z2ARFF3300 | DH | CON | P3 | Z2 | FIN | IF | FF | B10 | B10-D03 | RES-3 |  |
| DUKHCONP03Z2ARFF3305 |  | Plastering work | 25d | 2013-11-23 | 2013-12-22 | DUKHCONP03Z2PLFF4325 FF+8d, DUKHCONP03Z2ELFF4035 SS+5d, DUKHCONP03Z2ARFF3300 FF+7d, DUKHCONP03Z2ARFF3300 SS+7d, DUKHCONP03Z2PLFF4325 SS+8d, DUKHCONP03Z2ELFF4035 FF+5d, DUKHCONP03Z1ARFF3305 | 0d |  | PLASTER MASON SK [3530 h]; LABOR - CIVIL [1986 h]; PLASTER QTY [2206 Sqm] | 33,200 | 12 | REM | P3P2IFFF12 | DUKHCON3PP2ARFF3305 | DUKHCONP03Z2ARFF3305 | DH | CON | P3 | Z2 | FIN | IF | FF | B10 | B10-D10 | RES-3 |  |
| DUKHCONP03Z2ARFF3310 |  | Flooring screed | 21d | 2013-12-01 | 2013-12-25 | DUKHCONP03Z2ARFF3305 FF+3d, DUKHCONP03Z2ARFF3305 SS+7d | 15d |  | SCREED MASON SK [750 h]; LABOR - CIVIL [281.25 h]; FLOORING SCREED QTY [937 Sqm] | 30,918 | 15 | REM | P3P2IFFF15 | DUKHCON3PP2ARFF3310 | DUKHCONP03Z2ARFF3310 | DH | CON | P3 | Z2 | FIN | IF | FF | B10 | B10-D10 | RES-3 |  |
| DUKHCONP03Z2ARFF3330 |  | Paint First coat | 25d | 2013-12-09 | 2014-01-07 | DUKHCONP03Z2ARFF3305 FF+14d, DUKHCONP03Z2ARFF3305 SS+14d | 18d |  | LABOR- SUBCONTRACTOR [993.75 h]; PAINTERS SK [2651 h]; FIRSTCOAT PAINT QTY [3313.5 Sqm] | 18,001 | 21 | REM | P3P2IFFF21 | DUKHCON3PP2ARFF3330 | DUKHCONP03Z2ARFF3330 | DH | CON | P3 | Z2 | FIN | IF | FF | B10 | B10-D11 | RES-3 | ENT |
| DUKHCONP03Z2ARFF3315 |  | Wet area waterproofing | 15d | 2013-12-14 | 2013-12-31 | DUKHCONP03Z2ARFF3305 FF+8d, DUKHCONP03Z1ARFF3315, DUKHCONP03Z2ARFF3305 SS+7d | 0d |  | LABOR- SUBCONTRACTOR [159 h]; WETAREA WATERPROOFING QTY [528 Sqm]; WATERPROOFING SPECIALIST SK [423 h] | 20,805 | 18 | REM | P3P2IFFF18 | DUKHCON3PP2ARFF3315 | DUKHCONP03Z2ARFF3315 | DH | CON | P3 | Z2 | FIN | IF | FF | B10 | B10-D10 | RES-3 |  |
| DUKHCONP03Z2ARFF3320 |  | Ceramic Wall Tiling | 25d | 2013-12-24 | 2014-01-21 | DUKHCONP03Z2ARFF3315 SS+8d, DUKHCONP03Z2PLFF4325 FF+4d, DUKHCONP03Z2PLFF4325 SS+4d, DUKHCONP03Z2PLFF4330 FF+7d, DUKHCONP03Z1ARFF3320, DUKHCONP03Z2ARFF3315 FF+7d, DUKHCONP03Z2PLFF4330 SS+7d | 0d |  | TILE MASON SK [1666 h]; LABOR- SUBCONTRACTOR [937.5 h]; CERAMIC WALL TILE QTY [833 Sqm] | 48,488 | 24 | REM | P3P2IFFF24 | DUKHCON3PP2ARFF3320 | DUKHCONP03Z2ARFF3320 | DH | CON | P3 | Z2 | FIN | IF | FF | B10 | B10-D10 | RES-3 |  |
| DUKHCONP03Z2ARFF3325 |  | Porcelain Tile flooring | 25d | 2013-12-31 | 2014-01-28 | DUKHCONP03Z2ARFF3310 SS+10d, DUKHCONP03Z1ARFF3325, DUKHCONP03Z2ARFF3320 FF+6d, DUKHCONP03Z2ARFF3310 FF+10d, DUKHCONP03Z2ARFF3320 SS+6d | 0d |  | TILE MASON SK [1144 h]; LABOR- SUBCONTRACTOR [643.5 h]; PORCELAIN FLOORING QTY [1001 Sqm] | 78,425 | 27 | REM | P3P2IFFF27 | DUKHCON3PP2ARFF3325 | DUKHCONP03Z2ARFF3325 | DH | CON | P3 | Z2 | FIN | IF | FF | B10 | B10-D10 | RES-3 |  |
| DUKHCONP03Z2ARFF3345 |  | Fixing of Suspension systems | 20d | 2014-01-14 | 2014-02-05 | DUKHCONP03Z2ELFF4045 SS+5d, DUKHCONP03Z2ARFF3330 SS+7d, DUKHCONP03Z2ARFF3330 FF+7d, DUKHCONP03Z1ARFF3345, DUKHCONP03Z2ELFF4045 FF+5d, DUKHCONP03Z2ARFF3325 FF+7d, DUKHCONP03Z2ARFF3325 SS+7d | 0d |  | LABOR- SUBCONTRACTOR [516.75 h]; SUSPENSION QTY [1147.5 Sqm]; FALSE CEILING SKILLED SK [918 h] | 22,044 | 36 | REM | P3P2IFFF36 | DUKHCON3PP2ARFF3345 | DUKHCONP03Z2ARFF3345 | DH | CON | P3 | Z2 | FIN | IF | FF | B10 | B10-D10 | RES-3 | SUS |
| DUKHCONP03Z2ARFF3335 |  | Slate Tile Flooring & Skirting | 15d | 2014-01-18 | 2014-02-03 | DUKHCONP03Z2ARFF3310 SS+13d, DUKHCONP03Z2ARFF3325 FF+5d, DUKHCONP03Z2ARFF3325 SS+13d, DUKHCONP03Z2ARFF3310 FF+13d | 10d |  | LABOR- SUBCONTRACTOR [486 h]; SUSPENSION QTY [1065 Sqm]; FALSE CEILING SKILLED SK [864 h]; SLATE TILE QTY [18 Sqm] | 4,202 | 30 |  | P3P2IFFF30 | DUKHCON3PP2ARFF3335 | DUKHCONP03Z2ARFF3335 | DH | CON | P3 | Z2 | FIN | IF | FF | B10 | B10-D10 | RES-3 |  |
| DUKHCONP03Z2ARFF3350 |  | Granite - Stair case flooring & Skirting | 20d | 2014-01-21 | 2014-02-13 | DUKHCONP03Z2ARFF3325 FF+13d, DUKHCONP03Z2ARFF3325 SS+13d | 2d |  | LABOR- SUBCONTRACTOR [54 h]; FALSE CEILING QTY [126 Sqm]; FALSE CEILING SKILLED SK [96 h] | 2,634 | 33 |  | P3P2IFFF33 | DUKHCON3PP2ARFF3350 | DUKHCONP03Z2ARFF3350 | DH | CON | P3 | Z2 | FIN | IF | FF | B10 | B10-D10 | RES-3 |  |
| DUKHCONP03Z2ARFF3360 |  | Gypsum board false ceiling | 25d | 2014-01-22 | 2014-02-20 | DUKHCONP03Z2ARFF3345 FF+7d, DUKHCONP03Z2ARFF3345 SS+7d, DUKHCONP03Z2ACFF4615 FF+7d, DUKHCONP03Z2ACFF4615 SS+7d, DUKHCONP03Z1ARFF3360 | 0d |  | LABOR- SUBCONTRACTOR [467.51 h]; FALSE CEILING SKILLED SK [831.2 h]; FALSE CEILING QTY [1039 Sqm] | 57,405 | 39 | REM | P3P2IFFF39 | DUKHCON3PP2ARFF3360 | DUKHCONP03Z2ARFF3360 | DH | CON | P3 | Z2 | FIN | IF | FF | B10 | B10-D10 | RES-3 | GYP |
| DUKHCONP03Z2ARFF3355 |  | Aluminum tile false ceiling | 20d | 2014-01-26 | 2014-02-18 | DUKHCONP03Z2ACFF4615 SS+7d, DUKHCONP03Z2ACFF4615 FF+7d, DUKHCONP03Z2ARFF3345 FF+10d, DUKHCONP03Z2ARFF3345 SS+10d, DUKHCONP03Z1ARFF3360, DUKHCONP03Z1ARFF3355 | 2d | 0d | LABOR- SUBCONTRACTOR [56.25 h]; FALSE CEILING SKILLED SK [125 h] | 8,583 | 39 | REM | P3P2IFFF38 | DUKHCON3PP2ARFF3355 | DUKHCONP03Z2ARFF3355 | DH | CON | P3 | Z2 | FIN | IF | FF | B10 | B10-D10 | RES-3 | ALU |
| DUKHCONP03Z2ARFF3365 |  | Wooden door | 15d | 2014-02-06 | 2014-02-24 | DUKHCONP03Z2ARFF3335 FF+7d, DUKHCONP03Z2ARFF3355 FF+3d, DUKHCONP03Z2ARFF3350 FF+7d, DUKHCONP03Z2ARFF3360 SS+3d, DUKHCONP03Z2ARFF3355 SS+3d, DUKHCONP03Z1ARFF3365, DUKHCONP03Z2ARFF3350 SS+7d, DUKHCONP03Z2ARFF3335 SS+7d, DUKHCONP03Z2ARFF3360 FF+3d | 0d |  | LABOR- SUBCONTRACTOR [90 h]; WOODEN DOOR QTY [60 ea]; DOOR ERECTOR SK [240 h] | 178,634 | 42 | REM | P3P2IFFF42 | DUKHCON3PP2ARFF3365 | DUKHCONP03Z2ARFF3365 | DH | CON | P3 | Z2 | FIN | IF | FF | B10 | B10-D05 | RES-3 |  |
| DUKHCONP03Z2ARFF3370 |  | Aluminum Door | 20d | 2014-02-16 | 2014-03-10 | DUKHCONP03Z1ARFF3370, DUKHCONP03Z2ARFF3365 SS+7d, DUKHCONP03Z2ARFF3365 FF+5d | 0d |  | LABOR- SUBCONTRACTOR [27 h]; ALUMINIUM DOOR QTY [18 ea]; DOOR ERECTOR SK [72 h] | 47,668 | 45 | REM | P3P2IFFF45 | DUKHCON3PP2ARFF3370 | DUKHCONP03Z2ARFF3370 | DH | CON | P3 | Z2 | FIN | IF | FF | B10 | B10-D06 | RES-3 |  |
| DUKHCONP03Z2ARFF3380 |  | Aluminum windows | 20d | 2014-02-23 | 2014-03-17 | DUKHCONP03Z2ARFF3370 FF+6d, DUKHCONP03Z2ARFF3370 SS+6d | 11d |  | LABOR- SUBCONTRACTOR [72 h]; ALUMINIUM WINDOWS QTY [72 ea]; WINDOW ERECTOR SK [192 h] | 55,732 | 48 | REM | P3P2IFFF48 | DUKHCON3PP2ARFF3380 | DUKHCONP03Z2ARFF3380 | DH | CON | P3 | Z2 | FIN | IF | FF | B10 | B10-D06 | RES-3 |  |
| DUKHCONP03Z2ARFF3375 |  | Carpentry & Joinery Works | 25d | 2014-02-24 | 2014-03-24 | DUKHCONP03Z2ARFF3370 SS+7d, DUKHCONP03Z1ARFF3375, DUKHCONP03Z2ARFF3370 FF+5d | 0d |  | LABOR- SUBCONTRACTOR [108 h]; S.S.BALUSTRADE QTY [96 lm]; HANDRAIL ERECTOR SKILLED [192 h]; CABINET QTY [36 ea] | 128,678 | 51 |  | P3P2IFFF51 | DUKHCON3PP2ARFF3375 | DUKHCONP03Z2ARFF3375 | DH | CON | P3 | Z2 | FIN | IF | FF | B10 | B10-D05 | RES-3 |  |
| DUKHCONP03Z2ARFF3385 |  | Handrail & Balustrade | 20d | 2014-03-08 | 2014-03-30 | DUKHCONP03Z2ARFF3350 SS+7d, DUKHCONP03Z2ARFF3375 FF+5d, DUKHCONP03Z2ARFF3375 SS+5d, DUKHCONP03Z2ARFF3350 FF+7d | 0d |  | LABOR- SUBCONTRACTOR [75 h]; HANDRAIL ERECTOR SKILLED [200 h]; S.S.BALUSTRADE QTY [15 lm] | 16,268 | 57 |  | P3P2IFFF57 | DUKHCON3PP2ARFF3385 | DUKHCONP03Z2ARFF3385 | DH | CON | P3 | Z2 | FIN | IF | FF | B10 | B10-D06 | RES-3 |  |
| DUKHCONP03Z2ARFF3390 |  | Installation of Granite Counter Top | 20d | 2014-03-10 | 2014-04-01 | DUKHCONP03Z2ARFF3375 SS+7d, DUKHCONP03Z2ARFF3375 FF+7d | 0d |  | GRANITE MASON SK [96 h]; LABOR- SUBCONTRACTOR [36 h]; GRANITE COUNTER TOP QTY [24 ea] | 23,258 | 54 | REM | P3P2IFFF54 | DUKHCON3PP2ARFF3390 | DUKHCONP03Z2ARFF3390 | DH | CON | P3 | Z2 | FIN | IF | FF | B10 | B10-D10 | RES-3 |  |
| DUKHCONP03Z2ARFF3395 |  | Final Painting | 25d | 2014-03-19 | 2014-04-16 | DUKHCONP03Z2ARFF3330 SS+10d, DUKHCONP03Z2ARFF3335 FF+8d, DUKHCONP03Z2ARFF3355 SS+10d, DUKHCONP03Z2ARFF3375 FF+8d, DUKHCONP03Z2ARFF3330 FF+10d, DUKHCONP03Z2ARFF3355 FF+10d, DUKHCONP03Z2ARFF3375 SS+8d, DUKHCONP03Z2ARFF3390 SS+8d, DUKHCONP03Z2ARFF3385 SS+10d, DUKHCONP03Z2ACFF4625 FF+10d, DUKHCONP03Z2ARFF3335 SS+8d, DUKHCONP03Z2ARFF3350 SS+8d, DUKHCONP03Z2ARFF3360 SS+10d, DUKHCONP03Z2ARFF3360 FF+10d, DUKHCONP03Z2ARFF3380 FF+10d, DUKHCONP03Z2ARFF3385 FF+10d, DUKHCONP03Z1ARFF3395, DUKHCONP03Z2ACFF4625 SS+10d, DUKHCONP03Z2ARFF3365 SS+8d, DUKHCONP03Z2ARFF3380 SS+10d, DUKHCONP03Z2ARFF3350 FF+8d, DUKHCONP03Z2ARFF3365 FF+8d, DUKHCONP03Z2ARFF3390 FF+8d | 0d |  | LABOR- SUBCONTRACTOR [993.75 h]; PAINTERS SK [2651 h]; PAINT QTY [3313.5 Sqm] | 43,143 | 60 | REM | P3P2IFFF60 | DUKHCON3PP2ARFF3395 | DUKHCONP03Z2ARFF3395 | DH | CON | P3 | Z2 | FIN | IF | FF | B10 | B10-D11 | RES-3 | PNT |
|  | 20 | **ROOF** |  | 2013-11-17 | 2014-01-21 |  |  |  |  |  |  |  |  |  |  |  |  |  |  |  |  |  |  |  |  |  |
| DUKHCONP03Z2ARRF3600 |  | Block work | 20d | 2013-11-17 | 2013-12-09 | DUKHCONP03Z1ARRF3600, DUKHCONP03Z2STRF2055 SS+21d, DUKHCONP03Z2STRF2055 FF+21d | 67d | 0d | BLOCK MASON SK [312 h]; LABOR - CIVIL [175.5 h]; BLOCK QTY [156 Sqm] | 12,917 | 10 | REM | P3P2IFRF10 | DUKHCON3PP2ARRF3600 | DUKHCONP03Z2ARRF3600 | DH | CON | P3 | Z2 | FIN | IF | RF | B10 | B10-D03 | RES-3 |  |
| DUKHCONP03Z2ARRF3605 |  | Plastering work | 20d | 2013-11-25 | 2013-12-17 | DUKHCONP03Z2ARRF3600 SS+7d, DUKHCONP03Z2ARRF3600 FF+7d | 67d | 0d | PLASTER MASON SK [1248 h]; LABOR - CIVIL [702 h]; PLASTER QTY [780 Sqm] | 10,140 | 20 | REM | P3P2IFRF20 | DUKHCON3PP2ARRF3605 | DUKHCONP03Z2ARRF3605 | DH | CON | P3 | Z2 | FIN | IF | RF | B10 | B10-D10 | RES-3 |  |
| DUKHCONP03Z2ARRF3610 |  | Flooring screed | 15d | 2013-12-09 | 2013-12-26 | DUKHCONP03Z2ARRF3605 SS+7d, DUKHCONP03Z2ARRF3605 FF+7d | 72d | 0d | SCREED MASON SK [84 h]; LABOR - CIVIL [31.5 h]; FLOORING SCREED QTY [104 Sqm] | 3,435 | 30 | REM | P3P2IFRF30 | DUKHCON3PP2ARRF3610 | DUKHCONP03Z2ARRF3610 | DH | CON | P3 | Z2 | FIN | IF | RF | B10 | B10-D10 | RES-3 |  |
| DUKHCONP03Z2ARRF3695 |  | Painting | 20d | 2013-12-17 | 2014-01-09 | DUKHCONP03Z2ARRF3610 SS+7d, DUKHCONP03Z2ARRF3610 FF+7d | 72d | 0d | LABOR- SUBCONTRACTOR [144 h]; PAINT QTY [450 Sqm]; PAINTERS SK [360 h] | 6,202 | 40 |  | P3P2IFRF40 | DUKHCON3PP2ARRF3695 | DUKHCONP03Z2ARRF3695 | DH | CON | P3 | Z2 | FIN | IF | RF | B10 | B10-D11 | RES-3 |  |
| DUKHCONP03Z2ARRF3620 |  | Epoxy Painting | 15d | 2014-01-05 | 2014-01-21 | DUKHCONP03Z2ARRF3695 FF+10d, DUKHCONP03Z2ARRF3695 SS+10d | 72d |  | LABOR- SUBCONTRACTOR [6.75 h]; EPOXY QTY [33 Sqm]; EPOXY SK [18 h] | 2,352 | 50 | REM | P3P2IFRF50 | DUKHCON3PP2ARRF3620 | DUKHCONP03Z2ARRF3620 | DH | CON | P3 | Z2 | FIN | IF | RF | B10 | B10-D11 | RES-3 |  |

Notes:
- DUKHCONP03Z2ARFF3300: Expenses: P03-Block work 140077
- DUKHCONP03Z2ARFF3305: Expenses: P03-Finishes 33200
- DUKHCONP03Z2ARFF3310: Expenses: P03-Finishes 30918
- DUKHCONP03Z2ARFF3330: Expenses: P03-Painting and Decorating 18001
- DUKHCONP03Z2ARFF3315: Expenses: P03-Finishes 20805
- DUKHCONP03Z2ARFF3320: Expenses: P03-Finishes 48488
- DUKHCONP03Z2ARFF3325: Expenses: P03-Finishes 78425
- DUKHCONP03Z2ARFF3345: Expenses: P03-Finishes 22044
- DUKHCONP03Z2ARFF3335: Expenses: P03-Finishes 4202
- DUKHCONP03Z2ARFF3350: Expenses: P03-Finishes 2634
- DUKHCONP03Z2ARFF3360: Expenses: P03-Finishes 57405
- DUKHCONP03Z2ARFF3355: Expenses: P03-Finishes 8583
- DUKHCONP03Z2ARFF3365: Expenses: P03-Carpentry and Joinery 178634
- DUKHCONP03Z2ARFF3370: Expenses: P03-Metal work 47668
- DUKHCONP03Z2ARFF3380: Expenses: P03-Metal work 55732
- DUKHCONP03Z2ARFF3375: Expenses: P03-Carpentry and Joinery 128678
- DUKHCONP03Z2ARFF3385: Expenses: P03-Metal work 16268
- DUKHCONP03Z2ARFF3390: Expenses: P03-Finishes 23258
- DUKHCONP03Z2ARFF3395: Expenses: P03-Painting and Decorating 43143
- DUKHCONP03Z2ARRF3600: Expenses: P03-Block work 12917
- DUKHCONP03Z2ARRF3605: Expenses: P03-Finishes 10140
- DUKHCONP03Z2ARRF3610: Expenses: P03-Finishes 3435
- DUKHCONP03Z2ARRF3695: Expenses: P03-Painting and Decorating 6202
- DUKHCONP03Z2ARRF3620: Expenses: P03-Painting and Decorating 2352

| ID | WBS | Activity | Duration | Start | Finish | Predecessors | Total float | Free float | Resources | Cost | CODE | rem | P3 ACTID | P6 ID (old) | NP61D | PROJECT | PHASES | PACKAGE | PART | ELEMENTS | STEP | FLOORS | BILL NOS | BILL DIVISION | RES PACK |
| --- | --- | --- | --- | --- | --- | --- | --- | --- | --- | --- | --- | --- | --- | --- | --- | --- | --- | --- | --- | --- | --- | --- | --- | --- | --- |
|  | 15 | **EXTERNAL FINISHES** |  | 2013-11-23 | 2014-02-19 |  |  |  |  |  |  |  |  |  |  |  |  |  |  |  |  |  |  |  |  |
|  | 10 | **ROOF** |  | 2013-11-23 | 2014-01-27 |  |  |  |  |  |  |  |  |  |  |  |  |  |  |  |  |  |  |  |  |
| DUKHCONP03Z2ARRF3630 |  | Leveling Screed for Waterproofing | 25d | 2013-11-23 | 2013-12-22 | DUKHCONP03Z2STRF2065 SS+10d, DUKHCONP03Z2STRF2060 FF+10d, DUKHCONP03Z1ARRF3630, DUKHCONP03Z2STRF2060 SS+10d, DUKHCONP03Z2STRF2065 FF+10d | 62d | 0d | SCREED MASON SK [470 h]; LABOR- SUBCONTRACTOR [264.75 h]; ROOF WP SCREED QTY [1173 Sqm] | 46,704 | 10 | REM | P3P2EFRF10 | DUKHCON3PP2ARRF3630 | DUKHCONP03Z2ARRF3630 | DH | CON | P3 | Z2 | FIN | EF | RF | B10 | B10-D04 | RES-3 |
| DUKHCONP03Z2ARRF3635 |  | Laying of Waterproofing Membrane | 25d | 2013-11-26 | 2013-12-25 | DUKHCONP03Z2ARRF3630 FF+3d, DUKHCONP03Z2ARRF3630 SS+3d | 62d | 0d | LABOR- SUBCONTRACTOR [557.25 h]; ROOF WP MEMBRANE QTY [2784 Sqm]; WATERPROOFING SPECIALIST SK [1485 h] | 61,507 | 15 | REM | P3P2EFRF15 | DUKHCON3PP2ARRF3635 | DUKHCONP03Z2ARRF3635 | DH | CON | P3 | Z2 | FIN | EF | RF | B10 | B10-D04 | RES-3 |
| DUKHCONP03Z2ARRF3640 |  | Installation of Insulation & Protection | 25d | 2013-12-01 | 2013-12-30 | DUKHCONP03Z2ARRF3635 SS+4d, DUKHCONP03Z2ARRF3635 FF+4d | 62d | 0d | LABOR- SUBCONTRACTOR [352.5 h]; ROOF WP INSULATION QTY [2346 Sqm]; WATERPROOFING SPECIALIST SK [939 h] | 34,449 | 20 | REM | P3P2EFRF20 | DUKHCON3PP2ARRF3640 | DUKHCONP03Z2ARRF3640 | DH | CON | P3 | Z2 | FIN | EF | RF | B10 | B10-D04 | RES-3 |
| DUKHCONP03Z2ARRF3645 |  | Lime Stone Chips & Paving slab Installation | 25d | 2013-12-05 | 2014-01-04 | DUKHCONP03Z2ARRF3640 FF+4d, DUKHCONP03Z2ARRF3640 SS+4d | 62d | 0d | TILE MASON SK [95 h]; LABOR- SUBCONTRACTOR [202.5 h]; LIME STONE QTY [237 Sqm]; PRECAST PAVING SLAB QTY [1110 Sqm]; PRE CAST CONCRETE SK [444 h] | 84,498 | 25 | REM | P3P2EFRF25 | DUKHCON3PP2ARRF3645 | DUKHCONP03Z2ARRF3645 | DH | CON | P3 | Z2 | FIN | EF | RF | B10 | B10-D04 | RES-3 |
| DUKHCONP03Z2ARRF3650 |  | Install. of Gal. Frame & Aluminum Slat Screen | 25d | 2013-12-14 | 2014-01-12 | DUKHCONP03Z2ARRF3645 SS+7d, DUKHCONP03Z2ARRF3645 FF+7d | 62d | 0d | LABOR- SUBCONTRACTOR [378 h]; ALUMINIUM SCREEN QTY [189 Sqm]; DOOR ERECTOR SK [504 h] | 53,449 | 35 | REM | P3P2EFRF35 | DUKHCON3PP2ARRF3650 | DUKHCONP03Z2ARRF3650 | DH | CON | P3 | Z2 | FIN | EF | RF | B10 | B10-D06 | RES-3 |
| DUKHCONP03Z2ARRF3655 |  | Installation of Pumps Protection cabinets | 20d | 2013-12-30 | 2014-01-21 | DUKHCONP03Z1ARRF3655, DUKHCONP03Z2ARRF3650 SS+8d, DUKHCONP03Z2ARRF3650 FF+8d, DUKHCONP03Z2ARRF3645 SS+7d, DUKHCONP03Z2ARRF3645 FF+7d | 62d | 0d | LABOR- SUBCONTRACTOR [63 h]; CABINET QTY [21 ea]; JOINERY WORK SK [168 h] | 9,975 | 30 | REM | P3P2EFRF30 | DUKHCON3PP2ARRF3655 | DUKHCONP03Z2ARRF3655 | DH | CON | P3 | Z2 | FIN | EF | RF | B10 | B10-D04 | RES-3 |
| DUKHCONP03Z2ARRF3660 |  | Installation of Access Ladder | 15d | 2014-01-11 | 2014-01-27 | DUKHCONP03Z2ARRF3655 SS+5d, DUKHCONP03Z2ARRF3655 FF+5d | 67d |  | LABOR- SUBCONTRACTOR [54 h]; LADDER QTY [18 ea]; LADDER ERECTOR SK [144 h] | 19,196 | 40 | REM | P3P2EFRF40 | DUKHCON3PP2ARRF3660 | DUKHCONP03Z2ARRF3660 | DH | CON | P3 | Z2 | FIN | EF | RF | B10 | B10-D06 | RES-3 |
|  | 15 | **ELEVATION** |  | 2013-12-21 | 2014-02-19 |  |  |  |  |  |  |  |  |  |  |  |  |  |  |  |  |  |  |  |  |
| DUKHCONP03Z2AREL3665 |  | External Plastering | 25d | 2013-12-21 | 2014-01-18 | DUKHCONP03Z2ARFF3305 SS+7d, DUKHCONP03Z1AREL3665, DUKHCONP03Z2ARRF3605 SS+7d, DUKHCONP03Z2STRF2065 FF+7d, DUKHCONP03Z2STRF2065 SS+7d, DUKHCONP03Z2ARFF3305 FF+7d | 53d | 0d | PLASTER MASON SK [5862 h]; LABOR - CIVIL [3297.75 h]; EXTERNAL PLASTER QTY [2931 Sqm] | 71,672 | 10 | REM | P3P2EFEL10 | DUKHCON3PP2AREL3665 | DUKHCONP03Z2AREL3665 | DH | CON | P3 | Z2 | FIN | EF | EL | B10 | B10-D10 | RES-3 |
| DUKHCONP03Z2AREL3675 |  | GRC Panel Works | 20d | 2014-01-07 | 2014-01-29 | DUKHCONP03Z2AREL3665 FF+10d, DUKHCONP03Z2AREL3665 SS+10d, DUKHCONP03Z1AREL3675 | 55d | 5d | LABOR- SUBCONTRACTOR [150 h]; GRC SK [400 h] | 20,058 | 15 |  | P3P2EFEL18 | DUKHCON3PP2AREL3675 | DUKHCONP03Z2AREL3675 | DH | CON | P3 | Z2 | FIN | EF | EL | B10 | B10-D10 | RES-3 |
| DUKHCONP03Z2AREL3680 |  | External Painting | 20d | 2014-01-27 | 2014-02-19 | DUKHCONP03Z2AREL3675 SS+10d, DUKHCONP03Z1AREL3680, DUKHCONP03Z2AREL3675 FF+10d, DUKHCONP03Z2ARRF3695 FF+4d, DUKHCONP03Z2ARRF3695 SS+4d | 48d | 0d | LABOR- SUBCONTRACTOR [882 h]; PAINT QTY [2931 Sqm]; PAINTERS SK [2352 h] | 106,011 | 20 |  | P3P2EFEL20 | DUKHCON3PP2AREL3680 | DUKHCONP03Z2AREL3680 | DH | CON | P3 | Z2 | FIN | EF | EL | B10 | B10-D11 | RES-3 |
|  | 20 | **MEP WORKS** |  | 2013-06-06 | 2014-04-14 |  |  |  |  |  |  |  |  |  |  |  |  |  |  |  |  |  |  |  |  |
|  | 10 | **ELECTRICAL WORKS** |  | 2013-09-21 | 2014-04-14 |  |  |  |  |  |  |  |  |  |  |  |  |  |  |  |  |  |  |  |  |
|  | 10 | **GROUND FLOOR** |  | 2013-09-21 | 2014-01-30 |  |  |  |  |  |  |  |  |  |  |  |  |  |  |  |  |  |  |  |  |
| DUKHCONP03Z2ELGF4000 |  | Fixing of wall conduits & switch socket boxes | 25d | 2013-09-21 | 2013-10-21 | DUKHCONP03Z2ARGF3000 SS+5d, DUKHCONP03Z2ARGF3000 FF+5d | 44d | 0d | LABOR- SUBCONTRACTOR [162 h]; ELECTRICIANS SK [940.8 h]; SOCKET BOXES QTY [645 ea]; CODUITS QTY [180 lm] | 28,763 | 10 |  | P3P2EWGF10 | DUKHCON3PP2ELGF4000 | DUKHCONP03Z2ELGF4000 | DH | CON | P3 | Z2 | MEP | EW | GF | B10 | B10-D09 | RES-3 |
| DUKHCONP03Z2ELGF4005 |  | Cable tray & trunking installation | 20d | 2013-10-02 | 2013-10-27 | DUKHCONP03Z1ELGF4005, DUKHCONP03Z2ELGF4000 SS+5d, DUKHCONP03Z2ELGF4000 FF+5d | 62d | 0d | LABOR- SUBCONTRACTOR [396 h]; ELECTRICIANS SK [1444.8 h]; CABLE TRAY QTY [255 lm] | 19,776 | 15 |  | P3P2EWGF15 | DUKHCON3PP2ELGF4005 | DUKHCONP03Z2ELGF4005 | DH | CON | P3 | Z2 | MEP | EW | GF | B10 | B10-D09 | RES-3 |
| DUKHCONP03Z2ELGF4010 |  | Installation of wiring & Main Cabling | 25d | 2013-10-10 | 2013-11-10 | DUKHCONP03Z2ELGF4005 FF+7d, DUKHCONP03Z2ELGF4005 SS+7d | 62d | 27d | LABOR- SUBCONTRACTOR [144 h]; ELECTRICIANS SK [504 h]; CABLE QTY [450 lm] | 105,208 | 20 |  | P3P2EWGF20 | DUKHCON3PP2ELGF4010 | DUKHCONP03Z2ELGF4010 | DH | CON | P3 | Z2 | MEP | EW | GF | B10 | B10-D09 | RES-3 |
| DUKHCONP03Z2ELGF4015 |  | Install. of CAMS & Fire Fighting Accessories | 25d | 2013-12-15 | 2014-01-13 | DUKHCONP03Z2ARGF3055 FF+7d, DUKHCONP03Z2ARGF3055 SS+7d, DUKHCONP03Z2ARGF3060 SS+7d, DUKHCONP03Z2ARGF3060 FF+7d, DUKHCONP03Z1ELGF4015 | 49d | 0d | LABOR- SUBCONTRACTOR [522 h]; MECHANICALS SK [939.6 h]; SMOKE DETECTOR POINTS QTY [150 ea]; FIRE EXTINGUISHER QTY [21 ea] | 64,049 | 35 |  | P3P2EWGF35 | DUKHCON3PP2ELGF4015 | DUKHCONP03Z2ELGF4015 | DH | CON | P3 | Z2 | MEP | EW | GF | B10 | B10-D09 | RES-3 |
| DUKHCONP03Z2ELGF4020 |  | Installation of DBS,MCCB Accessories. | 20d | 2013-12-22 | 2014-01-13 | DUKHCONP03Z2ELGF4010 SS+5d, DUKHCONP03Z2ARGF3055 SS+7d, DUKHCONP03Z2ELGF4010 FF+5d, DUKHCONP03Z2ARGF3060 SS+7d, DUKHCONP03Z2ARGF3060 FF+7d, DUKHCONP03Z2ARGF3055 FF+7d | 36d | 0d | LABOR- SUBCONTRACTOR [54 h]; ELECTRICIANS SK [168 h]; MCCB QTY [15 ea]; DB QTY [12 ea] | 82,222 | 25 |  | P3P2EWGF25 | DUKHCON3PP2ELGF4020 | DUKHCONP03Z2ELGF4020 | DH | CON | P3 | Z2 | MEP | EW | GF | B10 | B10-D09 | RES-3 |
| DUKHCONP03Z2ELGF4025 |  | Installation of Lighting fixtures & Accessories | 25d | 2014-01-02 | 2014-01-30 | DUKHCONP03Z1ELGF4025, DUKHCONP03Z2ARGF3055 FF+10d, DUKHCONP03Z2ARGF3060 FF+10d, DUKHCONP03Z2ARGF3060 SS+10d, DUKHCONP03Z2ELGF4020 SS+10d, DUKHCONP03Z2ELGF4020 FF+10d, DUKHCONP03Z2ARGF3055 SS+10d | 37d | 0d | LABOR- SUBCONTRACTOR [900 h]; ELECTRICIANS SK [1680 h]; LIGHTS QTY [744 ea] | 118,790 | 30 |  | P3P2EWGF30 | DUKHCON3PP2ELGF4025 | DUKHCONP03Z2ELGF4025 | DH | CON | P3 | Z2 | MEP | EW | GF | B10 | B10-D09 | RES-3 |
| DUKHCONP03Z2ELGF4030 |  | Installation of Telephone System | 20d | 2014-01-02 | 2014-01-25 | DUKHCONP03Z2ARGF3060 SS+5d, DUKHCONP03Z2ELGF4020 FF+10d, DUKHCONP03Z2ELGF4020 SS+10d, DUKHCONP03Z2ARGF3060 FF+5d, DUKHCONP03Z1ELGF4030 | 36d | 5d | LABOR- SUBCONTRACTOR [72 h]; ELECTRICIANS SK [470.4 h]; TELEPHONE SOCKETS QTY [42 ea] | 25,360 | 40 |  | P3P2EWGF40 | DUKHCON3PP2ELGF4030 | DUKHCONP03Z2ELGF4030 | DH | CON | P3 | Z2 | MEP | EW | GF | B10 | B10-D09 | RES-3 |
|  | 15 | **FIRST FLOORS** |  | 2013-11-04 | 2014-03-20 |  |  |  |  |  |  |  |  |  |  |  |  |  |  |  |  |  |  |  |  |
| DUKHCONP03Z2ELFF4035 |  | Fixing of wall conduits & switch socket boxes | 25d | 2013-11-04 | 2013-12-02 | DUKHCONP03Z2ARFF3300 SS+5d, DUKHCONP03Z2ARFF3300 FF+5d | 11d | 0d | LABOR- SUBCONTRACTOR [162 h]; ELECTRICIANS SK [940.8 h]; SOCKET BOXES QTY [645 ea]; CODUITS QTY [180 lm] | 28,166 | 10 |  | P3P2EWFF10 | DUKHCON3PP2ELFF4035 | DUKHCONP03Z2ELFF4035 | DH | CON | P3 | Z2 | MEP | EW | FF | B10 | B10-D09 | RES-3 |
| DUKHCONP03Z2ELFF4040 |  | Cable tray & trunking installation | 20d | 2013-11-16 | 2013-12-08 | DUKHCONP03Z2ELFF4035 FF+5d, DUKHCONP03Z2ELFF4035 SS+5d | 33d | 3d | LABOR- SUBCONTRACTOR [396 h]; ELECTRICIANS SK [1444.8 h]; CABLE TRAY QTY [255 lm] | 19,770 | 15 |  | P3P2EWFF15 | DUKHCON3PP2ELFF4040 | DUKHCONP03Z2ELFF4040 | DH | CON | P3 | Z2 | MEP | EW | FF | B10 | B10-D09 | RES-3 |
| DUKHCONP03Z2ELFF4045 |  | Installation of wiring & Main Cabling | 25d | 2013-11-27 | 2013-12-26 | DUKHCONP03Z2ELFF4040 FF+7d, DUKHCONP03Z2ELFF4040 SS+7d, DUKHCONP03Z1ELFF4045 | 30d | 0d | LABOR- SUBCONTRACTOR [144 h]; ELECTRICIANS SK [504 h]; CABLE QTY [444 lm] | 102,805 | 20 |  | P3P2EWFF20 | DUKHCON3PP2ELFF4045 | DUKHCONP03Z2ELFF4045 | DH | CON | P3 | Z2 | MEP | EW | FF | B10 | B10-D09 | RES-3 |
| DUKHCONP03Z2ELFF4050 |  | Installation of Telephone System | 25d | 2014-02-01 | 2014-03-02 | DUKHCONP03Z2ELGF4030 FF+10d, DUKHCONP03Z2MSEX5010 FF, DUKHCONP03Z2ARFF3360 FF+5d, DUKHCONP03Z2ARFF3355 SS+5d, DUKHCONP03Z2ARFF3360 SS+5d, DUKHCONP03Z2ELGF4030 SS+10d, DUKHCONP03Z2ARFF3355 FF+5d | 21d | 19d | LABOR- SUBCONTRACTOR [72 h]; ELECTRICIANS SK [470.4 h]; TELEPHONE SOCKETS QTY [42 ea] | 24,744 | 40 |  | P3P2EWFF40 | DUKHCON3PP2ELFF4050 | DUKHCONP03Z2ELFF4050 | DH | CON | P3 | Z2 | MEP | EW | FF | B10 | B10-D09 | RES-3 |
| DUKHCONP03Z2ELFF4055 |  | Install. of CAMS & Fire Fighting Accessories | 25d | 2014-02-03 | 2014-03-04 | DUKHCONP03Z2ELGF4015 SS+5d, DUKHCONP03Z2ARFF3355 SS+7d, DUKHCONP03Z2ARFF3360 FF+7d, DUKHCONP03Z2ELGF4015 FF+5d, DUKHCONP03Z2ARFF3355 FF+7d, DUKHCONP03Z2ARFF3360 SS+7d, DUKHCONP03Z1ELFF4055 | 12d | 0d | LABOR- SUBCONTRACTOR [576 h]; MECHANICALS SK [1036.8 h]; SMOKE DETECTOR POINTS QTY [147 ea]; FIRE EXTINGUISHER QTY [42 ea] | 64,049 | 35 |  | P3P2EWFF35 | DUKHCON3PP2ELFF4055 | DUKHCONP03Z2ELFF4055 | DH | CON | P3 | Z2 | MEP | EW | FF | B10 | B10-D09 | RES-3 |
| DUKHCONP03Z2ELFF4060 |  | Installation of DBS,MCCB Accessories. | 20d | 2014-02-06 | 2014-03-02 | DUKHCONP03Z2ARFF3355 SS+8d, DUKHCONP03Z2ARFF3360 FF+8d, DUKHCONP03Z2ELFF4045 FF+5d, DUKHCONP03Z2ELFF4045 SS+5d, DUKHCONP03Z2ARFF3360 SS+8d, DUKHCONP03Z1ELFF4060, DUKHCONP03Z2ARFF3355 FF+8d | 1d | 0d | LABOR- SUBCONTRACTOR [54 h]; ELECTRICIANS SK [134.4 h]; MCCB QTY [15 ea]; DB QTY [9 ea] | 9,226 | 25 |  | P3P2EWFF25 | DUKHCON3PP2ELFF4060 | DUKHCONP03Z2ELFF4060 | DH | CON | P3 | Z2 | MEP | EW | FF | B10 | B10-D09 | RES-3 |
| DUKHCONP03Z2ELFF4065 |  | Installation of Lighting fixtures & Accessories | 25d | 2014-02-20 | 2014-03-20 | DUKHCONP03Z2ELFF4060 SS+11d, DUKHCONP03Z2ARFF3355 FF+10d, DUKHCONP03Z2ARFF3355 SS+10d, DUKHCONP03Z2ARFF3360 FF+10d, DUKHCONP03Z2ELFF4060 FF+11d, DUKHCONP03Z2ELGF4025 FF+5d, DUKHCONP03Z2ARFF3360 SS+10d, DUKHCONP03Z1ELFF4065, DUKHCONP03Z2ELGF4025 SS+5d | 1d | 0d | LABOR- SUBCONTRACTOR [882 h]; ELECTRICIANS SK [1646.4 h]; LIGHTS QTY [741 ea] | 118,791 | 30 |  | P3P2EWFF30 | DUKHCON3PP2ELFF4065 | DUKHCONP03Z2ELFF4065 | DH | CON | P3 | Z2 | MEP | EW | FF | B10 | B10-D09 | RES-3 |

Notes:
- DUKHCONP03Z2ARRF3630: Expenses: P03-Roofing 46704
- DUKHCONP03Z2ARRF3635: Expenses: P03-Roofing 61507
- DUKHCONP03Z2ARRF3640: Expenses: P03-Roofing 34449
- DUKHCONP03Z2ARRF3645: Expenses: P03-Roofing 84498
- DUKHCONP03Z2ARRF3650: Expenses: P03-Metal work 53449
- DUKHCONP03Z2ARRF3655: Expenses: P03-Roofing 9975
- DUKHCONP03Z2ARRF3660: Expenses: P03-Metal work 19196
- DUKHCONP03Z2AREL3665: Expenses: P03-Finishes 71672
- DUKHCONP03Z2AREL3675: Expenses: P03-Finishes 20058
- DUKHCONP03Z2AREL3680: Expenses: P03-Painting and Decorating 106011
- DUKHCONP03Z2ELGF4000: Expenses: P03-Electrical Installations 28763
- DUKHCONP03Z2ELGF4005: Expenses: P03-Electrical Installations 19776
- DUKHCONP03Z2ELGF4010: Expenses: P03-Electrical Installations 105208
- DUKHCONP03Z2ELGF4015: Expenses: P03-Electrical Installations 64049
- DUKHCONP03Z2ELGF4020: Expenses: P03-Electrical Installations 82222
- DUKHCONP03Z2ELGF4025: Expenses: P03-Electrical Installations 118790
- DUKHCONP03Z2ELGF4030: Expenses: P03-Electrical Installations 25360
- DUKHCONP03Z2ELFF4035: Expenses: P03-Electrical Installations 28166
- DUKHCONP03Z2ELFF4040: Expenses: P03-Electrical Installations 19770
- DUKHCONP03Z2ELFF4045: Expenses: P03-Electrical Installations 102805
- DUKHCONP03Z2ELFF4050: Expenses: P03-Electrical Installations 24744
- DUKHCONP03Z2ELFF4055: Expenses: P03-Electrical Installations 64049
- DUKHCONP03Z2ELFF4060: Expenses: P03-Electrical Installations 9226
- DUKHCONP03Z2ELFF4065: Expenses: P03-Electrical Installations 118791

| ID | WBS | Activity | Duration | Start | Finish | Predecessors | Total float | Free float | Resources | Cost | CODE | P3 ACTID | P6 ID (old) | NP61D | PROJECT | PHASES | PACKAGE | PART | ELEMENTS | STEP | FLOORS | BILL NOS | BILL DIVISION | RES PACK |
| --- | --- | --- | --- | --- | --- | --- | --- | --- | --- | --- | --- | --- | --- | --- | --- | --- | --- | --- | --- | --- | --- | --- | --- | --- |
|  | 20 | **ROOF** |  | 2014-03-12 | 2014-04-14 |  |  |  |  |  |  |  |  |  |  |  |  |  |  |  |  |  |  |  |
| DUKHCONP03Z2ELRF4070 |  | Installation of Isolator | 18d | 2014-03-12 | 2014-04-01 | DUKHCONP03Z2ARRF3645 FF+7d, DUKHCONP03Z2ELFF4045 SS+10d, DUKHCONP03Z2ELFF4050 FF+7d, DUKHCONP03Z2ARRF3645 SS+7d, DUKHCONP03Z2ELFF4045 FF+10d, DUKHCONP03Z2ELFF4050 SS+5d, DUKHCONP03Z2ELFF4065 FF+10d, DUKHCONP03Z2ELFF4065 SS+10d | 2d | 0d | LABOR- SUBCONTRACTOR [108 h]; ELECTRICIANS SK [201.6 h]; ISOLATOR QTY [36 ea] | 41,395 | 10 | P3P2EWRF10 | DUKHCON3PP2ELRF4070 | DUKHCONP03Z2ELRF4070 | DH | CON | P3 | Z2 | MEP | EW | RF | B10 | B10-D09 | RES-3 |
| DUKHCONP03Z2ELRF4075 |  | Installation of TV Dish Antenna | 23d | 2014-03-19 | 2014-04-14 | DUKHCONP03Z2ELRF4070 FF+6d, DUKHCONP03Z2ELRF4070 SS+6d | 2d |  | SWITCHING BOX QTY [141 ea]; LABOR- SUBCONTRACTOR [1332 h]; ELECTRICIANS SK [3393.6 h]; CONTROL BOX QTY [162 ea] | 30,342 | 15 | P3P2EWRF15 | DUKHCON3PP2ELRF4075 | DUKHCONP03Z2ELRF4075 | DH | CON | P3 | Z2 | MEP | EW | RF | B10 | B10-D09 | RES-3 |
|  | 15 | **PLUMBING, DRAINAGE & FIRE FIGHTING WORKS** |  | 2013-06-06 | 2014-03-31 |  |  |  |  |  |  |  |  |  |  |  |  |  |  |  |  |  |  |  |
|  | 10 | **GROUND FLOOR** |  | 2013-06-06 | 2014-01-30 |  |  |  |  |  |  |  |  |  |  |  |  |  |  |  |  |  |  |  |
| DUKHCONP03Z2PLUG4300 |  | Drainage / Storm Pipes in Grade Slab | 20d | 2013-06-06 | 2013-06-29 | DUKHCONP03Z2STUG1040 SS+10d, DUKHCONP03Z2STUG1040 FF+10d | 0d |  | LABOR- SUBCONTRACTOR [36 h]; MECHANICALS SK [129.6 h]; DRAINAGE PIPES QTY [234 lm] | 14,418 | 10 | P3P2PLUG10 | DUKHCON3PP2PLUG4300 | DUKHCONP03Z2PLUG4300 | DH | CON | P3 | Z2 | ST | SB | UG | B10 | B10-D07 | RES-3 |
| DUKHCONP03Z2PLGF4305 |  | Installation of Plumbing pipes & testing | 18d | 2013-10-01 | 2013-10-23 | DUKHCONP03Z1PLGF4305, DUKHCONP03Z2ARGF3000 FF+7d, DUKHCONP03Z2ARGF3000 SS+7d | 35d | 0d | LABOR- SUBCONTRACTOR [594 h]; MECHANICALS SK [2138.4 h]; PLUMB PIPES QTY [1986 lm] | 84,763 | 10 | P3P2PLGF10 | DUKHCON3PP2PLGF4305 | DUKHCONP03Z2PLGF4305 | DH | CON | P3 | Z2 | MEP | PL | GF | B10 | B10-D07 | RES-3 |
| DUKHCONP03Z2PLGF4310 |  | Installation of Drainage pipes &testing | 18d | 2013-10-01 | 2013-10-23 | DUKHCONP03Z2PLGF4305 SS, DUKHCONP03Z2ARGF3000 FF+7d, DUKHCONP03Z2ARGF3000 SS+7d, DUKHCONP03Z2PLGF4305 FF | 56d | 12d | LABOR- SUBCONTRACTOR [54 h]; MECHANICALS SK [162 h]; DRAINAGE PIPES QTY [324 lm] | 1,912 | 15 | P3P2PLGF15 | DUKHCON3PP2PLGF4310 | DUKHCONP03Z2PLGF4310 | DH | CON | P3 | Z2 | MEP | PL | GF | B10 | B10-D07 | RES-3 |
| DUKHCONP03Z2PLGF4315 |  | Sanitary Fittings & Accessories | 20d | 2014-01-02 | 2014-01-25 | DUKHCONP03Z2ARGF3065 SS+5d, DUKHCONP03Z2ARGF3065 FF+5d, DUKHCONP03Z2PLGF4310 SS+5d, DUKHCONP03Z2PLGF4310 FF+5d, DUKHCONP03Z1PLGF4315 | 64d | 0d | LABOR- SUBCONTRACTOR [126 h]; MECHANICALS SK [226.8 h]; SANITARY ACC QTY [216 ea] | 92,011 | 20 | P3P2PLGF20 | DUKHCON3PP2PLGF4315 | DUKHCONP03Z2PLGF4315 | DH | CON | P3 | Z2 | MEP | PL | GF | B10 | B10-D07 | RES-3 |
| DUKHCONP03Z2PLGF4320 |  | Installation of Water Heater | 15d | 2014-01-14 | 2014-01-30 | DUKHCONP03Z2ARGF3060 SS+5d, DUKHCONP03Z2PLGF4315 FF+5d, DUKHCONP03Z1PLGF4320, DUKHCONP03Z2ARGF3060 FF+5d, DUKHCONP03Z2PLGF4315 SS+5d | 64d | 10d | LABOR- SUBCONTRACTOR [18 h]; MECHANICALS SK [32.4 h]; WATER HEATER QTY [6 ea] | 1,055 | 25 | P3P2PLGF25 | DUKHCON3PP2PLGF4320 | DUKHCONP03Z2PLGF4320 | DH | CON | P3 | Z2 | MEP | PL | GF | B10 | B10-D07 | RES-3 |
|  | 15 | **FIRST FLOORS** |  | 2013-11-13 | 2014-03-13 |  |  |  |  |  |  |  |  |  |  |  |  |  |  |  |  |  |  |  |
| DUKHCONP03Z2PLFF4325 |  | Installation of Plumbing pipes & testing | 18d | 2013-11-13 | 2013-12-03 | DUKHCONP03Z2ARFF3300 FF+6d, DUKHCONP03Z2ARFF3300 SS+6d | 0d |  | LABOR- SUBCONTRACTOR [594 h]; MECHANICALS SK [2138.4 h]; PLUMB PIPES QTY [1986 lm] | 78,473 | 10 | P3P2PLFF10 | DUKHCON3PP2PLFF4325 | DUKHCONP03Z2PLFF4325 | DH | CON | P3 | Z2 | MEP | PL | FF | B10 | B10-D07 | RES-3 |
| DUKHCONP03Z2PLFF4330 |  | Installation of Drainage pipes & testing | 18d | 2013-11-14 | 2013-12-04 | DUKHCONP03Z2ARFF3300 SS+7d, DUKHCONP03Z2PLFF4325 FF, DUKHCONP03Z2ARFF3300 FF+7d, DUKHCONP03Z2PLFF4325 SS, DUKHCONP03Z1PLFF4330 | 26d | 7d | LABOR- SUBCONTRACTOR [54 h]; MECHANICALS SK [162 h]; DRAINAGE PIPES QTY [324 lm] | 1,639 | 15 | P3P2PLFF15 | DUKHCON3PP2PLFF4330 | DUKHCONP03Z2PLFF4330 | DH | CON | P3 | Z2 | MEP | PL | FF | B10 | B10-D07 | RES-3 |
| DUKHCONP03Z2PLFF4335 |  | Sanitary Fittings & Accessories | 20d | 2014-02-13 | 2014-03-08 | DUKHCONP03Z2PLFF4330 FF+5d, DUKHCONP03Z2PLFF4330 SS+5d, DUKHCONP03Z2ARFF3365 SS+5d, DUKHCONP03Z2ARFF3365 FF+5d | 14d | 0d | LABOR- SUBCONTRACTOR [126 h]; MECHANICALS SK [226.8 h]; SANITARY ACC QTY [216 ea] | 92,011 | 20 | P3P2PLFF20 | DUKHCON3PP2PLFF4335 | DUKHCONP03Z2PLFF4335 | DH | CON | P3 | Z2 | MEP | PL | FF | B10 | B10-D07 | RES-3 |
| DUKHCONP03Z2PLFF4340 |  | Installation of Water Heater | 15d | 2014-02-25 | 2014-03-13 | DUKHCONP03Z1PLFF4340, DUKHCONP03Z2PLFF4335 SS+5d, DUKHCONP03Z2ARFF3355 SS+5d, DUKHCONP03Z2ARFF3355 FF+5d, DUKHCONP03Z2ARFF3360 SS+5d, DUKHCONP03Z2ARFF3360 FF+5d, DUKHCONP03Z2PLFF4335 FF+5d | 14d | 0d | LABOR- SUBCONTRACTOR [18 h]; MECHANICALS SK [32.4 h]; WATER HEATER QTY [6 ea] | 1,055 | 25 | P3P2PLFF25 | DUKHCON3PP2PLFF4340 | DUKHCONP03Z2PLFF4340 | DH | CON | P3 | Z2 | MEP | PL | FF | B10 | B10-D07 | RES-3 |
|  | 20 | **ROOF** |  | 2013-12-09 | 2014-03-31 |  |  |  |  |  |  |  |  |  |  |  |  |  |  |  |  |  |  |  |
| DUKHCONP03Z2PLRF4345 |  | Installation of Plumbing pipes & fittings | 15d | 2013-12-09 | 2013-12-26 | DUKHCONP03Z2ARRF3605 FF+7d, DUKHCONP03Z2ARRF3605 SS+7d | 71d | 18d | LABOR- SUBCONTRACTOR [360 h]; MECHANICALS SK [1263.6 h]; PLUMB PIPES QTY [1155 lm] | 12,374 | 10 | P3P2PLRF10 | DUKHCON3PP2PLRF4345 | DUKHCONP03Z2PLRF4345 | DH | CON | P3 | Z2 | MEP | PL | RF | B10 | B10-D07 | RES-3 |
| DUKHCONP03Z2PLRF4350 |  | Installation of Rain water Pipes | 15d | 2014-01-09 | 2014-01-26 | DUKHCONP03Z1PLRF4350, DUKHCONP03Z2PLFF4330 FF+5d, DUKHCONP03Z2PLFF4330 SS+5d, DUKHCONP03Z2AREL3665 FF+7d, DUKHCONP03Z2AREL3665 SS+7d, DUKHCONP03Z2ARRF3645 SS+5d, DUKHCONP03Z2PLRF4345 FF+8d, DUKHCONP03Z2PLRF4345 SS+8d, DUKHCONP03Z2ARRF3645 FF+5d | 53d | 10d | LABOR- SUBCONTRACTOR [18 h]; MECHANICALS SK [64.8 h]; DRAINAGE PIPES QTY [105 lm] | 88,600 | 15 | P3P2PLRF15 | DUKHCON3PP2PLRF4350 | DUKHCONP03Z2PLRF4350 | DH | CON | P3 | Z2 | MEP | PL | RF | B10 | B10-D07 | RES-3 |
| DUKHCONP03Z2PLRF4355 |  | Roof Water Tank Installation & Connections | 25d | 2014-03-03 | 2014-03-31 | DUKHCONP03Z2PLFF4340 SS+5d, DUKHCONP03Z1PLRF4355, DUKHCONP03Z2ARRF3655 FF+5d, DUKHCONP03Z2ARRF3655 SS+5d, DUKHCONP03Z2PLRF4350 FF+5d, DUKHCONP03Z2PLRF4350 SS+5d, DUKHCONP03Z2PLRF4345 FF+8d, DUKHCONP03Z2PLRF4345 SS+8d, DUKHCONP03Z2PLFF4340 FF+5d | 14d | 0d | LABOR- SUBCONTRACTOR [36 h]; MECHANICALS SK [64.8 h]; WATER TANK QTY [6 ea] | 879,962 | 20 | P3P2PLRF20 | DUKHCON3PP2PLRF4355 | DUKHCONP03Z2PLRF4355 | DH | CON | P3 | Z2 | MEP | PL | RF | B10 | B10-D07 | RES-3 |
|  | 20 | **AC WORKS** |  | 2013-10-23 | 2014-03-31 |  |  |  |  |  |  |  |  |  |  |  |  |  |  |  |  |  |  |  |
|  | 10 | **GROUND FLOOR** |  | 2013-10-23 | 2014-01-28 |  |  |  |  |  |  |  |  |  |  |  |  |  |  |  |  |  |  |  |
| DUKHCONP03Z2ACGF4600 |  | Installation AC Pipes | 20d | 2013-10-23 | 2013-11-14 | DUKHCONP03Z2ARGF3005 FF+7d, DUKHCONP03Z2ARGF3005 SS+7d, DUKHCONP03Z1ACGF4600 | 66d | 5d | LABOR- SUBCONTRACTOR [72 h]; AC TECHNICIAN SK [268.8 h]; AC PIPES QTY [684 lm] | 7,244 | 10 | P3P2ACGF10 | DUKHCON3PP2ACGF4600 | DUKHCONP03Z2ACGF4600 | DH | CON | P3 | Z2 | MEP | AC | GF | B10 | B10-D08 | RES-3 |
| DUKHCONP03Z2ACGF4605 |  | Fixing of Ventilation Equipments | 25d | 2013-12-15 | 2014-01-13 | DUKHCONP03Z2ARGF3055 SS+7d, DUKHCONP03Z2ARGF3060 SS+7d, DUKHCONP03Z2ACGF4600 SS+10d, DUKHCONP03Z2ARGF3055 FF+7d, DUKHCONP03Z2ACGF4600 FF+10d, DUKHCONP03Z2ARGF3060 FF+7d, DUKHCONP03Z1ACGF4605 | 51d | 0d | LABOR- SUBCONTRACTOR [36 h]; AC TECHNICIAN SK [100.8 h]; VENTILIATION EQP QTY [39 ea] | 27,766 | 15 | P3P2ACGF15 | DUKHCON3PP2ACGF4605 | DUKHCONP03Z2ACGF4605 | DH | CON | P3 | Z2 | MEP | AC | GF | B10 | B10-D08 | RES-3 |
| DUKHCONP03Z2ACGF4610 |  | Fixing of Split AC | 20d | 2014-01-06 | 2014-01-28 | DUKHCONP03Z1ACGF4610, DUKHCONP03Z2ACGF4605 FF+13d, DUKHCONP03Z2ACGF4605 SS+13d | 51d | 5d | LABOR- SUBCONTRACTOR [126 h]; AC TECHNICIAN SK [235.2 h]; SPILIT UNIT QTY [39 ea] | 40,463 | 20 | P3P2ACGF20 | DUKHCON3PP2ACGF4610 | DUKHCONP03Z2ACGF4610 | DH | CON | P3 | Z2 | MEP | AC | GF | B10 | B10-D08 | RES-3 |

Notes:
- DUKHCONP03Z2ELRF4070: Expenses: P03-Electrical Installations 41395
- DUKHCONP03Z2ELRF4075: Expenses: P03-Electrical Installations 30342
- DUKHCONP03Z2PLUG4300: Expenses: P03-Plumbing and Drainage works 14418
- DUKHCONP03Z2PLGF4305: Expenses: P03-Plumbing and Drainage works 84763
- DUKHCONP03Z2PLGF4310: Expenses: P03-Plumbing and Drainage works 1912
- DUKHCONP03Z2PLGF4315: Expenses: P03-Plumbing and Drainage works 92011
- DUKHCONP03Z2PLGF4320: Expenses: P03-Plumbing and Drainage works 1055
- DUKHCONP03Z2PLFF4325: Expenses: P03-Plumbing and Drainage works 78473
- DUKHCONP03Z2PLFF4330: Expenses: P03-Plumbing and Drainage works 1639
- DUKHCONP03Z2PLFF4335: Expenses: P03-Plumbing and Drainage works 92011
- DUKHCONP03Z2PLFF4340: Expenses: P03-Plumbing and Drainage works 1055
- DUKHCONP03Z2PLRF4345: Expenses: P03-Plumbing and Drainage works 12374
- DUKHCONP03Z2PLRF4350: Expenses: P03-Plumbing and Drainage works 88600
- DUKHCONP03Z2PLRF4355: Expenses: P03-Plumbing and Drainage works 879962
- DUKHCONP03Z2ACGF4600: Expenses: P03-Air-conditioning and Ventilation works 7244
- DUKHCONP03Z2ACGF4605: Expenses: P03-Air-conditioning and Ventilation works 27766
- DUKHCONP03Z2ACGF4610: Expenses: P03-Air-conditioning and Ventilation works 40463

| ID | WBS | Activity | Duration | Start | Finish | Predecessors | Total float | Free float | Resources | Cost | CODE | P3 ACTID | P6 ID (old) | NP61D | PROJECT | PHASES | PACKAGE | PART | ELEMENTS | STEP | FLOORS | BILL NOS | BILL DIVISION | RES PACK |
| --- | --- | --- | --- | --- | --- | --- | --- | --- | --- | --- | --- | --- | --- | --- | --- | --- | --- | --- | --- | --- | --- | --- | --- | --- |
|  | 15 | **FIRST FLOORS** |  | 2013-12-07 | 2014-03-19 |  |  |  |  |  |  |  |  |  |  |  |  |  |  |  |  |  |  |  |
| DUKHCONP03Z2ACFF4615 |  | Installation AC Pipes | 20d | 2013-12-07 | 2013-12-30 | DUKHCONP03Z2ARFF3305 SS+7d, DUKHCONP03Z1ACFF4615, DUKHCONP03Z2ARFF3305 FF+7d | 32d | 1d | LABOR- SUBCONTRACTOR [72 h]; AC TECHNICIAN SK [268.8 h]; AC PIPES QTY [684 lm] | 6,520 | 10 | P3P2ACFF10 | DUKHCON3PP2ACFF4615 | DUKHCONP03Z2ACFF4615 | DH | CON | P3 | Z2 | MEP | AC | FF | B10 | B10-D08 | RES-3 |
| DUKHCONP03Z2ACFF4620 |  | Fixing of Ventilation Equipments | 25d | 2014-02-03 | 2014-03-04 | DUKHCONP03Z2ACFF4615 SS+10d, DUKHCONP03Z1ACFF4620, DUKHCONP03Z2ARFF3355 SS+7d, DUKHCONP03Z2ARFF3360 FF+7d, DUKHCONP03Z2ARFF3355 FF+7d, DUKHCONP03Z2ACFF4615 FF+10d, DUKHCONP03Z2ARFF3360 SS+7d | 9d | 0d | LABOR- SUBCONTRACTOR [36 h]; AC TECHNICIAN SK [100.8 h]; VENTILIATION EQP QTY [39 ea] | 23,247 | 15 | P3P2ACFF15 | DUKHCON3PP2ACFF4620 | DUKHCONP03Z2ACFF4620 | DH | CON | P3 | Z2 | MEP | AC | FF | B10 | B10-D08 | RES-3 |
| DUKHCONP03Z2ACFF4625 |  | Fixing of Split AC | 20d | 2014-02-25 | 2014-03-19 | DUKHCONP03Z2ACFF4620 SS+13d, DUKHCONP03Z2ACFF4620 FF+13d, DUKHCONP03Z1ACFF4625 | 9d | 0d | LABOR- SUBCONTRACTOR [126 h]; AC TECHNICIAN SK [235.2 h]; SPILIT UNIT QTY [39 ea] | 42,227 | 20 | P3P2ACFF20 | DUKHCON3PP2ACFF4625 | DUKHCONP03Z2ACFF4625 | DH | CON | P3 | Z2 | MEP | AC | FF | B10 | B10-D08 | RES-3 |
|  | 20 | **ROOF** |  | 2013-12-16 | 2014-03-31 |  |  |  |  |  |  |  |  |  |  |  |  |  |  |  |  |  |  |  |
| DUKHCONP03Z2ACRF4630 |  | Installation of Refrigerant Pipes | 25d | 2013-12-16 | 2014-01-14 | DUKHCONP03Z2ACFF4615 FF+7d, DUKHCONP03Z2ACGF4600 SS+7d, DUKHCONP03Z2ARRF3645 SS+7d, DUKHCONP03Z2ACFF4615 SS+7d, DUKHCONP03Z2ARRF3645 FF+7d, DUKHCONP03Z2ACGF4600 FF+7d, DUKHCONP03Z1ACRF4630 | 73d | 0d | LABOR- SUBCONTRACTOR [36 h]; AC TECHNICIAN SK [134.4 h]; AC PIPES QTY [342 lm] | 20,514 | 10 | P3P2ACRF10 | DUKHCON3PP2ACRF4630 | DUKHCONP03Z2ACRF4630 | DH | CON | P3 | Z2 | MEP | AC | RF | B10 | B10-D08 | RES-3 |
| DUKHCONP03Z2ACRF4635 |  | Installation of Condensing Unit | 25d | 2014-03-03 | 2014-03-31 | DUKHCONP03Z1ACRF4635, DUKHCONP03Z2ACGF4610 SS+5d, DUKHCONP03Z2ACRF4630 FF+5d, DUKHCONP03Z2ACFF4625 FF+5d, DUKHCONP03Z2ACFF4625 SS+5d, DUKHCONP03Z2ACRF4630 SS+5d, DUKHCONP03Z2ACGF4610 FF+5d | 14d | 0d | LABOR- SUBCONTRACTOR [126 h]; AC TECHNICIAN SK [436.8 h]; AC UNITS QTY [78 ea] | 106,501 | 15 | P3P2ACRF15 | DUKHCON3PP2ACRF4635 | DUKHCONP03Z2ACRF4635 | DH | CON | P3 | Z2 | MEP | AC | RF | B10 | B10-D08 | RES-3 |
|  | 25 | **EXTERNAL WORKS** |  | 2013-10-29 | 2014-03-25 |  |  |  |  |  |  |  |  |  |  |  |  |  |  |  |  |  |  |  |
|  | 10 | **MISCELLANEOUS** |  | 2013-10-29 | 2014-02-16 |  |  |  |  |  |  |  |  |  |  |  |  |  |  |  |  |  |  |  |
| DUKHCONP03Z2MSEX5000 |  | Construction of Manholes | 25d | 2013-10-29 | 2013-11-26 | DUKHCONP03Z2STRF2055 SS+5d, DUKHCONP03Z2PLGF4310 FF+10d, DUKHCONP03Z2PLGF4310 SS+10d, DUKHCONP03Z2STRF2055 FF+5d | 52d | 0d | LABOR- SUBCONTRACTOR [36 h]; CABINET QTY [12 ea]; JOINERY WORK SK [96 h] | 6,808 | 25 | P3P2MSEX25 | DUKHCON3PP2MS005000 | DUKHCONP03Z2MSEX5000 | DH | CON | P3 | Z2 | EX | MS |  | B10 | B10-D12 | RES-3 |
| DUKHCONP03Z2MSEX5005 |  | Construction of Soak pit, Chambers | 25d | 2013-11-12 | 2013-12-10 | DUKHCONP03Z2MSEX5000 SS+12d, DUKHCONP03Z2MSEX5000 FF+12d | 52d | 0d | LABOR - CIVIL [75 h]; MANHOLES SK [200 h] | 12,087 | 30 | P3P2MSEX30 | DUKHCON3PP2MS005005 | DUKHCONP03Z2MSEX5005 | DH | CON | P3 | Z2 | EX | MS |  | B10 | B10-D12 | RES-3 |
| DUKHCONP03Z2MSEX5015 |  | Construction of grease Trap | 20d | 2013-12-02 | 2013-12-25 | DUKHCONP03Z2MSEX5005 FF+12d, DUKHCONP03Z2MSEX5005 SS+12d | 52d | 0d | LABOR- SUBCONTRACTOR [18 h]; GREASE TRAP QTY [6 lm]; HANDRAIL ERECTOR SKILLED [24 h] | 17,022 | 20 | P3P2MSEX20 | DUKHCON3PP2MS005015 | DUKHCONP03Z2MSEX5015 | DH | CON | P3 | Z2 | EX | MS |  | B10 | B10-D12 | RES-3 |
| DUKHCONP03Z2MSEX5010 |  | Telephone cable laying | 25d | 2013-12-26 | 2014-01-23 | DUKHCONP03Z2MSEX5015 | 52d | 31d | LABOR - CIVIL [125 h]; LABOR- SUBCONTRACTOR [125 h]; ELECTRICIANS SK [125 h]; CONCRETE MASON SK [125 h] | 1,114 |  | P3P2MSEX40 | DUKHCON3PP2MS005010 | DUKHCONP03Z2MSEX5010 | DH | CON | P3 | Z2 | EX | MS |  | B10 | B10-D12 | RES-3 |
| DUKHCONP03Z2MSEX5020 |  | Construction Entrance Ramp | 25d | 2014-01-06 | 2014-02-03 | DUKHCONP03Z2STRF2055 SS, DUKHCONP03Z2STRF2055 FF, DUKHCONP03Z1MSEX5020 | 21d | 0d | SCREED MASON SK [48 h]; CONCRETE MASON SK [48 h]; INTERLOCK MASON SK [48 h]; LABOR - CIVIL [54 h]; LABOR- SUBCONTRACTOR [18 h]; SCREED QTY [51 Sqm]; CONCRETE QTY [27 Cum]; INTERLOCK QTY [60 Sqm] | 10,659 | 10 | P3P2MSEX10 | DUKHCON3PP2MS005020 | DUKHCONP03Z2MSEX5020 | DH | CON | P3 | Z2 | EX | MS |  | B10 | B10-D12 | RES-3 |
| DUKHCONP03Z2MSEX5025 |  | SS.Handrails and Balustrades | 20d | 2014-01-23 | 2014-02-16 | DUKHCONP03Z2MSEX5020 SS+10d, DUKHCONP03Z2MSEX5020 FF+10d | 21d | 0d | LABOR- SUBCONTRACTOR [36 h]; S.S.BALUSTRADE QTY [30 lm]; HANDRAIL ERECTOR SKILLED [72 h] | 30,532 | 15 | P3P2MSEX15 | DUKHCON3PP2MS005025 | DUKHCONP03Z2MSEX5025 | DH | CON | P3 | Z2 | EX | MS |  | B10 | B10-D12 | RES-3 |
|  | 15 | **DOMESTIC WATER TANK & PUMP ROOM** |  | 2013-11-06 | 2014-03-25 |  |  |  |  |  |  |  |  |  |  |  |  |  |  |  |  |  |  |  |
| DUKHCONP03Z2WTEX5030 |  | Excavation | 20d | 2013-11-06 | 2013-11-28 | DUKHCONP03Z2STRF2055 SS+5d, DUKHCONP03Z2STRF2055 FF+5d, DUKHCONP03Z2STRF2065 SS+5d, DUKHCONP03Z1WTEX5030 | 58d | 0d | LABOR - CIVIL [36 h]; EXCAVATION QTY [54 Cum]; LOADER [20 h]; POCLAIN [40 h]; TRUCK [20 h]; EQUIP OPERATORS [80 h] | 1,647 | 10 | P3P2WEEX10 | DUKHCON3PP2WE005030 | DUKHCONP03Z2WTEX5030 | DH | CON | P3 | Z2 | EX | WE |  | B10 | B10-D12 | RES-3 |
| DUKHCONP03Z2WTEX5035 |  | Construction of Raft | 25d | 2013-11-12 | 2013-12-10 | DUKHCONP03Z2WTEX5030 SS+5d, DUKHCONP03Z2WTEX5030 FF+10d | 58d | 0d | CONCRETE MASON SK [120 h]; LABOR - CIVIL [90 h]; CONCRETE QTY [60 Cum] | 25,770 | 15 | P3P2WEEX15 | DUKHCON3PP2WE005035 | DUKHCONP03Z2WTEX5035 | DH | CON | P3 | Z2 | EX | WE |  | B10 | B10-D12 | RES-3 |
| DUKHCONP03Z2WTEX5040 |  | Block works & Plastering | 25d | 2013-11-21 | 2013-12-21 | DUKHCONP03Z2WTEX5035 SS+8d, DUKHCONP03Z2WTEX5035 FF+8d | 58d | 0d | BLOCK MASON SK [456 h]; PLASTER MASON SK [1104 h]; LABOR - CIVIL [882 h]; BLOCK QTY [225 Sqm]; PLASTER QTY [690 Sqm] | 46,391 | 20 | P3P2WEEX20 | DUKHCON3PP2WE005040 | DUKHCONP03Z2WTEX5040 | DH | CON | P3 | Z2 | EX | WE |  | B10 | B10-D12 | RES-3 |
| DUKHCONP03Z2WTEX5070 |  | Domestic Water Tank Plumbings works | 25d | 2013-11-30 | 2013-12-29 | DUKHCONP03Z2WTEX5080 SS | 58d | 0d | LABOR- SUBCONTRACTOR [100 h]; MECHANICALS SK [100 h] | 125,964 | 40 | P3P2WEEX70 | DUKHCON3PP2WE005070 | DUKHCONP03Z2WTEX5070 | DH | CON | P3 | Z2 | EX | WE |  | B10 | B10-D12 | RES-3 |
| DUKHCONP03Z2WTEX5075 |  | Domestic Water Tank AC works | 25d | 2013-11-30 | 2013-12-29 | DUKHCONP03Z2WTEX5070 SS | 58d | 0d | LABOR- SUBCONTRACTOR [100 h]; AC TECHNICIAN SK [75 h] | 8,274 | 40 | P3P2WEEX80 | DUKHCON3PP2WE005075 | DUKHCONP03Z2WTEX5075 | DH | CON | P3 | Z2 | EX | WE |  | B10 | B10-D12 | RES-3 |
| DUKHCONP03Z2WTEX5080 |  | Domestic Water Tank Electrical works | 25d | 2013-11-30 | 2013-12-29 | DUKHCONP03Z2WTEX5040 SS+7d | 58d | 0d | LABOR- SUBCONTRACTOR [100 h]; ELECTRICIANS SK [75 h] | 22,233 | 40 | P3P2WEEX60 | DUKHCON3PP2WE005080 | DUKHCONP03Z2WTEX5080 | DH | CON | P3 | Z2 | EX | WE |  | B10 | B10-D12 | RES-3 |
| DUKHCONP03Z2WTEX5085 |  | Domestic Water Tank Firefighting works | 25d | 2013-11-30 | 2013-12-29 | DUKHCONP03Z2WTEX5075 SS | 58d | 0d | LABOR- SUBCONTRACTOR [54 h]; MECHANICALS SK [64.8 h] | 12,708 | 40 | P3P2WEEX90 | DUKHCON3PP2WE005085 | DUKHCONP03Z2WTEX5085 | DH | CON | P3 | Z2 | EX | WE |  | B10 | B10-D12 | RES-3 |
| DUKHCONP03Z2WTEX5045 |  | Flooring & Painting | 25d | 2013-12-04 | 2014-01-02 | DUKHCONP03Z2WTEX5040 SS+10d, DUKHCONP03Z2WTEX5040 FF+10d, DUKHCONP03Z2WTEX5085 FF+4d | 58d | 37d | SCREED MASON SK [96 h]; LABOR - CIVIL [36 h]; LABOR- SUBCONTRACTOR [216 h]; SCREED QTY [114 Sqm]; PAINT QTY [690 Sqm]; PAINTERS SK [552 h] | 35,064 | 25 | P3P2WEEX25 | DUKHCON3PP2WE005045 | DUKHCONP03Z2WTEX5045 | DH | CON | P3 | Z2 | EX | WE |  | B10 | B10-D12 | RES-3 |
| DUKHCONP03Z2WTEX5050 |  | Installation of Steel Gate | 20d | 2014-02-04 | 2014-02-27 | DUKHCONP03Z2WTEX5045 SS+5d, DUKHCONP03Z2MSEX5025 FF+10d, DUKHCONP03Z2WTEX5045 FF+10d | 21d | 2d | LABOR- SUBCONTRACTOR [36 h]; LADDER QTY [3 ea]; GATE QTY [3 ea]; LADDER ERECTOR SK [24 h]; GATE ERECTOR SK [24 h] | 19,575 | 30 | P3P2WEEX30 | DUKHCON3PP2WE005050 | DUKHCONP03Z2WTEX5050 | DH | CON | P3 | Z2 | EX | WE |  | B10 | B10-D12 | RES-3 |
| DUKHCONP03Z2WTEX5060 |  | Structural steel & SS Shed cover installation | 25d | 2014-02-13 | 2014-03-13 | DUKHCONP03Z2WTEX5050 SS+5d, DUKHCONP03Z2WTEX5050 FF+10d, DUKHCONP03Z2MSEX5025 FF+10d, DUKHCONP03Z1WTEX5060 | 19d | 0d | LABOR- SUBCONTRACTOR [252 h]; SS SHED COVER QTY [81 Sqm]; STEEL ERECTOR SK [336 h] | 22,930 | 35 | P3P2WEEX35 | DUKHCON3PP2WE005060 | DUKHCONP03Z2WTEX5060 | DH | CON | P3 | Z2 | EX | WE |  | B10 | B10-D12 | RES-3 |
| DUKHCONP03Z2WTEX5065 |  | Install. of Water Tank,Chiller,Pump & Meter | 25d | 2014-02-25 | 2014-03-25 | DUKHCONP03Z2WTEX5060 FF+10d, DUKHCONP03Z2PLRF4350 SS+5d, DUKHCONP03Z1WTEX5065, DUKHCONP03Z2WTEX5060 SS+10d, DUKHCONP03Z2MSEX5015 SS+5d, DUKHCONP03Z2MSEX5015 FF+5d, DUKHCONP03Z2PLRF4350 FF+5d | 19d | 0d | LABOR- SUBCONTRACTOR [54 h]; AC TECHNICIAN SK [33.6 h]; MECHANICALS SK [64.8 h]; WATER TANK QTY [3 ea]; CHILLER QTY [30 ea]; PUMP QTY [3 ea] | 212,221 | 40 | P3P2WEEX40 | DUKHCON3PP2WE005065 | DUKHCONP03Z2WTEX5065 | DH | CON | P3 | Z2 | EX | WE |  | B10 | B10-D12 | RES-3 |

Notes:
- DUKHCONP03Z2ACFF4615: Expenses: P03-Air-conditioning and Ventilation works 6520
- DUKHCONP03Z2ACFF4620: Expenses: P03-Air-conditioning and Ventilation works 23247
- DUKHCONP03Z2ACFF4625: Expenses: P03-Air-conditioning and Ventilation works 42227
- DUKHCONP03Z2ACRF4630: Expenses: P03-Air-conditioning and Ventilation works 20514
- DUKHCONP03Z2ACRF4635: Expenses: P03-Air-conditioning and Ventilation works 106501
- DUKHCONP03Z2MSEX5000: Expenses: P03-External works within the Plot Curtilage 6808
- DUKHCONP03Z2MSEX5005: Expenses: P03-External works within the Plot Curtilage 12087
- DUKHCONP03Z2MSEX5015: Expenses: P03-External works within the Plot Curtilage 17022
- DUKHCONP03Z2MSEX5010: Expenses: P03-External works within the Plot Curtilage 1114
- DUKHCONP03Z2MSEX5020: Expenses: P03-External works within the Plot Curtilage 10659
- DUKHCONP03Z2MSEX5025: Expenses: P03-External works within the Plot Curtilage 30532
- DUKHCONP03Z2WTEX5030: Expenses: P03-External works within the Plot Curtilage 1647
- DUKHCONP03Z2WTEX5035: Expenses: P03-External works within the Plot Curtilage 25770
- DUKHCONP03Z2WTEX5040: Expenses: P03-External works within the Plot Curtilage 46391
- DUKHCONP03Z2WTEX5070: Expenses: P03-External works within the Plot Curtilage 125964
- DUKHCONP03Z2WTEX5075: Expenses: P03-External works within the Plot Curtilage 8274
- DUKHCONP03Z2WTEX5080: Expenses: P03-External works within the Plot Curtilage 22233
- DUKHCONP03Z2WTEX5085: Expenses: P03-External works within the Plot Curtilage 12708
- DUKHCONP03Z2WTEX5045: Expenses: P03-External works within the Plot Curtilage 35064
- DUKHCONP03Z2WTEX5050: Expenses: P03-External works within the Plot Curtilage 19575
- DUKHCONP03Z2WTEX5060: Expenses: P03-External works within the Plot Curtilage 22930
- DUKHCONP03Z2WTEX5065: Expenses: P03-External works within the Plot Curtilage 212221

| ID | WBS | Activity | Duration | Start | Finish | Predecessors | Total float | Resources | Cost | P3 ACTID | P6 ID (old) | NP61D | PROJECT | PHASES | PACKAGE | PART | ELEMENTS | BILL NOS | BILL DIVISION | RES PACK | CODE | STEP | FLOORS | rem |
| --- | --- | --- | --- | --- | --- | --- | --- | --- | --- | --- | --- | --- | --- | --- | --- | --- | --- | --- | --- | --- | --- | --- | --- | --- |
|  | 30 | **TESTING AND COMMISSIONING** |  | 2014-04-17 | 2014-05-15 |  |  |  |  |  |  |  |  |  |  |  |  |  |  |  |  |  |  |  |
| DUKHCONP03Z2ACTC8000 |  | Pre-Commissioning & Testing of AC Works | 25d | 2014-04-17 | 2014-05-15 | DUKHCONP03Z2ARRF3620, DUKHCONP03Z1ACTC8000, DUKHCONP03Z2AREL3680, DUKHCONP03Z2ARGF3095, DUKHCONP03Z2ARFF3395, DUKHCONP03Z2ACFF4625, DUKHCONP03Z2ARRF3660, DUKHCONP03Z2ACRF4635, DUKHCONP03Z2MSEX5005 | 0d | LABOR- SUBCONTRACTOR [500 h]; AC TECHNICIAN SK [1000 h] | 915 | P3P2ACU100 | DUKHCON3PP2AC008000 | DUKHCONP03Z2ACTC8000 | DH | CON | P3 | Z2 | TES | B10 | B10-D08 | RES-3 |  |  |  |  |
| DUKHCONP03Z2ELTC8010 |  | Pre-Commissioning & Testing of Electrical Works | 25d | 2014-04-17 | 2014-05-15 | DUKHCONP03Z2ARFF3395, DUKHCONP03Z2ELFF4050, DUKHCONP03Z2ELRF4075, DUKHCONP03Z2MSEX5005, DUKHCONP03Z2ELGF4030, DUKHCONP03Z1ELTC8010, DUKHCONP03Z2ARRF3620, DUKHCONP03Z2AREL3680, DUKHCONP03Z2ELGF4015, DUKHCONP03Z2ARRF3660, DUKHCONP03Z2ARRF3655, DUKHCONP03Z2ARGF3095, DUKHCONP03Z2ELFF4065, DUKHCONP03Z2ELFF4055, DUKHCONP03Z2ELGF4025 | 0d | LABOR- SUBCONTRACTOR [1000 h]; ELECTRICIANS SK [2000 h] | 41,901 | P3P2ELE100 | DUKHCON3PP2EL008010 | DUKHCONP03Z2ELTC8010 | DH | CON | P3 | Z2 | TES | B10 | B10-D09 | RES-3 |  |  |  |  |
| DUKHCONP03Z2PLTC8005 |  | Pre-Commissioning & Testing of Plumbing Works | 25d | 2014-04-17 | 2014-05-15 | DUKHCONP03Z2MSEX5005, DUKHCONP03Z2AREL3680, DUKHCONP03Z2ARGF3095, DUKHCONP03Z2WTEX5065, DUKHCONP03Z2PLRF4355, DUKHCONP03Z2PLGF4320, DUKHCONP03Z2ARRF3620, DUKHCONP03Z2ARFF3395, DUKHCONP03Z1PLTC8005, DUKHCONP03Z2ARRF3655, DUKHCONP03Z2ARRF3660, DUKHCONP03Z2PLRF4350 | 0d | LABOR- SUBCONTRACTOR [1000 h]; MECHANICALS SK [2000 h] | 7,665 | P3P2PLU100 | DUKHCON3PP2PL008005 | DUKHCONP03Z2PLTC8005 | DH | CON | P3 | Z2 | TES | B10 | B10-D07 | RES-3 |  |  |  |  |
|  | 20 | **ZONE - 3 (3 Apartments)** |  | 2013-03-30 | 2014-06-14 |  |  |  |  |  |  |  |  |  |  |  |  |  |  |  |  |  |  |  |
|  | 10 | **STRUCTURAL WORKS** |  | 2013-03-30 | 2013-12-29 |  |  |  |  |  |  |  |  |  |  |  |  |  |  |  |  |  |  |  |
|  | 10 | **SUB STRUCTURE** |  | 2013-03-30 | 2013-08-15 |  |  |  |  |  |  |  |  |  |  |  |  |  |  |  |  |  |  |  |
|  | 10 | **UPTO GRADE SLAB** |  | 2013-03-30 | 2013-08-15 |  |  |  |  |  |  |  |  |  |  |  |  |  |  |  |  |  |  |  |
| DUKHCONP03Z3STUG1000 |  | Footing Excavation | 25d | 2013-03-30 | 2013-04-27 | DUKHCONP03Z2STUG1000 | 0d | LABOR - CIVIL [824 h]; EXCAVATION QTY [1374 Cum]; LOADER [183 h]; POCLAIN [366 h]; TRUCK [183 h]; EQUIP OPERATORS [732 h] | 68,040 | P3P3SBUG10 | DUKHCON3PP3STUG1000 | DUKHCONP03Z3STUG1000 | DH | CON | P3 | Z3 | ST | B10 | B10-D01 | RES-3 | 10 | SB | UG |  |
| DUKHCONP03Z3STUG1005 |  | Footing Antitermite | 23d | 2013-04-09 | 2013-05-05 | DUKHCONP03Z3STUG1000 SS+9d, DUKHCONP03Z3STUG1000 FF+5d | 0d | LABOR- SUBCONTRACTOR [173.25 h]; ANTITERMITE QTY [1152 sqft]; ANTITERMITE SK [461 h] | 3,456 | P3P3SBUG15 | DUKHCON3PP3STUG1005 | DUKHCONP03Z3STUG1005 | DH | CON | P3 | Z3 | ST | B10 | B10-D01 | RES-3 | 15 | SB | UG | REM |
| DUKHCONP03Z3STUG1010 |  | Footing Blinding | 23d | 2013-04-13 | 2013-05-08 | DUKHCONP03Z3STUG1005 SS+3d, DUKHCONP03Z3STUG1005 FF+3d | 0d | BLINDING MASON SK [336 h]; LABOR - CIVIL [252 h]; BLINDING QTY [420 Sqm] | 10,587 | P3P3SBUG18 | DUKHCON3PP3STUG1010 | DUKHCONP03Z3STUG1010 | DH | CON | P3 | Z3 | ST | B10 | B10-D02 | RES-3 | 15 | SB | UG | REM |
| DUKHCONP03Z3STUG1015 |  | Footing Waterproofing & Screed | 25d | 2013-04-18 | 2013-05-16 | DUKHCONP03Z3STUG1010 FF+5d, DUKHCONP03Z3STUG1010 SS+5d | 0d | SCREED MASON SK [336 h]; LABOR - CIVIL [126 h]; LABOR- SUBCONTRACTOR [247.5 h]; SCREED QTY [420 Sqm]; WATERPROOFING QTY [823 Sqm]; WATERPROOFING SPECIALIST SK [659 h] | 31,497 | P3P3SBUG20 | DUKHCON3PP3STUG1015 | DUKHCONP03Z3STUG1015 | DH | CON | P3 | Z3 | ST | B10 | B10-D02 | RES-3 | 20 | SB | UG | REM |
| DUKHCONP03Z3STUG1020 |  | Construction of foundations | 20d | 2013-05-04 | 2013-05-26 | DUKHCONP03Z3STUG1015 SS+7d, DUKHCONP03Z3STUG1015 FF+8d | 0d | FORMWORK QTY [323 Sqm]; CONCRETE QTY [144 Cum]; STEEL FIXERS SK [1819 h]; CARPENTERS SK [646 h]; CONCRETE MASON SK [288 h]; LABOR - CIVIL [2064.75 h]; REINFORCEMENT BARS QTY [22733 kg] | 125,011 | P3P3SBUG25 | DUKHCON3PP3STUG1020 | DUKHCONP03Z3STUG1020 | DH | CON | P3 | Z3 | ST | B10 | B10-D02 | RES-3 | 25 | SB | UG | REM |
| DUKHCONP03Z3STUG1025 |  | Construction of neck of columns | 25d | 2013-05-13 | 2013-06-10 | DUKHCONP03Z2STUG1025, DUKHCONP03Z3STUG1020 FF+7d, DUKHCONP03Z3STUG1020 SS+8d | 0d | STEEL FIXERS SK [152 h]; CARPENTERS SK [630 h]; CONCRETE MASON SK [18 h]; LABOR - CIVIL [600 h]; REINFORCEMENT BARS QTY [1891 kg]; FORMWORK QTY [315 Sqm]; CONCRETE QTY [9 Cum] | 27,559 | P3P3SBUG30 | DUKHCON3PP3STUG1025 | DUKHCONP03Z3STUG1025 | DH | CON | P3 | Z3 | ST | B10 | B10-D02 | RES-3 | 30 | SB | UG | REM |
| DUKHCONP03Z3STUG1030 |  | Waterproofing Footing & Neck Column | 25d | 2013-05-22 | 2013-06-19 | DUKHCONP03Z3STUG1025 FF+8d, DUKHCONP03Z3STUG1025 SS+8d | 0d | LABOR- SUBCONTRACTOR [58.5 h]; WATERPROOFING QTY [193 Sqm]; WATERPROOFING SPECIALIST SK [155 h] | 10,965 | P3P3SBUG35 | DUKHCON3PP3STUG1030 | DUKHCONP03Z3STUG1030 | DH | CON | P3 | Z3 | ST | B10 | B10-D02 | RES-3 | 35 | SB | UG | REM |
| DUKHCONP03Z3STUG1035 |  | Backfilling Upto Grade Beam Bottom | 25d | 2013-06-02 | 2013-06-30 | DUKHCONP03Z2STUG1035, DUKHCONP03Z3STUG1030 FF+9d, DUKHCONP03Z3STUG1030 SS+9d | 0d | LABOR - CIVIL [360 h]; BACKFILLING QTY [1512 Cum]; BOBCAT [1000 h]; PLATE COMPACTOR [1000 h]; TRUCK [200 h]; EQUIP OPERATORS [2200 h] | 25,326 | P3P3SBUG40 | DUKHCON3PP3STUG1035 | DUKHCONP03Z3STUG1035 | DH | CON | P3 | Z3 | ST | B10 | B10-D01 | RES-3 | 40 | SB | UG |  |
| DUKHCONP03Z3STUG1040 |  | Construction of Grade Beams | 25d | 2013-06-18 | 2013-07-16 | DUKHCONP03Z3STUG1035 SS+14d, DUKHCONP03Z3STUG1035 FF+14d | 0d | CARPENTERS SK [1202 h]; CONCRETE MASON SK [126 h]; LABOR - CIVIL [1995 h]; BLINDING QTY [225 Sqm]; SCREED QTY [225 Sqm]; REINFORCEMENT BARS QTY [13269 kg]; FORMWORK QTY [601 Sqm]; CONCRETE QTY [63 Cum]; BLINDING MASON SK [180 h]; SCREED MASON SK [180 h]; STEEL FIXERS SK [1062 h] | 199,651 | P3P3SBUG45 | DUKHCON3PP3STUG1040 | DUKHCONP03Z3STUG1040 | DH | CON | P3 | Z3 | ST | B10 | B10-D02 | RES-3 | 45 | SB | UG | REM |
| DUKHCONP03Z3STUG1045 |  | Construction of slab on grade | 25d | 2013-07-15 | 2013-08-15 | DUKHCONP03Z3PLUG4300 SS+8d, DUKHCONP03Z3PLUG4300 FF+8d, DUKHCONP03Z3STUG1040 FF+10d, DUKHCONP03Z2STUG1045, DUKHCONP03Z3STUG1040 SS+10d | 0d | CONCRETE MASON SK [372 h]; LABOR - CIVIL [1279.5 h]; BLINDING QTY [855 Sqm]; SCREED QTY [855 Sqm]; CONCRETE QTY [186 Cum]; WELDED WIRE MESH [1155 Sqm]; BLINDING MASON SK [684 h]; SCREED MASON SK [684 h]; STEEL FIXERS SK [308 h] | 181,661 | P3P3SBUG50 | DUKHCON3PP3STUG1045 | DUKHCONP03Z3STUG1045 | DH | CON | P3 | Z3 | ST | B10 | B10-D02 | RES-3 | 50 | SB | UG | REM |
|  | 15 | **SUPERSTRUCTURE** |  | 2013-07-31 | 2013-12-29 |  |  |  |  |  |  |  |  |  |  |  |  |  |  |  |  |  |  |  |
|  | 10 | **GROUND FLOOR** |  | 2013-07-31 | 2013-09-29 |  |  |  |  |  |  |  |  |  |  |  |  |  |  |  |  |  |  |  |
| DUKHCONP03Z3STGF2000 |  | Column-Rebar & Formwork | 25d | 2013-07-31 | 2013-09-01 | DUKHCONP03Z3STUG1045 FF+7d, DUKHCONP03Z2STGF2000, DUKHCONP03Z3STUG1045 SS+14d | 0d | CARPENTERS SK [766 h]; LABOR - CIVIL [723.75 h]; REINFORCEMENT BARS QTY [2482 kg]; FORMWORK QTY [383 Sqm]; STEEL FIXERS SK [199 h] | 29,754 | P3P3SPGF10 | DUKHCON3PP3STGF2000 | DUKHCONP03Z3STGF2000 | DH | CON | P3 | Z3 | ST | B10 | B10-D02 | RES-3 | 10 | SP | GF | REM |
| DUKHCONP03Z3STGF2005 |  | Column-Concrete | 24d | 2013-08-13 | 2013-09-09 | DUKHCONP03Z3STGF2000 SS+8d, DUKHCONP03Z3STGF2000 FF+2d | 0d | CONCRETE MASON SK [58 h]; LABOR - CIVIL [43.5 h]; CONCRETE QTY [29 Cum] | 8,267 | P3P3SPGF15 | DUKHCON3PP3STGF2005 | DUKHCONP03Z3STGF2005 | DH | CON | P3 | Z3 | ST | B10 | B10-D02 | RES-3 | 15 | SP | GF | REM |
| DUKHCONP03Z3STGF2010 |  | Beam, Stairs ,Slab-Rebar & Formwork | 25d | 2013-08-28 | 2013-09-25 | DUKHCONP03Z3STGF2005 FF+14d, DUKHCONP03Z3STGF2005 SS+2d | 0d | STEEL FIXERS SK [1905 h]; CARPENTERS SK [4148 h]; LABOR - CIVIL [4539.75 h]; REINFORCEMENT BARS QTY [23804 kg]; FORMWORK QTY [2074 Sqm] | 173,534 | P3P3SPGF20 | DUKHCON3PP3STGF2010 | DUKHCONP03Z3STGF2010 | DH | CON | P3 | Z3 | ST | B10 | B10-D02 | RES-3 | 20 | SP | GF | REM |
| DUKHCONP03Z3STGF2015 |  | Beam, Stairs ,Slab-Concrete | 15d | 2013-09-12 | 2013-09-29 | DUKHCONP03Z3STGF2010 SS+10d, DUKHCONP03Z3STGF2010 FF+3d, DUKHCONP03Z2STGF2015 | 0d | CONCRETE MASON SK [496 h]; LABOR - CIVIL [372 h]; CONCRETE QTY [248 Cum] | 84,518 | P3P3SPGF25 | DUKHCON3PP3STGF2015 | DUKHCONP03Z3STGF2015 | DH | CON | P3 | Z3 | ST | B10 | B10-D02 | RES-3 | 25 | SP | GF | REM |

Notes:
- DUKHCONP03Z2ACTC8000: Expenses: P03-Air-conditioning and Ventilation works 915
- DUKHCONP03Z2ELTC8010: Expenses: P03-Electrical Installations 41901
- DUKHCONP03Z2PLTC8005: Expenses: P03-Plumbing and Drainage works 7665
- DUKHCONP03Z3STUG1000: Expenses: P03-Excavation and Earth Works 68040
- DUKHCONP03Z3STUG1005: Expenses: P03-Excavation and Earth Works 3456
- DUKHCONP03Z3STUG1010: Expenses: P03-Concrete Works 10587
- DUKHCONP03Z3STUG1015: Expenses: P03-Concrete Works 31497
- DUKHCONP03Z3STUG1020: Expenses: P03-Concrete Works 125011
- DUKHCONP03Z3STUG1025: Expenses: P03-Concrete Works 27559
- DUKHCONP03Z3STUG1030: Expenses: P03-Concrete Works 10965
- DUKHCONP03Z3STUG1035: Expenses: P03-Excavation and Earth Works 25326
- DUKHCONP03Z3STUG1040: Expenses: P03-Concrete Works 199651
- DUKHCONP03Z3STUG1045: Expenses: P03-Concrete Works 181661
- DUKHCONP03Z3STGF2000: Expenses: P03-Concrete Works 29754
- DUKHCONP03Z3STGF2005: Expenses: P03-Concrete Works 8267
- DUKHCONP03Z3STGF2010: Expenses: P03-Concrete Works 173534
- DUKHCONP03Z3STGF2015: Expenses: P03-Concrete Works 84518

| ID | WBS | Activity | Duration | Start | Finish | Predecessors | Total float | Free float | Resources | Cost | CODE | rem | P3 ACTID | P6 ID (old) | NP61D | PROJECT | PHASES | PACKAGE | PART | ELEMENTS | STEP | FLOORS | BILL NOS | BILL DIVISION | RES PACK | EXECUTER |
| --- | --- | --- | --- | --- | --- | --- | --- | --- | --- | --- | --- | --- | --- | --- | --- | --- | --- | --- | --- | --- | --- | --- | --- | --- | --- | --- |
|  | 15 | **FIRST FLOORS** |  | 2013-09-15 | 2013-11-19 |  |  |  |  |  |  |  |  |  |  |  |  |  |  |  |  |  |  |  |  |  |
| DUKHCONP03Z3STFF2020 |  | Column-Rebar & Formwork | 25d | 2013-09-15 | 2013-10-13 | DUKHCONP03Z3STGF2015 SS+2d, DUKHCONP03Z3STGF2015 FF+5d, DUKHCONP03Z2STFF2020 | 0d |  | STEEL FIXERS SK [241 h]; CARPENTERS SK [682 h]; LABOR - CIVIL [692.25 h]; REINFORCEMENT BARS QTY [3012 kg]; FORMWORK QTY [341 Sqm] | 29,055 | 10 | REM | P3P3SPFF10 | DUKHCON3PP3STFF2020 | DUKHCONP03Z3STFF2020 | DH | CON | P3 | Z3 | ST | SP | FF | B10 | B10-D02 | RES-3 |  |
| DUKHCONP03Z3STFF2025 |  | Column-Concrete | 24d | 2013-09-25 | 2013-10-24 | DUKHCONP03Z3STFF2020 SS+9d, DUKHCONP03Z3STFF2020 FF+2d | 0d |  | CONCRETE MASON SK [50 h]; LABOR - CIVIL [37.5 h]; CONCRETE QTY [25 Cum] | 7,236 | 15 | REM | P3P3SPFF15 | DUKHCON3PP3STFF2025 | DUKHCONP03Z3STFF2025 | DH | CON | P3 | Z3 | ST | SP | FF | B10 | B10-D02 | RES-3 |  |
| DUKHCONP03Z3STFF2030 |  | Beam, Stairs ,Slab-Rebar & Formwork | 25d | 2013-10-10 | 2013-11-10 | DUKHCONP03Z3STFF2025 SS+2d, DUKHCONP03Z3STFF2025 FF+14d | 0d |  | STEEL FIXERS SK [1613 h]; CARPENTERS SK [4148 h]; LABOR - CIVIL [4320.75 h]; REINFORCEMENT BARS QTY [20151 kg]; FORMWORK QTY [2074 Sqm] | 183,422 | 20 | REM | P3P3SPFF20 | DUKHCON3PP3STFF2030 | DUKHCONP03Z3STFF2030 | DH | CON | P3 | Z3 | ST | SP | FF | B10 | B10-D02 | RES-3 |  |
| DUKHCONP03Z3STFF2035 |  | Beam, Stairs ,Slab-Concrete | 15d | 2013-11-03 | 2013-11-19 | DUKHCONP03Z3STFF2030 FF+8d, DUKHCONP03Z3STFF2030 SS+10d, DUKHCONP03Z2STFF2035 | 0d |  | CONCRETE MASON SK [418 h]; LABOR - CIVIL [313.5 h]; CONCRETE QTY [209 Cum] | 83,819 | 25 | REM | P3P3SPFF25 | DUKHCON3PP3STFF2035 | DUKHCONP03Z3STFF2035 | DH | CON | P3 | Z3 | ST | SP | FF | B10 | B10-D02 | RES-3 |  |
|  | 20 | **ROOF** |  | 2013-11-05 | 2013-12-29 |  |  |  |  |  |  |  |  |  |  |  |  |  |  |  |  |  |  |  |  |  |
| DUKHCONP03Z3STRF2040 |  | Column-Rebar & Formwork | 18d | 2013-11-05 | 2013-11-25 | DUKHCONP03Z2STRF2040, DUKHCONP03Z3STFF2035 FF+3d, DUKHCONP03Z3STFF2035 SS+2d | 29d | 0d | STEEL FIXERS SK [58 h]; CARPENTERS SK [256 h]; LABOR - CIVIL [235.5 h]; REINFORCEMENT BARS QTY [717 kg]; FORMWORK QTY [128 Sqm] | 9,566 | 10 | REM | P3P3SPRF10 | DUKHCON3PP3STRF2040 | DUKHCONP03Z3STRF2040 | DH | CON | P3 | Z3 | ST | SP | RF | B10 | B10-D02 | RES-3 |  |
| DUKHCONP03Z3STRF2045 |  | Column-Concrete | 17d | 2013-11-09 | 2013-11-27 | DUKHCONP03Z3STRF2040 SS+3d, DUKHCONP03Z3STRF2040 FF+1d | 39d | 0d | CONCRETE MASON SK [12 h]; LABOR - CIVIL [9 h]; CONCRETE QTY [6 Cum] | 1,723 | 15 | REM | P3P3SPRF15 | DUKHCON3PP3STRF2045 | DUKHCONP03Z3STRF2045 | DH | CON | P3 | Z3 | ST | SP | RF | B10 | B10-D02 | RES-3 |  |
| DUKHCONP03Z3STRF2050 |  | Slab-Rebar & Formwork | 20d | 2013-11-11 | 2013-12-03 | DUKHCONP03Z3STRF2045 SS+2d, DUKHCONP03Z3STRF2045 FF+5d | 39d | 0d | STEEL FIXERS SK [383 h]; CARPENTERS SK [518 h]; LABOR - CIVIL [675.75 h]; REINFORCEMENT BARS QTY [4777 kg]; FORMWORK QTY [259 Sqm] | 33,570 | 20 | REM | P3P3SPRF20 | DUKHCON3PP3STRF2050 | DUKHCONP03Z3STRF2050 | DH | CON | P3 | Z3 | ST | SP | RF | B10 | B10-D02 | RES-3 |  |
| DUKHCONP03Z3STRF2055 |  | Slab-Concrete | 13d | 2013-11-21 | 2013-12-05 | DUKHCONP03Z2STRF2055, DUKHCONP03Z3STRF2050 FF+2d, DUKHCONP03Z3STRF2050 SS+5d | 39d | 0d | CONCRETE MASON SK [100 h]; LABOR - CIVIL [75 h]; CONCRETE QTY [50 Cum] | 16,065 | 25 | REM | P3P3SPRF25 | DUKHCON3PP3STRF2055 | DUKHCONP03Z3STRF2055 | DH | CON | P3 | Z3 | ST | SP | RF | B10 | B10-D02 | RES-3 |  |
| DUKHCONP03Z3STRF2060 |  | Construction of Parapets | 25d | 2013-11-24 | 2013-12-23 | DUKHCONP03Z3STRF2055 FF+10d, DUKHCONP03Z3STRF2055 SS+2d | 58d | 0d | BLOCK MASON SK [924 h]; LABOR - CIVIL [517 h]; BLOCK QTY [462 Sqm] | 28,644 | 30 |  | P3P3SPRF30 | DUKHCON3PP3STRF2060 | DUKHCONP03Z3STRF2060 | DH | CON | P3 | Z3 | ST | SP | RF | B10 | B10-D03 | RES-3 |  |
| DUKHCONP03Z3STRF2065 |  | Construction of up stands/Plinth | 25d | 2013-11-30 | 2013-12-29 | DUKHCONP03Z3STRF2060 FF+5d, DUKHCONP03Z2STRF2065, DUKHCONP03Z3STRF2060 SS+5d | 58d | 0d | STEEL FIXERS SK [6 h]; CARPENTERS SK [126 h]; CONCRETE MASON SK [30 h]; LABOR - CIVIL [121.5 h]; REINFORCEMENT BARS QTY [68 kg]; FORMWORK QTY [63 Sqm]; CONCRETE QTY [15 Cum] | 8,997 | 35 | REM | P3P3SPRF35 | DUKHCON3PP3STRF2065 | DUKHCONP03Z3STRF2065 | DH | CON | P3 | Z3 | ST | SP | RF | B10 | B10-D02 | RES-3 |  |
|  | 15 | **FINISHING WORKS** |  | 2013-10-14 | 2014-05-15 |  |  |  |  |  |  |  |  |  |  |  |  |  |  |  |  |  |  |  |  |  |
|  | 10 | **INTERNAL FINISHES** |  | 2013-10-14 | 2014-05-15 |  |  |  |  |  |  |  |  |  |  |  |  |  |  |  |  |  |  |  |  |  |
|  | 10 | **GROUND FLOOR** |  | 2013-10-14 | 2014-03-30 |  |  |  |  |  |  |  |  |  |  |  |  |  |  |  |  |  |  |  |  |  |
| DUKHCONP03Z3ARGF3000 |  | Block work | 25d | 2013-10-14 | 2013-11-13 | DUKHCONP03Z2ARGF3000, DUKHCONP03Z3STGF2015 SS+21d, DUKHCONP03Z3STGF2015 FF+21d | 35d | 0d | BLOCK MASON SK [4552 h]; LABOR - CIVIL [2560.5 h]; BLOCK QTY [2276 Sqm] | 161,435 | 10 | REM | P3P3IFGF10 | DUKHCON3PP3ARGF3000 | DUKHCONP03Z3ARGF3000 | DH | CON | P3 | Z3 | FIN | IF | GF | B10 | B10-D03 | RES-3 |  |
| DUKHCONP03Z3ARGF3005 |  | Plastering work | 25d | 2013-11-07 | 2013-12-05 | DUKHCONP03Z3ARGF3000 SS+7d, DUKHCONP03Z3ELGF4000 FF+5d, DUKHCONP03Z3PLGF4305 SS+5d, DUKHCONP03Z3ARGF3000 FF+7d, DUKHCONP03Z3ELGF4000 SS+5d, DUKHCONP03Z2ARGF3005, DUKHCONP03Z3PLGF4305 FF+5d | 35d | 0d | PLASTER MASON SK [4012 h]; LABOR - CIVIL [2256.75 h]; PLASTER QTY [2507 Sqm] | 32,676 | 12 | REM | P3P3IFGF12 | DUKHCON3PP3ARGF3005 | DUKHCONP03Z3ARGF3005 | DH | CON | P3 | Z3 | FIN | IF | GF | B10 | B10-D10 | RES-3 |  |
| DUKHCONP03Z3ARGF3010 |  | Flooring screed | 21d | 2013-11-16 | 2013-12-09 | DUKHCONP03Z3ARGF3005 SS+7d, DUKHCONP03Z3ARGF3005 FF+3d | 43d | 8d | SCREED MASON SK [898 h]; LABOR - CIVIL [336.75 h]; FLOORING SCREED QTY [1122 Sqm] | 37,269 | 15 | REM | P3P3IFGF15 | DUKHCON3PP3ARGF3010 | DUKHCONP03Z3ARGF3010 | DH | CON | P3 | Z3 | FIN | IF | GF | B10 | B10-D10 | RES-3 |  |
| DUKHCONP03Z3ARGF3015 |  | Wet area waterproofing & Protection Screed | 15d | 2013-11-25 | 2013-12-11 | DUKHCONP03Z3ARGF3005 FF+5d, DUKHCONP03Z2ARGF3015, DUKHCONP03Z3ARGF3005 SS+7d | 35d | 0d | LABOR- SUBCONTRACTOR [159 h]; WETAREA WATERPROOFING QTY [528 Sqm]; WATERPROOFING SPECIALIST SK [423 h] | 17,952 | 18 | REM | P3P3IFGF18 | DUKHCON3PP3ARGF3015 | DUKHCONP03Z3ARGF3015 | DH | CON | P3 | Z3 | FIN | IF | GF | B10 | B10-D10 | RES-3 |  |
| DUKHCONP03Z3ARGF3020 |  | Ceramic Wall Tiling | 25d | 2013-12-01 | 2013-12-30 | DUKHCONP03Z3PLGF4305 SS+4d, DUKHCONP03Z2ARGF3020, DUKHCONP03Z3ARGF3015 FF+5d, DUKHCONP03Z3PLGF4305 FF+4d, DUKHCONP03Z3PLGF4310 FF+4d, DUKHCONP03Z3PLGF4310 SS+4d, DUKHCONP03Z3ARGF3015 SS+5d | 35d | 0d | TILE MASON SK [1666 h]; LABOR- SUBCONTRACTOR [937.5 h]; CERAMIC WALL TILE QTY [833 Sqm] | 48,488 | 24 | REM | P3P3IFGF24 | DUKHCON3PP3ARGF3020 | DUKHCONP03Z3ARGF3020 | DH | CON | P3 | Z3 | FIN | IF | GF | B10 | B10-D10 | RES-3 |  |
| DUKHCONP03Z3ARGF3030 |  | Paint First coat | 25d | 2013-12-01 | 2013-12-30 | DUKHCONP03Z3ARGF3005 SS+14d, DUKHCONP03Z2ARGF3030, DUKHCONP03Z3ARGF3005 FF+14d | 43d | 0d | PAINTERS SK [3008.4 h]; LABOR- SUBCONTRACTOR [1128.15 h]; FIRSTCOAT PAINT QTY [3760.5 Sqm] | 18,001 | 21 | REM | P3P3IFGF21 | DUKHCON3PP3ARGF3030 | DUKHCONP03Z3ARGF3030 | DH | CON | P3 | Z3 | FIN | IF | GF | B10 | B10-D11 | RES-3 | ENT |
| DUKHCONP03Z3ARGF3025 |  | Porcelain Tile flooring | 25d | 2013-12-07 | 2014-01-05 | DUKHCONP03Z3ARGF3020 FF+5d, DUKHCONP03Z3ARGF3020 SS+5d, DUKHCONP03Z3ARGF3010 SS+10d, DUKHCONP03Z2ARGF3025, DUKHCONP03Z3ARGF3010 FF+10d | 35d | 0d | TILE MASON SK [1144 h]; LABOR- SUBCONTRACTOR [643.5 h]; PORCELAIN FLOORING QTY [1001 Sqm] | 78,427 | 27 | REM | P3P3IFGF27 | DUKHCON3PP3ARGF3025 | DUKHCONP03Z3ARGF3025 | DH | CON | P3 | Z3 | FIN | IF | GF | B10 | B10-D10 | RES-3 |  |
| DUKHCONP03Z3ARGF3045 |  | Fixing of Suspension systems | 20d | 2013-12-25 | 2014-01-16 | DUKHCONP03Z3ARGF3025 FF+10d, DUKHCONP03Z2ARGF3045, DUKHCONP03Z3ARGF3030 FF+7d, DUKHCONP03Z3ARGF3025 SS+10d, DUKHCONP03Z3ELGF4010 SS+5d, DUKHCONP03Z3ELGF4010 FF+5d, DUKHCONP03Z3ARGF3030 SS+7d | 35d | 0d | LABOR- SUBCONTRACTOR [516.75 h]; SUSPENSION QTY [1147.5 Sqm]; FALSE CEILING SKILLED SK [918 h] | 22,044 | 39 | REM | P3P3IFGF39 | DUKHCON3PP3ARGF3045 | DUKHCONP03Z3ARGF3045 | DH | CON | P3 | Z3 | FIN | IF | GF | B10 | B10-D10 | RES-3 | SUS |
| DUKHCONP03Z3ARGF3035 |  | Slate Tile Flooring & Skirting | 15d | 2013-12-28 | 2014-01-13 | DUKHCONP03Z3ARGF3025 SS+13d, DUKHCONP03Z3ARGF3025 FF+7d, DUKHCONP03Z3ARGF3010 FF+13d, DUKHCONP03Z3ARGF3010 SS+13d | 42d | 2d | TILE MASON SK [29 h]; LABOR- SUBCONTRACTOR [16.5 h]; SLATE TILE QTY [18 Sqm] | 4,202 | 33 | REM | P3P3IFGF33 | DUKHCON3PP3ARGF3035 | DUKHCONP03Z3ARGF3035 | DH | CON | P3 | Z3 | FIN | IF | GF | B10 | B10-D10 | RES-3 |  |
| DUKHCONP03Z3ARGF3055 |  | Aluminum tile false ceiling | 25d | 2014-01-02 | 2014-01-30 | DUKHCONP03Z3ARGF3045 SS+7d, DUKHCONP03Z3ACGF4600 SS+7d, DUKHCONP03Z3ACGF4600 FF+7d, DUKHCONP03Z3ARGF3045 FF+7d | 38d | 3d | LABOR- SUBCONTRACTOR [40.5 h]; FALSE CEILING QTY [126 Sqm]; FALSE CEILING SKILLED SK [96 h] | 8,585 | 42 | REM | P3P3IFGF42 | DUKHCON3PP3ARGF3055 | DUKHCONP03Z3ARGF3055 | DH | CON | P3 | Z3 | FIN | IF | GF | B10 | B10-D10 | RES-3 | ALU |
| DUKHCONP03Z3ARGF3040 |  | Cobble Tile flooring | 15d | 2014-01-04 | 2014-01-20 | DUKHCONP03Z3ARGF3025 SS+13d, DUKHCONP03Z3ARGF3025 FF+13d, DUKHCONP03Z3ARGF3010 SS+13d, DUKHCONP03Z3ARGF3010 FF+13d, DUKHCONP03Z3ARGF3035 FF+4d, DUKHCONP03Z3ARGF3035 SS+4d | 40d | 0d | TILE MASON SK [44 h]; LABOR- SUBCONTRACTOR [24.75 h]; COBBLE STONE QTY [27 Sqm] | 2,251 | 30 | REM | P3P3IFGF30 | DUKHCON3PP3ARGF3040 | DUKHCONP03Z3ARGF3040 | DH | CON | P3 | Z3 | FIN | IF | GF | B10 | B10-D10 | RES-3 |  |
| DUKHCONP03Z3ARGF3060 |  | Gypsum board false ceiling | 25d | 2014-01-06 | 2014-02-03 | DUKHCONP03Z3ARGF3045 SS+10d, DUKHCONP03Z3ACGF4600 FF+7d, DUKHCONP03Z3ACGF4600 SS+7d, DUKHCONP03Z2ARGF3060, DUKHCONP03Z3ARGF3045 FF+10d | 35d | 0d | LABOR- SUBCONTRACTOR [467.51 h]; FALSE CEILING QTY [1039 Sqm]; FALSE CEILING SKILLED SK [831.2 h] | 57,405 | 45 | REM | P3P3IFGF45 | DUKHCON3PP3ARGF3060 | DUKHCONP03Z3ARGF3060 | DH | CON | P3 | Z3 | FIN | IF | GF | B10 | B10-D10 | RES-3 | GYP |
| DUKHCONP03Z3ARGF3050 |  | Granite - Stair case flooring & Skirting | 20d | 2014-01-12 | 2014-02-03 | DUKHCONP03Z3ARGF3025 SS+13d, DUKHCONP03Z3ARGF3040 FF+7d, DUKHCONP03Z3ARGF3025 FF+13d, DUKHCONP03Z3ARGF3040 SS+7d | 40d | 0d | GRANITE MASON SK [324 h]; LABOR- SUBCONTRACTOR [182.25 h]; GRANITE QTY [81 Sqm] | 48,650 | 36 | REM | P3P3IFGF36 | DUKHCON3PP3ARGF3050 | DUKHCONP03Z3ARGF3050 | DH | CON | P3 | Z3 | FIN | IF | GF | B10 | B10-D10 | RES-3 |  |
| DUKHCONP03Z3ARGF3065 |  | Wooden door | 15d | 2014-01-26 | 2014-02-12 | DUKHCONP03Z3ARGF3050 SS+7d, DUKHCONP03Z2ARGF3065, DUKHCONP03Z3ARGF3035 FF+7d, DUKHCONP03Z3ARGF3035 SS+7d, DUKHCONP03Z3ARGF3050 FF+7d | 40d | 0d | LABOR- SUBCONTRACTOR [112.5 h]; WOODEN DOOR QTY [75 ea]; DOOR ERECTOR SK [300 h] | 225,525 | 48 | REM | P3P3IFGF48 | DUKHCON3PP3ARGF3065 | DUKHCONP03Z3ARGF3065 | DH | CON | P3 | Z3 | FIN | IF | GF | B10 | B10-D05 | RES-3 |  |
| DUKHCONP03Z3ARGF3070 |  | Aluminum doors | 15d | 2014-02-01 | 2014-02-18 | DUKHCONP03Z2ARGF3070, DUKHCONP03Z3ARGF3065 SS+5d, DUKHCONP03Z3ARGF3065 FF+5d | 40d | 0d | LABOR- SUBCONTRACTOR [27 h]; ALUMINIUM DOOR QTY [18 ea]; DOOR ERECTOR SK [72 h] | 22,066 | 51 | REM | P3P3IFGF51 | DUKHCON3PP3ARGF3070 | DUKHCONP03Z3ARGF3070 | DH | CON | P3 | Z3 | FIN | IF | GF | B10 | B10-D06 | RES-3 |  |
| DUKHCONP03Z3ARGF3075 |  | Carpentry & Joinery Works | 20d | 2014-02-06 | 2014-03-02 | DUKHCONP03Z3ARGF3070 SS+5d, DUKHCONP03Z3ARGF3070 FF+7d, DUKHCONP03Z2ARGF3075 | 40d | 0d | LABOR- SUBCONTRACTOR [216 h]; CABINET QTY [54 ea]; WARDROBE QTY [18 ea]; JOINERY WORK SK [576 h] | 128,681 | 57 | REM | P3P3IFGF57 | DUKHCON3PP3ARGF3075 | DUKHCONP03Z3ARGF3075 | DH | CON | P3 | Z3 | FIN | IF | GF | B10 | B10-D05 | RES-3 |  |
| DUKHCONP03Z3ARGF3080 |  | Aluminum windows | 20d | 2014-02-08 | 2014-03-03 | DUKHCONP03Z3ARGF3070 FF+6d, DUKHCONP03Z2ARGF3080, DUKHCONP03Z3ARGF3070 SS+6d | 50d | 5d | LABOR- SUBCONTRACTOR [60 h]; ALUMINIUM WINDOWS QTY [60 ea]; WINDOW ERECTOR SK [160 h] | 45,348 | 54 | REM | P3P3IFGF54 | DUKHCON3PP3ARGF3080 | DUKHCONP03Z3ARGF3080 | DH | CON | P3 | Z3 | FIN | IF | GF | B10 | B10-D06 | RES-3 |  |
| DUKHCONP03Z3ARGF3085 |  | S.S.Balustrade | 20d | 2014-02-16 | 2014-03-10 | DUKHCONP03Z3ARGF3050 SS+7d, DUKHCONP03Z3ARGF3075 SS+7d, DUKHCONP03Z3ARGF3050 FF+7d, DUKHCONP03Z3ARGF3075 FF+7d | 45d | 5d | LABOR- SUBCONTRACTOR [17.25 h]; S.S.BALUSTRADE QTY [15 lm]; HANDRAIL ERECTOR SKILLED [30 h] | 21,690 | 63 | REM | P3P3IFGF63 | DUKHCON3PP3ARGF3085 | DUKHCONP03Z3ARGF3085 | DH | CON | P3 | Z3 | FIN | IF | GF | B10 | B10-D06 | RES-3 |  |
| DUKHCONP03Z3ARGF3090 |  | Installation of Granite Counter Top | 15d | 2014-02-20 | 2014-03-09 | DUKHCONP03Z3ARGF3075 SS+7d, DUKHCONP03Z3ARGF3075 FF+6d | 40d | 0d | GRANITE MASON SK [96 h]; LABOR- SUBCONTRACTOR [36 h]; GRANITE COUNTER TOP QTY [24 ea] | 23,258 | 60 | REM | P3P3IFGF60 | DUKHCON3PP3ARGF3090 | DUKHCONP03Z3ARGF3090 | DH | CON | P3 | Z3 | FIN | IF | GF | B10 | B10-D10 | RES-3 |  |
| DUKHCONP03Z3ARGF3095 |  | Final Painting | 25d | 2014-03-02 | 2014-03-30 | DUKHCONP03Z2ARGF3095, DUKHCONP03Z3ACGF4610 FF+10d, DUKHCONP03Z3ARGF3070 SS+5d, DUKHCONP03Z3ACGF4610 SS+10d, DUKHCONP03Z3ARGF3030 SS+10d, DUKHCONP03Z3ARGF3040 SS+13d, DUKHCONP03Z3ARGF3070 FF+5d, DUKHCONP03Z3ARGF3090 SS+8d, DUKHCONP03Z3ARGF3040 FF+13d, DUKHCONP03Z3ARGF3060 SS+8d, DUKHCONP03Z3ARGF3030 FF+10d, DUKHCONP03Z3ARGF3035 FF+13d, DUKHCONP03Z3ARGF3080 SS+8d, DUKHCONP03Z3ARGF3085 FF+7d, DUKHCONP03Z3ARGF3035 SS+13d, DUKHCONP03Z3ARGF3060 FF+8d, DUKHCONP03Z3ARGF3080 FF+8d, DUKHCONP03Z3ARGF3090 FF+8d, DUKHCONP03Z3ARGF3085 SS+7d | 40d | 0d | LABOR- SUBCONTRACTOR [1128.15 h]; PAINT QTY [3760.5 Sqm]; PAINTERS SK [3008.4 h] | 50,845 | 66 | REM | P3P3IFGF66 | DUKHCON3PP3ARGF3095 | DUKHCONP03Z3ARGF3095 | DH | CON | P3 | Z3 | FIN | IF | GF | B10 | B10-D11 | RES-3 | PNT |

Notes:
- DUKHCONP03Z3STFF2020: Expenses: P03-Concrete Works 29055
- DUKHCONP03Z3STFF2025: Expenses: P03-Concrete Works 7236
- DUKHCONP03Z3STFF2030: Expenses: P03-Concrete Works 183422
- DUKHCONP03Z3STFF2035: Expenses: P03-Concrete Works 83819
- DUKHCONP03Z3STRF2040: Expenses: P03-Concrete Works 9566
- DUKHCONP03Z3STRF2045: Expenses: P03-Concrete Works 1723
- DUKHCONP03Z3STRF2050: Expenses: P03-Concrete Works 33570
- DUKHCONP03Z3STRF2055: Expenses: P03-Concrete Works 16065
- DUKHCONP03Z3STRF2060: Expenses: P03-Block work 28644
- DUKHCONP03Z3STRF2065: Expenses: P03-Concrete Works 8997
- DUKHCONP03Z3ARGF3000: Expenses: P03-Block work 161435
- DUKHCONP03Z3ARGF3005: Expenses: P03-Finishes 32676
- DUKHCONP03Z3ARGF3010: Expenses: P03-Finishes 37269
- DUKHCONP03Z3ARGF3015: Expenses: P03-Finishes 17952
- DUKHCONP03Z3ARGF3020: Expenses: P03-Finishes 48488
- DUKHCONP03Z3ARGF3030: Expenses: P03-Painting and Decorating 18001
- DUKHCONP03Z3ARGF3025: Expenses: P03-Finishes 78427
- DUKHCONP03Z3ARGF3045: Expenses: P03-Finishes 22044
- DUKHCONP03Z3ARGF3035: Expenses: P03-Finishes 4202
- DUKHCONP03Z3ARGF3055: Expenses: P03-Finishes 8585
- DUKHCONP03Z3ARGF3040: Expenses: P03-Finishes 2251
- DUKHCONP03Z3ARGF3060: Expenses: P03-Finishes 57405
- DUKHCONP03Z3ARGF3050: Expenses: P03-Finishes 48650
- DUKHCONP03Z3ARGF3065: Expenses: P03-Carpentry and Joinery 225525
- DUKHCONP03Z3ARGF3070: Expenses: P03-Metal work 22066
- DUKHCONP03Z3ARGF3075: Expenses: P03-Carpentry and Joinery 128681
- DUKHCONP03Z3ARGF3080: Expenses: P03-Metal work 45348
- DUKHCONP03Z3ARGF3085: Expenses: P03-Metal work 21690
- DUKHCONP03Z3ARGF3090: Expenses: P03-Finishes 23258
- DUKHCONP03Z3ARGF3095: Expenses: P03-Painting and Decorating 50845

| ID | WBS | Activity | Duration | Start | Finish | Predecessors | Total float | Free float | Resources | Cost | CODE | rem | P3 ACTID | P6 ID (old) | NP61D | PROJECT | PHASES | PACKAGE | PART | ELEMENTS | STEP | FLOORS | BILL NOS | BILL DIVISION | RES PACK | EXECUTER |
| --- | --- | --- | --- | --- | --- | --- | --- | --- | --- | --- | --- | --- | --- | --- | --- | --- | --- | --- | --- | --- | --- | --- | --- | --- | --- | --- |
|  | 15 | **FIRST FLOORS** |  | 2013-11-27 | 2014-05-15 |  |  |  |  |  |  |  |  |  |  |  |  |  |  |  |  |  |  |  |  |  |
| DUKHCONP03Z3ARFF3300 |  | Block work | 25d | 2013-11-27 | 2013-12-26 | DUKHCONP03Z2ARFF3300, DUKHCONP03Z3STFF2035 FF+21d, DUKHCONP03Z3STFF2035 SS+21d, DUKHCONP03Z3STFF2020 SS+21d, DUKHCONP03Z3STFF2020 FF+21d | 0d |  | BLOCK MASON SK [3554 h]; BLOCK QTY [1777 Sqm]; LABOR - CIVIL [1999.5 h] | 140,077 | 10 | REM | P3P3IFFF10 | DUKHCON3PP3ARFF3300 | DUKHCONP03Z3ARFF3300 | DH | CON | P3 | Z3 | FIN | IF | FF | B10 | B10-D03 | RES-3 |  |
| DUKHCONP03Z3ARFF3305 |  | Plastering work | 25d | 2013-12-23 | 2014-01-20 | DUKHCONP03Z3ELFF4035 SS+5d, DUKHCONP03Z3ARFF3300 SS+7d, DUKHCONP03Z3PLFF4325 FF+8d, DUKHCONP03Z2ARFF3305, DUKHCONP03Z3ELFF4035 FF+5d, DUKHCONP03Z3PLFF4325 SS+8d, DUKHCONP03Z3ARFF3300 FF+7d | 0d |  | PLASTER MASON SK [3530 h]; LABOR - CIVIL [1986 h]; PLASTER QTY [2206 Sqm] | 33,200 | 12 | REM | P3P3IFFF12 | DUKHCON3PP3ARFF3305 | DUKHCONP03Z3ARFF3305 | DH | CON | P3 | Z3 | FIN | IF | FF | B10 | B10-D10 | RES-3 |  |
| DUKHCONP03Z3ARFF3310 |  | Flooring screed | 21d | 2013-12-31 | 2014-01-23 | DUKHCONP03Z3ARFF3305 SS+7d, DUKHCONP03Z3ARFF3305 FF+3d | 15d |  | SCREED MASON SK [750 h]; LABOR - CIVIL [281.25 h]; FLOORING SCREED QTY [937 Sqm] | 30,918 | 15 | REM | P3P3IFFF15 | DUKHCON3PP3ARFF3310 | DUKHCONP03Z3ARFF3310 | DH | CON | P3 | Z3 | FIN | IF | FF | B10 | B10-D10 | RES-3 |  |
| DUKHCONP03Z3ARFF3330 |  | Paint First coat | 25d | 2014-01-08 | 2014-02-05 | DUKHCONP03Z3ARFF3305 FF+14d, DUKHCONP03Z3ARFF3305 SS+14d | 18d |  | LABOR- SUBCONTRACTOR [993.75 h]; PAINTERS SK [2651 h]; FIRSTCOAT PAINT QTY [3313.5 Sqm] | 18,001 | 21 | REM | P3P3IFFF21 | DUKHCON3PP3ARFF3330 | DUKHCONP03Z3ARFF3330 | DH | CON | P3 | Z3 | FIN | IF | FF | B10 | B10-D11 | RES-3 | ENT |
| DUKHCONP03Z3ARFF3315 |  | Wet area waterproofing | 15d | 2014-01-13 | 2014-01-29 | DUKHCONP03Z2ARFF3315, DUKHCONP03Z3ARFF3305 SS+7d, DUKHCONP03Z3ARFF3305 FF+8d | 0d |  | LABOR- SUBCONTRACTOR [159 h]; WETAREA WATERPROOFING QTY [528 Sqm]; WATERPROOFING SPECIALIST SK [423 h] | 20,805 | 18 | REM | P3P3IFFF18 | DUKHCON3PP3ARFF3315 | DUKHCONP03Z3ARFF3315 | DH | CON | P3 | Z3 | FIN | IF | FF | B10 | B10-D10 | RES-3 |  |
| DUKHCONP03Z3ARFF3320 |  | Ceramic Wall Tiling | 25d | 2014-01-22 | 2014-02-20 | DUKHCONP03Z3ARFF3315 SS+8d, DUKHCONP03Z3PLFF4330 SS+7d, DUKHCONP03Z3PLFF4330 FF+7d, DUKHCONP03Z3PLFF4325 SS+4d, DUKHCONP03Z3PLFF4325 FF+4d, DUKHCONP03Z2ARFF3320, DUKHCONP03Z3ARFF3315 FF+7d | 0d |  | TILE MASON SK [1666 h]; LABOR- SUBCONTRACTOR [937.5 h]; CERAMIC WALL TILE QTY [833 Sqm] | 48,488 | 24 | REM | P3P3IFFF24 | DUKHCON3PP3ARFF3320 | DUKHCONP03Z3ARFF3320 | DH | CON | P3 | Z3 | FIN | IF | FF | B10 | B10-D10 | RES-3 |  |
| DUKHCONP03Z3ARFF3325 |  | Porcelain Tile flooring | 25d | 2014-01-29 | 2014-02-27 | DUKHCONP03Z3ARFF3320 SS+6d, DUKHCONP03Z3ARFF3310 SS+10d, DUKHCONP03Z3ARFF3320 FF+6d, DUKHCONP03Z2ARFF3325, DUKHCONP03Z3ARFF3310 FF+10d | 0d |  | TILE MASON SK [1144 h]; LABOR- SUBCONTRACTOR [643.5 h]; PORCELAIN FLOORING QTY [1001 Sqm] | 78,425 | 27 | REM | P3P3IFFF27 | DUKHCON3PP3ARFF3325 | DUKHCONP03Z3ARFF3325 | DH | CON | P3 | Z3 | FIN | IF | FF | B10 | B10-D10 | RES-3 |  |
| DUKHCONP03Z3ARFF3345 |  | Fixing of Suspension systems | 20d | 2014-02-13 | 2014-03-08 | DUKHCONP03Z3ELFF4045 SS+5d, DUKHCONP03Z3ARFF3330 FF+7d, DUKHCONP03Z3ARFF3325 FF+7d, DUKHCONP03Z3ARFF3325 SS+7d, DUKHCONP03Z3ELFF4045 FF+5d, DUKHCONP03Z3ARFF3330 SS+7d, DUKHCONP03Z2ARFF3345 | 0d |  | SUSPENSION QTY [1147.5 Sqm]; FALSE CEILING SKILLED SK [918 h]; LABOR- SUBCONTRACTOR [516.75 h] | 22,044 | 36 | REM | P3P3IFFF36 | DUKHCON3PP3ARFF3345 | DUKHCONP03Z3ARFF3345 | DH | CON | P3 | Z3 | FIN | IF | FF | B10 | B10-D10 | RES-3 | SUS |
| DUKHCONP03Z3ARFF3335 |  | Slate Tile Flooring & Skirting | 15d | 2014-02-17 | 2014-03-05 | DUKHCONP03Z3ARFF3310 FF+13d, DUKHCONP03Z3ARFF3310 SS+13d, DUKHCONP03Z3ARFF3325 SS+13d, DUKHCONP03Z3ARFF3325 FF+5d | 10d |  | LABOR- SUBCONTRACTOR [486 h]; SUSPENSION QTY [1065 Sqm]; FALSE CEILING SKILLED SK [864 h]; SLATE TILE QTY [18 Sqm] | 4,202 | 30 |  | P3P3IFFF30 | DUKHCON3PP3ARFF3335 | DUKHCONP03Z3ARFF3335 | DH | CON | P3 | Z3 | FIN | IF | FF | B10 | B10-D10 | RES-3 |  |
| DUKHCONP03Z3ARFF3350 |  | Granite - Stair case flooring & Skirting | 20d | 2014-02-20 | 2014-03-15 | DUKHCONP03Z3ARFF3325 SS+13d, DUKHCONP03Z3ARFF3325 FF+13d | 2d |  | LABOR- SUBCONTRACTOR [54 h]; FALSE CEILING QTY [126 Sqm]; FALSE CEILING SKILLED SK [96 h] | 2,634 | 33 |  | P3P3IFFF33 | DUKHCON3PP3ARFF3350 | DUKHCONP03Z3ARFF3350 | DH | CON | P3 | Z3 | FIN | IF | FF | B10 | B10-D10 | RES-3 |  |
| DUKHCONP03Z3ARFF3360 |  | Gypsum board false ceiling | 25d | 2014-02-22 | 2014-03-22 | DUKHCONP03Z3ACFF4615 SS+7d, DUKHCONP03Z3ARFF3345 SS+7d, DUKHCONP03Z3ARFF3345 FF+7d, DUKHCONP03Z3ACFF4615 FF+7d, DUKHCONP03Z2ARFF3360 | 0d |  | LABOR- SUBCONTRACTOR [467.51 h]; FALSE CEILING SKILLED SK [831.2 h]; FALSE CEILING QTY [1039 Sqm] | 57,405 | 39 | REM | P3P3IFFF39 | DUKHCON3PP3ARFF3360 | DUKHCONP03Z3ARFF3360 | DH | CON | P3 | Z3 | FIN | IF | FF | B10 | B10-D10 | RES-3 | GYP |
| DUKHCONP03Z3ARFF3355 |  | Aluminum tile false ceiling | 20d | 2014-02-25 | 2014-03-19 | DUKHCONP03Z3ACFF4615 FF+7d, DUKHCONP03Z2ARFF3355, DUKHCONP03Z3ARFF3345 SS+10d, DUKHCONP03Z3ACFF4615 SS+7d, DUKHCONP03Z3ARFF3345 FF+10d | 2d | 0d | LABOR- SUBCONTRACTOR [56.25 h]; FALSE CEILING SKILLED SK [200 h] | 8,583 | 39 | REM | P3P3IFFF38 | DUKHCON3PP3ARFF3355 | DUKHCONP03Z3ARFF3355 | DH | CON | P3 | Z3 | FIN | IF | FF | B10 | B10-D10 | RES-3 | ALU |
| DUKHCONP03Z3ARFF3365 |  | Wooden door | 15d | 2014-03-09 | 2014-03-25 | DUKHCONP03Z2ARFF3365, DUKHCONP03Z3ARFF3355 SS+3d, DUKHCONP03Z3ARFF3360 SS+3d, DUKHCONP03Z3ARFF3335 FF+7d, DUKHCONP03Z3ARFF3355 FF+3d, DUKHCONP03Z3ARFF3335 SS+7d, DUKHCONP03Z3ARFF3350 FF+7d, DUKHCONP03Z3ARFF3360 FF+3d, DUKHCONP03Z3ARFF3350 SS+7d | 0d |  | LABOR- SUBCONTRACTOR [90 h]; WOODEN DOOR QTY [60 ea]; DOOR ERECTOR SK [240 h] | 178,634 | 42 | REM | P3P3IFFF42 | DUKHCON3PP3ARFF3365 | DUKHCONP03Z3ARFF3365 | DH | CON | P3 | Z3 | FIN | IF | FF | B10 | B10-D05 | RES-3 |  |
| DUKHCONP03Z3ARFF3370 |  | Aluminum Door | 20d | 2014-03-17 | 2014-04-08 | DUKHCONP03Z3ARFF3365 FF+5d, DUKHCONP03Z2ARFF3370, DUKHCONP03Z3ARFF3365 SS+7d | 0d |  | LABOR- SUBCONTRACTOR [27 h]; ALUMINIUM DOOR QTY [18 ea]; DOOR ERECTOR SK [72 h] | 47,668 | 45 | REM | P3P3IFFF45 | DUKHCON3PP3ARFF3370 | DUKHCONP03Z3ARFF3370 | DH | CON | P3 | Z3 | FIN | IF | FF | B10 | B10-D06 | RES-3 |  |
| DUKHCONP03Z3ARFF3380 |  | Aluminum windows | 20d | 2014-03-24 | 2014-04-15 | DUKHCONP03Z3ARFF3370 FF+6d, DUKHCONP03Z3ARFF3370 SS+6d | 11d |  | LABOR- SUBCONTRACTOR [72 h]; ALUMINIUM WINDOWS QTY [72 ea]; WINDOW ERECTOR SK [192 h] | 55,732 | 48 | REM | P3P3IFFF48 | DUKHCON3PP3ARFF3380 | DUKHCONP03Z3ARFF3380 | DH | CON | P3 | Z3 | FIN | IF | FF | B10 | B10-D06 | RES-3 |  |
| DUKHCONP03Z3ARFF3375 |  | Carpentry & Joinery Works | 25d | 2014-03-25 | 2014-04-22 | DUKHCONP03Z3ARFF3370 SS+7d, DUKHCONP03Z3ARFF3370 FF+5d, DUKHCONP03Z2ARFF3375 | 0d |  | LABOR- SUBCONTRACTOR [108 h]; S.S.BALUSTRADE QTY [96 lm]; HANDRAIL ERECTOR SKILLED [192 h]; CABINET QTY [36 ea] | 128,678 | 51 |  | P3P3IFFF51 | DUKHCON3PP3ARFF3375 | DUKHCONP03Z3ARFF3375 | DH | CON | P3 | Z3 | FIN | IF | FF | B10 | B10-D05 | RES-3 |  |
| DUKHCONP03Z3ARFF3385 |  | Handrail & Balustrade | 20d | 2014-04-06 | 2014-04-28 | DUKHCONP03Z3ARFF3375 SS+5d, DUKHCONP03Z3ARFF3350 FF+7d, DUKHCONP03Z3ARFF3375 FF+5d, DUKHCONP03Z3ARFF3350 SS+7d | 0d |  | LABOR- SUBCONTRACTOR [75 h]; HANDRAIL ERECTOR SKILLED [200 h]; S.S.BALUSTRADE QTY [15 lm] | 16,268 | 57 |  | P3P3IFFF57 | DUKHCON3PP3ARFF3385 | DUKHCONP03Z3ARFF3385 | DH | CON | P3 | Z3 | FIN | IF | FF | B10 | B10-D06 | RES-3 |  |
| DUKHCONP03Z3ARFF3390 |  | Installation of Granite Counter Top | 20d | 2014-04-08 | 2014-04-30 | DUKHCONP03Z3ARFF3375 FF+7d, DUKHCONP03Z3ARFF3375 SS+7d | 0d |  | GRANITE MASON SK [96 h]; LABOR- SUBCONTRACTOR [36 h]; GRANITE COUNTER TOP QTY [24 ea] | 23,258 | 54 | REM | P3P3IFFF54 | DUKHCON3PP3ARFF3390 | DUKHCONP03Z3ARFF3390 | DH | CON | P3 | Z3 | FIN | IF | FF | B10 | B10-D10 | RES-3 |  |
| DUKHCONP03Z3ARFF3395 |  | Final Painting | 25d | 2014-04-17 | 2014-05-15 | DUKHCONP03Z2ARFF3395, DUKHCONP03Z3ARFF3385 FF+10d, DUKHCONP03Z3ARFF3330 SS+10d, DUKHCONP03Z3ARFF3335 FF+8d, DUKHCONP03Z3ARFF3350 SS+8d, DUKHCONP03Z3ARFF3355 SS+10d, DUKHCONP03Z3ARFF3360 FF+10d, DUKHCONP03Z3ARFF3390 SS+8d, DUKHCONP03Z3ARFF3390 FF+8d, DUKHCONP03Z3ARFF3360 SS+10d, DUKHCONP03Z3ARFF3375 SS+8d, DUKHCONP03Z3ACFF4625 SS+10d, DUKHCONP03Z3ARFF3330 FF+10d, DUKHCONP03Z3ARFF3365 SS+8d, DUKHCONP03Z3ARFF3350 FF+8d, DUKHCONP03Z3ARFF3355 FF+10d, DUKHCONP03Z3ARFF3385 SS+10d, DUKHCONP03Z3ARFF3365 FF+8d, DUKHCONP03Z3ARFF3375 FF+8d, DUKHCONP03Z3ARFF3380 FF+10d, DUKHCONP03Z3ACFF4625 FF+10d, DUKHCONP03Z3ARFF3335 SS+8d, DUKHCONP03Z3ARFF3380 SS+10d | 0d |  | LABOR- SUBCONTRACTOR [993.75 h]; PAINTERS SK [2651 h]; PAINT QTY [3313.5 Sqm] | 43,143 | 60 | REM | P3P3IFFF60 | DUKHCON3PP3ARFF3395 | DUKHCONP03Z3ARFF3395 | DH | CON | P3 | Z3 | FIN | IF | FF | B10 | B10-D11 | RES-3 | PNT |
|  | 20 | **ROOF** |  | 2013-12-16 | 2014-02-20 |  |  |  |  |  |  |  |  |  |  |  |  |  |  |  |  |  |  |  |  |  |
| DUKHCONP03Z3ARRF3600 |  | Block work | 20d | 2013-12-16 | 2014-01-08 | DUKHCONP03Z3STRF2055 SS+21d, DUKHCONP03Z2ARRF3600, DUKHCONP03Z3STRF2055 FF+21d | 67d | 0d | BLOCK MASON SK [312 h]; LABOR - CIVIL [175.5 h]; BLOCK QTY [156 Sqm] | 12,917 | 10 | REM | P3P3IFRF10 | DUKHCON3PP3ARRF3600 | DUKHCONP03Z3ARRF3600 | DH | CON | P3 | Z3 | FIN | IF | RF | B10 | B10-D03 | RES-3 |  |
| DUKHCONP03Z3ARRF3605 |  | Plastering work | 20d | 2013-12-25 | 2014-01-16 | DUKHCONP03Z3ARRF3600 SS+7d, DUKHCONP03Z3ARRF3600 FF+7d | 67d | 0d | PLASTER MASON SK [1248 h]; LABOR - CIVIL [702 h]; PLASTER QTY [780 Sqm] | 10,140 | 20 | REM | P3P3IFRF20 | DUKHCON3PP3ARRF3605 | DUKHCONP03Z3ARRF3605 | DH | CON | P3 | Z3 | FIN | IF | RF | B10 | B10-D10 | RES-3 |  |
| DUKHCONP03Z3ARRF3610 |  | Flooring screed | 15d | 2014-01-08 | 2014-01-25 | DUKHCONP03Z3ARRF3605 SS+7d, DUKHCONP03Z3ARRF3605 FF+7d | 72d | 0d | LABOR - CIVIL [31.5 h]; FLOORING SCREED QTY [104 Sqm]; SCREED MASON SK [84 h] | 3,435 | 30 | REM | P3P3IFRF30 | DUKHCON3PP3ARRF3610 | DUKHCONP03Z3ARRF3610 | DH | CON | P3 | Z3 | FIN | IF | RF | B10 | B10-D10 | RES-3 |  |
| DUKHCONP03Z3ARRF3695 |  | Painting | 20d | 2014-01-16 | 2014-02-08 | DUKHCONP03Z3ARRF3610 FF+7d, DUKHCONP03Z3ARRF3610 SS+7d | 72d | 0d | LABOR- SUBCONTRACTOR [144 h]; PAINT QTY [450 Sqm]; PAINTERS SK [360 h] | 6,202 | 40 |  | P3P3IFRF40 | DUKHCON3PP3ARRF3695 | DUKHCONP03Z3ARRF3695 | DH | CON | P3 | Z3 | FIN | IF | RF | B10 | B10-D11 | RES-3 |  |
| DUKHCONP03Z3ARRF3620 |  | Epoxy Painting | 15d | 2014-02-03 | 2014-02-20 | DUKHCONP03Z3ARRF3695 FF+10d, DUKHCONP03Z3ARRF3695 SS+10d | 72d |  | LABOR- SUBCONTRACTOR [6.75 h]; EPOXY QTY [33 Sqm]; EPOXY SK [18 h] | 2,352 | 50 | REM | P3P3IFRF50 | DUKHCON3PP3ARRF3620 | DUKHCONP03Z3ARRF3620 | DH | CON | P3 | Z3 | FIN | IF | RF | B10 | B10-D11 | RES-3 |  |

Notes:
- DUKHCONP03Z3ARFF3300: Expenses: P03-Block work 140077
- DUKHCONP03Z3ARFF3305: Expenses: P03-Finishes 33200
- DUKHCONP03Z3ARFF3310: Expenses: P03-Finishes 30918
- DUKHCONP03Z3ARFF3330: Expenses: P03-Painting and Decorating 18001
- DUKHCONP03Z3ARFF3315: Expenses: P03-Finishes 20805
- DUKHCONP03Z3ARFF3320: Expenses: P03-Finishes 48488
- DUKHCONP03Z3ARFF3325: Expenses: P03-Finishes 78425
- DUKHCONP03Z3ARFF3345: Expenses: P03-Finishes 22044
- DUKHCONP03Z3ARFF3335: Expenses: P03-Finishes 4202
- DUKHCONP03Z3ARFF3350: Expenses: P03-Finishes 2634
- DUKHCONP03Z3ARFF3360: Expenses: P03-Finishes 57405
- DUKHCONP03Z3ARFF3355: Expenses: P03-Finishes 8583
- DUKHCONP03Z3ARFF3365: Expenses: P03-Carpentry and Joinery 178634
- DUKHCONP03Z3ARFF3370: Expenses: P03-Metal work 47668
- DUKHCONP03Z3ARFF3380: Expenses: P03-Metal work 55732
- DUKHCONP03Z3ARFF3375: Expenses: P03-Carpentry and Joinery 128678
- DUKHCONP03Z3ARFF3385: Expenses: P03-Metal work 16268
- DUKHCONP03Z3ARFF3390: Expenses: P03-Finishes 23258
- DUKHCONP03Z3ARFF3395: Expenses: P03-Painting and Decorating 43143
- DUKHCONP03Z3ARRF3600: Expenses: P03-Block work 12917
- DUKHCONP03Z3ARRF3605: Expenses: P03-Finishes 10140
- DUKHCONP03Z3ARRF3610: Expenses: P03-Finishes 3435
- DUKHCONP03Z3ARRF3695: Expenses: P03-Painting and Decorating 6202
- DUKHCONP03Z3ARRF3620: Expenses: P03-Painting and Decorating 2352

| ID | WBS | Activity | Duration | Start | Finish | Predecessors | Total float | Free float | Resources | Cost | CODE | rem | P3 ACTID | P6 ID (old) | NP61D | PROJECT | PHASES | PACKAGE | PART | ELEMENTS | STEP | FLOORS | BILL NOS | BILL DIVISION | RES PACK |
| --- | --- | --- | --- | --- | --- | --- | --- | --- | --- | --- | --- | --- | --- | --- | --- | --- | --- | --- | --- | --- | --- | --- | --- | --- | --- |
|  | 15 | **EXTERNAL FINISHES** |  | 2013-12-23 | 2014-03-15 |  |  |  |  |  |  |  |  |  |  |  |  |  |  |  |  |  |  |  |  |
|  | 10 | **ROOF** |  | 2013-12-23 | 2014-02-26 |  |  |  |  |  |  |  |  |  |  |  |  |  |  |  |  |  |  |  |  |
| DUKHCONP03Z3ARRF3630 |  | Leveling Screed for Waterproofing | 25d | 2013-12-23 | 2014-01-20 | DUKHCONP03Z2ARRF3630, DUKHCONP03Z3STRF2065 SS+10d, DUKHCONP03Z3STRF2060 SS+10d, DUKHCONP03Z3STRF2060 FF+10d, DUKHCONP03Z3STRF2065 FF+10d | 62d | 0d | SCREED MASON SK [470 h]; LABOR- SUBCONTRACTOR [264.75 h]; ROOF WP SCREED QTY [1173 Sqm] | 46,704 | 10 | REM | P3P3EFRF10 | DUKHCON3PP3ARRF3630 | DUKHCONP03Z3ARRF3630 | DH | CON | P3 | Z3 | FIN | EF | RF | B10 | B10-D04 | RES-3 |
| DUKHCONP03Z3ARRF3635 |  | Laying of Waterproofing Membrane | 25d | 2013-12-26 | 2014-01-23 | DUKHCONP03Z3ARRF3630 SS+3d, DUKHCONP03Z3ARRF3630 FF+3d | 62d | 0d | LABOR- SUBCONTRACTOR [557.25 h]; ROOF WP MEMBRANE QTY [2784 Sqm]; WATERPROOFING SPECIALIST SK [1485 h] | 61,507 | 15 | REM | P3P3EFRF15 | DUKHCON3PP3ARRF3635 | DUKHCONP03Z3ARRF3635 | DH | CON | P3 | Z3 | FIN | EF | RF | B10 | B10-D04 | RES-3 |
| DUKHCONP03Z3ARRF3640 |  | Installation of Insulation & Protection | 25d | 2013-12-31 | 2014-01-28 | DUKHCONP03Z3ARRF3635 FF+4d, DUKHCONP03Z3ARRF3635 SS+4d | 62d | 0d | LABOR- SUBCONTRACTOR [352.5 h]; ROOF WP INSULATION QTY [2346 Sqm]; WATERPROOFING SPECIALIST SK [939 h] | 34,449 | 20 | REM | P3P3EFRF20 | DUKHCON3PP3ARRF3640 | DUKHCONP03Z3ARRF3640 | DH | CON | P3 | Z3 | FIN | EF | RF | B10 | B10-D04 | RES-3 |
| DUKHCONP03Z3ARRF3645 |  | Lime Stone Chips & Paving slab Installation | 25d | 2014-01-05 | 2014-02-02 | DUKHCONP03Z3ARRF3640 FF+4d, DUKHCONP03Z3ARRF3640 SS+4d | 62d | 0d | TILE MASON SK [95 h]; LABOR- SUBCONTRACTOR [202.5 h]; LIME STONE QTY [237 Sqm]; PRECAST PAVING SLAB QTY [1110 Sqm]; PRE CAST CONCRETE SK [444 h] | 84,498 | 25 | REM | P3P3EFRF25 | DUKHCON3PP3ARRF3645 | DUKHCONP03Z3ARRF3645 | DH | CON | P3 | Z3 | FIN | EF | RF | B10 | B10-D04 | RES-3 |
| DUKHCONP03Z3ARRF3650 |  | Install. of Gal. Frame & Aluminum Slat Screen | 25d | 2014-01-13 | 2014-02-10 | DUKHCONP03Z3ARRF3645 SS+7d, DUKHCONP03Z3ARRF3645 FF+7d | 62d | 0d | LABOR- SUBCONTRACTOR [378 h]; ALUMINIUM SCREEN QTY [189 Sqm]; DOOR ERECTOR SK [504 h] | 53,449 | 35 | REM | P3P3EFRF35 | DUKHCON3PP3ARRF3650 | DUKHCONP03Z3ARRF3650 | DH | CON | P3 | Z3 | FIN | EF | RF | B10 | B10-D06 | RES-3 |
| DUKHCONP03Z3ARRF3655 |  | Installation of Pumps Protection cabinets | 20d | 2014-01-28 | 2014-02-20 | DUKHCONP03Z3ARRF3645 FF+7d, DUKHCONP03Z2ARRF3655, DUKHCONP03Z3ARRF3645 SS+7d, DUKHCONP03Z3ARRF3650 FF+8d, DUKHCONP03Z3ARRF3650 SS+8d | 62d | 0d | LABOR- SUBCONTRACTOR [63 h]; CABINET QTY [21 ea]; JOINERY WORK SK [168 h] | 9,975 | 30 | REM | P3P3EFRF30 | DUKHCON3PP3ARRF3655 | DUKHCONP03Z3ARRF3655 | DH | CON | P3 | Z3 | FIN | EF | RF | B10 | B10-D04 | RES-3 |
| DUKHCONP03Z3ARRF3660 |  | Installation of Access Ladder | 15d | 2014-02-09 | 2014-02-26 | DUKHCONP03Z3ARRF3655 SS+5d, DUKHCONP03Z3ARRF3655 FF+5d | 67d |  | LABOR- SUBCONTRACTOR [54 h]; LADDER QTY [18 ea]; LADDER ERECTOR SK [144 h] | 19,196 | 40 | REM | P3P3EFRF40 | DUKHCON3PP3ARRF3660 | DUKHCONP03Z3ARRF3660 | DH | CON | P3 | Z3 | FIN | EF | RF | B10 | B10-D06 | RES-3 |
|  | 15 | **ELEVATION** |  | 2014-01-19 | 2014-03-15 |  |  |  |  |  |  |  |  |  |  |  |  |  |  |  |  |  |  |  |  |
| DUKHCONP03Z3AREL3665 |  | External Plastering | 25d | 2014-01-19 | 2014-02-17 | DUKHCONP03Z3ARFF3305 FF+7d, DUKHCONP03Z3ARRF3605 SS+7d, DUKHCONP03Z3STRF2065 SS+7d, DUKHCONP03Z3ARFF3305 SS+7d, DUKHCONP03Z2AREL3665, DUKHCONP03Z3STRF2065 FF+7d | 53d | 0d | PLASTER MASON SK [5862 h]; LABOR - CIVIL [3297.75 h]; EXTERNAL PLASTER QTY [2931 Sqm] | 71,672 | 10 | REM | P3P3EFEL10 | DUKHCON3PP3AREL3665 | DUKHCONP03Z3AREL3665 | DH | CON | P3 | Z3 | FIN | EF | EL | B10 | B10-D10 | RES-3 |
| DUKHCONP03Z3AREL3675 |  | GRC Panel Works | 20d | 2014-02-05 | 2014-03-01 | DUKHCONP03Z2AREL3675, DUKHCONP03Z3AREL3665 SS+10d, DUKHCONP03Z3AREL3665 FF+10d | 55d | 2d | LABOR- SUBCONTRACTOR [150 h]; GRC SK [400 h] | 20,058 | 15 |  | P3P3EFEL18 | DUKHCON3PP3AREL3675 | DUKHCONP03Z3AREL3675 | DH | CON | P3 | Z3 | FIN | EF | EL | B10 | B10-D10 | RES-3 |
| DUKHCONP03Z3AREL3680 |  | External Painting | 20d | 2014-02-20 | 2014-03-15 | DUKHCONP03Z3ARRF3695 SS+4d, DUKHCONP03Z2AREL3680, DUKHCONP03Z3ARRF3695 FF+4d, DUKHCONP03Z3AREL3675 FF+10d, DUKHCONP03Z3AREL3675 SS+10d | 53d | 3d | LABOR- SUBCONTRACTOR [882 h]; PAINT QTY [2931 Sqm]; PAINTERS SK [2352 h] | 106,011 | 20 |  | P3P3EFEL20 | DUKHCON3PP3AREL3680 | DUKHCONP03Z3AREL3680 | DH | CON | P3 | Z3 | FIN | EF | EL | B10 | B10-D11 | RES-3 |
|  | 20 | **MEP WORKS** |  | 2013-07-06 | 2014-05-14 |  |  |  |  |  |  |  |  |  |  |  |  |  |  |  |  |  |  |  |  |
|  | 10 | **ELECTRICAL WORKS** |  | 2013-10-22 | 2014-05-14 |  |  |  |  |  |  |  |  |  |  |  |  |  |  |  |  |  |  |  |  |
|  | 10 | **GROUND FLOOR** |  | 2013-10-22 | 2014-03-02 |  |  |  |  |  |  |  |  |  |  |  |  |  |  |  |  |  |  |  |  |
| DUKHCONP03Z3ELGF4000 |  | Fixing of wall conduits & switch socket boxes | 25d | 2013-10-22 | 2013-11-19 | DUKHCONP03Z3ARGF3000 SS+5d, DUKHCONP03Z3ARGF3000 FF+5d | 44d | 0d | LABOR- SUBCONTRACTOR [162 h]; ELECTRICIANS SK [940.8 h]; SOCKET BOXES QTY [645 ea]; CODUITS QTY [180 lm] | 28,763 | 10 |  | P3P3EWGF10 | DUKHCON3PP3ELGF4000 | DUKHCONP03Z3ELGF4000 | DH | CON | P3 | Z3 | MEP | EW | GF | B10 | B10-D09 | RES-3 |
| DUKHCONP03Z3ELGF4005 |  | Cable tray & trunking installation | 20d | 2013-11-03 | 2013-11-25 | DUKHCONP03Z2ELGF4005, DUKHCONP03Z3ELGF4000 FF+5d, DUKHCONP03Z3ELGF4000 SS+5d | 62d | 0d | LABOR- SUBCONTRACTOR [396 h]; ELECTRICIANS SK [1444.8 h]; CABLE TRAY QTY [255 lm] | 19,776 | 15 |  | P3P3EWGF15 | DUKHCON3PP3ELGF4005 | DUKHCONP03Z3ELGF4005 | DH | CON | P3 | Z3 | MEP | EW | GF | B10 | B10-D09 | RES-3 |
| DUKHCONP03Z3ELGF4010 |  | Installation of wiring & Main Cabling | 25d | 2013-11-11 | 2013-12-09 | DUKHCONP03Z3ELGF4005 SS+7d, DUKHCONP03Z3ELGF4005 FF+7d | 62d | 27d | LABOR- SUBCONTRACTOR [144 h]; ELECTRICIANS SK [504 h]; CABLE QTY [450 lm] | 105,208 | 20 |  | P3P3EWGF20 | DUKHCON3PP3ELGF4010 | DUKHCONP03Z3ELGF4010 | DH | CON | P3 | Z3 | MEP | EW | GF | B10 | B10-D09 | RES-3 |
| DUKHCONP03Z3ELGF4015 |  | Install. of CAMS & Fire Fighting Accessories | 25d | 2014-01-14 | 2014-02-12 | DUKHCONP03Z2ELGF4015, DUKHCONP03Z3ARGF3060 FF+7d, DUKHCONP03Z3ARGF3055 SS+7d, DUKHCONP03Z3ARGF3055 FF+7d, DUKHCONP03Z3ARGF3060 SS+7d | 49d | 0d | LABOR- SUBCONTRACTOR [522 h]; MECHANICALS SK [939.6 h]; SMOKE DETECTOR POINTS QTY [150 ea]; FIRE EXTINGUISHER QTY [21 ea] | 64,049 | 35 |  | P3P3EWGF35 | DUKHCON3PP3ELGF4015 | DUKHCONP03Z3ELGF4015 | DH | CON | P3 | Z3 | MEP | EW | GF | B10 | B10-D09 | RES-3 |
| DUKHCONP03Z3ELGF4020 |  | Installation of DBS,MCCB Accessories. | 20d | 2014-01-20 | 2014-02-12 | DUKHCONP03Z3ELGF4010 FF+5d, DUKHCONP03Z3ARGF3055 SS+7d, DUKHCONP03Z3ARGF3055 FF+7d, DUKHCONP03Z3ARGF3060 SS+7d, DUKHCONP03Z3ELGF4010 SS+5d, DUKHCONP03Z3ARGF3060 FF+7d | 35d | 0d | LABOR- SUBCONTRACTOR [54 h]; ELECTRICIANS SK [168 h]; MCCB QTY [15 ea]; DB QTY [12 ea] | 82,222 | 25 |  | P3P3EWGF25 | DUKHCON3PP3ELGF4020 | DUKHCONP03Z3ELGF4020 | DH | CON | P3 | Z3 | MEP | EW | GF | B10 | B10-D09 | RES-3 |
| DUKHCONP03Z3ELGF4025 |  | Installation of Lighting fixtures & Accessories | 25d | 2014-02-01 | 2014-03-02 | DUKHCONP03Z3ARGF3060 SS+10d, DUKHCONP03Z2ELGF4025, DUKHCONP03Z3ARGF3055 SS+10d, DUKHCONP03Z3ELGF4020 SS+10d, DUKHCONP03Z3ARGF3055 FF+10d, DUKHCONP03Z3ARGF3060 FF+10d, DUKHCONP03Z3ELGF4020 FF+10d | 37d | 0d | LABOR- SUBCONTRACTOR [900 h]; ELECTRICIANS SK [1680 h]; LIGHTS QTY [744 ea] | 118,790 | 30 |  | P3P3EWGF30 | DUKHCON3PP3ELGF4025 | DUKHCONP03Z3ELGF4025 | DH | CON | P3 | Z3 | MEP | EW | GF | B10 | B10-D09 | RES-3 |
| DUKHCONP03Z3ELGF4030 |  | Installation of Telephone System | 20d | 2014-02-01 | 2014-02-24 | DUKHCONP03Z3ARGF3060 SS+5d, DUKHCONP03Z3ELGF4020 FF+10d, DUKHCONP03Z3ARGF3060 FF+5d, DUKHCONP03Z2ELGF4030, DUKHCONP03Z3ELGF4020 SS+10d | 35d | 5d | LABOR- SUBCONTRACTOR [72 h]; ELECTRICIANS SK [470.4 h]; TELEPHONE SOCKETS QTY [42 ea] | 25,360 | 40 |  | P3P3EWGF40 | DUKHCON3PP3ELGF4030 | DUKHCONP03Z3ELGF4030 | DH | CON | P3 | Z3 | MEP | EW | GF | B10 | B10-D09 | RES-3 |
|  | 15 | **FIRST FLOORS** |  | 2013-12-03 | 2014-04-19 |  |  |  |  |  |  |  |  |  |  |  |  |  |  |  |  |  |  |  |  |
| DUKHCONP03Z3ELFF4035 |  | Fixing of wall conduits & switch socket boxes | 25d | 2013-12-03 | 2014-01-01 | DUKHCONP03Z3ARFF3300 SS+5d, DUKHCONP03Z3ARFF3300 FF+5d | 11d | 0d | LABOR- SUBCONTRACTOR [162 h]; ELECTRICIANS SK [940.8 h]; SOCKET BOXES QTY [645 ea]; CODUITS QTY [180 lm] | 28,166 | 10 |  | P3P3EWFF10 | DUKHCON3PP3ELFF4035 | DUKHCONP03Z3ELFF4035 | DH | CON | P3 | Z3 | MEP | EW | FF | B10 | B10-D09 | RES-3 |
| DUKHCONP03Z3ELFF4040 |  | Cable tray & trunking installation | 20d | 2013-12-15 | 2014-01-07 | DUKHCONP03Z3ELFF4035 SS+5d, DUKHCONP03Z3ELFF4035 FF+5d | 33d | 3d | LABOR- SUBCONTRACTOR [396 h]; ELECTRICIANS SK [1444.8 h]; CABLE TRAY QTY [255 lm] | 19,770 | 15 |  | P3P3EWFF15 | DUKHCON3PP3ELFF4040 | DUKHCONP03Z3ELFF4040 | DH | CON | P3 | Z3 | MEP | EW | FF | B10 | B10-D09 | RES-3 |
| DUKHCONP03Z3ELFF4045 |  | Installation of wiring & Main Cabling | 25d | 2013-12-28 | 2014-01-25 | DUKHCONP03Z3ELFF4040 FF+7d, DUKHCONP03Z3ELFF4040 SS+7d, DUKHCONP03Z2ELFF4045 | 30d | 0d | LABOR- SUBCONTRACTOR [144 h]; ELECTRICIANS SK [504 h]; CABLE QTY [444 lm] | 102,805 | 20 |  | P3P3EWFF20 | DUKHCON3PP3ELFF4045 | DUKHCONP03Z3ELFF4045 | DH | CON | P3 | Z3 | MEP | EW | FF | B10 | B10-D09 | RES-3 |
| DUKHCONP03Z3ELFF4050 |  | Installation of Telephone System | 25d | 2014-03-03 | 2014-03-31 | DUKHCONP03Z3ARFF3355 FF+5d, DUKHCONP03Z3ELGF4030 FF+10d, DUKHCONP03Z3ARFF3355 SS+5d, DUKHCONP03Z3ARFF3360 SS+5d, DUKHCONP03Z3MSEX5010 FF, DUKHCONP03Z3ARFF3360 FF+5d, DUKHCONP03Z3ELGF4030 SS+10d | 20d | 19d | LABOR- SUBCONTRACTOR [72 h]; ELECTRICIANS SK [470.4 h]; TELEPHONE SOCKETS QTY [42 ea] | 24,744 | 40 |  | P3P3EWFF40 | DUKHCON3PP3ELFF4050 | DUKHCONP03Z3ELFF4050 | DH | CON | P3 | Z3 | MEP | EW | FF | B10 | B10-D09 | RES-3 |
| DUKHCONP03Z3ELFF4055 |  | Install. of CAMS & Fire Fighting Accessories | 25d | 2014-03-05 | 2014-04-02 | DUKHCONP03Z3ARFF3355 SS+7d, DUKHCONP03Z3ELGF4015 FF+5d, DUKHCONP03Z3ARFF3355 FF+7d, DUKHCONP03Z3ARFF3360 FF+7d, DUKHCONP03Z3ELGF4015 SS+5d, DUKHCONP03Z2ELFF4055, DUKHCONP03Z3ARFF3360 SS+7d | 12d | 0d | LABOR- SUBCONTRACTOR [576 h]; MECHANICALS SK [1036.8 h]; SMOKE DETECTOR POINTS QTY [147 ea]; FIRE EXTINGUISHER QTY [42 ea] | 64,049 | 35 |  | P3P3EWFF35 | DUKHCON3PP3ELFF4055 | DUKHCONP03Z3ELFF4055 | DH | CON | P3 | Z3 | MEP | EW | FF | B10 | B10-D09 | RES-3 |
| DUKHCONP03Z3ELFF4060 |  | Installation of DBS,MCCB Accessories. | 20d | 2014-03-09 | 2014-03-31 | DUKHCONP03Z3ARFF3360 FF+8d, DUKHCONP03Z3ARFF3355 SS+8d, DUKHCONP03Z3ARFF3360 SS+8d, DUKHCONP03Z2ELFF4060, DUKHCONP03Z3ARFF3355 FF+8d, DUKHCONP03Z3ELFF4045 FF+5d, DUKHCONP03Z3ELFF4045 SS+5d | 1d | 0d | LABOR- SUBCONTRACTOR [54 h]; ELECTRICIANS SK [134.4 h]; MCCB QTY [15 ea]; DB QTY [9 ea] | 9,226 | 25 |  | P3P3EWFF25 | DUKHCON3PP3ELFF4060 | DUKHCONP03Z3ELFF4060 | DH | CON | P3 | Z3 | MEP | EW | FF | B10 | B10-D09 | RES-3 |
| DUKHCONP03Z3ELFF4065 |  | Installation of Lighting fixtures & Accessories | 25d | 2014-03-22 | 2014-04-19 | DUKHCONP03Z3ARFF3360 SS+10d, DUKHCONP03Z3ELFF4060 SS+11d, DUKHCONP03Z3ELFF4060 FF+11d, DUKHCONP03Z3ARFF3355 FF+10d, DUKHCONP03Z3ARFF3360 FF+10d, DUKHCONP03Z3ELGF4025 SS+5d, DUKHCONP03Z3ELGF4025 FF+5d, DUKHCONP03Z2ELFF4065, DUKHCONP03Z3ARFF3355 SS+10d | 1d | 0d | LABOR- SUBCONTRACTOR [882 h]; ELECTRICIANS SK [1646.4 h]; LIGHTS QTY [741 ea] | 118,791 | 30 |  | P3P3EWFF30 | DUKHCON3PP3ELFF4065 | DUKHCONP03Z3ELFF4065 | DH | CON | P3 | Z3 | MEP | EW | FF | B10 | B10-D09 | RES-3 |

Notes:
- DUKHCONP03Z3ARRF3630: Expenses: P03-Roofing 46704
- DUKHCONP03Z3ARRF3635: Expenses: P03-Roofing 61507
- DUKHCONP03Z3ARRF3640: Expenses: P03-Roofing 34449
- DUKHCONP03Z3ARRF3645: Expenses: P03-Roofing 84498
- DUKHCONP03Z3ARRF3650: Expenses: P03-Metal work 53449
- DUKHCONP03Z3ARRF3655: Expenses: P03-Roofing 9975
- DUKHCONP03Z3ARRF3660: Expenses: P03-Metal work 19196
- DUKHCONP03Z3AREL3665: Expenses: P03-Finishes 71672
- DUKHCONP03Z3AREL3675: Expenses: P03-Finishes 20058
- DUKHCONP03Z3AREL3680: Expenses: P03-Painting and Decorating 106011
- DUKHCONP03Z3ELGF4000: Expenses: P03-Electrical Installations 28763
- DUKHCONP03Z3ELGF4005: Expenses: P03-Electrical Installations 19776
- DUKHCONP03Z3ELGF4010: Expenses: P03-Electrical Installations 105208
- DUKHCONP03Z3ELGF4015: Expenses: P03-Electrical Installations 64049
- DUKHCONP03Z3ELGF4020: Expenses: P03-Electrical Installations 82222
- DUKHCONP03Z3ELGF4025: Expenses: P03-Electrical Installations 118790
- DUKHCONP03Z3ELGF4030: Expenses: P03-Electrical Installations 25360
- DUKHCONP03Z3ELFF4035: Expenses: P03-Electrical Installations 28166
- DUKHCONP03Z3ELFF4040: Expenses: P03-Electrical Installations 19770
- DUKHCONP03Z3ELFF4045: Expenses: P03-Electrical Installations 102805
- DUKHCONP03Z3ELFF4050: Expenses: P03-Electrical Installations 24744
- DUKHCONP03Z3ELFF4055: Expenses: P03-Electrical Installations 64049
- DUKHCONP03Z3ELFF4060: Expenses: P03-Electrical Installations 9226
- DUKHCONP03Z3ELFF4065: Expenses: P03-Electrical Installations 118791

| ID | WBS | Activity | Duration | Start | Finish | Predecessors | Total float | Free float | Resources | Cost | CODE | P3 ACTID | P6 ID (old) | NP61D | PROJECT | PHASES | PACKAGE | PART | ELEMENTS | STEP | FLOORS | BILL NOS | BILL DIVISION | RES PACK |
| --- | --- | --- | --- | --- | --- | --- | --- | --- | --- | --- | --- | --- | --- | --- | --- | --- | --- | --- | --- | --- | --- | --- | --- | --- |
|  | 20 | **ROOF** |  | 2014-04-10 | 2014-05-14 |  |  |  |  |  |  |  |  |  |  |  |  |  |  |  |  |  |  |  |
| DUKHCONP03Z3ELRF4070 |  | Installation of Isolator | 18d | 2014-04-10 | 2014-04-30 | DUKHCONP03Z3ELFF4050 FF+7d, DUKHCONP03Z3ELFF4045 SS+10d, DUKHCONP03Z3ELFF4065 FF+10d, DUKHCONP03Z3ELFF4045 FF+10d, DUKHCONP03Z3ELFF4050 SS+5d, DUKHCONP03Z3ARRF3645 FF+7d, DUKHCONP03Z3ARRF3645 SS+7d, DUKHCONP03Z3ELFF4065 SS+10d | 1d | 0d | LABOR- SUBCONTRACTOR [108 h]; ELECTRICIANS SK [201.6 h]; ISOLATOR QTY [36 ea] | 41,395 | 10 | P3P3EWRF10 | DUKHCON3PP3ELRF4070 | DUKHCONP03Z3ELRF4070 | DH | CON | P3 | Z3 | MEP | EW | RF | B10 | B10-D09 | RES-3 |
| DUKHCONP03Z3ELRF4075 |  | Installation of TV Dish Antenna | 23d | 2014-04-19 | 2014-05-14 | DUKHCONP03Z3ELRF4070 SS+7d, DUKHCONP03Z3ELRF4070 FF+7d | 1d |  | LABOR- SUBCONTRACTOR [1332 h]; ELECTRICIANS SK [3393.6 h]; CONTROL BOX QTY [162 ea]; SWITCHING BOX QTY [141 ea] | 30,342 | 15 | P3P3EWRF15 | DUKHCON3PP3ELRF4075 | DUKHCONP03Z3ELRF4075 | DH | CON | P3 | Z3 | MEP | EW | RF | B10 | B10-D09 | RES-3 |
|  | 15 | **PLUMBING, DRAINAGE & FIRE FIGHTING WORKS** |  | 2013-07-06 | 2014-04-29 |  |  |  |  |  |  |  |  |  |  |  |  |  |  |  |  |  |  |  |
|  | 10 | **GROUND FLOOR** |  | 2013-07-06 | 2014-03-02 |  |  |  |  |  |  |  |  |  |  |  |  |  |  |  |  |  |  |  |
| DUKHCONP03Z3PLUG4300 |  | Drainage / Storm Pipes in Grade Slab | 20d | 2013-07-06 | 2013-07-28 | DUKHCONP03Z3STUG1040 SS+10d, DUKHCONP03Z3STUG1040 FF+10d | 0d |  | LABOR- SUBCONTRACTOR [36 h]; MECHANICALS SK [129.6 h]; DRAINAGE PIPES QTY [234 lm] | 14,418 | 10 | P3P3PLUG10 | DUKHCON3PP3PLUG4300 | DUKHCONP03Z3PLUG4300 | DH | CON | P3 | Z3 | ST | SB | UG | B10 | B10-D07 | RES-3 |
| DUKHCONP03Z3PLGF4305 |  | Installation of Plumbing pipes & testing | 18d | 2013-11-02 | 2013-11-21 | DUKHCONP03Z3ARGF3000 FF+7d, DUKHCONP03Z3ARGF3000 SS+7d, DUKHCONP03Z2PLGF4305 | 35d | 0d | LABOR- SUBCONTRACTOR [594 h]; MECHANICALS SK [2138.4 h]; PLUMB PIPES QTY [1986 lm] | 84,763 | 10 | P3P3PLGF10 | DUKHCON3PP3PLGF4305 | DUKHCONP03Z3PLGF4305 | DH | CON | P3 | Z3 | MEP | PL | GF | B10 | B10-D07 | RES-3 |
| DUKHCONP03Z3PLGF4310 |  | Installation of Drainage pipes &testing | 18d | 2013-11-02 | 2013-11-21 | DUKHCONP03Z3ARGF3000 FF+7d, DUKHCONP03Z3PLGF4305 FF, DUKHCONP03Z3PLGF4305 SS, DUKHCONP03Z3ARGF3000 SS+7d | 56d | 17d | LABOR- SUBCONTRACTOR [54 h]; MECHANICALS SK [162 h]; DRAINAGE PIPES QTY [324 lm] | 1,912 | 15 | P3P3PLGF15 | DUKHCON3PP3PLGF4310 | DUKHCONP03Z3PLGF4310 | DH | CON | P3 | Z3 | MEP | PL | GF | B10 | B10-D07 | RES-3 |
| DUKHCONP03Z3PLGF4315 |  | Sanitary Fittings & Accessories | 20d | 2014-02-01 | 2014-02-24 | DUKHCONP03Z3ARGF3065 SS+5d, DUKHCONP03Z3PLGF4310 SS+5d, DUKHCONP03Z3PLGF4310 FF+5d, DUKHCONP03Z2PLGF4315, DUKHCONP03Z3ARGF3065 FF+5d | 64d | 0d | LABOR- SUBCONTRACTOR [126 h]; MECHANICALS SK [226.8 h]; SANITARY ACC QTY [216 ea] | 92,011 | 20 | P3P3PLGF20 | DUKHCON3PP3PLGF4315 | DUKHCONP03Z3PLGF4315 | DH | CON | P3 | Z3 | MEP | PL | GF | B10 | B10-D07 | RES-3 |
| DUKHCONP03Z3PLGF4320 |  | Installation of Water Heater | 15d | 2014-02-13 | 2014-03-02 | DUKHCONP03Z3ARGF3060 FF+5d, DUKHCONP03Z3PLGF4315 SS+5d, DUKHCONP03Z2PLGF4320, DUKHCONP03Z3ARGF3060 SS+5d, DUKHCONP03Z3PLGF4315 FF+5d | 64d | 10d | LABOR- SUBCONTRACTOR [18 h]; MECHANICALS SK [32.4 h]; WATER HEATER QTY [6 ea] | 1,055 | 25 | P3P3PLGF25 | DUKHCON3PP3PLGF4320 | DUKHCONP03Z3PLGF4320 | DH | CON | P3 | Z3 | MEP | PL | GF | B10 | B10-D07 | RES-3 |
|  | 15 | **FIRST FLOORS** |  | 2013-12-12 | 2014-04-12 |  |  |  |  |  |  |  |  |  |  |  |  |  |  |  |  |  |  |  |
| DUKHCONP03Z3PLFF4325 |  | Installation of Plumbing pipes & testing | 18d | 2013-12-12 | 2014-01-02 | DUKHCONP03Z3ARFF3300 SS+6d, DUKHCONP03Z3ARFF3300 FF+6d | 0d |  | LABOR- SUBCONTRACTOR [594 h]; MECHANICALS SK [2138.4 h]; PLUMB PIPES QTY [1986 lm] | 78,473 | 10 | P3P3PLFF10 | DUKHCON3PP3PLFF4325 | DUKHCONP03Z3PLFF4325 | DH | CON | P3 | Z3 | MEP | PL | FF | B10 | B10-D07 | RES-3 |
| DUKHCONP03Z3PLFF4330 |  | Installation of Drainage pipes & testing | 18d | 2013-12-14 | 2014-01-04 | DUKHCONP03Z3PLFF4325 SS, DUKHCONP03Z3ARFF3300 SS+7d, DUKHCONP03Z3ARFF3300 FF+7d, DUKHCONP03Z2PLFF4330, DUKHCONP03Z3PLFF4325 FF | 26d | 7d | LABOR- SUBCONTRACTOR [54 h]; MECHANICALS SK [162 h]; DRAINAGE PIPES QTY [324 lm] | 1,639 | 15 | P3P3PLFF15 | DUKHCON3PP3PLFF4330 | DUKHCONP03Z3PLFF4330 | DH | CON | P3 | Z3 | MEP | PL | FF | B10 | B10-D07 | RES-3 |
| DUKHCONP03Z3PLFF4335 |  | Sanitary Fittings & Accessories | 20d | 2014-03-15 | 2014-04-06 | DUKHCONP03Z3PLFF4330 FF+5d, DUKHCONP03Z3PLFF4330 SS+5d, DUKHCONP03Z3ARFF3365 SS+5d, DUKHCONP03Z3ARFF3365 FF+5d | 14d | 0d | LABOR- SUBCONTRACTOR [126 h]; MECHANICALS SK [226.8 h]; SANITARY ACC QTY [216 ea] | 92,011 | 20 | P3P3PLFF20 | DUKHCON3PP3PLFF4335 | DUKHCONP03Z3PLFF4335 | DH | CON | P3 | Z3 | MEP | PL | FF | B10 | B10-D07 | RES-3 |
| DUKHCONP03Z3PLFF4340 |  | Installation of Water Heater | 15d | 2014-03-26 | 2014-04-12 | DUKHCONP03Z2PLFF4340, DUKHCONP03Z3ARFF3355 SS+5d, DUKHCONP03Z3PLFF4335 FF+5d, DUKHCONP03Z3PLFF4335 SS+5d, DUKHCONP03Z3ARFF3355 FF+5d, DUKHCONP03Z3ARFF3360 SS+5d, DUKHCONP03Z3ARFF3360 FF+5d | 14d | 0d | LABOR- SUBCONTRACTOR [18 h]; MECHANICALS SK [32.4 h]; WATER HEATER QTY [6 ea] | 1,055 | 25 | P3P3PLFF25 | DUKHCON3PP3PLFF4340 | DUKHCONP03Z3PLFF4340 | DH | CON | P3 | Z3 | MEP | PL | FF | B10 | B10-D07 | RES-3 |
|  | 20 | **ROOF** |  | 2014-01-08 | 2014-04-29 |  |  |  |  |  |  |  |  |  |  |  |  |  |  |  |  |  |  |  |
| DUKHCONP03Z3PLRF4345 |  | Installation of Plumbing pipes & fittings | 15d | 2014-01-08 | 2014-01-25 | DUKHCONP03Z3ARRF3605 SS+7d, DUKHCONP03Z3ARRF3605 FF+7d | 71d | 18d | LABOR- SUBCONTRACTOR [360 h]; MECHANICALS SK [1263.6 h]; PLUMB PIPES QTY [1155 lm] | 12,374 | 10 | P3P3PLRF10 | DUKHCON3PP3PLRF4345 | DUKHCONP03Z3PLRF4345 | DH | CON | P3 | Z3 | MEP | PL | RF | B10 | B10-D07 | RES-3 |
| DUKHCONP03Z3PLRF4350 |  | Installation of Rain water Pipes | 15d | 2014-02-08 | 2014-02-25 | DUKHCONP03Z3PLFF4330 FF+5d, DUKHCONP03Z3PLRF4345 FF+8d, DUKHCONP03Z3ARRF3645 FF+5d, DUKHCONP03Z3PLFF4330 SS+5d, DUKHCONP03Z3AREL3665 FF+7d, DUKHCONP03Z2PLRF4350, DUKHCONP03Z3AREL3665 SS+7d, DUKHCONP03Z3ARRF3645 SS+5d, DUKHCONP03Z3PLRF4345 SS+8d | 53d | 10d | LABOR- SUBCONTRACTOR [18 h]; MECHANICALS SK [64.8 h]; DRAINAGE PIPES QTY [105 lm] | 88,600 | 15 | P3P3PLRF15 | DUKHCON3PP3PLRF4350 | DUKHCONP03Z3PLRF4350 | DH | CON | P3 | Z3 | MEP | PL | RF | B10 | B10-D07 | RES-3 |
| DUKHCONP03Z3PLRF4355 |  | Roof Water Tank Installation & Connections | 25d | 2014-04-01 | 2014-04-29 | DUKHCONP03Z2PLRF4355, DUKHCONP03Z3ARRF3655 FF+5d, DUKHCONP03Z3PLFF4340 FF+5d, DUKHCONP03Z3PLFF4340 SS+5d, DUKHCONP03Z3PLRF4345 FF+8d, DUKHCONP03Z3PLRF4345 SS+8d, DUKHCONP03Z3PLRF4350 FF+5d, DUKHCONP03Z3ARRF3655 SS+5d, DUKHCONP03Z3PLRF4350 SS+5d | 14d | 0d | LABOR- SUBCONTRACTOR [36 h]; MECHANICALS SK [64.8 h]; WATER TANK QTY [6 ea] | 879,962 | 20 | P3P3PLRF20 | DUKHCON3PP3PLRF4355 | DUKHCONP03Z3PLRF4355 | DH | CON | P3 | Z3 | MEP | PL | RF | B10 | B10-D07 | RES-3 |
|  | 20 | **AC WORKS** |  | 2013-11-21 | 2014-04-29 |  |  |  |  |  |  |  |  |  |  |  |  |  |  |  |  |  |  |  |
|  | 10 | **GROUND FLOOR** |  | 2013-11-21 | 2014-02-27 |  |  |  |  |  |  |  |  |  |  |  |  |  |  |  |  |  |  |  |
| DUKHCONP03Z3ACGF4600 |  | Installation AC Pipes | 20d | 2013-11-21 | 2013-12-14 | DUKHCONP03Z3ARGF3005 SS+7d, DUKHCONP03Z3ARGF3005 FF+7d, DUKHCONP03Z2ACGF4600 | 66d | 5d | LABOR- SUBCONTRACTOR [72 h]; AC TECHNICIAN SK [268.8 h]; AC PIPES QTY [684 lm] | 7,244 | 10 | P3P3ACGF10 | DUKHCON3PP3ACGF4600 | DUKHCONP03Z3ACGF4600 | DH | CON | P3 | Z3 | MEP | AC | GF | B10 | B10-D08 | RES-3 |
| DUKHCONP03Z3ACGF4605 |  | Fixing of Ventilation Equipments | 25d | 2014-01-14 | 2014-02-12 | DUKHCONP03Z3ARGF3055 SS+7d, DUKHCONP03Z2ACGF4605, DUKHCONP03Z3ACGF4600 FF+10d, DUKHCONP03Z3ARGF3055 FF+7d, DUKHCONP03Z3ACGF4600 SS+10d, DUKHCONP03Z3ARGF3060 FF+7d, DUKHCONP03Z3ARGF3060 SS+7d | 51d | 0d | LABOR- SUBCONTRACTOR [36 h]; AC TECHNICIAN SK [100.8 h]; VENTILIATION EQP QTY [39 ea] | 27,766 | 15 | P3P3ACGF15 | DUKHCON3PP3ACGF4605 | DUKHCONP03Z3ACGF4605 | DH | CON | P3 | Z3 | MEP | AC | GF | B10 | B10-D08 | RES-3 |
| DUKHCONP03Z3ACGF4610 |  | Fixing of Split AC | 20d | 2014-02-04 | 2014-02-27 | DUKHCONP03Z3ACGF4605 FF+13d, DUKHCONP03Z3ACGF4605 SS+13d, DUKHCONP03Z2ACGF4610 | 51d | 5d | LABOR- SUBCONTRACTOR [126 h]; AC TECHNICIAN SK [235.2 h]; SPILIT UNIT QTY [39 ea] | 40,463 | 20 | P3P3ACGF20 | DUKHCON3PP3ACGF4610 | DUKHCONP03Z3ACGF4610 | DH | CON | P3 | Z3 | MEP | AC | GF | B10 | B10-D08 | RES-3 |

Notes:
- DUKHCONP03Z3ELRF4070: Expenses: P03-Electrical Installations 41395
- DUKHCONP03Z3ELRF4075: Expenses: P03-Electrical Installations 30342
- DUKHCONP03Z3PLUG4300: Expenses: P03-Plumbing and Drainage works 14418
- DUKHCONP03Z3PLGF4305: Expenses: P03-Plumbing and Drainage works 84763
- DUKHCONP03Z3PLGF4310: Expenses: P03-Plumbing and Drainage works 1912
- DUKHCONP03Z3PLGF4315: Expenses: P03-Plumbing and Drainage works 92011
- DUKHCONP03Z3PLGF4320: Expenses: P03-Plumbing and Drainage works 1055
- DUKHCONP03Z3PLFF4325: Expenses: P03-Plumbing and Drainage works 78473
- DUKHCONP03Z3PLFF4330: Expenses: P03-Plumbing and Drainage works 1639
- DUKHCONP03Z3PLFF4335: Expenses: P03-Plumbing and Drainage works 92011
- DUKHCONP03Z3PLFF4340: Expenses: P03-Plumbing and Drainage works 1055
- DUKHCONP03Z3PLRF4345: Expenses: P03-Plumbing and Drainage works 12374
- DUKHCONP03Z3PLRF4350: Expenses: P03-Plumbing and Drainage works 88600
- DUKHCONP03Z3PLRF4355: Expenses: P03-Plumbing and Drainage works 879962
- DUKHCONP03Z3ACGF4600: Expenses: P03-Air-conditioning and Ventilation works 7244
- DUKHCONP03Z3ACGF4605: Expenses: P03-Air-conditioning and Ventilation works 27766
- DUKHCONP03Z3ACGF4610: Expenses: P03-Air-conditioning and Ventilation works 40463

| ID | WBS | Activity | Duration | Start | Finish | Predecessors | Total float | Free float | Resources | Cost | CODE | P3 ACTID | P6 ID (old) | NP61D | PROJECT | PHASES | PACKAGE | PART | ELEMENTS | STEP | FLOORS | BILL NOS | BILL DIVISION | RES PACK |
| --- | --- | --- | --- | --- | --- | --- | --- | --- | --- | --- | --- | --- | --- | --- | --- | --- | --- | --- | --- | --- | --- | --- | --- | --- |
|  | 15 | **FIRST FLOORS** |  | 2014-01-06 | 2014-04-17 |  |  |  |  |  |  |  |  |  |  |  |  |  |  |  |  |  |  |  |
| DUKHCONP03Z3ACFF4615 |  | Installation AC Pipes | 20d | 2014-01-06 | 2014-01-28 | DUKHCONP03Z2ACFF4615, DUKHCONP03Z3ARFF3305 SS+7d, DUKHCONP03Z3ARFF3305 FF+7d | 32d | 1d | LABOR- SUBCONTRACTOR [72 h]; AC TECHNICIAN SK [268.8 h]; AC PIPES QTY [684 lm] | 6,520 | 10 | P3P3ACFF10 | DUKHCON3PP3ACFF4615 | DUKHCONP03Z3ACFF4615 | DH | CON | P3 | Z3 | MEP | AC | FF | B10 | B10-D08 | RES-3 |
| DUKHCONP03Z3ACFF4620 |  | Fixing of Ventilation Equipments | 25d | 2014-03-05 | 2014-04-02 | DUKHCONP03Z2ACFF4620, DUKHCONP03Z3ARFF3360 SS+7d, DUKHCONP03Z3ARFF3355 FF+7d, DUKHCONP03Z3ARFF3360 FF+7d, DUKHCONP03Z3ACFF4615 SS+10d, DUKHCONP03Z3ACFF4615 FF+10d, DUKHCONP03Z3ARFF3355 SS+7d | 9d | 0d | LABOR- SUBCONTRACTOR [36 h]; AC TECHNICIAN SK [100.8 h]; VENTILIATION EQP QTY [39 ea] | 23,247 | 15 | P3P3ACFF15 | DUKHCON3PP3ACFF4620 | DUKHCONP03Z3ACFF4620 | DH | CON | P3 | Z3 | MEP | AC | FF | B10 | B10-D08 | RES-3 |
| DUKHCONP03Z3ACFF4625 |  | Fixing of Split AC | 20d | 2014-03-26 | 2014-04-17 | DUKHCONP03Z2ACFF4625, DUKHCONP03Z3ACFF4620 FF+13d, DUKHCONP03Z3ACFF4620 SS+13d | 9d | 0d | LABOR- SUBCONTRACTOR [126 h]; AC TECHNICIAN SK [235.2 h]; SPILIT UNIT QTY [39 ea] | 42,227 | 20 | P3P3ACFF20 | DUKHCON3PP3ACFF4625 | DUKHCONP03Z3ACFF4625 | DH | CON | P3 | Z3 | MEP | AC | FF | B10 | B10-D08 | RES-3 |
|  | 20 | **ROOF** |  | 2014-01-15 | 2014-04-29 |  |  |  |  |  |  |  |  |  |  |  |  |  |  |  |  |  |  |  |
| DUKHCONP03Z3ACRF4630 |  | Installation of Refrigerant Pipes | 25d | 2014-01-15 | 2014-02-13 | DUKHCONP03Z3ACGF4600 SS+7d, DUKHCONP03Z3ACGF4600 FF+7d, DUKHCONP03Z3ARRF3645 FF+7d, DUKHCONP03Z3ARRF3645 SS+7d, DUKHCONP03Z3ACFF4615 FF+7d, DUKHCONP03Z3ACFF4615 SS+7d, DUKHCONP03Z2ACRF4630 | 73d | 0d | AC TECHNICIAN SK [134.4 h]; AC PIPES QTY [342 lm]; LABOR- SUBCONTRACTOR [36 h] | 20,514 | 10 | P3P3ACRF10 | DUKHCON3PP3ACRF4630 | DUKHCONP03Z3ACRF4630 | DH | CON | P3 | Z3 | MEP | AC | RF | B10 | B10-D08 | RES-3 |
| DUKHCONP03Z3ACRF4635 |  | Installation of Condensing Unit | 25d | 2014-04-01 | 2014-04-29 | DUKHCONP03Z3ACRF4630 FF+5d, DUKHCONP03Z3ACRF4630 SS+5d, DUKHCONP03Z3ACGF4610 FF+5d, DUKHCONP03Z3ACFF4625 FF+5d, DUKHCONP03Z2ACRF4635, DUKHCONP03Z3ACGF4610 SS+5d, DUKHCONP03Z3ACFF4625 SS+5d | 14d | 0d | LABOR- SUBCONTRACTOR [126 h]; AC TECHNICIAN SK [436.8 h]; AC UNITS QTY [78 ea] | 106,501 | 15 | P3P3ACRF15 | DUKHCON3PP3ACRF4635 | DUKHCONP03Z3ACRF4635 | DH | CON | P3 | Z3 | MEP | AC | RF | B10 | B10-D08 | RES-3 |
|  | 25 | **EXTERNAL WORKS** |  | 2013-12-03 | 2014-04-23 |  |  |  |  |  |  |  |  |  |  |  |  |  |  |  |  |  |  |  |
|  | 10 | **MISCELLANEOUS** |  | 2013-12-03 | 2014-03-17 |  |  |  |  |  |  |  |  |  |  |  |  |  |  |  |  |  |  |  |
| DUKHCONP03Z3MSEX5000 |  | Construction of Manholes | 25d | 2013-12-03 | 2014-01-01 | DUKHCONP03Z3STRF2055 FF+10d, DUKHCONP03Z3PLGF4310 FF+10d, DUKHCONP03Z3STRF2055 SS+10d, DUKHCONP03Z3PLGF4310 SS+10d | 46d | 0d | LABOR- SUBCONTRACTOR [36 h]; CABINET QTY [12 ea]; JOINERY WORK SK [96 h] | 6,808 | 25 | P3P3MSEX25 | DUKHCON3PP3MS005000 | DUKHCONP03Z3MSEX5000 | DH | CON | P3 | Z3 | EX | MS |  | B10 | B10-D12 | RES-3 |
| DUKHCONP03Z3MSEX5005 |  | Construction of Soak pit, Chambers | 25d | 2013-12-17 | 2014-01-15 | DUKHCONP03Z3MSEX5000 FF+12d, DUKHCONP03Z3MSEX5000 SS+12d | 46d | 0d | LABOR - CIVIL [75 h]; MANHOLES SK [200 h] | 12,087 | 30 | P3P3MSEX30 | DUKHCON3PP3MS005005 | DUKHCONP03Z3MSEX5005 | DH | CON | P3 | Z3 | EX | MS |  | B10 | B10-D12 | RES-3 |
| DUKHCONP03Z3MSEX5015 |  | Construction of grease Trap | 20d | 2014-01-07 | 2014-01-29 | DUKHCONP03Z3MSEX5005 FF+12d, DUKHCONP03Z3MSEX5005 SS+12d | 46d | 0d | LABOR- SUBCONTRACTOR [18 h]; GREASE TRAP QTY [6 lm]; HANDRAIL ERECTOR SKILLED [24 h] | 17,022 | 20 | P3P3MSEX20 | DUKHCON3PP3MS005015 | DUKHCONP03Z3MSEX5015 | DH | CON | P3 | Z3 | EX | MS |  | B10 | B10-D12 | RES-3 |
| DUKHCONP03Z3MSEX5010 |  | Telephone cable laying | 25d | 2014-01-30 | 2014-03-01 | DUKHCONP03Z3MSEX5015 | 46d | 26d | LABOR - CIVIL [125 h]; LABOR- SUBCONTRACTOR [125 h]; ELECTRICIANS SK [125 h]; CONCRETE MASON SK [125 h] | 1,114 |  | P3P3MSEX40 | DUKHCON3PP3MS005010 | DUKHCONP03Z3MSEX5010 | DH | CON | P3 | Z3 | EX | MS |  | B10 | B10-D12 | RES-3 |
| DUKHCONP03Z3MSEX5020 |  | Construction Entrance Ramp | 25d | 2014-02-04 | 2014-03-05 | DUKHCONP03Z3STRF2055 SS, DUKHCONP03Z2MSEX5020, DUKHCONP03Z3STRF2055 FF | 21d | 0d | SCREED MASON SK [48 h]; CONCRETE MASON SK [48 h]; INTERLOCK MASON SK [48 h]; LABOR - CIVIL [54 h]; LABOR- SUBCONTRACTOR [18 h]; SCREED QTY [51 Sqm]; CONCRETE QTY [27 Cum]; INTERLOCK QTY [60 Sqm] | 10,659 | 10 | P3P3MSEX10 | DUKHCON3PP3MS005020 | DUKHCONP03Z3MSEX5020 | DH | CON | P3 | Z3 | EX | MS |  | B10 | B10-D12 | RES-3 |
| DUKHCONP03Z3MSEX5025 |  | SS.Handrails and Balustrades | 20d | 2014-02-23 | 2014-03-17 | DUKHCONP03Z3MSEX5020 FF+10d, DUKHCONP03Z3MSEX5020 SS+10d | 21d | 0d | LABOR- SUBCONTRACTOR [36 h]; S.S.BALUSTRADE QTY [30 lm]; HANDRAIL ERECTOR SKILLED [72 h] | 30,532 | 15 | P3P3MSEX15 | DUKHCON3PP3MS005025 | DUKHCONP03Z3MSEX5025 | DH | CON | P3 | Z3 | EX | MS |  | B10 | B10-D12 | RES-3 |
|  | 15 | **DOMESTIC WATER TANK & PUMP ROOM** |  | 2013-12-05 | 2014-04-23 |  |  |  |  |  |  |  |  |  |  |  |  |  |  |  |  |  |  |  |
| DUKHCONP03Z3WTEX5030 |  | Excavation | 20d | 2013-12-05 | 2013-12-29 | DUKHCONP03Z3STRF2055 SS+5d, DUKHCONP03Z3STRF2065 SS+5d, DUKHCONP03Z2WTEX5030, DUKHCONP03Z3STRF2055 FF+5d | 58d | 0d | LABOR - CIVIL [36 h]; EXCAVATION QTY [54 Cum]; LOADER [20 h]; POCLAIN [40 h]; TRUCK [20 h]; EQUIP OPERATORS [80 h] | 1,647 | 10 | P3P3WEEX10 | DUKHCON3PP3WE005030 | DUKHCONP03Z3WTEX5030 | DH | CON | P3 | Z3 | EX | WE |  | B10 | B10-D12 | RES-3 |
| DUKHCONP03Z3WTEX5035 |  | Construction of Raft | 25d | 2013-12-11 | 2014-01-09 | DUKHCONP03Z3WTEX5030 FF+10d, DUKHCONP03Z3WTEX5030 SS+5d | 58d | 0d | CONCRETE MASON SK [120 h]; LABOR - CIVIL [90 h]; CONCRETE QTY [60 Cum] | 25,770 | 15 | P3P3WEEX15 | DUKHCON3PP3WE005035 | DUKHCONP03Z3WTEX5035 | DH | CON | P3 | Z3 | EX | WE |  | B10 | B10-D12 | RES-3 |
| DUKHCONP03Z3WTEX5040 |  | Block works & Plastering | 25d | 2013-12-22 | 2014-01-19 | DUKHCONP03Z3WTEX5035 FF+8d, DUKHCONP03Z3WTEX5035 SS+8d | 58d | 0d | BLOCK MASON SK [456 h]; PLASTER MASON SK [1104 h]; LABOR - CIVIL [882 h]; BLOCK QTY [225 Sqm]; PLASTER QTY [690 Sqm] | 46,391 | 20 | P3P3WEEX20 | DUKHCON3PP3WE005040 | DUKHCONP03Z3WTEX5040 | DH | CON | P3 | Z3 | EX | WE |  | B10 | B10-D12 | RES-3 |
| DUKHCONP03Z3WTEX5070 |  | Domestic Water Tank Plumbings works | 25d | 2013-12-30 | 2014-01-27 | DUKHCONP03Z3WTEX5080 SS | 58d | 0d | LABOR- SUBCONTRACTOR [100 h]; MECHANICALS SK [100 h] | 125,964 | 40 | P3P3WEEX70 | DUKHCON3PP3WE005070 | DUKHCONP03Z3WTEX5070 | DH | CON | P3 | Z3 | EX | WE |  | B10 | B10-D12 | RES-3 |
| DUKHCONP03Z3WTEX5075 |  | Domestic Water Tank AC works | 25d | 2013-12-30 | 2014-01-27 | DUKHCONP03Z3WTEX5070 SS | 58d | 0d | LABOR- SUBCONTRACTOR [100 h]; AC TECHNICIAN SK [75 h] | 8,274 | 40 | P3P3WEEX80 | DUKHCON3PP3WE005075 | DUKHCONP03Z3WTEX5075 | DH | CON | P3 | Z3 | EX | WE |  | B10 | B10-D12 | RES-3 |
| DUKHCONP03Z3WTEX5080 |  | Domestic Water Tank Electrical works | 25d | 2013-12-30 | 2014-01-27 | DUKHCONP03Z3WTEX5040 SS+7d | 58d | 0d | LABOR- SUBCONTRACTOR [100 h]; ELECTRICIANS SK [75 h] | 22,233 | 40 | P3P3WEEX60 | DUKHCON3PP3WE005080 | DUKHCONP03Z3WTEX5080 | DH | CON | P3 | Z3 | EX | WE |  | B10 | B10-D12 | RES-3 |
| DUKHCONP03Z3WTEX5085 |  | Domestic Water Tank Firefighting works | 25d | 2013-12-30 | 2014-01-27 | DUKHCONP03Z3WTEX5075 SS | 58d | 0d | LABOR- SUBCONTRACTOR [48 h]; MECHANICALS SK [64.8 h] | 12,708 | 40 | P3P3WEEX90 | DUKHCON3PP3WE005085 | DUKHCONP03Z3WTEX5085 | DH | CON | P3 | Z3 | EX | WE |  | B10 | B10-D12 | RES-3 |
| DUKHCONP03Z3WTEX5045 |  | Flooring & Painting | 25d | 2014-01-04 | 2014-02-01 | DUKHCONP03Z3WTEX5040 FF+10d, DUKHCONP03Z3WTEX5040 SS+10d, DUKHCONP03Z3WTEX5085 FF+4d | 58d | 37d | SCREED MASON SK [96 h]; LABOR - CIVIL [36 h]; LABOR- SUBCONTRACTOR [216 h]; SCREED QTY [114 Sqm]; PAINT QTY [690 Sqm]; PAINTERS SK [552 h] | 35,064 | 25 | P3P3WEEX25 | DUKHCON3PP3WE005045 | DUKHCONP03Z3WTEX5045 | DH | CON | P3 | Z3 | EX | WE |  | B10 | B10-D12 | RES-3 |
| DUKHCONP03Z3WTEX5050 |  | Installation of Steel Gate | 20d | 2014-03-06 | 2014-03-29 | DUKHCONP03Z3WTEX5045 FF+10d, DUKHCONP03Z3WTEX5045 SS+5d, DUKHCONP03Z3MSEX5025 FF+10d | 21d | 2d | LABOR- SUBCONTRACTOR [36 h]; LADDER QTY [3 ea]; GATE QTY [3 ea]; LADDER ERECTOR SK [24 h]; GATE ERECTOR SK [24 h] | 19,575 | 30 | P3P3WEEX30 | DUKHCON3PP3WE005050 | DUKHCONP03Z3WTEX5050 | DH | CON | P3 | Z3 | EX | WE |  | B10 | B10-D12 | RES-3 |
| DUKHCONP03Z3WTEX5060 |  | Structural steel & SS Shed cover installation | 25d | 2014-03-15 | 2014-04-12 | DUKHCONP03Z3WTEX5050 FF+10d, DUKHCONP03Z2WTEX5060, DUKHCONP03Z3WTEX5050 SS+5d, DUKHCONP03Z3MSEX5025 FF+10d | 19d | 0d | LABOR- SUBCONTRACTOR [252 h]; SS SHED COVER QTY [81 Sqm]; STEEL ERECTOR SK [336 h] | 22,930 | 35 | P3P3WEEX35 | DUKHCON3PP3WE005060 | DUKHCONP03Z3WTEX5060 | DH | CON | P3 | Z3 | EX | WE |  | B10 | B10-D12 | RES-3 |
| DUKHCONP03Z3WTEX5065 |  | Install. of Water Tank,Chiller,Pump & Meter | 25d | 2014-03-26 | 2014-04-23 | DUKHCONP03Z3WTEX5060 FF+10d, DUKHCONP03Z3PLRF4350 SS+5d, DUKHCONP03Z3PLRF4350 FF+5d, DUKHCONP03Z3MSEX5015 SS+5d, DUKHCONP03Z2WTEX5065, DUKHCONP03Z3MSEX5015 FF+5d, DUKHCONP03Z3WTEX5060 SS+10d | 19d | 0d | LABOR- SUBCONTRACTOR [54 h]; AC TECHNICIAN SK [33.6 h]; MECHANICALS SK [64.8 h]; WATER TANK QTY [3 ea]; CHILLER QTY [30 ea]; PUMP QTY [3 ea] | 212,221 | 40 | P3P3WEEX40 | DUKHCON3PP3WE005065 | DUKHCONP03Z3WTEX5065 | DH | CON | P3 | Z3 | EX | WE |  | B10 | B10-D12 | RES-3 |

Notes:
- DUKHCONP03Z3ACFF4615: Expenses: P03-Air-conditioning and Ventilation works 6520
- DUKHCONP03Z3ACFF4620: Expenses: P03-Air-conditioning and Ventilation works 23247
- DUKHCONP03Z3ACFF4625: Expenses: P03-Air-conditioning and Ventilation works 42227
- DUKHCONP03Z3ACRF4630: Expenses: P03-Air-conditioning and Ventilation works 20514
- DUKHCONP03Z3ACRF4635: Expenses: P03-Air-conditioning and Ventilation works 106501
- DUKHCONP03Z3MSEX5000: Expenses: P03-External works within the Plot Curtilage 6808
- DUKHCONP03Z3MSEX5005: Expenses: P03-External works within the Plot Curtilage 12087
- DUKHCONP03Z3MSEX5015: Expenses: P03-External works within the Plot Curtilage 17022
- DUKHCONP03Z3MSEX5010: Expenses: P03-External works within the Plot Curtilage 1114
- DUKHCONP03Z3MSEX5020: Expenses: P03-External works within the Plot Curtilage 10659
- DUKHCONP03Z3MSEX5025: Expenses: P03-External works within the Plot Curtilage 30532
- DUKHCONP03Z3WTEX5030: Expenses: P03-External works within the Plot Curtilage 1647
- DUKHCONP03Z3WTEX5035: Expenses: P03-External works within the Plot Curtilage 25770
- DUKHCONP03Z3WTEX5040: Expenses: P03-External works within the Plot Curtilage 46391
- DUKHCONP03Z3WTEX5070: Expenses: P03-External works within the Plot Curtilage 125964
- DUKHCONP03Z3WTEX5075: Expenses: P03-External works within the Plot Curtilage 8274
- DUKHCONP03Z3WTEX5080: Expenses: P03-External works within the Plot Curtilage 22233
- DUKHCONP03Z3WTEX5085: Expenses: P03-External works within the Plot Curtilage 12708
- DUKHCONP03Z3WTEX5045: Expenses: P03-External works within the Plot Curtilage 35064
- DUKHCONP03Z3WTEX5050: Expenses: P03-External works within the Plot Curtilage 19575
- DUKHCONP03Z3WTEX5060: Expenses: P03-External works within the Plot Curtilage 22930
- DUKHCONP03Z3WTEX5065: Expenses: P03-External works within the Plot Curtilage 212221

| ID | WBS | Activity | Duration | Start | Finish | Predecessors | Total float | Resources | Cost | P3 ACTID | P6 ID (old) | NP61D | PROJECT | PHASES | PACKAGE | PART | ELEMENTS | BILL NOS | BILL DIVISION | RES PACK | CODE | STEP | FLOORS | rem |
| --- | --- | --- | --- | --- | --- | --- | --- | --- | --- | --- | --- | --- | --- | --- | --- | --- | --- | --- | --- | --- | --- | --- | --- | --- |
|  | 30 | **TESTING AND COMMISSIONING** |  | 2014-05-17 | 2014-06-14 |  |  |  |  |  |  |  |  |  |  |  |  |  |  |  |  |  |  |  |
| DUKHCONP03Z3ACTC8000 |  | Pre-Commissioning & Testing of AC Works | 25d | 2014-05-17 | 2014-06-14 | DUKHCONP03Z3ARRF3620, DUKHCONP03Z3ARFF3395, DUKHCONP03Z3ARRF3660, DUKHCONP03Z3MSEX5005, DUKHCONP03Z2ACTC8000, DUKHCONP03Z3AREL3680, DUKHCONP03Z3ARGF3095, DUKHCONP03Z3ACRF4635, DUKHCONP03Z3ARRF3655, DUKHCONP03Z3ACFF4625 | 0d | LABOR- SUBCONTRACTOR [500 h]; AC TECHNICIAN SK [1000 h] | 915 | P3P3ACU100 | DUKHCON3PP3AC008000 | DUKHCONP03Z3ACTC8000 | DH | CON | P3 | Z3 | TES | B10 | B10-D08 | RES-3 |  |  |  |  |
| DUKHCONP03Z3ELTC8010 |  | Pre-Commissioning & Testing of Electrical Works | 25d | 2014-05-17 | 2014-06-14 | DUKHCONP03Z3ARRF3620, DUKHCONP03Z3ARFF3395, DUKHCONP03Z3ARRF3655, DUKHCONP03Z2ELTC8010, DUKHCONP03Z3AREL3680, DUKHCONP03Z3ARRF3660, DUKHCONP03Z3ELFF4065, DUKHCONP03Z3ELRF4075, DUKHCONP03Z3MSEX5005, DUKHCONP03Z3ELGF4030, DUKHCONP03Z3ARGF3095, DUKHCONP03Z3ELFF4050, DUKHCONP03Z3ELFF4055, DUKHCONP03Z3ELGF4015, DUKHCONP03Z3ELGF4025 | 0d | LABOR- SUBCONTRACTOR [1000 h]; ELECTRICIANS SK [2000 h] | 41,901 | P3P3ELE100 | DUKHCON3PP3EL008010 | DUKHCONP03Z3ELTC8010 | DH | CON | P3 | Z3 | TES | B10 | B10-D09 | RES-3 |  |  |  |  |
| DUKHCONP03Z3PLTC8005 |  | Pre-Commissioning & Testing of Plumbing Works | 25d | 2014-05-17 | 2014-06-14 | DUKHCONP03Z3ARRF3620, DUKHCONP03Z3ARRF3660, DUKHCONP03Z3PLRF4355, DUKHCONP03Z3MSEX5005, DUKHCONP03Z3AREL3680, DUKHCONP03Z2PLTC8005, DUKHCONP03Z3ARFF3395, DUKHCONP03Z3ARRF3655, DUKHCONP03Z3PLGF4320, DUKHCONP03Z3WTEX5065, DUKHCONP03Z3ARGF3095, DUKHCONP03Z3PLRF4350 | 0d | LABOR- SUBCONTRACTOR [1000 h]; MECHANICALS SK [2000 h] | 7,665 | P3P3PLU100 | DUKHCON3PP3PL008005 | DUKHCONP03Z3PLTC8005 | DH | CON | P3 | Z3 | TES | B10 | B10-D07 | RES-3 |  |  |  |  |
|  | 25 | **ZONE - 4 (3 Apartments)** |  | 2013-04-28 | 2014-07-13 |  |  |  |  |  |  |  |  |  |  |  |  |  |  |  |  |  |  |  |
|  | 10 | **STRUCTURAL WORKS** |  | 2013-04-28 | 2014-01-27 |  |  |  |  |  |  |  |  |  |  |  |  |  |  |  |  |  |  |  |
|  | 10 | **SUB STRUCTURE** |  | 2013-04-28 | 2013-09-14 |  |  |  |  |  |  |  |  |  |  |  |  |  |  |  |  |  |  |  |
|  | 10 | **UPTO GRADE SLAB** |  | 2013-04-28 | 2013-09-14 |  |  |  |  |  |  |  |  |  |  |  |  |  |  |  |  |  |  |  |
| DUKHCONP03Z4STUG1000 |  | Footing Excavation | 25d | 2013-04-28 | 2013-05-26 | DUKHCONP03Z3STUG1000 | 0d | LABOR - CIVIL [824 h]; EXCAVATION QTY [1374 Cum]; LOADER [183 h]; POCLAIN [366 h]; TRUCK [183 h]; EQUIP OPERATORS [732 h] | 68,040 | P3P4SBUG10 | DUKHCON3PP4STUG1000 | DUKHCONP03Z4STUG1000 | DH | CON | P3 | Z4 | ST | B10 | B10-D01 | RES-3 | 10 | SB | UG |  |
| DUKHCONP03Z4STUG1005 |  | Footing Antitermite | 23d | 2013-05-08 | 2013-06-03 | DUKHCONP03Z4STUG1000 SS+9d, DUKHCONP03Z4STUG1000 FF+5d | 0d | LABOR- SUBCONTRACTOR [173.25 h]; ANTITERMITE QTY [1152 sqft]; ANTITERMITE SK [461 h] | 3,456 | P3P4SBUG15 | DUKHCON3PP4STUG1005 | DUKHCONP03Z4STUG1005 | DH | CON | P3 | Z4 | ST | B10 | B10-D01 | RES-3 | 15 | SB | UG | REM |
| DUKHCONP03Z4STUG1010 |  | Footing Blinding | 23d | 2013-05-12 | 2013-06-06 | DUKHCONP03Z4STUG1005 SS+3d, DUKHCONP03Z4STUG1005 FF+3d | 0d | BLINDING MASON SK [336 h]; LABOR - CIVIL [252 h]; BLINDING QTY [420 Sqm] | 10,587 | P3P4SBUG18 | DUKHCON3PP4STUG1010 | DUKHCONP03Z4STUG1010 | DH | CON | P3 | Z4 | ST | B10 | B10-D02 | RES-3 | 15 | SB | UG | REM |
| DUKHCONP03Z4STUG1015 |  | Footing Waterproofing & Screed | 25d | 2013-05-18 | 2013-06-15 | DUKHCONP03Z4STUG1010 FF+5d, DUKHCONP03Z4STUG1010 SS+5d | 0d | WATERPROOFING SPECIALIST SK [659 h]; SCREED MASON SK [336 h]; LABOR - CIVIL [126 h]; LABOR- SUBCONTRACTOR [247.5 h]; SCREED QTY [420 Sqm]; WATERPROOFING QTY [823 Sqm] | 31,497 | P3P4SBUG20 | DUKHCON3PP4STUG1015 | DUKHCONP03Z4STUG1015 | DH | CON | P3 | Z4 | ST | B10 | B10-D02 | RES-3 | 20 | SB | UG | REM |
| DUKHCONP03Z4STUG1020 |  | Construction of foundations | 20d | 2013-06-02 | 2013-06-24 | DUKHCONP03Z4STUG1015 SS+7d, DUKHCONP03Z4STUG1015 FF+8d | 0d | STEEL FIXERS SK [1819 h]; CARPENTERS SK [646 h]; CONCRETE MASON SK [288 h]; LABOR - CIVIL [2064.75 h]; REINFORCEMENT BARS QTY [22733 kg]; FORMWORK QTY [323 Sqm]; CONCRETE QTY [144 Cum] | 125,011 | P3P4SBUG25 | DUKHCON3PP4STUG1020 | DUKHCONP03Z4STUG1020 | DH | CON | P3 | Z4 | ST | B10 | B10-D02 | RES-3 | 25 | SB | UG | REM |
| DUKHCONP03Z4STUG1025 |  | Construction of neck of columns | 25d | 2013-06-11 | 2013-07-09 | DUKHCONP03Z3STUG1025, DUKHCONP03Z4STUG1020 FF+7d, DUKHCONP03Z4STUG1020 SS+8d | 0d | STEEL FIXERS SK [152 h]; CARPENTERS SK [630 h]; CONCRETE MASON SK [18 h]; LABOR - CIVIL [600 h]; REINFORCEMENT BARS QTY [1891 kg]; FORMWORK QTY [315 Sqm]; CONCRETE QTY [9 Cum] | 27,559 | P3P4SBUG30 | DUKHCON3PP4STUG1025 | DUKHCONP03Z4STUG1025 | DH | CON | P3 | Z4 | ST | B10 | B10-D02 | RES-3 | 30 | SB | UG | REM |
| DUKHCONP03Z4STUG1030 |  | Waterproofing Footing & Neck Column | 25d | 2013-06-20 | 2013-07-18 | DUKHCONP03Z4STUG1025 FF+8d, DUKHCONP03Z4STUG1025 SS+8d | 0d | WATERPROOFING QTY [193 Sqm]; WATERPROOFING SPECIALIST SK [155 h]; LABOR- SUBCONTRACTOR [58.5 h] | 10,965 | P3P4SBUG35 | DUKHCON3PP4STUG1030 | DUKHCONP03Z4STUG1030 | DH | CON | P3 | Z4 | ST | B10 | B10-D02 | RES-3 | 35 | SB | UG | REM |
| DUKHCONP03Z4STUG1035 |  | Backfilling Upto Grade Beam Bottom | 25d | 2013-07-01 | 2013-07-29 | DUKHCONP03Z4STUG1030 SS+9d, DUKHCONP03Z3STUG1035, DUKHCONP03Z4STUG1030 FF+9d | 0d | LABOR - CIVIL [360 h]; BACKFILLING QTY [1512 Cum]; BOBCAT [1000 h]; PLATE COMPACTOR [1000 h]; TRUCK [200 h]; EQUIP OPERATORS [2200 h] | 25,326 | P3P4SBUG40 | DUKHCON3PP4STUG1035 | DUKHCONP03Z4STUG1035 | DH | CON | P3 | Z4 | ST | B10 | B10-D01 | RES-3 | 40 | SB | UG |  |
| DUKHCONP03Z4STUG1040 |  | Construction of Grade Beams | 25d | 2013-07-17 | 2013-08-18 | DUKHCONP03Z4STUG1035 SS+14d, DUKHCONP03Z4STUG1035 FF+14d | 0d | BLINDING MASON SK [180 h]; SCREED MASON SK [180 h]; STEEL FIXERS SK [1062 h]; CARPENTERS SK [1202 h]; CONCRETE MASON SK [126 h]; LABOR - CIVIL [1995 h]; BLINDING QTY [225 Sqm]; SCREED QTY [225 Sqm]; REINFORCEMENT BARS QTY [13269 kg]; FORMWORK QTY [601 Sqm]; CONCRETE QTY [63 Cum] | 199,651 | P3P4SBUG45 | DUKHCON3PP4STUG1040 | DUKHCONP03Z4STUG1040 | DH | CON | P3 | Z4 | ST | B10 | B10-D02 | RES-3 | 45 | SB | UG | REM |
| DUKHCONP03Z4STUG1045 |  | Construction of slab on grade | 25d | 2013-08-17 | 2013-09-14 | DUKHCONP03Z4PLUG4300 FF+8d, DUKHCONP03Z3STUG1045, DUKHCONP03Z4STUG1040 FF+10d, DUKHCONP03Z4STUG1040 SS+10d, DUKHCONP03Z4PLUG4300 SS+8d | 0d | LABOR - CIVIL [1279.5 h]; BLINDING QTY [855 Sqm]; SCREED QTY [855 Sqm]; CONCRETE QTY [186 Cum]; WELDED WIRE MESH [1155 Sqm]; BLINDING MASON SK [684 h]; SCREED MASON SK [684 h]; STEEL FIXERS SK [308 h]; CONCRETE MASON SK [372 h] | 181,661 | P3P4SBUG50 | DUKHCON3PP4STUG1045 | DUKHCONP03Z4STUG1045 | DH | CON | P3 | Z4 | ST | B10 | B10-D02 | RES-3 | 50 | SB | UG | REM |
|  | 15 | **SUPERSTRUCTURE** |  | 2013-09-02 | 2014-01-27 |  |  |  |  |  |  |  |  |  |  |  |  |  |  |  |  |  |  |  |
|  | 10 | **GROUND FLOOR** |  | 2013-09-02 | 2013-10-30 |  |  |  |  |  |  |  |  |  |  |  |  |  |  |  |  |  |  |  |
| DUKHCONP03Z4STGF2000 |  | Column-Rebar & Formwork | 25d | 2013-09-02 | 2013-09-30 | DUKHCONP03Z3STGF2000, DUKHCONP03Z4STUG1045 FF+7d, DUKHCONP03Z4STUG1045 SS+14d | 0d | STEEL FIXERS SK [199 h]; CARPENTERS SK [766 h]; LABOR - CIVIL [723.75 h]; REINFORCEMENT BARS QTY [2482 kg]; FORMWORK QTY [383 Sqm] | 29,754 | P3P4SPGF10 | DUKHCON3PP4STGF2000 | DUKHCONP03Z4STGF2000 | DH | CON | P3 | Z4 | ST | B10 | B10-D02 | RES-3 | 10 | SP | GF | REM |
| DUKHCONP03Z4STGF2005 |  | Column-Concrete | 24d | 2013-09-11 | 2013-10-08 | DUKHCONP03Z4STGF2000 FF+2d, DUKHCONP03Z4STGF2000 SS+8d | 0d | CONCRETE MASON SK [58 h]; LABOR - CIVIL [43.5 h]; CONCRETE QTY [29 Cum] | 8,267 | P3P4SPGF15 | DUKHCON3PP4STGF2005 | DUKHCONP03Z4STGF2005 | DH | CON | P3 | Z4 | ST | B10 | B10-D02 | RES-3 | 15 | SP | GF | REM |
| DUKHCONP03Z4STGF2010 |  | Beam, Stairs ,Slab-Rebar & Formwork | 25d | 2013-09-26 | 2013-10-27 | DUKHCONP03Z4STGF2005 SS+2d, DUKHCONP03Z4STGF2005 FF+14d | 0d | STEEL FIXERS SK [1905 h]; CARPENTERS SK [4148 h]; LABOR - CIVIL [4539.75 h]; REINFORCEMENT BARS QTY [23804 kg]; FORMWORK QTY [2074 Sqm] | 173,534 | P3P4SPGF20 | DUKHCON3PP4STGF2010 | DUKHCONP03Z4STGF2010 | DH | CON | P3 | Z4 | ST | B10 | B10-D02 | RES-3 | 20 | SP | GF | REM |
| DUKHCONP03Z4STGF2015 |  | Beam, Stairs ,Slab-Concrete | 15d | 2013-10-12 | 2013-10-30 | DUKHCONP03Z4STGF2010 FF+3d, DUKHCONP03Z4STGF2010 SS+10d, DUKHCONP03Z3STGF2015 | 0d | CONCRETE MASON SK [496 h]; LABOR - CIVIL [372 h]; CONCRETE QTY [248 Cum] | 84,518 | P3P4SPGF25 | DUKHCON3PP4STGF2015 | DUKHCONP03Z4STGF2015 | DH | CON | P3 | Z4 | ST | B10 | B10-D02 | RES-3 | 25 | SP | GF | REM |

Notes:
- DUKHCONP03Z3ACTC8000: Expenses: P03-Air-conditioning and Ventilation works 915
- DUKHCONP03Z3ELTC8010: Expenses: P03-Electrical Installations 41901
- DUKHCONP03Z3PLTC8005: Expenses: P03-Plumbing and Drainage works 7665
- DUKHCONP03Z4STUG1000: Expenses: P03-Excavation and Earth Works 68040
- DUKHCONP03Z4STUG1005: Expenses: P03-Excavation and Earth Works 3456
- DUKHCONP03Z4STUG1010: Expenses: P03-Concrete Works 10587
- DUKHCONP03Z4STUG1015: Expenses: P03-Concrete Works 31497
- DUKHCONP03Z4STUG1020: Expenses: P03-Concrete Works 125011
- DUKHCONP03Z4STUG1025: Expenses: P03-Concrete Works 27559
- DUKHCONP03Z4STUG1030: Expenses: P03-Concrete Works 10965
- DUKHCONP03Z4STUG1035: Expenses: P03-Excavation and Earth Works 25326
- DUKHCONP03Z4STUG1040: Expenses: P03-Concrete Works 199651
- DUKHCONP03Z4STUG1045: Expenses: P03-Concrete Works 181661
- DUKHCONP03Z4STGF2000: Expenses: P03-Concrete Works 29754
- DUKHCONP03Z4STGF2005: Expenses: P03-Concrete Works 8267
- DUKHCONP03Z4STGF2010: Expenses: P03-Concrete Works 173534
- DUKHCONP03Z4STGF2015: Expenses: P03-Concrete Works 84518

| ID | WBS | Activity | Duration | Start | Finish | Predecessors | Total float | Free float | Resources | Cost | CODE | rem | P3 ACTID | P6 ID (old) | NP61D | PROJECT | PHASES | PACKAGE | PART | ELEMENTS | STEP | FLOORS | BILL NOS | BILL DIVISION | RES PACK | EXECUTER |
| --- | --- | --- | --- | --- | --- | --- | --- | --- | --- | --- | --- | --- | --- | --- | --- | --- | --- | --- | --- | --- | --- | --- | --- | --- | --- | --- |
|  | 15 | **FIRST FLOORS** |  | 2013-10-14 | 2013-12-19 |  |  |  |  |  |  |  |  |  |  |  |  |  |  |  |  |  |  |  |  |  |
| DUKHCONP03Z4STFF2020 |  | Column-Rebar & Formwork | 25d | 2013-10-14 | 2013-11-13 | DUKHCONP03Z4STGF2015 SS+2d, DUKHCONP03Z3STFF2020, DUKHCONP03Z4STGF2015 FF+5d | 0d |  | STEEL FIXERS SK [241 h]; CARPENTERS SK [682 h]; LABOR - CIVIL [692.25 h]; REINFORCEMENT BARS QTY [3012 kg]; FORMWORK QTY [341 Sqm] | 29,055 | 10 | REM | P3P4SPFF10 | DUKHCON3PP4STFF2020 | DUKHCONP03Z4STFF2020 | DH | CON | P3 | Z4 | ST | SP | FF | B10 | B10-D02 | RES-3 |  |
| DUKHCONP03Z4STFF2025 |  | Column-Concrete | 24d | 2013-10-27 | 2013-11-23 | DUKHCONP03Z4STFF2020 FF+2d, DUKHCONP03Z4STFF2020 SS+9d | 0d |  | CONCRETE MASON SK [50 h]; LABOR - CIVIL [37.5 h]; CONCRETE QTY [25 Cum] | 7,236 | 15 | REM | P3P4SPFF15 | DUKHCON3PP4STFF2025 | DUKHCONP03Z4STFF2025 | DH | CON | P3 | Z4 | ST | SP | FF | B10 | B10-D02 | RES-3 |  |
| DUKHCONP03Z4STFF2030 |  | Beam, Stairs ,Slab-Rebar & Formwork | 25d | 2013-11-11 | 2013-12-09 | DUKHCONP03Z4STFF2025 FF+14d, DUKHCONP03Z4STFF2025 SS+2d | 0d |  | STEEL FIXERS SK [1613 h]; CARPENTERS SK [4148 h]; LABOR - CIVIL [4320.75 h]; REINFORCEMENT BARS QTY [20151 kg]; FORMWORK QTY [2074 Sqm] | 183,422 | 20 | REM | P3P4SPFF20 | DUKHCON3PP4STFF2030 | DUKHCONP03Z4STFF2030 | DH | CON | P3 | Z4 | ST | SP | FF | B10 | B10-D02 | RES-3 |  |
| DUKHCONP03Z4STFF2035 |  | Beam, Stairs ,Slab-Concrete | 15d | 2013-12-02 | 2013-12-19 | DUKHCONP03Z3STFF2035, DUKHCONP03Z4STFF2030 SS+10d, DUKHCONP03Z4STFF2030 FF+8d | 0d |  | CONCRETE MASON SK [418 h]; LABOR - CIVIL [313.5 h]; CONCRETE QTY [209 Cum] | 83,819 | 25 | REM | P3P4SPFF25 | DUKHCON3PP4STFF2035 | DUKHCONP03Z4STFF2035 | DH | CON | P3 | Z4 | ST | SP | FF | B10 | B10-D02 | RES-3 |  |
|  | 20 | **ROOF** |  | 2013-12-04 | 2014-01-27 |  |  |  |  |  |  |  |  |  |  |  |  |  |  |  |  |  |  |  |  |  |
| DUKHCONP03Z4STRF2040 |  | Column-Rebar & Formwork | 18d | 2013-12-04 | 2013-12-25 | DUKHCONP03Z4STFF2035 SS+2d, DUKHCONP03Z4STFF2035 FF+3d, DUKHCONP03Z3STRF2040 | 22d | 0d | STEEL FIXERS SK [58 h]; CARPENTERS SK [256 h]; LABOR - CIVIL [235.5 h]; REINFORCEMENT BARS QTY [717 kg]; FORMWORK QTY [128 Sqm] | 9,566 | 10 | REM | P3P4SPRF10 | DUKHCON3PP4STRF2040 | DUKHCONP03Z4STRF2040 | DH | CON | P3 | Z4 | ST | SP | RF | B10 | B10-D02 | RES-3 |  |
| DUKHCONP03Z4STRF2045 |  | Column-Concrete | 17d | 2013-12-08 | 2013-12-28 | DUKHCONP03Z4STRF2040 SS+3d, DUKHCONP03Z4STRF2040 FF+1d | 27d | 0d | CONCRETE MASON SK [12 h]; LABOR - CIVIL [9 h]; CONCRETE QTY [6 Cum] | 1,723 | 15 | REM | P3P4SPRF15 | DUKHCON3PP4STRF2045 | DUKHCONP03Z4STRF2045 | DH | CON | P3 | Z4 | ST | SP | RF | B10 | B10-D02 | RES-3 |  |
| DUKHCONP03Z4STRF2050 |  | Slab-Rebar & Formwork | 20d | 2013-12-10 | 2014-01-02 | DUKHCONP03Z4STRF2045 FF+5d, DUKHCONP03Z4STRF2045 SS+2d | 27d | 0d | STEEL FIXERS SK [383 h]; CARPENTERS SK [518 h]; LABOR - CIVIL [675.75 h]; REINFORCEMENT BARS QTY [4777 kg]; FORMWORK QTY [259 Sqm] | 33,570 | 20 | REM | P3P4SPRF20 | DUKHCON3PP4STRF2050 | DUKHCONP03Z4STRF2050 | DH | CON | P3 | Z4 | ST | SP | RF | B10 | B10-D02 | RES-3 |  |
| DUKHCONP03Z4STRF2055 |  | Slab-Concrete | 13d | 2013-12-22 | 2014-01-05 | DUKHCONP03Z3STRF2055, DUKHCONP03Z4STRF2050 FF+2d, DUKHCONP03Z4STRF2050 SS+5d | 27d | 0d | CONCRETE MASON SK [100 h]; LABOR - CIVIL [75 h]; CONCRETE QTY [50 Cum] | 16,065 | 25 | REM | P3P4SPRF25 | DUKHCON3PP4STRF2055 | DUKHCONP03Z4STRF2055 | DH | CON | P3 | Z4 | ST | SP | RF | B10 | B10-D02 | RES-3 |  |
| DUKHCONP03Z4STRF2060 |  | Construction of Parapets | 25d | 2013-12-24 | 2014-01-21 | DUKHCONP03Z4STRF2055 SS+2d, DUKHCONP03Z4STRF2055 FF+10d | 58d | 0d | BLOCK MASON SK [924 h]; LABOR - CIVIL [517 h]; BLOCK QTY [462 Sqm] | 28,644 | 30 |  | P3P4SPRF30 | DUKHCON3PP4STRF2060 | DUKHCONP03Z4STRF2060 | DH | CON | P3 | Z4 | ST | SP | RF | B10 | B10-D03 | RES-3 |  |
| DUKHCONP03Z4STRF2065 |  | Construction of up stands/Plinth | 25d | 2013-12-30 | 2014-01-27 | DUKHCONP03Z3STRF2065, DUKHCONP03Z4STRF2060 FF+5d, DUKHCONP03Z4STRF2060 SS+5d | 58d | 0d | STEEL FIXERS SK [6 h]; CARPENTERS SK [126 h]; CONCRETE MASON SK [30 h]; LABOR - CIVIL [121.5 h]; REINFORCEMENT BARS QTY [68 kg]; FORMWORK QTY [63 Sqm]; CONCRETE QTY [15 Cum] | 8,997 | 35 | REM | P3P4SPRF35 | DUKHCON3PP4STRF2065 | DUKHCONP03Z4STRF2065 | DH | CON | P3 | Z4 | ST | SP | RF | B10 | B10-D02 | RES-3 |  |
|  | 15 | **FINISHING WORKS** |  | 2013-11-14 | 2014-06-14 |  |  |  |  |  |  |  |  |  |  |  |  |  |  |  |  |  |  |  |  |  |
|  | 10 | **INTERNAL FINISHES** |  | 2013-11-14 | 2014-06-14 |  |  |  |  |  |  |  |  |  |  |  |  |  |  |  |  |  |  |  |  |  |
|  | 10 | **GROUND FLOOR** |  | 2013-11-14 | 2014-04-28 |  |  |  |  |  |  |  |  |  |  |  |  |  |  |  |  |  |  |  |  |  |
| DUKHCONP03Z4ARGF3000 |  | Block work | 25d | 2013-11-14 | 2013-12-12 | DUKHCONP03Z3ARGF3000, DUKHCONP03Z4STGF2015 FF+21d, DUKHCONP03Z4STGF2015 SS+21d | 36d | 0d | BLOCK MASON SK [4552 h]; LABOR - CIVIL [2560.5 h]; BLOCK QTY [2276 Sqm] | 161,435 | 10 | REM | P3P4IFGF10 | DUKHCON3PP4ARGF3000 | DUKHCONP03Z4ARGF3000 | DH | CON | P3 | Z4 | FIN | IF | GF | B10 | B10-D03 | RES-3 |  |
| DUKHCONP03Z4ARGF3005 |  | Plastering work | 25d | 2013-12-07 | 2014-01-05 | DUKHCONP03Z4PLGF4305 SS+5d, DUKHCONP03Z4PLGF4305 FF+5d, DUKHCONP03Z4ARGF3000 FF+7d, DUKHCONP03Z4ELGF4000 SS+5d, DUKHCONP03Z4ELGF4000 FF+5d, DUKHCONP03Z4ARGF3000 SS+7d, DUKHCONP03Z3ARGF3005 | 36d | 0d | LABOR - CIVIL [2256.75 h]; PLASTER QTY [2507 Sqm]; PLASTER MASON SK [4012 h] | 32,676 | 12 | REM | P3P4IFGF12 | DUKHCON3PP4ARGF3005 | DUKHCONP03Z4ARGF3005 | DH | CON | P3 | Z4 | FIN | IF | GF | B10 | B10-D10 | RES-3 |  |
| DUKHCONP03Z4ARGF3010 |  | Flooring screed | 21d | 2013-12-15 | 2014-01-08 | DUKHCONP03Z4ARGF3005 FF+3d, DUKHCONP03Z4ARGF3005 SS+7d | 44d | 8d | SCREED MASON SK [898 h]; LABOR - CIVIL [336.75 h]; FLOORING SCREED QTY [1122 Sqm] | 37,269 | 15 | REM | P3P4IFGF15 | DUKHCON3PP4ARGF3010 | DUKHCONP03Z4ARGF3010 | DH | CON | P3 | Z4 | FIN | IF | GF | B10 | B10-D10 | RES-3 |  |
| DUKHCONP03Z4ARGF3015 |  | Wet area waterproofing & Protection Screed | 15d | 2013-12-25 | 2014-01-11 | DUKHCONP03Z4ARGF3005 SS+7d, DUKHCONP03Z4ARGF3005 FF+5d, DUKHCONP03Z3ARGF3015 | 36d | 0d | LABOR- SUBCONTRACTOR [159 h]; WETAREA WATERPROOFING QTY [528 Sqm]; WATERPROOFING SPECIALIST SK [423 h] | 17,952 | 18 | REM | P3P4IFGF18 | DUKHCON3PP4ARGF3015 | DUKHCONP03Z4ARGF3015 | DH | CON | P3 | Z4 | FIN | IF | GF | B10 | B10-D10 | RES-3 |  |
| DUKHCONP03Z4ARGF3020 |  | Ceramic Wall Tiling | 25d | 2013-12-31 | 2014-01-28 | DUKHCONP03Z4ARGF3015 SS+5d, DUKHCONP03Z4PLGF4305 SS+4d, DUKHCONP03Z4PLGF4310 SS+4d, DUKHCONP03Z4ARGF3015 FF+5d, DUKHCONP03Z3ARGF3020, DUKHCONP03Z4PLGF4305 FF+4d, DUKHCONP03Z4PLGF4310 FF+4d | 36d | 0d | TILE MASON SK [1666 h]; LABOR- SUBCONTRACTOR [937.5 h]; CERAMIC WALL TILE QTY [833 Sqm] | 48,488 | 24 | REM | P3P4IFGF24 | DUKHCON3PP4ARGF3020 | DUKHCONP03Z4ARGF3020 | DH | CON | P3 | Z4 | FIN | IF | GF | B10 | B10-D10 | RES-3 |  |
| DUKHCONP03Z4ARGF3030 |  | Paint First coat | 25d | 2013-12-31 | 2014-01-28 | DUKHCONP03Z4ARGF3005 FF+14d, DUKHCONP03Z3ARGF3030, DUKHCONP03Z4ARGF3005 SS+14d | 44d | 0d | LABOR- SUBCONTRACTOR [1128.15 h]; FIRSTCOAT PAINT QTY [3760 Sqm]; PAINTERS SK [3008.4 h] | 18,001 | 21 | REM | P3P4IFGF21 | DUKHCON3PP4ARGF3030 | DUKHCONP03Z4ARGF3030 | DH | CON | P3 | Z4 | FIN | IF | GF | B10 | B10-D11 | RES-3 | ENT |
| DUKHCONP03Z4ARGF3025 |  | Porcelain Tile flooring | 25d | 2014-01-06 | 2014-02-03 | DUKHCONP03Z3ARGF3025, DUKHCONP03Z4ARGF3010 FF+10d, DUKHCONP03Z4ARGF3010 SS+10d, DUKHCONP03Z4ARGF3020 FF+5d, DUKHCONP03Z4ARGF3020 SS+5d | 36d | 0d | TILE MASON SK [1144 h]; LABOR- SUBCONTRACTOR [643.5 h]; PORCELAIN FLOORING QTY [1001 Sqm] | 78,427 | 27 | REM | P3P4IFGF27 | DUKHCON3PP4ARGF3025 | DUKHCONP03Z4ARGF3025 | DH | CON | P3 | Z4 | FIN | IF | GF | B10 | B10-D10 | RES-3 |  |
| DUKHCONP03Z4ARGF3045 |  | Fixing of Suspension systems | 20d | 2014-01-23 | 2014-02-16 | DUKHCONP03Z4ARGF3025 FF+10d, DUKHCONP03Z4ELGF4010 SS+5d, DUKHCONP03Z4ARGF3030 FF+7d, DUKHCONP03Z4ARGF3030 SS+7d, DUKHCONP03Z4ARGF3025 SS+10d, DUKHCONP03Z3ARGF3045, DUKHCONP03Z4ELGF4010 FF+5d | 36d | 0d | LABOR- SUBCONTRACTOR [516.75 h]; SUSPENSION QTY [1147.5 Sqm]; FALSE CEILING SKILLED SK [918 h] | 22,044 | 39 | REM | P3P4IFGF39 | DUKHCON3PP4ARGF3045 | DUKHCONP03Z4ARGF3045 | DH | CON | P3 | Z4 | FIN | IF | GF | B10 | B10-D10 | RES-3 | SUS |
| DUKHCONP03Z4ARGF3035 |  | Slate Tile Flooring & Skirting | 15d | 2014-01-26 | 2014-02-12 | DUKHCONP03Z4ARGF3010 FF+13d, DUKHCONP03Z4ARGF3010 SS+13d, DUKHCONP03Z4ARGF3025 FF+7d, DUKHCONP03Z4ARGF3025 SS+13d | 42d | 2d | TILE MASON SK [29 h]; LABOR- SUBCONTRACTOR [16.5 h]; SLATE TILE QTY [18 Sqm] | 4,202 | 33 | REM | P3P4IFGF33 | DUKHCON3PP4ARGF3035 | DUKHCONP03Z4ARGF3035 | DH | CON | P3 | Z4 | FIN | IF | GF | B10 | B10-D10 | RES-3 |  |
| DUKHCONP03Z4ARGF3055 |  | Aluminum tile false ceiling | 25d | 2014-02-01 | 2014-03-02 | DUKHCONP03Z4ARGF3045 FF+7d, DUKHCONP03Z4ARGF3045 SS+7d, DUKHCONP03Z4ACGF4600 SS+7d, DUKHCONP03Z4ACGF4600 FF+7d | 39d | 3d | LABOR- SUBCONTRACTOR [56.25 h]; FALSE CEILING QTY [125 Sqm]; FALSE CEILING SKILLED SK [100 h] | 8,585 | 42 | REM | P3P4IFGF42 | DUKHCON3PP4ARGF3055 | DUKHCONP03Z4ARGF3055 | DH | CON | P3 | Z4 | FIN | IF | GF | B10 | B10-D10 | RES-3 | ALU |
| DUKHCONP03Z4ARGF3040 |  | Cobble Tile flooring | 15d | 2014-02-02 | 2014-02-19 | DUKHCONP03Z4ARGF3010 FF+13d, DUKHCONP03Z4ARGF3035 FF+4d, DUKHCONP03Z4ARGF3035 SS+4d, DUKHCONP03Z4ARGF3010 SS+13d, DUKHCONP03Z4ARGF3025 FF+13d, DUKHCONP03Z4ARGF3025 SS+13d | 40d | 0d | TILE MASON SK [44 h]; LABOR- SUBCONTRACTOR [24.75 h]; COBBLE STONE QTY [27 Sqm] | 2,251 | 30 | REM | P3P4IFGF30 | DUKHCON3PP4ARGF3040 | DUKHCONP03Z4ARGF3040 | DH | CON | P3 | Z4 | FIN | IF | GF | B10 | B10-D10 | RES-3 |  |
| DUKHCONP03Z4ARGF3060 |  | Gypsum board false ceiling | 25d | 2014-02-04 | 2014-03-05 | DUKHCONP03Z4ACGF4600 SS+7d, DUKHCONP03Z4ARGF3045 SS+10d, DUKHCONP03Z4ARGF3045 FF+10d, DUKHCONP03Z3ARGF3060, DUKHCONP03Z4ACGF4600 FF+7d | 36d | 0d | FALSE CEILING QTY [1039 Sqm]; FALSE CEILING SKILLED SK [831.2 h]; LABOR- SUBCONTRACTOR [467.51 h] | 57,405 | 45 | REM | P3P4IFGF45 | DUKHCON3PP4ARGF3060 | DUKHCONP03Z4ARGF3060 | DH | CON | P3 | Z4 | FIN | IF | GF | B10 | B10-D10 | RES-3 | GYP |
| DUKHCONP03Z4ARGF3050 |  | Granite - Stair case flooring & Skirting | 20d | 2014-02-10 | 2014-03-05 | DUKHCONP03Z4ARGF3040 SS+7d, DUKHCONP03Z4ARGF3025 FF+13d, DUKHCONP03Z4ARGF3025 SS+13d, DUKHCONP03Z4ARGF3040 FF+7d | 40d | 0d | GRANITE MASON SK [324 h]; LABOR- SUBCONTRACTOR [182.25 h]; GRANITE QTY [81 Sqm] | 48,650 | 36 | REM | P3P4IFGF36 | DUKHCON3PP4ARGF3050 | DUKHCONP03Z4ARGF3050 | DH | CON | P3 | Z4 | FIN | IF | GF | B10 | B10-D10 | RES-3 |  |
| DUKHCONP03Z4ARGF3065 |  | Wooden door | 15d | 2014-02-25 | 2014-03-13 | DUKHCONP03Z4ARGF3035 SS+7d, DUKHCONP03Z4ARGF3050 SS+7d, DUKHCONP03Z4ARGF3035 FF+7d, DUKHCONP03Z4ARGF3050 FF+7d, DUKHCONP03Z3ARGF3065 | 40d | 0d | LABOR- SUBCONTRACTOR [112.5 h]; WOODEN DOOR QTY [75 ea]; DOOR ERECTOR SK [300 h] | 225,525 | 48 | REM | P3P4IFGF48 | DUKHCON3PP4ARGF3065 | DUKHCONP03Z4ARGF3065 | DH | CON | P3 | Z4 | FIN | IF | GF | B10 | B10-D05 | RES-3 |  |
| DUKHCONP03Z4ARGF3070 |  | Aluminum doors | 15d | 2014-03-03 | 2014-03-19 | DUKHCONP03Z4ARGF3065 SS+5d, DUKHCONP03Z4ARGF3065 FF+5d, DUKHCONP03Z3ARGF3070 | 40d | 0d | LABOR- SUBCONTRACTOR [27 h]; ALUMINIUM DOOR QTY [18 ea]; DOOR ERECTOR SK [72 h] | 22,066 | 51 | REM | P3P4IFGF51 | DUKHCON3PP4ARGF3070 | DUKHCONP03Z4ARGF3070 | DH | CON | P3 | Z4 | FIN | IF | GF | B10 | B10-D06 | RES-3 |  |
| DUKHCONP03Z4ARGF3075 |  | Carpentry & Joinery Works | 20d | 2014-03-09 | 2014-03-31 | DUKHCONP03Z4ARGF3070 FF+7d, DUKHCONP03Z3ARGF3075, DUKHCONP03Z4ARGF3070 SS+5d | 40d | 0d | LABOR- SUBCONTRACTOR [216 h]; CABINET QTY [54 ea]; WARDROBE QTY [18 ea]; JOINERY WORK SK [576 h] | 128,681 | 57 | REM | P3P4IFGF57 | DUKHCON3PP4ARGF3075 | DUKHCONP03Z4ARGF3075 | DH | CON | P3 | Z4 | FIN | IF | GF | B10 | B10-D05 | RES-3 |  |
| DUKHCONP03Z4ARGF3080 |  | Aluminum windows | 20d | 2014-03-10 | 2014-04-01 | DUKHCONP03Z4ARGF3070 FF+6d, DUKHCONP03Z3ARGF3080, DUKHCONP03Z4ARGF3070 SS+6d | 50d | 5d | LABOR- SUBCONTRACTOR [60 h]; ALUMINIUM WINDOWS QTY [60 ea]; WINDOW ERECTOR SK [160 h] | 45,348 | 54 | REM | P3P4IFGF54 | DUKHCON3PP4ARGF3080 | DUKHCONP03Z4ARGF3080 | DH | CON | P3 | Z4 | FIN | IF | GF | B10 | B10-D06 | RES-3 |  |
| DUKHCONP03Z4ARGF3085 |  | S.S.Balustrade | 20d | 2014-03-17 | 2014-04-08 | DUKHCONP03Z4ARGF3075 FF+7d, DUKHCONP03Z4ARGF3050 SS+7d, DUKHCONP03Z4ARGF3075 SS+7d, DUKHCONP03Z4ARGF3050 FF+7d | 45d | 5d | LABOR- SUBCONTRACTOR [17.25 h]; S.S.BALUSTRADE QTY [15 lm]; HANDRAIL ERECTOR SKILLED [30 h] | 21,690 | 63 | REM | P3P4IFGF63 | DUKHCON3PP4ARGF3085 | DUKHCONP03Z4ARGF3085 | DH | CON | P3 | Z4 | FIN | IF | GF | B10 | B10-D06 | RES-3 |  |
| DUKHCONP03Z4ARGF3090 |  | Installation of Granite Counter Top | 15d | 2014-03-22 | 2014-04-07 | DUKHCONP03Z4ARGF3075 FF+6d, DUKHCONP03Z4ARGF3075 SS+7d | 40d | 0d | GRANITE MASON SK [96 h]; LABOR- SUBCONTRACTOR [36 h]; GRANITE COUNTER TOP QTY [24 ea] | 23,258 | 60 | REM | P3P4IFGF60 | DUKHCON3PP4ARGF3090 | DUKHCONP03Z4ARGF3090 | DH | CON | P3 | Z4 | FIN | IF | GF | B10 | B10-D10 | RES-3 |  |
| DUKHCONP03Z4ARGF3095 |  | Final Painting | 25d | 2014-03-31 | 2014-04-28 | DUKHCONP03Z4ARGF3060 FF+8d, DUKHCONP03Z4ARGF3070 SS+5d, DUKHCONP03Z4ARGF3080 FF+8d, DUKHCONP03Z4ARGF3085 SS+7d, DUKHCONP03Z4ACGF4610 SS+10d, DUKHCONP03Z4ARGF3030 SS+10d, DUKHCONP03Z4ARGF3040 SS+13d, DUKHCONP03Z3ARGF3095, DUKHCONP03Z4ARGF3040 FF+13d, DUKHCONP03Z4ARGF3090 SS+8d, DUKHCONP03Z4ARGF3085 FF+7d, DUKHCONP03Z4ARGF3035 SS+13d, DUKHCONP03Z4ARGF3070 FF+5d, DUKHCONP03Z4ARGF3080 SS+8d, DUKHCONP03Z4ACGF4610 FF+10d, DUKHCONP03Z4ARGF3030 FF+10d, DUKHCONP03Z4ARGF3035 FF+13d, DUKHCONP03Z4ARGF3060 SS+8d, DUKHCONP03Z4ARGF3090 FF+8d | 40d | 0d | LABOR- SUBCONTRACTOR [1128.15 h]; PAINT QTY [3760 Sqm]; PAINTERS SK [3008.4 h] | 50,845 | 66 | REM | P3P4IFGF66 | DUKHCON3PP4ARGF3095 | DUKHCONP03Z4ARGF3095 | DH | CON | P3 | Z4 | FIN | IF | GF | B10 | B10-D11 | RES-3 | PNT |

Notes:
- DUKHCONP03Z4STFF2020: Expenses: P03-Concrete Works 29055
- DUKHCONP03Z4STFF2025: Expenses: P03-Concrete Works 7236
- DUKHCONP03Z4STFF2030: Expenses: P03-Concrete Works 183422
- DUKHCONP03Z4STFF2035: Expenses: P03-Concrete Works 83819
- DUKHCONP03Z4STRF2040: Expenses: P03-Concrete Works 9566
- DUKHCONP03Z4STRF2045: Expenses: P03-Concrete Works 1723
- DUKHCONP03Z4STRF2050: Expenses: P03-Concrete Works 33570
- DUKHCONP03Z4STRF2055: Expenses: P03-Concrete Works 16065
- DUKHCONP03Z4STRF2060: Expenses: P03-Block work 28644
- DUKHCONP03Z4STRF2065: Expenses: P03-Concrete Works 8997
- DUKHCONP03Z4ARGF3000: Expenses: P03-Block work 161435
- DUKHCONP03Z4ARGF3005: Expenses: P03-Finishes 32676
- DUKHCONP03Z4ARGF3010: Expenses: P03-Finishes 37269
- DUKHCONP03Z4ARGF3015: Expenses: P03-Finishes 17952
- DUKHCONP03Z4ARGF3020: Expenses: P03-Finishes 48488
- DUKHCONP03Z4ARGF3030: Expenses: P03-Painting and Decorating 18001
- DUKHCONP03Z4ARGF3025: Expenses: P03-Finishes 78427
- DUKHCONP03Z4ARGF3045: Expenses: P03-Finishes 22044
- DUKHCONP03Z4ARGF3035: Expenses: P03-Finishes 4202
- DUKHCONP03Z4ARGF3055: Expenses: P03-Finishes 8585
- DUKHCONP03Z4ARGF3040: Expenses: P03-Finishes 2251
- DUKHCONP03Z4ARGF3060: Expenses: P03-Finishes 57405
- DUKHCONP03Z4ARGF3050: Expenses: P03-Finishes 48650
- DUKHCONP03Z4ARGF3065: Expenses: P03-Carpentry and Joinery 225525
- DUKHCONP03Z4ARGF3070: Expenses: P03-Metal work 22066
- DUKHCONP03Z4ARGF3075: Expenses: P03-Carpentry and Joinery 128681
- DUKHCONP03Z4ARGF3080: Expenses: P03-Metal work 45348
- DUKHCONP03Z4ARGF3085: Expenses: P03-Metal work 21690
- DUKHCONP03Z4ARGF3090: Expenses: P03-Finishes 23258
- DUKHCONP03Z4ARGF3095: Expenses: P03-Painting and Decorating 50845

| ID | WBS | Activity | Duration | Start | Finish | Predecessors | Total float | Free float | Resources | Cost | CODE | rem | P3 ACTID | P6 ID (old) | NP61D | PROJECT | PHASES | PACKAGE | PART | ELEMENTS | STEP | FLOORS | BILL NOS | BILL DIVISION | RES PACK | EXECUTER |
| --- | --- | --- | --- | --- | --- | --- | --- | --- | --- | --- | --- | --- | --- | --- | --- | --- | --- | --- | --- | --- | --- | --- | --- | --- | --- | --- |
|  | 15 | **FIRST FLOORS** |  | 2013-12-28 | 2014-06-14 |  |  |  |  |  |  |  |  |  |  |  |  |  |  |  |  |  |  |  |  |  |
| DUKHCONP03Z4ARFF3300 |  | Block work | 25d | 2013-12-28 | 2014-01-25 | DUKHCONP03Z4STFF2020 SS+21d, DUKHCONP03Z4STFF2020 FF+21d, DUKHCONP03Z4STFF2035 FF+21d, DUKHCONP03Z4STFF2035 SS+21d, DUKHCONP03Z3ARFF3300 | 0d |  | BLOCK MASON SK [3554 h]; LABOR - CIVIL [1999.5 h]; BLOCK QTY [1777 Sqm] | 140,077 | 10 | REM | P3P4IFFF10 | DUKHCON3PP4ARFF3300 | DUKHCONP03Z4ARFF3300 | DH | CON | P3 | Z4 | FIN | IF | FF | B10 | B10-D03 | RES-3 |  |
| DUKHCONP03Z4ARFF3305 |  | Plastering work | 25d | 2014-01-21 | 2014-02-19 | DUKHCONP03Z4PLFF4325 FF+8d, DUKHCONP03Z4ARFF3300 SS+7d, DUKHCONP03Z4ARFF3300 FF+7d, DUKHCONP03Z4ELFF4035 FF+5d, DUKHCONP03Z4ELFF4035 SS+5d, DUKHCONP03Z3ARFF3305, DUKHCONP03Z4PLFF4325 SS+8d | 0d |  | PLASTER MASON SK [3530 h]; LABOR - CIVIL [1986 h]; PLASTER QTY [2206 Sqm] | 33,200 | 12 | REM | P3P4IFFF12 | DUKHCON3PP4ARFF3305 | DUKHCONP03Z4ARFF3305 | DH | CON | P3 | Z4 | FIN | IF | FF | B10 | B10-D10 | RES-3 |  |
| DUKHCONP03Z4ARFF3310 |  | Flooring screed | 21d | 2014-01-29 | 2014-02-23 | DUKHCONP03Z4ARFF3305 SS+7d, DUKHCONP03Z4ARFF3305 FF+3d | 15d |  | SCREED MASON SK [750 h]; LABOR - CIVIL [281.25 h]; FLOORING SCREED QTY [937 Sqm] | 30,918 | 15 | REM | P3P4IFFF15 | DUKHCON3PP4ARFF3310 | DUKHCONP03Z4ARFF3310 | DH | CON | P3 | Z4 | FIN | IF | FF | B10 | B10-D10 | RES-3 |  |
| DUKHCONP03Z4ARFF3330 |  | Paint First coat | 25d | 2014-02-06 | 2014-03-08 | DUKHCONP03Z4ARFF3305 SS+14d, DUKHCONP03Z4ARFF3305 FF+14d | 18d |  | LABOR- SUBCONTRACTOR [993.75 h]; PAINTERS SK [2651 h]; FIRSTCOAT PAINT QTY [3313.5 Sqm] | 18,001 | 21 | REM | P3P4IFFF21 | DUKHCON3PP4ARFF3330 | DUKHCONP03Z4ARFF3330 | DH | CON | P3 | Z4 | FIN | IF | FF | B10 | B10-D11 | RES-3 | ENT |
| DUKHCONP03Z4ARFF3315 |  | Wet area waterproofing | 15d | 2014-02-12 | 2014-03-01 | DUKHCONP03Z3ARFF3315, DUKHCONP03Z4ARFF3305 FF+8d, DUKHCONP03Z4ARFF3305 SS+7d | 0d |  | LABOR- SUBCONTRACTOR [159 h]; WETAREA WATERPROOFING QTY [528 Sqm]; WATERPROOFING SPECIALIST SK [423 h] | 20,805 | 18 | REM | P3P4IFFF18 | DUKHCON3PP4ARFF3315 | DUKHCONP03Z4ARFF3315 | DH | CON | P3 | Z4 | FIN | IF | FF | B10 | B10-D10 | RES-3 |  |
| DUKHCONP03Z4ARFF3320 |  | Ceramic Wall Tiling | 25d | 2014-02-22 | 2014-03-22 | DUKHCONP03Z4PLFF4325 SS+4d, DUKHCONP03Z4PLFF4330 SS+7d, DUKHCONP03Z4ARFF3315 SS+8d, DUKHCONP03Z3ARFF3320, DUKHCONP03Z4PLFF4325 FF+4d, DUKHCONP03Z4PLFF4330 FF+7d, DUKHCONP03Z4ARFF3315 FF+7d | 0d |  | TILE MASON SK [1666 h]; LABOR- SUBCONTRACTOR [937.5 h]; CERAMIC WALL TILE QTY [833 Sqm] | 48,488 | 24 | REM | P3P4IFFF24 | DUKHCON3PP4ARFF3320 | DUKHCONP03Z4ARFF3320 | DH | CON | P3 | Z4 | FIN | IF | FF | B10 | B10-D10 | RES-3 |  |
| DUKHCONP03Z4ARFF3325 |  | Porcelain Tile flooring | 25d | 2014-03-01 | 2014-03-29 | DUKHCONP03Z3ARFF3325, DUKHCONP03Z4ARFF3310 FF+10d, DUKHCONP03Z4ARFF3310 SS+10d, DUKHCONP03Z4ARFF3320 FF+6d, DUKHCONP03Z4ARFF3320 SS+6d | 0d |  | TILE MASON SK [1144 h]; LABOR- SUBCONTRACTOR [643.5 h]; PORCELAIN FLOORING QTY [1001 Sqm] | 78,425 | 27 | REM | P3P4IFFF27 | DUKHCON3PP4ARFF3325 | DUKHCONP03Z4ARFF3325 | DH | CON | P3 | Z4 | FIN | IF | FF | B10 | B10-D10 | RES-3 |  |
| DUKHCONP03Z4ARFF3345 |  | Fixing of Suspension systems | 20d | 2014-03-15 | 2014-04-06 | DUKHCONP03Z3ARFF3345, DUKHCONP03Z4ARFF3330 FF+7d, DUKHCONP03Z4ELFF4045 FF+5d, DUKHCONP03Z4ARFF3325 SS+7d, DUKHCONP03Z4ELFF4045 SS+5d, DUKHCONP03Z4ARFF3325 FF+7d, DUKHCONP03Z4ARFF3330 SS+7d | 0d |  | LABOR- SUBCONTRACTOR [516.75 h]; SUSPENSION QTY [1147.5 Sqm]; DOOR ERECTOR SK [918 h] | 22,044 | 36 | REM | P3P4IFFF36 | DUKHCON3PP4ARFF3345 | DUKHCONP03Z4ARFF3345 | DH | CON | P3 | Z4 | FIN | IF | FF | B10 | B10-D10 | RES-3 | SUS |
| DUKHCONP03Z4ARFF3335 |  | Slate Tile Flooring & Skirting | 15d | 2014-03-18 | 2014-04-03 | DUKHCONP03Z4ARFF3310 FF+13d, DUKHCONP03Z4ARFF3325 FF+5d, DUKHCONP03Z4ARFF3310 SS+13d, DUKHCONP03Z4ARFF3325 SS+13d | 10d |  | LABOR- SUBCONTRACTOR [486 h]; SUSPENSION QTY [1065 Sqm]; FALSE CEILING SKILLED SK [864 h]; SLATE TILE QTY [18 Sqm] | 4,202 | 30 |  | P3P4IFFF30 | DUKHCON3PP4ARFF3335 | DUKHCONP03Z4ARFF3335 | DH | CON | P3 | Z4 | FIN | IF | FF | B10 | B10-D10 | RES-3 |  |
| DUKHCONP03Z4ARFF3350 |  | Granite - Stair case flooring & Skirting | 20d | 2014-03-22 | 2014-04-13 | DUKHCONP03Z4ARFF3325 FF+13d, DUKHCONP03Z4ARFF3325 SS+13d | 2d |  | LABOR- SUBCONTRACTOR [54 h]; FALSE CEILING QTY [126 Sqm]; FALSE CEILING SKILLED SK [96 h] | 2,634 | 33 |  | P3P4IFFF33 | DUKHCON3PP4ARFF3350 | DUKHCONP03Z4ARFF3350 | DH | CON | P3 | Z4 | FIN | IF | FF | B10 | B10-D10 | RES-3 |  |
| DUKHCONP03Z4ARFF3360 |  | Gypsum board false ceiling | 25d | 2014-03-23 | 2014-04-20 | DUKHCONP03Z4ACFF4615 FF+7d, DUKHCONP03Z4ARFF3345 FF+7d, DUKHCONP03Z4ACFF4615 SS+7d, DUKHCONP03Z3ARFF3360, DUKHCONP03Z4ARFF3345 SS+7d | 0d |  | LABOR- SUBCONTRACTOR [467.51 h]; FALSE CEILING SKILLED SK [831.2 h]; FALSE CEILING QTY [1039 Sqm] | 57,405 | 39 | REM | P3P4IFFF39 | DUKHCON3PP4ARFF3360 | DUKHCONP03Z4ARFF3360 | DH | CON | P3 | Z4 | FIN | IF | FF | B10 | B10-D10 | RES-3 | GYP |
| DUKHCONP03Z4ARFF3355 |  | Aluminum tile false ceiling | 20d | 2014-03-26 | 2014-04-17 | DUKHCONP03Z4ARFF3345 FF+10d, DUKHCONP03Z4ACFF4615 SS+7d, DUKHCONP03Z4ARFF3345 SS+10d, DUKHCONP03Z3ARFF3355, DUKHCONP03Z4ACFF4615 FF+7d | 2d | 0d | LABOR- SUBCONTRACTOR [56.25 h]; HANDRAIL ERECTOR SKILLED [100 h]; FALSE CEILING QTY [125 Sqm] | 8,583 | 39 | REM | P3P4IFFF38 | DUKHCON3PP4ARFF3355 | DUKHCONP03Z4ARFF3355 | DH | CON | P3 | Z4 | FIN | IF | FF | B10 | B10-D10 | RES-3 | ALU |
| DUKHCONP03Z4ARFF3365 |  | Wooden door | 15d | 2014-04-07 | 2014-04-23 | DUKHCONP03Z3ARFF3365, DUKHCONP03Z4ARFF3350 SS+7d, DUKHCONP03Z4ARFF3335 SS+7d, DUKHCONP03Z4ARFF3360 FF+3d, DUKHCONP03Z4ARFF3355 SS+3d, DUKHCONP03Z4ARFF3350 FF+7d, DUKHCONP03Z4ARFF3360 SS+3d, DUKHCONP03Z4ARFF3335 FF+7d, DUKHCONP03Z4ARFF3355 FF+3d | 0d |  | LABOR- SUBCONTRACTOR [90 h]; WOODEN DOOR QTY [60 ea]; DOOR ERECTOR SK [240 h] | 178,634 | 42 | REM | P3P4IFFF42 | DUKHCON3PP4ARFF3365 | DUKHCONP03Z4ARFF3365 | DH | CON | P3 | Z4 | FIN | IF | FF | B10 | B10-D05 | RES-3 |  |
| DUKHCONP03Z4ARFF3370 |  | Aluminum Door | 20d | 2014-04-15 | 2014-05-07 | DUKHCONP03Z3ARFF3370, DUKHCONP03Z4ARFF3365 FF+5d, DUKHCONP03Z4ARFF3365 SS+7d | 0d |  | LABOR- SUBCONTRACTOR [27 h]; ALUMINIUM DOOR QTY [18 ea]; DOOR ERECTOR SK [72 h] | 47,668 | 45 | REM | P3P4IFFF45 | DUKHCON3PP4ARFF3370 | DUKHCONP03Z4ARFF3370 | DH | CON | P3 | Z4 | FIN | IF | FF | B10 | B10-D06 | RES-3 |  |
| DUKHCONP03Z4ARFF3380 |  | Aluminum windows | 20d | 2014-04-22 | 2014-05-14 | DUKHCONP03Z4ARFF3370 SS+6d, DUKHCONP03Z4ARFF3370 FF+6d | 11d |  | LABOR- SUBCONTRACTOR [72 h]; ALUMINIUM WINDOWS QTY [72 ea]; WINDOW ERECTOR SK [192 h] | 55,732 | 48 | REM | P3P4IFFF48 | DUKHCON3PP4ARFF3380 | DUKHCONP03Z4ARFF3380 | DH | CON | P3 | Z4 | FIN | IF | FF | B10 | B10-D06 | RES-3 |  |
| DUKHCONP03Z4ARFF3375 |  | Carpentry & Joinery Works | 25d | 2014-04-23 | 2014-05-21 | DUKHCONP03Z4ARFF3370 FF+5d, DUKHCONP03Z3ARFF3375, DUKHCONP03Z4ARFF3370 SS+7d | 0d |  | LABOR- SUBCONTRACTOR [108 h]; S.S.BALUSTRADE QTY [96 lm]; HANDRAIL ERECTOR SKILLED [192 h]; CABINET QTY [36 ea] | 128,678 | 51 |  | P3P4IFFF51 | DUKHCON3PP4ARFF3375 | DUKHCONP03Z4ARFF3375 | DH | CON | P3 | Z4 | FIN | IF | FF | B10 | B10-D05 | RES-3 |  |
| DUKHCONP03Z4ARFF3385 |  | Handrail & Balustrade | 20d | 2014-05-05 | 2014-05-27 | DUKHCONP03Z4ARFF3375 SS+5d, DUKHCONP03Z4ARFF3350 SS+7d, DUKHCONP03Z4ARFF3350 FF+7d, DUKHCONP03Z4ARFF3375 FF+5d | 0d |  | LABOR- SUBCONTRACTOR [75 h]; HANDRAIL ERECTOR SKILLED [200 h]; S.S.BALUSTRADE QTY [15 lm] | 16,268 | 57 |  | P3P4IFFF57 | DUKHCON3PP4ARFF3385 | DUKHCONP03Z4ARFF3385 | DH | CON | P3 | Z4 | FIN | IF | FF | B10 | B10-D06 | RES-3 |  |
| DUKHCONP03Z4ARFF3390 |  | Installation of Granite Counter Top | 20d | 2014-05-07 | 2014-05-29 | DUKHCONP03Z4ARFF3375 SS+7d, DUKHCONP03Z4ARFF3375 FF+7d | 0d |  | GRANITE MASON SK [96 h]; LABOR- SUBCONTRACTOR [36 h]; GRANITE COUNTER TOP QTY [24 ea] | 23,258 | 54 | REM | P3P4IFFF54 | DUKHCON3PP4ARFF3390 | DUKHCONP03Z4ARFF3390 | DH | CON | P3 | Z4 | FIN | IF | FF | B10 | B10-D10 | RES-3 |  |
| DUKHCONP03Z4ARFF3395 |  | Final Painting | 25d | 2014-05-17 | 2014-06-14 | DUKHCONP03Z4ARFF3360 FF+10d, DUKHCONP03Z4ARFF3380 SS+10d, DUKHCONP03Z4ARFF3380 FF+10d, DUKHCONP03Z4ARFF3375 SS+8d, DUKHCONP03Z4ARFF3365 FF+8d, DUKHCONP03Z4ARFF3335 SS+8d, DUKHCONP03Z4ARFF3365 SS+8d, DUKHCONP03Z4ARFF3375 FF+8d, DUKHCONP03Z4ACFF4625 FF+10d, DUKHCONP03Z4ARFF3335 FF+8d, DUKHCONP03Z4ARFF3355 SS+10d, DUKHCONP03Z4ARFF3385 SS+10d, DUKHCONP03Z4ARFF3350 FF+8d, DUKHCONP03Z4ARFF3355 FF+10d, DUKHCONP03Z4ARFF3350 SS+8d, DUKHCONP03Z4ARFF3360 SS+10d, DUKHCONP03Z4ARFF3385 FF+10d, DUKHCONP03Z3ARFF3395, DUKHCONP03Z4ARFF3330 SS+10d, DUKHCONP03Z4ARFF3390 SS+8d, DUKHCONP03Z4ACFF4625 SS+10d, DUKHCONP03Z4ARFF3330 FF+10d, DUKHCONP03Z4ARFF3390 FF+8d | 0d |  | LABOR- SUBCONTRACTOR [993.75 h]; PAINTERS SK [2651 h]; PAINT QTY [3313.5 Sqm] | 43,143 | 60 | REM | P3P4IFFF60 | DUKHCON3PP4ARFF3395 | DUKHCONP03Z4ARFF3395 | DH | CON | P3 | Z4 | FIN | IF | FF | B10 | B10-D11 | RES-3 | PNT |
|  | 20 | **ROOF** |  | 2014-01-15 | 2014-03-22 |  |  |  |  |  |  |  |  |  |  |  |  |  |  |  |  |  |  |  |  |  |
| DUKHCONP03Z4ARRF3600 |  | Block work | 20d | 2014-01-15 | 2014-02-06 | DUKHCONP03Z3ARRF3600, DUKHCONP03Z4STRF2055 SS+21d, DUKHCONP03Z4STRF2055 FF+21d | 67d | 0d | BLOCK MASON SK [312 h]; LABOR - CIVIL [175.5 h]; BLOCK QTY [156 Sqm] | 12,917 | 10 | REM | P3P4IFRF10 | DUKHCON3PP4ARRF3600 | DUKHCONP03Z4ARRF3600 | DH | CON | P3 | Z4 | FIN | IF | RF | B10 | B10-D03 | RES-3 |  |
| DUKHCONP03Z4ARRF3605 |  | Plastering work | 20d | 2014-01-23 | 2014-02-16 | DUKHCONP03Z4ARRF3600 FF+7d, DUKHCONP03Z4ARRF3600 SS+7d | 67d | 0d | PLASTER MASON SK [1248 h]; LABOR - CIVIL [702 h]; PLASTER QTY [780 Sqm] | 10,140 | 20 | REM | P3P4IFRF20 | DUKHCON3PP4ARRF3605 | DUKHCONP03Z4ARRF3605 | DH | CON | P3 | Z4 | FIN | IF | RF | B10 | B10-D10 | RES-3 |  |
| DUKHCONP03Z4ARRF3610 |  | Flooring screed | 15d | 2014-02-06 | 2014-02-24 | DUKHCONP03Z4ARRF3605 SS+7d, DUKHCONP03Z4ARRF3605 FF+7d | 72d | 0d | SCREED MASON SK [84 h]; LABOR - CIVIL [31.5 h]; FLOORING SCREED QTY [104 Sqm] | 3,435 | 30 | REM | P3P4IFRF30 | DUKHCON3PP4ARRF3610 | DUKHCONP03Z4ARRF3610 | DH | CON | P3 | Z4 | FIN | IF | RF | B10 | B10-D10 | RES-3 |  |
| DUKHCONP03Z4ARRF3695 |  | Painting | 20d | 2014-02-16 | 2014-03-10 | DUKHCONP03Z4ARRF3610 FF+7d, DUKHCONP03Z4ARRF3610 SS+7d | 72d | 0d | LABOR- SUBCONTRACTOR [144 h]; PAINT QTY [450 Sqm]; PAINTERS SK [360 h] | 6,202 | 40 |  | P3P4IFRF40 | DUKHCON3PP4ARRF3695 | DUKHCONP03Z4ARRF3695 | DH | CON | P3 | Z4 | FIN | IF | RF | B10 | B10-D11 | RES-3 |  |
| DUKHCONP03Z4ARRF3620 |  | Epoxy Painting | 15d | 2014-03-05 | 2014-03-22 | DUKHCONP03Z4ARRF3695 SS+10d, DUKHCONP03Z4ARRF3695 FF+10d | 72d |  | LABOR- SUBCONTRACTOR [6.75 h]; EPOXY QTY [33 Sqm]; EPOXY SK [18 h] | 2,352 | 50 | REM | P3P4IFRF50 | DUKHCON3PP4ARRF3620 | DUKHCONP03Z4ARRF3620 | DH | CON | P3 | Z4 | FIN | IF | RF | B10 | B10-D11 | RES-3 |  |

Notes:
- DUKHCONP03Z4ARFF3300: Expenses: P03-Block work 140077
- DUKHCONP03Z4ARFF3305: Expenses: P03-Finishes 33200
- DUKHCONP03Z4ARFF3310: Expenses: P03-Finishes 30918
- DUKHCONP03Z4ARFF3330: Expenses: P03-Painting and Decorating 18001
- DUKHCONP03Z4ARFF3315: Expenses: P03-Finishes 20805
- DUKHCONP03Z4ARFF3320: Expenses: P03-Finishes 48488
- DUKHCONP03Z4ARFF3325: Expenses: P03-Finishes 78425
- DUKHCONP03Z4ARFF3345: Expenses: P03-Finishes 22044
- DUKHCONP03Z4ARFF3335: Expenses: P03-Finishes 4202
- DUKHCONP03Z4ARFF3350: Expenses: P03-Finishes 2634
- DUKHCONP03Z4ARFF3360: Expenses: P03-Finishes 57405
- DUKHCONP03Z4ARFF3355: Expenses: P03-Finishes 8583
- DUKHCONP03Z4ARFF3365: Expenses: P03-Carpentry and Joinery 178634
- DUKHCONP03Z4ARFF3370: Expenses: P03-Metal work 47668
- DUKHCONP03Z4ARFF3380: Expenses: P03-Metal work 55732
- DUKHCONP03Z4ARFF3375: Expenses: P03-Carpentry and Joinery 128678
- DUKHCONP03Z4ARFF3385: Expenses: P03-Metal work 16268
- DUKHCONP03Z4ARFF3390: Expenses: P03-Finishes 23258
- DUKHCONP03Z4ARFF3395: Expenses: P03-Painting and Decorating 43143
- DUKHCONP03Z4ARRF3600: Expenses: P03-Block work 12917
- DUKHCONP03Z4ARRF3605: Expenses: P03-Finishes 10140
- DUKHCONP03Z4ARRF3610: Expenses: P03-Finishes 3435
- DUKHCONP03Z4ARRF3695: Expenses: P03-Painting and Decorating 6202
- DUKHCONP03Z4ARRF3620: Expenses: P03-Painting and Decorating 2352

| ID | WBS | Activity | Duration | Start | Finish | Predecessors | Total float | Free float | Resources | Cost | CODE | rem | P3 ACTID | P6 ID (old) | NP61D | PROJECT | PHASES | PACKAGE | PART | ELEMENTS | STEP | FLOORS | BILL NOS | BILL DIVISION | RES PACK |
| --- | --- | --- | --- | --- | --- | --- | --- | --- | --- | --- | --- | --- | --- | --- | --- | --- | --- | --- | --- | --- | --- | --- | --- | --- | --- |
|  | 15 | **EXTERNAL FINISHES** |  | 2014-01-21 | 2014-04-10 |  |  |  |  |  |  |  |  |  |  |  |  |  |  |  |  |  |  |  |  |
|  | 10 | **ROOF** |  | 2014-01-21 | 2014-03-27 |  |  |  |  |  |  |  |  |  |  |  |  |  |  |  |  |  |  |  |  |
| DUKHCONP03Z4ARRF3630 |  | Leveling Screed for Waterproofing | 25d | 2014-01-21 | 2014-02-19 | DUKHCONP03Z4STRF2060 SS+10d, DUKHCONP03Z3ARRF3630, DUKHCONP03Z4STRF2065 SS+10d, DUKHCONP03Z4STRF2060 FF+10d, DUKHCONP03Z4STRF2065 FF+10d | 62d | 0d | SCREED MASON SK [470 h]; LABOR- SUBCONTRACTOR [264.75 h]; ROOF WP SCREED QTY [1173 Sqm] | 46,704 | 10 | REM | P3P4EFRF10 | DUKHCON3PP4ARRF3630 | DUKHCONP03Z4ARRF3630 | DH | CON | P3 | Z4 | FIN | EF | RF | B10 | B10-D04 | RES-3 |
| DUKHCONP03Z4ARRF3635 |  | Laying of Waterproofing Membrane | 25d | 2014-01-25 | 2014-02-23 | DUKHCONP03Z4ARRF3630 FF+3d, DUKHCONP03Z4ARRF3630 SS+3d | 62d | 0d | LABOR- SUBCONTRACTOR [557.25 h]; ROOF WP MEMBRANE QTY [2784 Sqm]; WATERPROOFING SPECIALIST SK [1485 h] | 61,507 | 15 | REM | P3P4EFRF15 | DUKHCON3PP4ARRF3635 | DUKHCONP03Z4ARRF3635 | DH | CON | P3 | Z4 | FIN | EF | RF | B10 | B10-D04 | RES-3 |
| DUKHCONP03Z4ARRF3640 |  | Installation of Insulation & Protection | 25d | 2014-01-29 | 2014-02-27 | DUKHCONP03Z4ARRF3635 SS+4d, DUKHCONP03Z4ARRF3635 FF+4d | 62d | 0d | LABOR- SUBCONTRACTOR [352.5 h]; ROOF WP INSULATION QTY [2346 Sqm]; WATERPROOFING SPECIALIST SK [939 h] | 34,449 | 20 | REM | P3P4EFRF20 | DUKHCON3PP4ARRF3640 | DUKHCONP03Z4ARRF3640 | DH | CON | P3 | Z4 | FIN | EF | RF | B10 | B10-D04 | RES-3 |
| DUKHCONP03Z4ARRF3645 |  | Lime Stone Chips & Paving slab Installation | 25d | 2014-02-03 | 2014-03-04 | DUKHCONP03Z4ARRF3640 SS+4d, DUKHCONP03Z4ARRF3640 FF+4d | 62d | 0d | TILE MASON SK [95 h]; LABOR- SUBCONTRACTOR [202.5 h]; LIME STONE QTY [237 Sqm]; PRECAST PAVING SLAB QTY [1110 Sqm]; PRE CAST CONCRETE SK [444 h] | 84,498 | 25 | REM | P3P4EFRF25 | DUKHCON3PP4ARRF3645 | DUKHCONP03Z4ARRF3645 | DH | CON | P3 | Z4 | FIN | EF | RF | B10 | B10-D04 | RES-3 |
| DUKHCONP03Z4ARRF3650 |  | Install. of Gal. Frame & Aluminum Slat Screen | 25d | 2014-02-12 | 2014-03-12 | DUKHCONP03Z4ARRF3645 SS+7d, DUKHCONP03Z4ARRF3645 FF+7d | 62d | 0d | LABOR- SUBCONTRACTOR [378 h]; ALUMINIUM SCREEN QTY [189 Sqm]; DOOR ERECTOR SK [504 h] | 53,449 | 35 | REM | P3P4EFRF35 | DUKHCON3PP4ARRF3650 | DUKHCONP03Z4ARRF3650 | DH | CON | P3 | Z4 | FIN | EF | RF | B10 | B10-D06 | RES-3 |
| DUKHCONP03Z4ARRF3655 |  | Installation of Pumps Protection cabinets | 20d | 2014-02-27 | 2014-03-22 | DUKHCONP03Z4ARRF3650 SS+8d, DUKHCONP03Z3ARRF3655, DUKHCONP03Z4ARRF3650 FF+8d, DUKHCONP03Z4ARRF3645 SS+7d, DUKHCONP03Z4ARRF3645 FF+7d | 62d | 0d | LABOR- SUBCONTRACTOR [63 h]; CABINET QTY [21 ea]; JOINERY WORK SK [168 h] | 9,975 | 30 | REM | P3P4EFRF30 | DUKHCON3PP4ARRF3655 | DUKHCONP03Z4ARRF3655 | DH | CON | P3 | Z4 | FIN | EF | RF | B10 | B10-D04 | RES-3 |
| DUKHCONP03Z4ARRF3660 |  | Installation of Access Ladder | 15d | 2014-03-11 | 2014-03-27 | DUKHCONP03Z4ARRF3655 FF+5d, DUKHCONP03Z4ARRF3655 SS+5d | 67d |  | LABOR- SUBCONTRACTOR [54 h]; LADDER QTY [18 ea]; LADDER ERECTOR SK [144 h] | 19,196 | 40 | REM | P3P4EFRF40 | DUKHCON3PP4ARRF3660 | DUKHCONP03Z4ARRF3660 | DH | CON | P3 | Z4 | FIN | EF | RF | B10 | B10-D06 | RES-3 |
|  | 15 | **ELEVATION** |  | 2014-02-18 | 2014-04-10 |  |  |  |  |  |  |  |  |  |  |  |  |  |  |  |  |  |  |  |  |
| DUKHCONP03Z4AREL3665 |  | External Plastering | 25d | 2014-02-18 | 2014-03-18 | DUKHCONP03Z3AREL3665, DUKHCONP03Z4ARFF3305 FF+7d, DUKHCONP03Z4STRF2065 SS+7d, DUKHCONP03Z4STRF2065 FF+7d, DUKHCONP03Z4ARRF3605 SS+7d, DUKHCONP03Z4ARFF3305 SS+7d | 53d | 0d | PLASTER MASON SK [5862 h]; LABOR - CIVIL [3297.75 h]; EXTERNAL PLASTER QTY [2931 Sqm] | 71,672 | 10 | REM | P3P4EFEL10 | DUKHCON3PP4AREL3665 | DUKHCONP03Z4AREL3665 | DH | CON | P3 | Z4 | FIN | EF | EL | B10 | B10-D10 | RES-3 |
| DUKHCONP03Z4AREL3675 |  | GRC Panel Works | 20d | 2014-03-08 | 2014-03-30 | DUKHCONP03Z4AREL3665 SS+10d, DUKHCONP03Z4AREL3665 FF+10d, DUKHCONP03Z3AREL3675 | 55d | 0d | LABOR- SUBCONTRACTOR [150 h]; GRC SK [400 h] | 20,058 | 15 |  | P3P4EFEL18 | DUKHCON3PP4AREL3675 | DUKHCONP03Z4AREL3675 | DH | CON | P3 | Z4 | FIN | EF | EL | B10 | B10-D10 | RES-3 |
| DUKHCONP03Z4AREL3680 |  | External Painting | 20d | 2014-03-19 | 2014-04-10 | DUKHCONP03Z4ARRF3695 SS+4d, DUKHCONP03Z4AREL3675 SS+10d, DUKHCONP03Z3AREL3680, DUKHCONP03Z4ARRF3695 FF+4d, DUKHCONP03Z4AREL3675 FF+10d | 55d | 5d | LABOR- SUBCONTRACTOR [882 h]; PAINT QTY [2931 Sqm]; PAINTERS SK [2352 h] | 106,011 | 20 |  | P3P4EFEL20 | DUKHCON3PP4AREL3680 | DUKHCONP03Z4AREL3680 | DH | CON | P3 | Z4 | FIN | EF | EL | B10 | B10-D11 | RES-3 |
|  | 20 | **MEP WORKS** |  | 2013-08-04 | 2014-06-11 |  |  |  |  |  |  |  |  |  |  |  |  |  |  |  |  |  |  |  |  |
|  | 10 | **ELECTRICAL WORKS** |  | 2013-11-20 | 2014-06-11 |  |  |  |  |  |  |  |  |  |  |  |  |  |  |  |  |  |  |  |  |
|  | 10 | **GROUND FLOOR** |  | 2013-11-20 | 2014-03-31 |  |  |  |  |  |  |  |  |  |  |  |  |  |  |  |  |  |  |  |  |
| DUKHCONP03Z4ELGF4000 |  | Fixing of wall conduits & switch socket boxes | 25d | 2013-11-20 | 2013-12-19 | DUKHCONP03Z4ARGF3000 FF+5d, DUKHCONP03Z4ARGF3000 SS+5d | 45d | 0d | LABOR- SUBCONTRACTOR [162 h]; ELECTRICIANS SK [940.8 h]; SOCKET BOXES QTY [645 ea]; CODUITS QTY [180 lm] | 28,763 | 10 |  | P3P4EWGF10 | DUKHCON3PP4ELGF4000 | DUKHCONP03Z4ELGF4000 | DH | CON | P3 | Z4 | MEP | EW | GF | B10 | B10-D09 | RES-3 |
| DUKHCONP03Z4ELGF4005 |  | Cable tray & trunking installation | 20d | 2013-12-02 | 2013-12-25 | DUKHCONP03Z4ELGF4000 FF+5d, DUKHCONP03Z4ELGF4000 SS+5d, DUKHCONP03Z3ELGF4005 | 63d | 0d | LABOR- SUBCONTRACTOR [396 h]; ELECTRICIANS SK [1444.8 h]; CABLE TRAY QTY [255 lm] | 19,776 | 15 |  | P3P4EWGF15 | DUKHCON3PP4ELGF4005 | DUKHCONP03Z4ELGF4005 | DH | CON | P3 | Z4 | MEP | EW | GF | B10 | B10-D09 | RES-3 |
| DUKHCONP03Z4ELGF4010 |  | Installation of wiring & Main Cabling | 25d | 2013-12-10 | 2014-01-08 | DUKHCONP03Z4ELGF4005 SS+7d, DUKHCONP03Z4ELGF4005 FF+7d | 63d | 27d | LABOR- SUBCONTRACTOR [144 h]; ELECTRICIANS SK [504 h]; CABLE QTY [450 lm] | 105,208 | 20 |  | P3P4EWGF20 | DUKHCON3PP4ELGF4010 | DUKHCONP03Z4ELGF4010 | DH | CON | P3 | Z4 | MEP | EW | GF | B10 | B10-D09 | RES-3 |
| DUKHCONP03Z4ELGF4015 |  | Install. of CAMS & Fire Fighting Accessories | 25d | 2014-02-13 | 2014-03-13 | DUKHCONP03Z4ARGF3055 SS+7d, DUKHCONP03Z4ARGF3060 SS+7d, DUKHCONP03Z4ARGF3060 FF+7d, DUKHCONP03Z4ARGF3055 FF+7d, DUKHCONP03Z3ELGF4015 | 49d | 0d | LABOR- SUBCONTRACTOR [522 h]; MECHANICALS SK [939.6 h]; SMOKE DETECTOR POINTS QTY [150 ea]; FIRE EXTINGUISHER QTY [21 ea] | 64,049 | 35 |  | P3P4EWGF35 | DUKHCON3PP4ELGF4015 | DUKHCONP03Z4ELGF4015 | DH | CON | P3 | Z4 | MEP | EW | GF | B10 | B10-D09 | RES-3 |
| DUKHCONP03Z4ELGF4020 |  | Installation of DBS,MCCB Accessories. | 20d | 2014-02-19 | 2014-03-13 | DUKHCONP03Z4ELGF4010 SS+5d, DUKHCONP03Z4ARGF3055 SS+7d, DUKHCONP03Z4ELGF4010 FF+5d, DUKHCONP03Z4ARGF3060 FF+7d, DUKHCONP03Z4ARGF3060 SS+7d, DUKHCONP03Z4ARGF3055 FF+7d | 36d | 0d | LABOR- SUBCONTRACTOR [54 h]; ELECTRICIANS SK [168 h]; MCCB QTY [15 ea]; DB QTY [12 ea] | 82,222 | 25 |  | P3P4EWGF25 | DUKHCON3PP4ELGF4020 | DUKHCONP03Z4ELGF4020 | DH | CON | P3 | Z4 | MEP | EW | GF | B10 | B10-D09 | RES-3 |
| DUKHCONP03Z4ELGF4025 |  | Installation of Lighting fixtures & Accessories | 25d | 2014-03-03 | 2014-03-31 | DUKHCONP03Z4ELGF4020 SS+10d, DUKHCONP03Z4ARGF3055 FF+10d, DUKHCONP03Z4ELGF4020 FF+10d, DUKHCONP03Z4ARGF3055 SS+10d, DUKHCONP03Z3ELGF4025, DUKHCONP03Z4ARGF3060 FF+10d, DUKHCONP03Z4ARGF3060 SS+10d | 38d | 0d | LABOR- SUBCONTRACTOR [900 h]; ELECTRICIANS SK [1680 h]; LIGHTS QTY [744 ea] | 118,790 | 30 |  | P3P4EWGF30 | DUKHCON3PP4ELGF4025 | DUKHCONP03Z4ELGF4025 | DH | CON | P3 | Z4 | MEP | EW | GF | B10 | B10-D09 | RES-3 |
| DUKHCONP03Z4ELGF4030 |  | Installation of Telephone System | 20d | 2014-03-03 | 2014-03-25 | DUKHCONP03Z4ARGF3060 FF+5d, DUKHCONP03Z4ARGF3060 SS+5d, DUKHCONP03Z3ELGF4030, DUKHCONP03Z4ELGF4020 FF+10d, DUKHCONP03Z4ELGF4020 SS+10d | 36d | 5d | LABOR- SUBCONTRACTOR [72 h]; ELECTRICIANS SK [470.4 h]; TELEPHONE SOCKETS QTY [42 ea] | 25,360 | 40 |  | P3P4EWGF40 | DUKHCON3PP4ELGF4030 | DUKHCONP03Z4ELGF4030 | DH | CON | P3 | Z4 | MEP | EW | GF | B10 | B10-D09 | RES-3 |
|  | 15 | **FIRST FLOORS** |  | 2014-01-02 | 2014-05-18 |  |  |  |  |  |  |  |  |  |  |  |  |  |  |  |  |  |  |  |  |
| DUKHCONP03Z4ELFF4035 |  | Fixing of wall conduits & switch socket boxes | 25d | 2014-01-02 | 2014-01-30 | DUKHCONP03Z4ARFF3300 FF+5d, DUKHCONP03Z4ARFF3300 SS+5d | 11d | 0d | LABOR- SUBCONTRACTOR [162 h]; ELECTRICIANS SK [940.8 h]; SOCKET BOXES QTY [645 ea]; CODUITS QTY [180 lm] | 28,166 | 10 |  | P3P4EWFF10 | DUKHCON3PP4ELFF4035 | DUKHCONP03Z4ELFF4035 | DH | CON | P3 | Z4 | MEP | EW | FF | B10 | B10-D09 | RES-3 |
| DUKHCONP03Z4ELFF4040 |  | Cable tray & trunking installation | 20d | 2014-01-14 | 2014-02-05 | DUKHCONP03Z4ELFF4035 FF+5d, DUKHCONP03Z4ELFF4035 SS+5d | 33d | 3d | LABOR- SUBCONTRACTOR [396 h]; ELECTRICIANS SK [1444.8 h]; CABLE TRAY QTY [255 lm] | 19,770 | 15 |  | P3P4EWFF15 | DUKHCON3PP4ELFF4040 | DUKHCONP03Z4ELFF4040 | DH | CON | P3 | Z4 | MEP | EW | FF | B10 | B10-D09 | RES-3 |
| DUKHCONP03Z4ELFF4045 |  | Installation of wiring & Main Cabling | 25d | 2014-01-26 | 2014-02-24 | DUKHCONP03Z4ELFF4040 SS+7d, DUKHCONP03Z3ELFF4045, DUKHCONP03Z4ELFF4040 FF+7d | 30d | 0d | LABOR- SUBCONTRACTOR [144 h]; ELECTRICIANS SK [504 h]; CABLE QTY [444 lm] | 102,805 | 20 |  | P3P4EWFF20 | DUKHCON3PP4ELFF4045 | DUKHCONP03Z4ELFF4045 | DH | CON | P3 | Z4 | MEP | EW | FF | B10 | B10-D09 | RES-3 |
| DUKHCONP03Z4ELFF4050 |  | Installation of Telephone System | 25d | 2014-04-01 | 2014-04-29 | DUKHCONP03Z4ARFF3360 FF+5d, DUKHCONP03Z4MSEX5010 FF, DUKHCONP03Z4ELGF4030 SS+10d, DUKHCONP03Z4ARFF3355 FF+5d, DUKHCONP03Z4ARFF3360 SS+5d, DUKHCONP03Z4ELGF4030 FF+10d, DUKHCONP03Z4ARFF3355 SS+5d | 21d | 19d | LABOR- SUBCONTRACTOR [72 h]; ELECTRICIANS SK [470.4 h]; TELEPHONE SOCKETS QTY [42 ea] | 24,744 | 40 |  | P3P4EWFF40 | DUKHCON3PP4ELFF4050 | DUKHCONP03Z4ELFF4050 | DH | CON | P3 | Z4 | MEP | EW | FF | B10 | B10-D09 | RES-3 |
| DUKHCONP03Z4ELFF4055 |  | Install. of CAMS & Fire Fighting Accessories | 25d | 2014-04-03 | 2014-05-01 | DUKHCONP03Z4ELGF4015 SS+5d, DUKHCONP03Z4ARFF3355 FF+7d, DUKHCONP03Z4ELGF4015 FF+5d, DUKHCONP03Z4ARFF3360 FF+7d, DUKHCONP03Z3ELFF4055, DUKHCONP03Z4ARFF3355 SS+7d, DUKHCONP03Z4ARFF3360 SS+7d | 12d | 0d | LABOR- SUBCONTRACTOR [576 h]; MECHANICALS SK [1036.8 h]; SMOKE DETECTOR POINTS QTY [147 ea]; FIRE EXTINGUISHER QTY [42 ea] | 64,049 | 35 |  | P3P4EWFF35 | DUKHCON3PP4ELFF4055 | DUKHCONP03Z4ELFF4055 | DH | CON | P3 | Z4 | MEP | EW | FF | B10 | B10-D09 | RES-3 |
| DUKHCONP03Z4ELFF4060 |  | Installation of DBS,MCCB Accessories. | 20d | 2014-04-07 | 2014-04-29 | DUKHCONP03Z4ELFF4045 SS+5d, DUKHCONP03Z4ARFF3355 SS+8d, DUKHCONP03Z4ARFF3360 FF+8d, DUKHCONP03Z4ARFF3360 SS+8d, DUKHCONP03Z3ELFF4060, DUKHCONP03Z4ELFF4045 FF+5d, DUKHCONP03Z4ARFF3355 FF+8d | 2d | 0d | LABOR- SUBCONTRACTOR [54 h]; ELECTRICIANS SK [134.4 h]; MCCB QTY [15 ea]; DB QTY [9 ea] | 9,226 | 25 |  | P3P4EWFF25 | DUKHCON3PP4ELFF4060 | DUKHCONP03Z4ELFF4060 | DH | CON | P3 | Z4 | MEP | EW | FF | B10 | B10-D09 | RES-3 |
| DUKHCONP03Z4ELFF4065 |  | Installation of Lighting fixtures & Accessories | 25d | 2014-04-20 | 2014-05-18 | DUKHCONP03Z4ELGF4025 SS+5d, DUKHCONP03Z4ARFF3355 SS+10d, DUKHCONP03Z4ELFF4060 FF+11d, DUKHCONP03Z4ARFF3355 FF+10d, DUKHCONP03Z4ELGF4025 FF+5d, DUKHCONP03Z4ARFF3360 FF+10d, DUKHCONP03Z3ELFF4065, DUKHCONP03Z4ELFF4060 SS+11d, DUKHCONP03Z4ARFF3360 SS+10d | 2d | 0d | LABOR- SUBCONTRACTOR [882 h]; ELECTRICIANS SK [1646.4 h]; LIGHTS QTY [741 ea] | 118,791 | 30 |  | P3P4EWFF30 | DUKHCON3PP4ELFF4065 | DUKHCONP03Z4ELFF4065 | DH | CON | P3 | Z4 | MEP | EW | FF | B10 | B10-D09 | RES-3 |

Notes:
- DUKHCONP03Z4ARRF3630: Expenses: P03-Roofing 46704
- DUKHCONP03Z4ARRF3635: Expenses: P03-Roofing 61507
- DUKHCONP03Z4ARRF3640: Expenses: P03-Roofing 34449
- DUKHCONP03Z4ARRF3645: Expenses: P03-Roofing 84498
- DUKHCONP03Z4ARRF3650: Expenses: P03-Metal work 53449
- DUKHCONP03Z4ARRF3655: Expenses: P03-Roofing 9975
- DUKHCONP03Z4ARRF3660: Expenses: P03-Metal work 19196
- DUKHCONP03Z4AREL3665: Expenses: P03-Finishes 71672
- DUKHCONP03Z4AREL3675: Expenses: P03-Finishes 20058
- DUKHCONP03Z4AREL3680: Expenses: P03-Painting and Decorating 106011
- DUKHCONP03Z4ELGF4000: Expenses: P03-Electrical Installations 28763
- DUKHCONP03Z4ELGF4005: Expenses: P03-Electrical Installations 19776
- DUKHCONP03Z4ELGF4010: Expenses: P03-Electrical Installations 105208
- DUKHCONP03Z4ELGF4015: Expenses: P03-Electrical Installations 64049
- DUKHCONP03Z4ELGF4020: Expenses: P03-Electrical Installations 82222
- DUKHCONP03Z4ELGF4025: Expenses: P03-Electrical Installations 118790
- DUKHCONP03Z4ELGF4030: Expenses: P03-Electrical Installations 25360
- DUKHCONP03Z4ELFF4035: Expenses: P03-Electrical Installations 28166
- DUKHCONP03Z4ELFF4040: Expenses: P03-Electrical Installations 19770
- DUKHCONP03Z4ELFF4045: Expenses: P03-Electrical Installations 102805
- DUKHCONP03Z4ELFF4050: Expenses: P03-Electrical Installations 24744
- DUKHCONP03Z4ELFF4055: Expenses: P03-Electrical Installations 64049
- DUKHCONP03Z4ELFF4060: Expenses: P03-Electrical Installations 9226
- DUKHCONP03Z4ELFF4065: Expenses: P03-Electrical Installations 118791

| ID | WBS | Activity | Duration | Start | Finish | Predecessors | Total float | Free float | Resources | Cost | CODE | P3 ACTID | P6 ID (old) | NP61D | PROJECT | PHASES | PACKAGE | PART | ELEMENTS | STEP | FLOORS | BILL NOS | BILL DIVISION | RES PACK |
| --- | --- | --- | --- | --- | --- | --- | --- | --- | --- | --- | --- | --- | --- | --- | --- | --- | --- | --- | --- | --- | --- | --- | --- | --- |
|  | 20 | **ROOF** |  | 2014-05-10 | 2014-06-11 |  |  |  |  |  |  |  |  |  |  |  |  |  |  |  |  |  |  |  |
| DUKHCONP03Z4ELRF4070 |  | Installation of Isolator | 18d | 2014-05-10 | 2014-05-29 | DUKHCONP03Z4ELFF4050 FF+7d, DUKHCONP03Z4ELFF4045 FF+10d, DUKHCONP03Z4ELFF4065 SS+10d, DUKHCONP03Z4ARRF3645 SS+7d, DUKHCONP03Z4ELFF4045 SS+10d, DUKHCONP03Z4ELFF4065 FF+10d, DUKHCONP03Z4ELFF4050 SS+5d, DUKHCONP03Z4ARRF3645 FF+7d | 2d | 0d | LABOR- SUBCONTRACTOR [108 h]; ELECTRICIANS SK [201.6 h]; ISOLATOR QTY [36 ea] | 41,395 | 10 | P3P4EWRF10 | DUKHCON3PP4ELRF4070 | DUKHCONP03Z4ELRF4070 | DH | CON | P3 | Z4 | MEP | EW | RF | B10 | B10-D09 | RES-3 |
| DUKHCONP03Z4ELRF4075 |  | Installation of TV Dish Antenna | 23d | 2014-05-17 | 2014-06-11 | DUKHCONP03Z4ELRF4070 FF+6d, DUKHCONP03Z4ELRF4070 SS+6d | 2d |  | LABOR- SUBCONTRACTOR [1332 h]; ELECTRICIANS SK [3393.6 h]; CONTROL BOX QTY [162 ea]; SWITCHING BOX QTY [141 ea] | 30,342 | 15 | P3P4EWRF15 | DUKHCON3PP4ELRF4075 | DUKHCONP03Z4ELRF4075 | DH | CON | P3 | Z4 | MEP | EW | RF | B10 | B10-D09 | RES-3 |
|  | 15 | **PLUMBING, DRAINAGE & FIRE FIGHTING WORKS** |  | 2013-08-04 | 2014-05-28 |  |  |  |  |  |  |  |  |  |  |  |  |  |  |  |  |  |  |  |
|  | 10 | **GROUND FLOOR** |  | 2013-08-04 | 2014-03-31 |  |  |  |  |  |  |  |  |  |  |  |  |  |  |  |  |  |  |  |
| DUKHCONP03Z4PLUG4300 |  | Drainage / Storm Pipes in Grade Slab | 20d | 2013-08-04 | 2013-08-29 | DUKHCONP03Z4STUG1040 SS+10d, DUKHCONP03Z4STUG1040 FF+10d | 0d |  | LABOR- SUBCONTRACTOR [36 h]; MECHANICALS SK [129.6 h]; DRAINAGE PIPES QTY [234 lm] | 14,418 | 10 | P3P4PLUG10 | DUKHCON3PP4PLUG4300 | DUKHCONP03Z4PLUG4300 | DH | CON | P3 | Z4 | ST | SB | UG | B10 | B10-D07 | RES-3 |
| DUKHCONP03Z4PLGF4305 |  | Installation of Plumbing pipes & testing | 18d | 2013-12-01 | 2013-12-22 | DUKHCONP03Z4ARGF3000 FF+7d, DUKHCONP03Z3PLGF4305, DUKHCONP03Z4ARGF3000 SS+7d | 36d | 0d | LABOR- SUBCONTRACTOR [594 h]; MECHANICALS SK [2138.4 h]; PLUMB PIPES QTY [1986 lm] | 84,763 | 10 | P3P4PLGF10 | DUKHCON3PP4PLGF4305 | DUKHCONP03Z4PLGF4305 | DH | CON | P3 | Z4 | MEP | PL | GF | B10 | B10-D07 | RES-3 |
| DUKHCONP03Z4PLGF4310 |  | Installation of Drainage pipes &testing | 18d | 2013-12-01 | 2013-12-22 | DUKHCONP03Z4ARGF3000 FF+7d, DUKHCONP03Z4PLGF4305 FF, DUKHCONP03Z4PLGF4305 SS, DUKHCONP03Z4ARGF3000 SS+7d | 57d | 17d | LABOR- SUBCONTRACTOR [54 h]; MECHANICALS SK [162 h]; DRAINAGE PIPES QTY [324 lm] | 1,912 | 15 | P3P4PLGF15 | DUKHCON3PP4PLGF4310 | DUKHCONP03Z4PLGF4310 | DH | CON | P3 | Z4 | MEP | PL | GF | B10 | B10-D07 | RES-3 |
| DUKHCONP03Z4PLGF4315 |  | Sanitary Fittings & Accessories | 20d | 2014-03-03 | 2014-03-25 | DUKHCONP03Z4ARGF3065 FF+5d, DUKHCONP03Z3PLGF4315, DUKHCONP03Z4PLGF4310 FF+5d, DUKHCONP03Z4PLGF4310 SS+5d, DUKHCONP03Z4ARGF3065 SS+5d | 64d | 0d | LABOR- SUBCONTRACTOR [126 h]; MECHANICALS SK [226.8 h]; SANITARY ACC QTY [216 ea] | 92,011 | 20 | P3P4PLGF20 | DUKHCON3PP4PLGF4315 | DUKHCONP03Z4PLGF4315 | DH | CON | P3 | Z4 | MEP | PL | GF | B10 | B10-D07 | RES-3 |
| DUKHCONP03Z4PLGF4320 |  | Installation of Water Heater | 15d | 2014-03-15 | 2014-03-31 | DUKHCONP03Z3PLGF4320, DUKHCONP03Z4ARGF3060 SS+5d, DUKHCONP03Z4PLGF4315 FF+5d, DUKHCONP03Z4ARGF3060 FF+5d, DUKHCONP03Z4PLGF4315 SS+5d | 64d | 10d | LABOR- SUBCONTRACTOR [18 h]; MECHANICALS SK [32.4 h]; WATER HEATER QTY [6 ea] | 1,055 | 25 | P3P4PLGF25 | DUKHCON3PP4PLGF4320 | DUKHCONP03Z4PLGF4320 | DH | CON | P3 | Z4 | MEP | PL | GF | B10 | B10-D07 | RES-3 |
|  | 15 | **FIRST FLOORS** |  | 2014-01-12 | 2014-05-11 |  |  |  |  |  |  |  |  |  |  |  |  |  |  |  |  |  |  |  |
| DUKHCONP03Z4PLFF4325 |  | Installation of Plumbing pipes & testing | 18d | 2014-01-12 | 2014-02-01 | DUKHCONP03Z4ARFF3300 FF+6d, DUKHCONP03Z4ARFF3300 SS+6d | 0d |  | LABOR- SUBCONTRACTOR [594 h]; MECHANICALS SK [2138.4 h]; PLUMB PIPES QTY [1986 lm] | 78,473 | 10 | P3P4PLFF10 | DUKHCON3PP4PLFF4325 | DUKHCONP03Z4PLFF4325 | DH | CON | P3 | Z4 | MEP | PL | FF | B10 | B10-D07 | RES-3 |
| DUKHCONP03Z4PLFF4330 |  | Installation of Drainage pipes & testing | 18d | 2014-01-13 | 2014-02-02 | DUKHCONP03Z3PLFF4330, DUKHCONP03Z4PLFF4325 SS, DUKHCONP03Z4ARFF3300 FF+7d, DUKHCONP03Z4PLFF4325 FF, DUKHCONP03Z4ARFF3300 SS+7d | 26d | 7d | LABOR- SUBCONTRACTOR [54 h]; MECHANICALS SK [162 h]; DRAINAGE PIPES QTY [324 lm] | 1,639 | 15 | P3P4PLFF15 | DUKHCON3PP4PLFF4330 | DUKHCONP03Z4PLFF4330 | DH | CON | P3 | Z4 | MEP | PL | FF | B10 | B10-D07 | RES-3 |
| DUKHCONP03Z4PLFF4335 |  | Sanitary Fittings & Accessories | 20d | 2014-04-13 | 2014-05-05 | DUKHCONP03Z4PLFF4330 FF+5d, DUKHCONP03Z4ARFF3365 SS+5d, DUKHCONP03Z4PLFF4330 SS+5d, DUKHCONP03Z4ARFF3365 FF+5d | 14d | 0d | LABOR- SUBCONTRACTOR [126 h]; MECHANICALS SK [226.8 h]; SANITARY ACC QTY [216 ea] | 92,011 | 20 | P3P4PLFF20 | DUKHCON3PP4PLFF4335 | DUKHCONP03Z4PLFF4335 | DH | CON | P3 | Z4 | MEP | PL | FF | B10 | B10-D07 | RES-3 |
| DUKHCONP03Z4PLFF4340 |  | Installation of Water Heater | 15d | 2014-04-24 | 2014-05-11 | DUKHCONP03Z4ARFF3360 SS+5d, DUKHCONP03Z4ARFF3360 FF+5d, DUKHCONP03Z4ARFF3355 FF+5d, DUKHCONP03Z3PLFF4340, DUKHCONP03Z4ARFF3355 SS+5d, DUKHCONP03Z4PLFF4335 FF+5d, DUKHCONP03Z4PLFF4335 SS+5d | 14d | 0d | LABOR- SUBCONTRACTOR [18 h]; MECHANICALS SK [32.4 h]; WATER HEATER QTY [6 ea] | 1,055 | 25 | P3P4PLFF25 | DUKHCON3PP4PLFF4340 | DUKHCONP03Z4PLFF4340 | DH | CON | P3 | Z4 | MEP | PL | FF | B10 | B10-D07 | RES-3 |
|  | 20 | **ROOF** |  | 2014-02-06 | 2014-05-28 |  |  |  |  |  |  |  |  |  |  |  |  |  |  |  |  |  |  |  |
| DUKHCONP03Z4PLRF4345 |  | Installation of Plumbing pipes & fittings | 15d | 2014-02-06 | 2014-02-24 | DUKHCONP03Z4ARRF3605 SS+7d, DUKHCONP03Z4ARRF3605 FF+7d | 71d | 18d | LABOR- SUBCONTRACTOR [360 h]; MECHANICALS SK [1263.6 h]; PLUMB PIPES QTY [1155 lm] | 12,374 | 10 | P3P4PLRF10 | DUKHCON3PP4PLRF4345 | DUKHCONP03Z4PLRF4345 | DH | CON | P3 | Z4 | MEP | PL | RF | B10 | B10-D07 | RES-3 |
| DUKHCONP03Z4PLRF4350 |  | Installation of Rain water Pipes | 15d | 2014-03-10 | 2014-03-26 | DUKHCONP03Z4PLFF4330 SS+5d, DUKHCONP03Z4AREL3665 FF+7d, DUKHCONP03Z4PLFF4330 FF+5d, DUKHCONP03Z4ARRF3645 SS+5d, DUKHCONP03Z4ARRF3645 FF+5d, DUKHCONP03Z4AREL3665 SS+7d, DUKHCONP03Z3PLRF4350, DUKHCONP03Z4PLRF4345 FF+8d, DUKHCONP03Z4PLRF4345 SS+8d | 53d | 10d | LABOR- SUBCONTRACTOR [18 h]; MECHANICALS SK [64.8 h]; DRAINAGE PIPES QTY [105 lm] | 88,600 | 15 | P3P4PLRF15 | DUKHCON3PP4PLRF4350 | DUKHCONP03Z4PLRF4350 | DH | CON | P3 | Z4 | MEP | PL | RF | B10 | B10-D07 | RES-3 |
| DUKHCONP03Z4PLRF4355 |  | Roof Water Tank Installation & Connections | 25d | 2014-04-30 | 2014-05-28 | DUKHCONP03Z4PLRF4345 FF+8d, DUKHCONP03Z4PLRF4345 SS+8d, DUKHCONP03Z4PLFF4340 SS+5d, DUKHCONP03Z4PLRF4350 FF+5d, DUKHCONP03Z4PLRF4350 SS+5d, DUKHCONP03Z4ARRF3655 FF+5d, DUKHCONP03Z3PLRF4355, DUKHCONP03Z4PLFF4340 FF+5d, DUKHCONP03Z4ARRF3655 SS+5d | 14d | 2d | LABOR- SUBCONTRACTOR [36 h]; MECHANICALS SK [64.8 h]; WATER TANK QTY [6 ea] | 879,962 | 20 | P3P4PLRF20 | DUKHCON3PP4PLRF4355 | DUKHCONP03Z4PLRF4355 | DH | CON | P3 | Z4 | MEP | PL | RF | B10 | B10-D07 | RES-3 |
|  | 20 | **AC WORKS** |  | 2013-12-22 | 2014-05-28 |  |  |  |  |  |  |  |  |  |  |  |  |  |  |  |  |  |  |  |
|  | 10 | **GROUND FLOOR** |  | 2013-12-22 | 2014-03-29 |  |  |  |  |  |  |  |  |  |  |  |  |  |  |  |  |  |  |  |
| DUKHCONP03Z4ACGF4600 |  | Installation AC Pipes | 20d | 2013-12-22 | 2014-01-13 | DUKHCONP03Z4ARGF3005 SS+7d, DUKHCONP03Z3ACGF4600, DUKHCONP03Z4ARGF3005 FF+7d | 67d | 5d | LABOR- SUBCONTRACTOR [72 h]; AC TECHNICIAN SK [268.8 h]; AC PIPES QTY [684 lm] | 7,244 | 10 | P3P4ACGF10 | DUKHCON3PP4ACGF4600 | DUKHCONP03Z4ACGF4600 | DH | CON | P3 | Z4 | MEP | AC | GF | B10 | B10-D08 | RES-3 |
| DUKHCONP03Z4ACGF4605 |  | Fixing of Ventilation Equipments | 25d | 2014-02-13 | 2014-03-13 | DUKHCONP03Z4ARGF3055 SS+7d, DUKHCONP03Z4ACGF4600 SS+10d, DUKHCONP03Z4ACGF4600 FF+10d, DUKHCONP03Z4ARGF3055 FF+7d, DUKHCONP03Z3ACGF4605, DUKHCONP03Z4ARGF3060 FF+7d, DUKHCONP03Z4ARGF3060 SS+7d | 51d | 0d | LABOR- SUBCONTRACTOR [36 h]; AC TECHNICIAN SK [100.8 h]; VENTILIATION EQP QTY [39 ea] | 27,766 | 15 | P3P4ACGF15 | DUKHCON3PP4ACGF4605 | DUKHCONP03Z4ACGF4605 | DH | CON | P3 | Z4 | MEP | AC | GF | B10 | B10-D08 | RES-3 |
| DUKHCONP03Z4ACGF4610 |  | Fixing of Split AC | 20d | 2014-03-06 | 2014-03-29 | DUKHCONP03Z4ACGF4605 SS+13d, DUKHCONP03Z3ACGF4610, DUKHCONP03Z4ACGF4605 FF+13d | 51d | 5d | LABOR- SUBCONTRACTOR [126 h]; AC TECHNICIAN SK [235.2 h]; SPILIT UNIT QTY [39 ea] | 40,463 | 20 | P3P4ACGF20 | DUKHCON3PP4ACGF4610 | DUKHCONP03Z4ACGF4610 | DH | CON | P3 | Z4 | MEP | AC | GF | B10 | B10-D08 | RES-3 |

Notes:
- DUKHCONP03Z4ELRF4070: Expenses: P03-Electrical Installations 41395
- DUKHCONP03Z4ELRF4075: Expenses: P03-Electrical Installations 30342
- DUKHCONP03Z4PLUG4300: Expenses: P03-Plumbing and Drainage works 14418
- DUKHCONP03Z4PLGF4305: Expenses: P03-Plumbing and Drainage works 84763
- DUKHCONP03Z4PLGF4310: Expenses: P03-Plumbing and Drainage works 1912
- DUKHCONP03Z4PLGF4315: Expenses: P03-Plumbing and Drainage works 92011
- DUKHCONP03Z4PLGF4320: Expenses: P03-Plumbing and Drainage works 1055
- DUKHCONP03Z4PLFF4325: Expenses: P03-Plumbing and Drainage works 78473
- DUKHCONP03Z4PLFF4330: Expenses: P03-Plumbing and Drainage works 1639
- DUKHCONP03Z4PLFF4335: Expenses: P03-Plumbing and Drainage works 92011
- DUKHCONP03Z4PLFF4340: Expenses: P03-Plumbing and Drainage works 1055
- DUKHCONP03Z4PLRF4345: Expenses: P03-Plumbing and Drainage works 12374
- DUKHCONP03Z4PLRF4350: Expenses: P03-Plumbing and Drainage works 88600
- DUKHCONP03Z4PLRF4355: Expenses: P03-Plumbing and Drainage works 879962
- DUKHCONP03Z4ACGF4600: Expenses: P03-Air-conditioning and Ventilation works 7244
- DUKHCONP03Z4ACGF4605: Expenses: P03-Air-conditioning and Ventilation works 27766
- DUKHCONP03Z4ACGF4610: Expenses: P03-Air-conditioning and Ventilation works 40463

| ID | WBS | Activity | Duration | Start | Finish | Predecessors | Total float | Free float | Resources | Cost | CODE | P3 ACTID | P6 ID (old) | NP61D | PROJECT | PHASES | PACKAGE | PART | ELEMENTS | STEP | FLOORS | BILL NOS | BILL DIVISION | RES PACK |
| --- | --- | --- | --- | --- | --- | --- | --- | --- | --- | --- | --- | --- | --- | --- | --- | --- | --- | --- | --- | --- | --- | --- | --- | --- |
|  | 15 | **FIRST FLOORS** |  | 2014-02-04 | 2014-05-17 |  |  |  |  |  |  |  |  |  |  |  |  |  |  |  |  |  |  |  |
| DUKHCONP03Z4ACFF4615 |  | Installation AC Pipes | 20d | 2014-02-04 | 2014-02-27 | DUKHCONP03Z3ACFF4615, DUKHCONP03Z4ARFF3305 FF+7d, DUKHCONP03Z4ARFF3305 SS+7d | 32d | 1d | LABOR- SUBCONTRACTOR [72 h]; AC TECHNICIAN SK [268.8 h]; AC PIPES QTY [684 lm] | 6,520 | 10 | P3P4ACFF10 | DUKHCON3PP4ACFF4615 | DUKHCONP03Z4ACFF4615 | DH | CON | P3 | Z4 | MEP | AC | FF | B10 | B10-D08 | RES-3 |
| DUKHCONP03Z4ACFF4620 |  | Fixing of Ventilation Equipments | 25d | 2014-04-03 | 2014-05-01 | DUKHCONP03Z4ACFF4615 FF+10d, DUKHCONP03Z4ARFF3355 SS+7d, DUKHCONP03Z4ARFF3360 FF+7d, DUKHCONP03Z4ARFF3355 FF+7d, DUKHCONP03Z4ARFF3360 SS+7d, DUKHCONP03Z3ACFF4620, DUKHCONP03Z4ACFF4615 SS+10d | 9d | 0d | LABOR- SUBCONTRACTOR [36 h]; AC TECHNICIAN SK [100.8 h]; VENTILIATION EQP QTY [39 ea] | 23,247 | 15 | P3P4ACFF15 | DUKHCON3PP4ACFF4620 | DUKHCONP03Z4ACFF4620 | DH | CON | P3 | Z4 | MEP | AC | FF | B10 | B10-D08 | RES-3 |
| DUKHCONP03Z4ACFF4625 |  | Fixing of Split AC | 20d | 2014-04-24 | 2014-05-17 | DUKHCONP03Z4ACFF4620 SS+13d, DUKHCONP03Z3ACFF4625, DUKHCONP03Z4ACFF4620 FF+13d | 9d | 0d | LABOR- SUBCONTRACTOR [126 h]; AC TECHNICIAN SK [235.2 h]; SPILIT UNIT QTY [39 ea] | 42,227 | 20 | P3P4ACFF20 | DUKHCON3PP4ACFF4625 | DUKHCONP03Z4ACFF4625 | DH | CON | P3 | Z4 | MEP | AC | FF | B10 | B10-D08 | RES-3 |
|  | 20 | **ROOF** |  | 2014-02-15 | 2014-05-28 |  |  |  |  |  |  |  |  |  |  |  |  |  |  |  |  |  |  |  |
| DUKHCONP03Z4ACRF4630 |  | Installation of Refrigerant Pipes | 25d | 2014-02-15 | 2014-03-15 | DUKHCONP03Z3ACRF4630, DUKHCONP03Z4ACFF4615 FF+7d, DUKHCONP03Z4ARRF3645 SS+7d, DUKHCONP03Z4ARRF3645 FF+7d, DUKHCONP03Z4ACGF4600 FF+7d, DUKHCONP03Z4ACGF4600 SS+7d, DUKHCONP03Z4ACFF4615 SS+7d | 73d | 0d | LABOR- SUBCONTRACTOR [36 h]; AC TECHNICIAN SK [134.4 h]; AC PIPES QTY [342 lm] | 20,514 | 10 | P3P4ACRF10 | DUKHCON3PP4ACRF4630 | DUKHCONP03Z4ACRF4630 | DH | CON | P3 | Z4 | MEP | AC | RF | B10 | B10-D08 | RES-3 |
| DUKHCONP03Z4ACRF4635 |  | Installation of Condensing Unit | 25d | 2014-04-30 | 2014-05-28 | DUKHCONP03Z4ACFF4625 FF+5d, DUKHCONP03Z4ACGF4610 FF+5d, DUKHCONP03Z3ACRF4635, DUKHCONP03Z4ACGF4610 SS+5d, DUKHCONP03Z4ACFF4625 SS+5d, DUKHCONP03Z4ACRF4630 FF+5d, DUKHCONP03Z4ACRF4630 SS+5d | 14d | 0d | LABOR- SUBCONTRACTOR [126 h]; AC TECHNICIAN SK [436.8 h]; AC UNITS QTY [78 ea] | 106,501 | 15 | P3P4ACRF15 | DUKHCON3PP4ACRF4635 | DUKHCONP03Z4ACRF4635 | DH | CON | P3 | Z4 | MEP | AC | RF | B10 | B10-D08 | RES-3 |
|  | 25 | **EXTERNAL WORKS** |  | 2014-01-02 | 2014-05-22 |  |  |  |  |  |  |  |  |  |  |  |  |  |  |  |  |  |  |  |
|  | 10 | **MISCELLANEOUS** |  | 2014-01-02 | 2014-04-15 |  |  |  |  |  |  |  |  |  |  |  |  |  |  |  |  |  |  |  |
| DUKHCONP03Z4MSEX5000 |  | Construction of Manholes | 25d | 2014-01-02 | 2014-01-30 | DUKHCONP03Z4STRF2055 SS+10d, DUKHCONP03Z4PLGF4310 SS+10d, DUKHCONP03Z4PLGF4310 FF+10d, DUKHCONP03Z4STRF2055 FF+10d | 47d | 0d | LABOR- SUBCONTRACTOR [36 h]; CABINET QTY [12 ea]; JOINERY WORK SK [96 h] | 6,808 | 25 | P3P4MSEX25 | DUKHCON3PP4MS005000 | DUKHCONP03Z4MSEX5000 | DH | CON | P3 | Z4 | EX | MS |  | B10 | B10-D12 | RES-3 |
| DUKHCONP03Z4MSEX5005 |  | Construction of Soak pit, Chambers | 25d | 2014-01-16 | 2014-02-15 | DUKHCONP03Z4MSEX5000 SS+12d, DUKHCONP03Z4MSEX5000 FF+12d | 47d | 0d | LABOR - CIVIL [75 h]; MANHOLES SK [200 h] | 12,087 | 30 | P3P4MSEX30 | DUKHCON3PP4MS005005 | DUKHCONP03Z4MSEX5005 | DH | CON | P3 | Z4 | EX | MS |  | B10 | B10-D12 | RES-3 |
| DUKHCONP03Z4MSEX5015 |  | Construction of grease Trap | 20d | 2014-02-05 | 2014-03-01 | DUKHCONP03Z4MSEX5005 FF+12d, DUKHCONP03Z4MSEX5005 SS+12d | 47d | 0d | LABOR- SUBCONTRACTOR [18 h]; GREASE TRAP QTY [6 lm]; HANDRAIL ERECTOR SKILLED [24 h] | 17,022 | 20 | P3P4MSEX20 | DUKHCON3PP4MS005015 | DUKHCONP03Z4MSEX5015 | DH | CON | P3 | Z4 | EX | MS |  | B10 | B10-D12 | RES-3 |
| DUKHCONP03Z4MSEX5010 |  | Telephone cable laying | 25d | 2014-03-02 | 2014-03-30 | DUKHCONP03Z4MSEX5015 | 47d | 26d | LABOR - CIVIL [125 h]; LABOR- SUBCONTRACTOR [125 h]; ELECTRICIANS SK [125 h]; CONCRETE MASON SK [125 h] | 1,114 |  | P3P4MSEX40 | DUKHCON3PP4MS005010 | DUKHCONP03Z4MSEX5010 | DH | CON | P3 | Z4 | EX | MS |  | B10 | B10-D12 | RES-3 |
| DUKHCONP03Z4MSEX5020 |  | Construction Entrance Ramp | 25d | 2014-03-06 | 2014-04-03 | DUKHCONP03Z4STRF2055 SS, DUKHCONP03Z4STRF2055 FF, DUKHCONP03Z3MSEX5020 | 21d | 0d | SCREED MASON SK [48 h]; CONCRETE MASON SK [48 h]; INTERLOCK MASON SK [48 h]; LABOR - CIVIL [54 h]; LABOR- SUBCONTRACTOR [18 h]; SCREED QTY [51 Sqm]; CONCRETE QTY [27 Cum]; INTERLOCK QTY [60 Sqm] | 10,659 | 10 | P3P4MSEX10 | DUKHCON3PP4MS005020 | DUKHCONP03Z4MSEX5020 | DH | CON | P3 | Z4 | EX | MS |  | B10 | B10-D12 | RES-3 |
| DUKHCONP03Z4MSEX5025 |  | SS.Handrails and Balustrades | 20d | 2014-03-24 | 2014-04-15 | DUKHCONP03Z4MSEX5020 FF+10d, DUKHCONP03Z4MSEX5020 SS+10d | 21d | 0d | LABOR- SUBCONTRACTOR [36 h]; S.S.BALUSTRADE QTY [30 lm]; HANDRAIL ERECTOR SKILLED [72 h] | 30,532 | 15 | P3P4MSEX15 | DUKHCON3PP4MS005025 | DUKHCONP03Z4MSEX5025 | DH | CON | P3 | Z4 | EX | MS |  | B10 | B10-D12 | RES-3 |
|  | 15 | **DOMESTIC WATER TANK & PUMP ROOM** |  | 2014-01-05 | 2014-05-22 |  |  |  |  |  |  |  |  |  |  |  |  |  |  |  |  |  |  |  |
| DUKHCONP03Z4WTEX5030 |  | Excavation | 20d | 2014-01-05 | 2014-01-27 | DUKHCONP03Z4STRF2055 FF+5d, DUKHCONP03Z3WTEX5030, DUKHCONP03Z4STRF2065 SS+5d, DUKHCONP03Z4STRF2055 SS+5d | 58d | 0d | LABOR - CIVIL [36 h]; EXCAVATION QTY [54 Cum]; LOADER [20 h]; POCLAIN [40 h]; TRUCK [20 h]; EQUIP OPERATORS [80 h] | 1,647 | 10 | P3P4WEEX10 | DUKHCON3PP4WE005030 | DUKHCONP03Z4WTEX5030 | DH | CON | P3 | Z4 | EX | WE |  | B10 | B10-D12 | RES-3 |
| DUKHCONP03Z4WTEX5035 |  | Construction of Raft | 25d | 2014-01-11 | 2014-02-08 | DUKHCONP03Z4WTEX5030 FF+10d, DUKHCONP03Z4WTEX5030 SS+5d | 58d | 0d | CONCRETE MASON SK [120 h]; LABOR - CIVIL [90 h]; CONCRETE QTY [60 Cum] | 25,770 | 15 | P3P4WEEX15 | DUKHCON3PP4WE005035 | DUKHCONP03Z4WTEX5035 | DH | CON | P3 | Z4 | EX | WE |  | B10 | B10-D12 | RES-3 |
| DUKHCONP03Z4WTEX5040 |  | Block works & Plastering | 25d | 2014-01-20 | 2014-02-18 | DUKHCONP03Z4WTEX5035 SS+8d, DUKHCONP03Z4WTEX5035 FF+8d | 58d | 0d | BLOCK MASON SK [456 h]; PLASTER MASON SK [1104 h]; LABOR - CIVIL [882 h]; BLOCK QTY [225 Sqm]; PLASTER QTY [690 Sqm] | 46,391 | 20 | P3P4WEEX20 | DUKHCON3PP4WE005040 | DUKHCONP03Z4WTEX5040 | DH | CON | P3 | Z4 | EX | WE |  | B10 | B10-D12 | RES-3 |
| DUKHCONP03Z4WTEX5070 |  | Domestic Water Tank Plumbings works | 25d | 2014-01-28 | 2014-02-26 | DUKHCONP03Z4WTEX5080 SS | 58d | 0d | LABOR- SUBCONTRACTOR [100 h]; MECHANICALS SK [100 h] | 125,964 | 40 | P3P4WEEX70 | DUKHCON3PP4WE005070 | DUKHCONP03Z4WTEX5070 | DH | CON | P3 | Z4 | EX | WE |  | B10 | B10-D12 | RES-3 |
| DUKHCONP03Z4WTEX5075 |  | Domestic Water Tank AC works | 25d | 2014-01-28 | 2014-02-26 | DUKHCONP03Z4WTEX5070 SS | 58d | 0d | LABOR- SUBCONTRACTOR [100 h]; AC TECHNICIAN SK [75 h] | 8,274 | 40 | P3P4WEEX80 | DUKHCON3PP4WE005075 | DUKHCONP03Z4WTEX5075 | DH | CON | P3 | Z4 | EX | WE |  | B10 | B10-D12 | RES-3 |
| DUKHCONP03Z4WTEX5080 |  | Domestic Water Tank Electrical works | 25d | 2014-01-28 | 2014-02-26 | DUKHCONP03Z4WTEX5040 SS+7d | 58d | 0d | LABOR- SUBCONTRACTOR [100 h]; ELECTRICIANS SK [75 h] | 22,233 | 40 | P3P4WEEX60 | DUKHCON3PP4WE005080 | DUKHCONP03Z4WTEX5080 | DH | CON | P3 | Z4 | EX | WE |  | B10 | B10-D12 | RES-3 |
| DUKHCONP03Z4WTEX5085 |  | Domestic Water Tank Firefighting works | 25d | 2014-01-28 | 2014-02-26 | DUKHCONP03Z4WTEX5075 SS | 58d | 0d | LABOR- SUBCONTRACTOR [54 h]; MECHANICALS SK [64.8 h] | 12,708 | 40 | P3P4WEEX90 | DUKHCON3PP4WE005085 | DUKHCONP03Z4WTEX5085 | DH | CON | P3 | Z4 | EX | WE |  | B10 | B10-D12 | RES-3 |
| DUKHCONP03Z4WTEX5045 |  | Flooring & Painting | 25d | 2014-02-02 | 2014-03-03 | DUKHCONP03Z4WTEX5040 FF+10d, DUKHCONP03Z4WTEX5085 FF+4d, DUKHCONP03Z4WTEX5040 SS+10d | 58d | 37d | SCREED MASON SK [96 h]; LABOR - CIVIL [36 h]; LABOR- SUBCONTRACTOR [216 h]; SCREED QTY [114 Sqm]; PAINT QTY [690 Sqm]; PAINTERS SK [552 h] | 35,064 | 25 | P3P4WEEX25 | DUKHCON3PP4WE005045 | DUKHCONP03Z4WTEX5045 | DH | CON | P3 | Z4 | EX | WE |  | B10 | B10-D12 | RES-3 |
| DUKHCONP03Z4WTEX5050 |  | Installation of Steel Gate | 20d | 2014-04-05 | 2014-04-27 | DUKHCONP03Z4WTEX5045 FF+10d, DUKHCONP03Z4WTEX5045 SS+5d, DUKHCONP03Z4MSEX5025 FF+10d | 21d | 2d | LADDER ERECTOR SK [24 h]; GATE ERECTOR SK [24 h]; LABOR- SUBCONTRACTOR [36 h]; LADDER QTY [3 ea]; GATE QTY [3 ea] | 19,575 | 30 | P3P4WEEX30 | DUKHCON3PP4WE005050 | DUKHCONP03Z4WTEX5050 | DH | CON | P3 | Z4 | EX | WE |  | B10 | B10-D12 | RES-3 |
| DUKHCONP03Z4WTEX5060 |  | Structural steel & SS Shed cover installation | 25d | 2014-04-13 | 2014-05-11 | DUKHCONP03Z4MSEX5025 FF+10d, DUKHCONP03Z4WTEX5050 SS+5d, DUKHCONP03Z4WTEX5050 FF+10d, DUKHCONP03Z3WTEX5060 | 19d | 0d | LABOR- SUBCONTRACTOR [252 h]; SS SHED COVER QTY [81 Sqm]; STEEL ERECTOR SK [336 h] | 22,930 | 35 | P3P4WEEX35 | DUKHCON3PP4WE005060 | DUKHCONP03Z4WTEX5060 | DH | CON | P3 | Z4 | EX | WE |  | B10 | B10-D12 | RES-3 |
| DUKHCONP03Z4WTEX5065 |  | Install. of Water Tank,Chiller,Pump & Meter | 25d | 2014-04-24 | 2014-05-22 | DUKHCONP03Z4PLRF4350 SS+5d, DUKHCONP03Z4WTEX5060 FF+10d, DUKHCONP03Z4WTEX5060 SS+10d, DUKHCONP03Z4MSEX5015 SS+5d, DUKHCONP03Z3WTEX5065, DUKHCONP03Z4PLRF4350 FF+5d, DUKHCONP03Z4MSEX5015 FF+5d | 19d | 0d | LABOR- SUBCONTRACTOR [54 h]; AC TECHNICIAN SK [33.6 h]; MECHANICALS SK [64.8 h]; WATER TANK QTY [3 ea]; CHILLER QTY [30 ea]; PUMP QTY [3 ea] | 212,221 | 40 | P3P4WEEX40 | DUKHCON3PP4WE005065 | DUKHCONP03Z4WTEX5065 | DH | CON | P3 | Z4 | EX | WE |  | B10 | B10-D12 | RES-3 |

Notes:
- DUKHCONP03Z4ACFF4615: Expenses: P03-Air-conditioning and Ventilation works 6520
- DUKHCONP03Z4ACFF4620: Expenses: P03-Air-conditioning and Ventilation works 23247
- DUKHCONP03Z4ACFF4625: Expenses: P03-Air-conditioning and Ventilation works 42227
- DUKHCONP03Z4ACRF4630: Expenses: P03-Air-conditioning and Ventilation works 20514
- DUKHCONP03Z4ACRF4635: Expenses: P03-Air-conditioning and Ventilation works 106501
- DUKHCONP03Z4MSEX5000: Expenses: P03-External works within the Plot Curtilage 6808
- DUKHCONP03Z4MSEX5005: Expenses: P03-External works within the Plot Curtilage 12087
- DUKHCONP03Z4MSEX5015: Expenses: P03-External works within the Plot Curtilage 17022
- DUKHCONP03Z4MSEX5010: Expenses: P03-External works within the Plot Curtilage 1114
- DUKHCONP03Z4MSEX5020: Expenses: P03-External works within the Plot Curtilage 10659
- DUKHCONP03Z4MSEX5025: Expenses: P03-External works within the Plot Curtilage 30532
- DUKHCONP03Z4WTEX5030: Expenses: P03-External works within the Plot Curtilage 1647
- DUKHCONP03Z4WTEX5035: Expenses: P03-External works within the Plot Curtilage 25770
- DUKHCONP03Z4WTEX5040: Expenses: P03-External works within the Plot Curtilage 46391
- DUKHCONP03Z4WTEX5070: Expenses: P03-External works within the Plot Curtilage 125964
- DUKHCONP03Z4WTEX5075: Expenses: P03-External works within the Plot Curtilage 8274
- DUKHCONP03Z4WTEX5080: Expenses: P03-External works within the Plot Curtilage 22233
- DUKHCONP03Z4WTEX5085: Expenses: P03-External works within the Plot Curtilage 12708
- DUKHCONP03Z4WTEX5045: Expenses: P03-External works within the Plot Curtilage 35064
- DUKHCONP03Z4WTEX5050: Expenses: P03-External works within the Plot Curtilage 19575
- DUKHCONP03Z4WTEX5060: Expenses: P03-External works within the Plot Curtilage 22930
- DUKHCONP03Z4WTEX5065: Expenses: P03-External works within the Plot Curtilage 212221

| ID | WBS | Activity | Duration | Start | Finish | Predecessors | Total float | Resources | Cost | P3 ACTID | P6 ID (old) | NP61D | PROJECT | PHASES | PACKAGE | PART | ELEMENTS | BILL NOS | BILL DIVISION | RES PACK | CODE | STEP | FLOORS | rem |
| --- | --- | --- | --- | --- | --- | --- | --- | --- | --- | --- | --- | --- | --- | --- | --- | --- | --- | --- | --- | --- | --- | --- | --- | --- |
|  | 30 | **TESTING AND COMMISSIONING** |  | 2014-06-15 | 2014-07-13 |  |  |  |  |  |  |  |  |  |  |  |  |  |  |  |  |  |  |  |
| DUKHCONP03Z4ACTC8000 |  | Pre-Commissioning & Testing of AC Works | 25d | 2014-06-15 | 2014-07-13 | DUKHCONP03Z3ACTC8000, DUKHCONP03Z4ARRF3620, DUKHCONP03Z4AREL3680, DUKHCONP03Z4ACFF4625, DUKHCONP03Z4ACRF4635, DUKHCONP03Z4ARGF3095, DUKHCONP03Z4ARFF3395, DUKHCONP03Z4ARRF3660, DUKHCONP03Z4MSEX5005 | 0d | LABOR- SUBCONTRACTOR [500 h]; AC TECHNICIAN SK [1000 h] | 915 | P3P4ACU100 | DUKHCON3PP4AC008000 | DUKHCONP03Z4ACTC8000 | DH | CON | P3 | Z4 | TES | B10 | B10-D08 | RES-3 |  |  |  |  |
| DUKHCONP03Z4ELTC8010 |  | Pre-Commissioning & Testing of Electrical Works | 25d | 2014-06-15 | 2014-07-13 | DUKHCONP03Z4ARRF3655, DUKHCONP03Z4ELFF4055, DUKHCONP03Z4AREL3680, DUKHCONP03Z3ELTC8010, DUKHCONP03Z4ARRF3620, DUKHCONP03Z4ELGF4030, DUKHCONP03Z4ELGF4015, DUKHCONP03Z4ELGF4025, DUKHCONP03Z4ARFF3395, DUKHCONP03Z4ELRF4075, DUKHCONP03Z4ELFF4065, DUKHCONP03Z4ELFF4050, DUKHCONP03Z4MSEX5005, DUKHCONP03Z4ARGF3095, DUKHCONP03Z4ARRF3660 | 0d | LABOR- SUBCONTRACTOR [1000 h]; ELECTRICIANS SK [2000 h] | 41,901 | P3P4ELE100 | DUKHCON3PP4EL008010 | DUKHCONP03Z4ELTC8010 | DH | CON | P3 | Z4 | TES | B10 | B10-D09 | RES-3 |  |  |  |  |
| DUKHCONP03Z4PLTC8005 |  | Pre-Commissioning & Testing of Plumbing Works | 25d | 2014-06-15 | 2014-07-13 | DUKHCONP03Z4ARRF3620, DUKHCONP03Z4ARFF3395, DUKHCONP03Z4PLRF4355, DUKHCONP03Z4ARGF3095, DUKHCONP03Z4ARRF3655, DUKHCONP03Z4MSEX5005, DUKHCONP03Z4PLGF4320, DUKHCONP03Z4AREL3680, DUKHCONP03Z4WTEX5065, DUKHCONP03Z4PLRF4350, DUKHCONP03Z3PLTC8005, DUKHCONP03Z4ARRF3660 | 0d | LABOR- SUBCONTRACTOR [1000 h]; MECHANICALS SK [2000 h] | 7,665 | P3P4PLU100 | DUKHCON3PP4PL008005 | DUKHCONP03Z4PLTC8005 | DH | CON | P3 | Z4 | TES | B10 | B10-D07 | RES-3 |  |  |  |  |
|  | 30 | **ZONE - 5 (3 Apartments)** |  | 2013-05-27 | 2014-08-14 |  |  |  |  |  |  |  |  |  |  |  |  |  |  |  |  |  |  |  |
|  | 10 | **STRUCTURAL WORKS** |  | 2013-05-27 | 2014-02-26 |  |  |  |  |  |  |  |  |  |  |  |  |  |  |  |  |  |  |  |
|  | 10 | **SUB STRUCTURE** |  | 2013-05-27 | 2013-10-13 |  |  |  |  |  |  |  |  |  |  |  |  |  |  |  |  |  |  |  |
|  | 10 | **UPTO GRADE SLAB** |  | 2013-05-27 | 2013-10-13 |  |  |  |  |  |  |  |  |  |  |  |  |  |  |  |  |  |  |  |
| DUKHCONP03Z5STUG1000 |  | Footing Excavation | 25d | 2013-05-27 | 2013-06-24 | DUKHCONP03Z4STUG1000 | 0d | LABOR - CIVIL [824 h]; EXCAVATION QTY [1374 Cum]; LOADER [183 h]; POCLAIN [366 h]; TRUCK [183 h]; EQUIP OPERATORS [732 h] | 68,040 | P3P5SBUG10 | DUKHCON3PP5STUG1000 | DUKHCONP03Z5STUG1000 | DH | CON | P3 | Z5 | ST | B10 | B10-D01 | RES-3 | 10 | SB | UG |  |
| DUKHCONP03Z5STUG1005 |  | Footing Antitermite | 23d | 2013-06-06 | 2013-07-02 | DUKHCONP03Z5STUG1000 SS+9d, DUKHCONP03Z5STUG1000 FF+5d | 0d | LABOR- SUBCONTRACTOR [173.25 h]; ANTITERMITE QTY [1152 sqft]; ANTITERMITE SK [461 h] | 3,456 | P3P5SBUG15 | DUKHCON3PP5STUG1005 | DUKHCONP03Z5STUG1005 | DH | CON | P3 | Z5 | ST | B10 | B10-D01 | RES-3 | 15 | SB | UG | REM |
| DUKHCONP03Z5STUG1010 |  | Footing Blinding | 23d | 2013-06-10 | 2013-07-06 | DUKHCONP03Z5STUG1005 FF+3d, DUKHCONP03Z5STUG1005 SS+3d | 0d | BLINDING MASON SK [336 h]; LABOR - CIVIL [252 h]; BLINDING QTY [420 Sqm] | 10,587 | P3P5SBUG18 | DUKHCON3PP5STUG1010 | DUKHCONP03Z5STUG1010 | DH | CON | P3 | Z5 | ST | B10 | B10-D02 | RES-3 | 15 | SB | UG | REM |
| DUKHCONP03Z5STUG1015 |  | Footing Waterproofing & Screed | 25d | 2013-06-16 | 2013-07-14 | DUKHCONP03Z5STUG1010 FF+5d, DUKHCONP03Z5STUG1010 SS+5d | 0d | SCREED MASON SK [336 h]; LABOR - CIVIL [126 h]; LABOR- SUBCONTRACTOR [247.5 h]; SCREED QTY [420 Sqm]; WATERPROOFING QTY [823 Sqm]; WATERPROOFING SPECIALIST SK [659 h] | 31,497 | P3P5SBUG20 | DUKHCON3PP5STUG1015 | DUKHCONP03Z5STUG1015 | DH | CON | P3 | Z5 | ST | B10 | B10-D02 | RES-3 | 20 | SB | UG | REM |
| DUKHCONP03Z5STUG1020 |  | Construction of foundations | 20d | 2013-07-01 | 2013-07-23 | DUKHCONP03Z5STUG1015 SS+7d, DUKHCONP03Z5STUG1015 FF+8d | 0d | STEEL FIXERS SK [1819 h]; CARPENTERS SK [646 h]; CONCRETE MASON SK [288 h]; LABOR - CIVIL [2064.75 h]; REINFORCEMENT BARS QTY [22733 kg]; FORMWORK QTY [323 Sqm]; CONCRETE QTY [144 Cum] | 125,011 | P3P5SBUG25 | DUKHCON3PP5STUG1020 | DUKHCONP03Z5STUG1020 | DH | CON | P3 | Z5 | ST | B10 | B10-D02 | RES-3 | 25 | SB | UG | REM |
| DUKHCONP03Z5STUG1025 |  | Construction of neck of columns | 25d | 2013-07-10 | 2013-08-07 | DUKHCONP03Z5STUG1020 SS+8d, DUKHCONP03Z4STUG1025, DUKHCONP03Z5STUG1020 FF+7d | 0d | STEEL FIXERS SK [152 h]; CARPENTERS SK [630 h]; CONCRETE MASON SK [18 h]; LABOR - CIVIL [600 h]; REINFORCEMENT BARS QTY [1891 kg]; FORMWORK QTY [315 Sqm]; CONCRETE QTY [9 Cum] | 27,559 | P3P5SBUG30 | DUKHCON3PP5STUG1025 | DUKHCONP03Z5STUG1025 | DH | CON | P3 | Z5 | ST | B10 | B10-D02 | RES-3 | 30 | SB | UG | REM |
| DUKHCONP03Z5STUG1030 |  | Waterproofing Footing & Neck Column | 25d | 2013-07-20 | 2013-08-20 | DUKHCONP03Z5STUG1025 SS+8d, DUKHCONP03Z5STUG1025 FF+8d | 0d | LABOR- SUBCONTRACTOR [58.5 h]; WATERPROOFING QTY [193 Sqm]; WATERPROOFING SPECIALIST SK [155 h] | 10,965 | P3P5SBUG35 | DUKHCON3PP5STUG1030 | DUKHCONP03Z5STUG1030 | DH | CON | P3 | Z5 | ST | B10 | B10-D02 | RES-3 | 35 | SB | UG | REM |
| DUKHCONP03Z5STUG1035 |  | Backfilling Upto Grade Beam Bottom | 25d | 2013-07-30 | 2013-08-31 | DUKHCONP03Z5STUG1030 SS+9d, DUKHCONP03Z5STUG1030 FF+9d, DUKHCONP03Z4STUG1035 | 0d | LABOR - CIVIL [360 h]; BACKFILLING QTY [1512 Cum]; BOBCAT [1000 h]; PLATE COMPACTOR [1000 h]; TRUCK [200 h]; EQUIP OPERATORS [2200 h] | 25,326 | P3P5SBUG40 | DUKHCON3PP5STUG1035 | DUKHCONP03Z5STUG1035 | DH | CON | P3 | Z5 | ST | B10 | B10-D01 | RES-3 | 40 | SB | UG |  |
| DUKHCONP03Z5STUG1040 |  | Construction of Grade Beams | 25d | 2013-08-19 | 2013-09-16 | DUKHCONP03Z5STUG1035 SS+14d, DUKHCONP03Z5STUG1035 FF+14d | 0d | BLINDING MASON SK [180 h]; SCREED MASON SK [180 h]; STEEL FIXERS SK [1062 h]; CARPENTERS SK [1202 h]; CONCRETE MASON SK [126 h]; LABOR - CIVIL [1995 h]; BLINDING QTY [225 Sqm]; SCREED QTY [225 Sqm]; REINFORCEMENT BARS QTY [13269 kg]; FORMWORK QTY [601 Sqm]; CONCRETE QTY [63 Cum] | 199,651 | P3P5SBUG45 | DUKHCON3PP5STUG1040 | DUKHCONP03Z5STUG1040 | DH | CON | P3 | Z5 | ST | B10 | B10-D02 | RES-3 | 45 | SB | UG | REM |
| DUKHCONP03Z5STUG1045 |  | Construction of slab on grade | 25d | 2013-09-15 | 2013-10-13 | DUKHCONP03Z5STUG1040 FF+10d, DUKHCONP03Z5STUG1040 SS+10d, DUKHCONP03Z5PLUG4300 FF+8d, DUKHCONP03Z5PLUG4300 SS+8d, DUKHCONP03Z4STUG1045 | 0d | BLINDING MASON SK [684 h]; SCREED MASON SK [684 h]; STEEL FIXERS SK [308 h]; CONCRETE MASON SK [372 h]; LABOR - CIVIL [1279.5 h]; BLINDING QTY [855 Sqm]; SCREED QTY [855 Sqm]; CONCRETE QTY [186 Cum]; WELDED WIRE MESH [1155 Sqm] | 181,661 | P3P5SBUG50 | DUKHCON3PP5STUG1045 | DUKHCONP03Z5STUG1045 | DH | CON | P3 | Z5 | ST | B10 | B10-D02 | RES-3 | 50 | SB | UG | REM |
|  | 15 | **SUPERSTRUCTURE** |  | 2013-10-01 | 2014-02-26 |  |  |  |  |  |  |  |  |  |  |  |  |  |  |  |  |  |  |  |
|  | 10 | **GROUND FLOOR** |  | 2013-10-01 | 2013-11-28 |  |  |  |  |  |  |  |  |  |  |  |  |  |  |  |  |  |  |  |
| DUKHCONP03Z5STGF2000 |  | Column-Rebar & Formwork | 25d | 2013-10-01 | 2013-10-31 | DUKHCONP03Z5STUG1045 SS+14d, DUKHCONP03Z5STUG1045 FF+7d, DUKHCONP03Z4STGF2000 | 0d | STEEL FIXERS SK [199 h]; CARPENTERS SK [766 h]; LABOR - CIVIL [723.75 h]; REINFORCEMENT BARS QTY [2482 kg]; FORMWORK QTY [383 Sqm] | 29,754 | P3P5SPGF10 | DUKHCON3PP5STGF2000 | DUKHCONP03Z5STGF2000 | DH | CON | P3 | Z5 | ST | B10 | B10-D02 | RES-3 | 10 | SP | GF | REM |
| DUKHCONP03Z5STGF2005 |  | Column-Concrete | 24d | 2013-10-10 | 2013-11-09 | DUKHCONP03Z5STGF2000 SS+8d, DUKHCONP03Z5STGF2000 FF+2d | 0d | CONCRETE MASON SK [58 h]; LABOR - CIVIL [43.5 h]; CONCRETE QTY [29 Cum] | 8,267 | P3P5SPGF15 | DUKHCON3PP5STGF2005 | DUKHCONP03Z5STGF2005 | DH | CON | P3 | Z5 | ST | B10 | B10-D02 | RES-3 | 15 | SP | GF | REM |
| DUKHCONP03Z5STGF2010 |  | Beam, Stairs ,Slab-Rebar & Formwork | 25d | 2013-10-28 | 2013-11-25 | DUKHCONP03Z5STGF2005 SS+2d, DUKHCONP03Z5STGF2005 FF+14d | 0d | CARPENTERS SK [4148 h]; LABOR - CIVIL [4539.75 h]; REINFORCEMENT BARS QTY [23804 kg]; FORMWORK QTY [2074 Sqm]; STEEL FIXERS SK [1905 h] | 173,534 | P3P5SPGF20 | DUKHCON3PP5STGF2010 | DUKHCONP03Z5STGF2010 | DH | CON | P3 | Z5 | ST | B10 | B10-D02 | RES-3 | 20 | SP | GF | REM |
| DUKHCONP03Z5STGF2015 |  | Beam, Stairs ,Slab-Concrete | 15d | 2013-11-12 | 2013-11-28 | DUKHCONP03Z5STGF2010 FF+3d, DUKHCONP03Z4STGF2015, DUKHCONP03Z5STGF2010 SS+10d | 0d | CONCRETE MASON SK [496 h]; LABOR - CIVIL [372 h]; CONCRETE QTY [248 Cum] | 84,518 | P3P5SPGF25 | DUKHCON3PP5STGF2015 | DUKHCONP03Z5STGF2015 | DH | CON | P3 | Z5 | ST | B10 | B10-D02 | RES-3 | 25 | SP | GF | REM |

Notes:
- DUKHCONP03Z4ACTC8000: Expenses: P03-Air-conditioning and Ventilation works 915
- DUKHCONP03Z4ELTC8010: Expenses: P03-Electrical Installations 41901
- DUKHCONP03Z4PLTC8005: Expenses: P03-Plumbing and Drainage works 7665
- DUKHCONP03Z5STUG1000: Expenses: P03-Excavation and Earth Works 68040
- DUKHCONP03Z5STUG1005: Expenses: P03-Excavation and Earth Works 3456
- DUKHCONP03Z5STUG1010: Expenses: P03-Concrete Works 10587
- DUKHCONP03Z5STUG1015: Expenses: P03-Concrete Works 31497
- DUKHCONP03Z5STUG1020: Expenses: P03-Concrete Works 125011
- DUKHCONP03Z5STUG1025: Expenses: P03-Concrete Works 27559
- DUKHCONP03Z5STUG1030: Expenses: P03-Concrete Works 10965
- DUKHCONP03Z5STUG1035: Expenses: P03-Excavation and Earth Works 25326
- DUKHCONP03Z5STUG1040: Expenses: P03-Concrete Works 199651
- DUKHCONP03Z5STUG1045: Expenses: P03-Concrete Works 181661
- DUKHCONP03Z5STGF2000: Expenses: P03-Concrete Works 29754
- DUKHCONP03Z5STGF2005: Expenses: P03-Concrete Works 8267
- DUKHCONP03Z5STGF2010: Expenses: P03-Concrete Works 173534
- DUKHCONP03Z5STGF2015: Expenses: P03-Concrete Works 84518

| ID | WBS | Activity | Duration | Start | Finish | Predecessors | Total float | Free float | Resources | Cost | CODE | rem | P3 ACTID | P6 ID (old) | NP61D | PROJECT | PHASES | PACKAGE | PART | ELEMENTS | STEP | FLOORS | BILL NOS | BILL DIVISION | RES PACK | EXECUTER |
| --- | --- | --- | --- | --- | --- | --- | --- | --- | --- | --- | --- | --- | --- | --- | --- | --- | --- | --- | --- | --- | --- | --- | --- | --- | --- | --- |
|  | 15 | **FIRST FLOORS** |  | 2013-11-14 | 2014-01-18 |  |  |  |  |  |  |  |  |  |  |  |  |  |  |  |  |  |  |  |  |  |
| DUKHCONP03Z5STFF2020 |  | Column-Rebar & Formwork | 25d | 2013-11-14 | 2013-12-12 | DUKHCONP03Z5STGF2015 FF+5d, DUKHCONP03Z4STFF2020, DUKHCONP03Z5STGF2015 SS+2d | 0d |  | STEEL FIXERS SK [241 h]; CARPENTERS SK [682 h]; LABOR - CIVIL [692.25 h]; REINFORCEMENT BARS QTY [3012 kg]; FORMWORK QTY [341 Sqm] | 29,055 | 10 | REM | P3P5SPFF10 | DUKHCON3PP5STFF2020 | DUKHCONP03Z5STFF2020 | DH | CON | P3 | Z5 | ST | SP | FF | B10 | B10-D02 | RES-3 |  |
| DUKHCONP03Z5STFF2025 |  | Column-Concrete | 24d | 2013-11-25 | 2013-12-23 | DUKHCONP03Z5STFF2020 FF+2d, DUKHCONP03Z5STFF2020 SS+9d | 0d |  | CONCRETE MASON SK [50 h]; LABOR - CIVIL [37.5 h]; CONCRETE QTY [25 Cum] | 7,236 | 15 | REM | P3P5SPFF15 | DUKHCON3PP5STFF2025 | DUKHCONP03Z5STFF2025 | DH | CON | P3 | Z5 | ST | SP | FF | B10 | B10-D02 | RES-3 |  |
| DUKHCONP03Z5STFF2030 |  | Beam, Stairs ,Slab-Rebar & Formwork | 25d | 2013-12-10 | 2014-01-08 | DUKHCONP03Z5STFF2025 FF+14d, DUKHCONP03Z5STFF2025 SS+2d | 0d |  | STEEL FIXERS SK [1613 h]; CARPENTERS SK [4148 h]; LABOR - CIVIL [4320.75 h]; REINFORCEMENT BARS QTY [20151 kg]; FORMWORK QTY [2074 Sqm] | 183,422 | 20 | REM | P3P5SPFF20 | DUKHCON3PP5STFF2030 | DUKHCONP03Z5STFF2030 | DH | CON | P3 | Z5 | ST | SP | FF | B10 | B10-D02 | RES-3 |  |
| DUKHCONP03Z5STFF2035 |  | Beam, Stairs ,Slab-Concrete | 15d | 2014-01-01 | 2014-01-18 | DUKHCONP03Z4STFF2035, DUKHCONP03Z5STFF2030 SS+10d, DUKHCONP03Z5STFF2030 FF+8d | 0d |  | CONCRETE MASON SK [418 h]; LABOR - CIVIL [313.5 h]; CONCRETE QTY [209 Cum] | 83,819 | 25 | REM | P3P5SPFF25 | DUKHCON3PP5STFF2035 | DUKHCONP03Z5STFF2035 | DH | CON | P3 | Z5 | ST | SP | FF | B10 | B10-D02 | RES-3 |  |
|  | 20 | **ROOF** |  | 2014-01-04 | 2014-02-26 |  |  |  |  |  |  |  |  |  |  |  |  |  |  |  |  |  |  |  |  |  |
| DUKHCONP03Z5STRF2040 |  | Column-Rebar & Formwork | 18d | 2014-01-04 | 2014-01-23 | DUKHCONP03Z4STRF2040, DUKHCONP03Z5STFF2035 SS+2d, DUKHCONP03Z5STFF2035 FF+3d | 15d | 0d | STEEL FIXERS SK [58 h]; CARPENTERS SK [256 h]; LABOR - CIVIL [235.5 h]; REINFORCEMENT BARS QTY [717 kg]; FORMWORK QTY [128 Sqm] | 9,566 | 10 | REM | P3P5SPRF10 | DUKHCON3PP5STRF2040 | DUKHCONP03Z5STRF2040 | DH | CON | P3 | Z5 | ST | SP | RF | B10 | B10-D02 | RES-3 |  |
| DUKHCONP03Z5STRF2045 |  | Column-Concrete | 17d | 2014-01-07 | 2014-01-26 | DUKHCONP03Z5STRF2040 SS+3d, DUKHCONP03Z5STRF2040 FF+1d | 15d | 0d | CONCRETE MASON SK [12 h]; LABOR - CIVIL [9 h]; CONCRETE QTY [6 Cum] | 1,723 | 15 | REM | P3P5SPRF15 | DUKHCON3PP5STRF2045 | DUKHCONP03Z5STRF2045 | DH | CON | P3 | Z5 | ST | SP | RF | B10 | B10-D02 | RES-3 |  |
| DUKHCONP03Z5STRF2050 |  | Slab-Rebar & Formwork | 20d | 2014-01-09 | 2014-02-01 | DUKHCONP03Z5STRF2045 FF+5d, DUKHCONP03Z5STRF2045 SS+2d | 15d | 0d | STEEL FIXERS SK [383 h]; CARPENTERS SK [518 h]; LABOR - CIVIL [675.75 h]; REINFORCEMENT BARS QTY [4777 kg]; FORMWORK QTY [259 Sqm] | 33,570 | 20 | REM | P3P5SPRF20 | DUKHCON3PP5STRF2050 | DUKHCONP03Z5STRF2050 | DH | CON | P3 | Z5 | ST | SP | RF | B10 | B10-D02 | RES-3 |  |
| DUKHCONP03Z5STRF2055 |  | Slab-Concrete | 13d | 2014-01-20 | 2014-02-03 | DUKHCONP03Z5STRF2050 SS+5d, DUKHCONP03Z5STRF2050 FF+2d, DUKHCONP03Z4STRF2055 | 15d | 0d | CONCRETE MASON SK [100 h]; LABOR - CIVIL [75 h]; CONCRETE QTY [50 Cum] | 16,065 | 25 | REM | P3P5SPRF25 | DUKHCON3PP5STRF2055 | DUKHCONP03Z5STRF2055 | DH | CON | P3 | Z5 | ST | SP | RF | B10 | B10-D02 | RES-3 |  |
| DUKHCONP03Z5STRF2060 |  | Construction of Parapets | 25d | 2014-01-22 | 2014-02-20 | DUKHCONP03Z5STRF2055 SS+2d, DUKHCONP03Z5STRF2055 FF+10d | 58d | 0d | BLOCK MASON SK [924 h]; LABOR - CIVIL [517 h]; BLOCK QTY [462 Sqm] | 28,644 | 30 |  | P3P5SPRF30 | DUKHCON3PP5STRF2060 | DUKHCONP03Z5STRF2060 | DH | CON | P3 | Z5 | ST | SP | RF | B10 | B10-D03 | RES-3 |  |
| DUKHCONP03Z5STRF2065 |  | Construction of up stands/Plinth | 25d | 2014-01-28 | 2014-02-26 | DUKHCONP03Z5STRF2060 FF+5d, DUKHCONP03Z4STRF2065, DUKHCONP03Z5STRF2060 SS+5d | 58d | 0d | STEEL FIXERS SK [6 h]; CARPENTERS SK [126 h]; CONCRETE MASON SK [30 h]; LABOR - CIVIL [121.5 h]; REINFORCEMENT BARS QTY [68 kg]; FORMWORK QTY [63 Sqm]; CONCRETE QTY [15 Cum] | 8,997 | 35 | REM | P3P5SPRF35 | DUKHCON3PP5STRF2065 | DUKHCONP03Z5STRF2065 | DH | CON | P3 | Z5 | ST | SP | RF | B10 | B10-D02 | RES-3 |  |
|  | 15 | **FINISHING WORKS** |  | 2013-12-14 | 2014-07-13 |  |  |  |  |  |  |  |  |  |  |  |  |  |  |  |  |  |  |  |  |  |
|  | 10 | **INTERNAL FINISHES** |  | 2013-12-14 | 2014-07-13 |  |  |  |  |  |  |  |  |  |  |  |  |  |  |  |  |  |  |  |  |  |
|  | 10 | **GROUND FLOOR** |  | 2013-12-14 | 2014-05-27 |  |  |  |  |  |  |  |  |  |  |  |  |  |  |  |  |  |  |  |  |  |
| DUKHCONP03Z5ARGF3000 |  | Block work | 25d | 2013-12-14 | 2014-01-12 | DUKHCONP03Z5STGF2015 SS+21d, DUKHCONP03Z4ARGF3000, DUKHCONP03Z5STGF2015 FF+21d | 40d | 0d | BLOCK MASON SK [4552 h]; LABOR - CIVIL [2560.5 h]; BLOCK QTY [2276 Sqm] | 161,435 | 10 | REM | P3P5IFGF10 | DUKHCON3PP5ARGF3000 | DUKHCONP03Z5ARGF3000 | DH | CON | P3 | Z5 | FIN | IF | GF | B10 | B10-D03 | RES-3 |  |
| DUKHCONP03Z5ARGF3005 |  | Plastering work | 25d | 2014-01-06 | 2014-02-03 | DUKHCONP03Z5PLGF4305 FF+5d, DUKHCONP03Z5ARGF3000 FF+7d, DUKHCONP03Z5ARGF3000 SS+7d, DUKHCONP03Z4ARGF3005, DUKHCONP03Z5ELGF4000 SS+5d, DUKHCONP03Z5ELGF4000 FF+5d, DUKHCONP03Z5PLGF4305 SS+5d | 40d | 0d | PLASTER MASON SK [4012 h]; LABOR - CIVIL [2256.75 h]; PLASTER QTY [2507 Sqm] | 32,676 | 12 | REM | P3P5IFGF12 | DUKHCON3PP5ARGF3005 | DUKHCONP03Z5ARGF3005 | DH | CON | P3 | Z5 | FIN | IF | GF | B10 | B10-D10 | RES-3 |  |
| DUKHCONP03Z5ARGF3010 |  | Flooring screed | 21d | 2014-01-14 | 2014-02-06 | DUKHCONP03Z5ARGF3005 FF+3d, DUKHCONP03Z5ARGF3005 SS+7d | 48d | 8d | SCREED MASON SK [898 h]; LABOR - CIVIL [336.75 h]; FLOORING SCREED QTY [1122 Sqm] | 37,269 | 15 | REM | P3P5IFGF15 | DUKHCON3PP5ARGF3010 | DUKHCONP03Z5ARGF3010 | DH | CON | P3 | Z5 | FIN | IF | GF | B10 | B10-D10 | RES-3 |  |
| DUKHCONP03Z5ARGF3015 |  | Wet area waterproofing & Protection Screed | 15d | 2014-01-23 | 2014-02-09 | DUKHCONP03Z5ARGF3005 FF+5d, DUKHCONP03Z4ARGF3015, DUKHCONP03Z5ARGF3005 SS+7d | 40d | 0d | LABOR- SUBCONTRACTOR [159 h]; WETAREA WATERPROOFING QTY [528 Sqm]; WATERPROOFING SPECIALIST SK [423 h] | 17,952 | 18 | REM | P3P5IFGF18 | DUKHCON3PP5ARGF3015 | DUKHCONP03Z5ARGF3015 | DH | CON | P3 | Z5 | FIN | IF | GF | B10 | B10-D10 | RES-3 |  |
| DUKHCONP03Z5ARGF3020 |  | Ceramic Wall Tiling | 25d | 2014-01-29 | 2014-02-27 | DUKHCONP03Z5ARGF3015 FF+5d, DUKHCONP03Z5PLGF4305 SS+4d, DUKHCONP03Z5PLGF4310 FF+4d, DUKHCONP03Z5PLGF4310 SS+4d, DUKHCONP03Z5ARGF3015 SS+5d, DUKHCONP03Z5PLGF4305 FF+4d, DUKHCONP03Z4ARGF3020 | 40d | 0d | TILE MASON SK [1666 h]; LABOR- SUBCONTRACTOR [937.5 h]; CERAMIC WALL TILE QTY [833 Sqm] | 48,488 | 24 | REM | P3P5IFGF24 | DUKHCON3PP5ARGF3020 | DUKHCONP03Z5ARGF3020 | DH | CON | P3 | Z5 | FIN | IF | GF | B10 | B10-D10 | RES-3 |  |
| DUKHCONP03Z5ARGF3030 |  | Paint First coat | 25d | 2014-01-29 | 2014-02-27 | DUKHCONP03Z5ARGF3005 FF+14d, DUKHCONP03Z4ARGF3030, DUKHCONP03Z5ARGF3005 SS+14d | 50d | 8d | FIRSTCOAT PAINT QTY [3760.5 Sqm]; LABOR- SUBCONTRACTOR [1128.15 h]; PAINTERS SK [3008.4 h] | 18,001 | 21 | REM | P3P5IFGF21 | DUKHCON3PP5ARGF3030 | DUKHCONP03Z5ARGF3030 | DH | CON | P3 | Z5 | FIN | IF | GF | B10 | B10-D11 | RES-3 | ENT |
| DUKHCONP03Z5ARGF3025 |  | Porcelain Tile flooring | 25d | 2014-02-04 | 2014-03-05 | DUKHCONP03Z4ARGF3025, DUKHCONP03Z5ARGF3020 SS+5d, DUKHCONP03Z5ARGF3020 FF+5d, DUKHCONP03Z5ARGF3010 SS+10d, DUKHCONP03Z5ARGF3010 FF+10d | 40d | 0d | TILE MASON SK [1144 h]; LABOR- SUBCONTRACTOR [643.5 h]; PORCELAIN FLOORING QTY [1001 Sqm] | 78,427 | 27 | REM | P3P5IFGF27 | DUKHCON3PP5ARGF3025 | DUKHCONP03Z5ARGF3025 | DH | CON | P3 | Z5 | FIN | IF | GF | B10 | B10-D10 | RES-3 |  |
| DUKHCONP03Z5ARGF3045 |  | Fixing of Suspension systems | 20d | 2014-02-23 | 2014-03-17 | DUKHCONP03Z5ARGF3030 SS+7d, DUKHCONP03Z5ARGF3025 FF+10d, DUKHCONP03Z5ELGF4010 SS+5d, DUKHCONP03Z5ELGF4010 FF+5d, DUKHCONP03Z5ARGF3030 FF+7d, DUKHCONP03Z4ARGF3045, DUKHCONP03Z5ARGF3025 SS+10d | 42d | 0d | LABOR- SUBCONTRACTOR [516.75 h]; SUSPENSION QTY [1147.5 Sqm]; FALSE CEILING SKILLED SK [918 h] | 22,044 | 39 | REM | P3P5IFGF39 | DUKHCON3PP5ARGF3045 | DUKHCONP03Z5ARGF3045 | DH | CON | P3 | Z5 | FIN | IF | GF | B10 | B10-D10 | RES-3 | SUS |
| DUKHCONP03Z5ARGF3035 |  | Slate Tile Flooring & Skirting | 15d | 2014-02-25 | 2014-03-13 | DUKHCONP03Z5ARGF3025 FF+7d, DUKHCONP03Z5ARGF3010 SS+13d, DUKHCONP03Z5ARGF3025 SS+13d, DUKHCONP03Z5ARGF3010 FF+13d | 42d | 2d | TILE MASON SK [29 h]; LABOR- SUBCONTRACTOR [16.5 h]; SLATE TILE QTY [18 Sqm] | 4,202 | 33 | REM | P3P5IFGF33 | DUKHCON3PP5ARGF3035 | DUKHCONP03Z5ARGF3035 | DH | CON | P3 | Z5 | FIN | IF | GF | B10 | B10-D10 | RES-3 |  |
| DUKHCONP03Z5ARGF3055 |  | Aluminum tile false ceiling | 25d | 2014-03-03 | 2014-03-31 | DUKHCONP03Z5ACGF4600 SS+7d, DUKHCONP03Z5ACGF4600 FF+7d, DUKHCONP03Z5ARGF3045 SS+7d, DUKHCONP03Z5ARGF3045 FF+7d | 45d | 3d | LABOR- SUBCONTRACTOR [56.25 h]; FALSE CEILING QTY [125 Sqm]; FALSE CEILING SKILLED SK [100 h] | 8,585 | 42 | REM | P3P5IFGF42 | DUKHCON3PP5ARGF3055 | DUKHCONP03Z5ARGF3055 | DH | CON | P3 | Z5 | FIN | IF | GF | B10 | B10-D10 | RES-3 | ALU |
| DUKHCONP03Z5ARGF3040 |  | Cobble Tile flooring | 15d | 2014-03-04 | 2014-03-20 | DUKHCONP03Z5ARGF3025 SS+13d, DUKHCONP03Z5ARGF3035 SS+4d, DUKHCONP03Z5ARGF3010 SS+13d, DUKHCONP03Z5ARGF3010 FF+13d, DUKHCONP03Z5ARGF3025 FF+13d, DUKHCONP03Z5ARGF3035 FF+4d | 40d | 0d | TILE MASON SK [44 h]; LABOR- SUBCONTRACTOR [24.75 h]; COBBLE STONE QTY [27 Sqm] | 2,251 | 30 | REM | P3P5IFGF30 | DUKHCON3PP5ARGF3040 | DUKHCONP03Z5ARGF3040 | DH | CON | P3 | Z5 | FIN | IF | GF | B10 | B10-D10 | RES-3 |  |
| DUKHCONP03Z5ARGF3060 |  | Gypsum board false ceiling | 25d | 2014-03-06 | 2014-04-03 | DUKHCONP03Z5ACGF4600 FF+7d, DUKHCONP03Z4ARGF3060, DUKHCONP03Z5ARGF3045 SS+10d, DUKHCONP03Z5ACGF4600 SS+7d, DUKHCONP03Z5ARGF3045 FF+10d | 42d | 0d | LABOR- SUBCONTRACTOR [467.51 h]; FALSE CEILING QTY [1039 Sqm]; FALSE CEILING SKILLED SK [831.2 h] | 57,405 | 45 | REM | P3P5IFGF45 | DUKHCON3PP5ARGF3060 | DUKHCONP03Z5ARGF3060 | DH | CON | P3 | Z5 | FIN | IF | GF | B10 | B10-D10 | RES-3 | GYP |
| DUKHCONP03Z5ARGF3050 |  | Granite - Stair case flooring & Skirting | 20d | 2014-03-12 | 2014-04-03 | DUKHCONP03Z5ARGF3025 FF+13d, DUKHCONP03Z5ARGF3040 SS+7d, DUKHCONP03Z5ARGF3025 SS+13d, DUKHCONP03Z5ARGF3040 FF+7d | 40d | 0d | GRANITE MASON SK [324 h]; LABOR- SUBCONTRACTOR [182.25 h]; GRANITE QTY [81 Sqm] | 48,650 | 36 | REM | P3P5IFGF36 | DUKHCON3PP5ARGF3050 | DUKHCONP03Z5ARGF3050 | DH | CON | P3 | Z5 | FIN | IF | GF | B10 | B10-D10 | RES-3 |  |
| DUKHCONP03Z5ARGF3065 |  | Wooden door | 15d | 2014-03-26 | 2014-04-12 | DUKHCONP03Z5ARGF3035 SS+7d, DUKHCONP03Z4ARGF3065, DUKHCONP03Z5ARGF3035 FF+7d, DUKHCONP03Z5ARGF3050 FF+7d, DUKHCONP03Z5ARGF3050 SS+7d | 40d | 0d | LABOR- SUBCONTRACTOR [112.5 h]; WOODEN DOOR QTY [75 ea]; DOOR ERECTOR SK [300 h] | 225,525 | 48 | REM | P3P5IFGF48 | DUKHCON3PP5ARGF3065 | DUKHCONP03Z5ARGF3065 | DH | CON | P3 | Z5 | FIN | IF | GF | B10 | B10-D05 | RES-3 |  |
| DUKHCONP03Z5ARGF3070 |  | Aluminum doors | 15d | 2014-04-01 | 2014-04-17 | DUKHCONP03Z5ARGF3065 SS+5d, DUKHCONP03Z5ARGF3065 FF+5d, DUKHCONP03Z4ARGF3070 | 40d | 0d | LABOR- SUBCONTRACTOR [27 h]; ALUMINIUM DOOR QTY [18 ea]; DOOR ERECTOR SK [72 h] | 22,066 | 51 | REM | P3P5IFGF51 | DUKHCON3PP5ARGF3070 | DUKHCONP03Z5ARGF3070 | DH | CON | P3 | Z5 | FIN | IF | GF | B10 | B10-D06 | RES-3 |  |
| DUKHCONP03Z5ARGF3075 |  | Carpentry & Joinery Works | 20d | 2014-04-07 | 2014-04-29 | DUKHCONP03Z5ARGF3070 SS+5d, DUKHCONP03Z4ARGF3075, DUKHCONP03Z5ARGF3070 FF+7d | 40d | 0d | CABINET QTY [54 ea]; WARDROBE QTY [18 ea]; JOINERY WORK SK [576 h]; LABOR- SUBCONTRACTOR [216 h] | 128,681 | 57 | REM | P3P5IFGF57 | DUKHCON3PP5ARGF3075 | DUKHCONP03Z5ARGF3075 | DH | CON | P3 | Z5 | FIN | IF | GF | B10 | B10-D05 | RES-3 |  |
| DUKHCONP03Z5ARGF3080 |  | Aluminum windows | 20d | 2014-04-08 | 2014-04-30 | DUKHCONP03Z5ARGF3070 FF+6d, DUKHCONP03Z4ARGF3080, DUKHCONP03Z5ARGF3070 SS+6d | 50d | 10d | LABOR- SUBCONTRACTOR [60 h]; ALUMINIUM WINDOWS QTY [60 ea]; WINDOW ERECTOR SK [160 h] | 45,348 | 54 | REM | P3P5IFGF54 | DUKHCON3PP5ARGF3080 | DUKHCONP03Z5ARGF3080 | DH | CON | P3 | Z5 | FIN | IF | GF | B10 | B10-D06 | RES-3 |  |
| DUKHCONP03Z5ARGF3085 |  | S.S.Balustrade | 20d | 2014-04-15 | 2014-05-07 | DUKHCONP03Z5ARGF3050 FF+7d, DUKHCONP03Z5ARGF3050 SS+7d, DUKHCONP03Z5ARGF3075 SS+7d, DUKHCONP03Z5ARGF3075 FF+7d | 45d | 5d | LABOR- SUBCONTRACTOR [17.25 h]; S.S.BALUSTRADE QTY [15 lm]; HANDRAIL ERECTOR SKILLED [30 h] | 21,690 | 63 | REM | P3P5IFGF63 | DUKHCON3PP5ARGF3085 | DUKHCONP03Z5ARGF3085 | DH | CON | P3 | Z5 | FIN | IF | GF | B10 | B10-D06 | RES-3 |  |
| DUKHCONP03Z5ARGF3090 |  | Installation of Granite Counter Top | 15d | 2014-04-20 | 2014-05-06 | DUKHCONP03Z5ARGF3075 FF+6d, DUKHCONP03Z5ARGF3075 SS+7d | 40d | 0d | GRANITE MASON SK [96 h]; LABOR- SUBCONTRACTOR [36 h]; GRANITE COUNTER TOP QTY [24 ea] | 23,258 | 60 | REM | P3P5IFGF60 | DUKHCON3PP5ARGF3090 | DUKHCONP03Z5ARGF3090 | DH | CON | P3 | Z5 | FIN | IF | GF | B10 | B10-D10 | RES-3 |  |
| DUKHCONP03Z5ARGF3095 |  | Final Painting | 25d | 2014-04-29 | 2014-05-27 | DUKHCONP03Z5ACGF4610 FF+10d, DUKHCONP03Z5ARGF3060 FF+8d, DUKHCONP03Z5ARGF3030 SS+10d, DUKHCONP03Z5ARGF3030 FF+10d, DUKHCONP03Z4ARGF3095, DUKHCONP03Z5ARGF3035 SS+13d, DUKHCONP03Z5ARGF3035 FF+13d, DUKHCONP03Z5ARGF3070 FF+5d, DUKHCONP03Z5ARGF3090 SS+8d, DUKHCONP03Z5ARGF3070 SS+5d, DUKHCONP03Z5ARGF3080 FF+8d, DUKHCONP03Z5ARGF3085 FF+7d, DUKHCONP03Z5ACGF4610 SS+10d, DUKHCONP03Z5ARGF3060 SS+8d, DUKHCONP03Z5ARGF3080 SS+8d, DUKHCONP03Z5ARGF3090 FF+8d, DUKHCONP03Z5ARGF3085 SS+7d, DUKHCONP03Z5ARGF3040 SS+13d, DUKHCONP03Z5ARGF3040 FF+13d | 40d |  | LABOR- SUBCONTRACTOR [1128.15 h]; PAINT QTY [3760.5 Sqm]; PAINTERS SK [3008.4 h] | 50,845 | 66 | REM | P3P5IFGF66 | DUKHCON3PP5ARGF3095 | DUKHCONP03Z5ARGF3095 | DH | CON | P3 | Z5 | FIN | IF | GF | B10 | B10-D11 | RES-3 | PNT |

Notes:
- DUKHCONP03Z5STFF2020: Expenses: P03-Concrete Works 29055
- DUKHCONP03Z5STFF2025: Expenses: P03-Concrete Works 7236
- DUKHCONP03Z5STFF2030: Expenses: P03-Concrete Works 183422
- DUKHCONP03Z5STFF2035: Expenses: P03-Concrete Works 83819
- DUKHCONP03Z5STRF2040: Expenses: P03-Concrete Works 9566
- DUKHCONP03Z5STRF2045: Expenses: P03-Concrete Works 1723
- DUKHCONP03Z5STRF2050: Expenses: P03-Concrete Works 33570
- DUKHCONP03Z5STRF2055: Expenses: P03-Concrete Works 16065
- DUKHCONP03Z5STRF2060: Expenses: P03-Block work 28644
- DUKHCONP03Z5STRF2065: Expenses: P03-Concrete Works 8997
- DUKHCONP03Z5ARGF3000: Expenses: P03-Block work 161435
- DUKHCONP03Z5ARGF3005: Expenses: P03-Finishes 32676
- DUKHCONP03Z5ARGF3010: Expenses: P03-Finishes 37269
- DUKHCONP03Z5ARGF3015: Expenses: P03-Finishes 17952
- DUKHCONP03Z5ARGF3020: Expenses: P03-Finishes 48488
- DUKHCONP03Z5ARGF3030: Expenses: P03-Painting and Decorating 18001
- DUKHCONP03Z5ARGF3025: Expenses: P03-Finishes 78427
- DUKHCONP03Z5ARGF3045: Expenses: P03-Finishes 22044
- DUKHCONP03Z5ARGF3035: Expenses: P03-Finishes 4202
- DUKHCONP03Z5ARGF3055: Expenses: P03-Finishes 8585
- DUKHCONP03Z5ARGF3040: Expenses: P03-Finishes 2251
- DUKHCONP03Z5ARGF3060: Expenses: P03-Finishes 57405
- DUKHCONP03Z5ARGF3050: Expenses: P03-Finishes 48650
- DUKHCONP03Z5ARGF3065: Expenses: P03-Carpentry and Joinery 225525
- DUKHCONP03Z5ARGF3070: Expenses: P03-Metal work 22066
- DUKHCONP03Z5ARGF3075: Expenses: P03-Carpentry and Joinery 128681
- DUKHCONP03Z5ARGF3080: Expenses: P03-Metal work 45348
- DUKHCONP03Z5ARGF3085: Expenses: P03-Metal work 21690
- DUKHCONP03Z5ARGF3090: Expenses: P03-Finishes 23258
- DUKHCONP03Z5ARGF3095: Expenses: P03-Painting and Decorating 50845

| ID | WBS | Activity | Duration | Start | Finish | Predecessors | Total float | Free float | Resources | Cost | CODE | rem | P3 ACTID | P6 ID (old) | NP61D | PROJECT | PHASES | PACKAGE | PART | ELEMENTS | STEP | FLOORS | BILL NOS | BILL DIVISION | RES PACK | EXECUTER |
| --- | --- | --- | --- | --- | --- | --- | --- | --- | --- | --- | --- | --- | --- | --- | --- | --- | --- | --- | --- | --- | --- | --- | --- | --- | --- | --- |
|  | 15 | **FIRST FLOORS** |  | 2014-01-26 | 2014-07-13 |  |  |  |  |  |  |  |  |  |  |  |  |  |  |  |  |  |  |  |  |  |
| DUKHCONP03Z5ARFF3300 |  | Block work | 25d | 2014-01-26 | 2014-02-24 | DUKHCONP03Z5STFF2035 SS+21d, DUKHCONP03Z5STFF2020 FF+21d, DUKHCONP03Z5STFF2020 SS+21d, DUKHCONP03Z5STFF2035 FF+21d, DUKHCONP03Z4ARFF3300 | 0d |  | BLOCK MASON SK [3554 h]; LABOR - CIVIL [1999.5 h]; BLOCK QTY [1777 Sqm] | 140,077 | 10 | REM | P3P5IFFF10 | DUKHCON3PP5ARFF3300 | DUKHCONP03Z5ARFF3300 | DH | CON | P3 | Z5 | FIN | IF | FF | B10 | B10-D03 | RES-3 |  |
| DUKHCONP03Z5ARFF3305 |  | Plastering work | 25d | 2014-02-20 | 2014-03-20 | DUKHCONP03Z5PLFF4325 SS+8d, DUKHCONP03Z5ARFF3300 SS+7d, DUKHCONP03Z5PLFF4325 FF+8d, DUKHCONP03Z5ELFF4035 SS+5d, DUKHCONP03Z5ELFF4035 FF+5d, DUKHCONP03Z4ARFF3305, DUKHCONP03Z5ARFF3300 FF+7d | 0d |  | PLASTER MASON SK [3530 h]; LABOR - CIVIL [1986 h]; PLASTER QTY [2206 Sqm] | 33,200 | 12 | REM | P3P5IFFF12 | DUKHCON3PP5ARFF3305 | DUKHCONP03Z5ARFF3305 | DH | CON | P3 | Z5 | FIN | IF | FF | B10 | B10-D10 | RES-3 |  |
| DUKHCONP03Z5ARFF3310 |  | Flooring screed | 21d | 2014-03-01 | 2014-03-24 | DUKHCONP03Z5ARFF3305 SS+7d, DUKHCONP03Z5ARFF3305 FF+3d | 15d |  | SCREED MASON SK [750 h]; LABOR - CIVIL [281.25 h]; FLOORING SCREED QTY [937 Sqm] | 30,918 | 15 | REM | P3P5IFFF15 | DUKHCON3PP5ARFF3310 | DUKHCONP03Z5ARFF3310 | DH | CON | P3 | Z5 | FIN | IF | FF | B10 | B10-D10 | RES-3 |  |
| DUKHCONP03Z5ARFF3330 |  | Paint First coat | 25d | 2014-03-09 | 2014-04-06 | DUKHCONP03Z5ARFF3305 FF+14d, DUKHCONP03Z5ARFF3305 SS+14d | 18d |  | LABOR- SUBCONTRACTOR [993.75 h]; PAINTERS SK [2651 h]; FIRSTCOAT PAINT QTY [3313.5 Sqm] | 18,001 | 21 | REM | P3P5IFFF21 | DUKHCON3PP5ARFF3330 | DUKHCONP03Z5ARFF3330 | DH | CON | P3 | Z5 | FIN | IF | FF | B10 | B10-D11 | RES-3 | ENT |
| DUKHCONP03Z5ARFF3315 |  | Wet area waterproofing | 15d | 2014-03-13 | 2014-03-30 | DUKHCONP03Z5ARFF3305 SS+7d, DUKHCONP03Z5ARFF3305 FF+8d, DUKHCONP03Z4ARFF3315 | 0d |  | LABOR- SUBCONTRACTOR [159 h]; WETAREA WATERPROOFING QTY [528 Sqm]; WATERPROOFING SPECIALIST SK [423 h] | 20,805 | 18 | REM | P3P5IFFF18 | DUKHCON3PP5ARFF3315 | DUKHCONP03Z5ARFF3315 | DH | CON | P3 | Z5 | FIN | IF | FF | B10 | B10-D10 | RES-3 |  |
| DUKHCONP03Z5ARFF3320 |  | Ceramic Wall Tiling | 25d | 2014-03-23 | 2014-04-20 | DUKHCONP03Z4ARFF3320, DUKHCONP03Z5PLFF4330 SS+7d, DUKHCONP03Z5ARFF3315 SS+8d, DUKHCONP03Z5PLFF4325 FF+4d, DUKHCONP03Z5PLFF4325 SS+4d, DUKHCONP03Z5PLFF4330 FF+7d, DUKHCONP03Z5ARFF3315 FF+7d | 0d |  | TILE MASON SK [1666 h]; LABOR- SUBCONTRACTOR [937.5 h]; CERAMIC WALL TILE QTY [833 Sqm] | 48,488 | 24 | REM | P3P5IFFF24 | DUKHCON3PP5ARFF3320 | DUKHCONP03Z5ARFF3320 | DH | CON | P3 | Z5 | FIN | IF | FF | B10 | B10-D10 | RES-3 |  |
| DUKHCONP03Z5ARFF3325 |  | Porcelain Tile flooring | 25d | 2014-03-30 | 2014-04-27 | DUKHCONP03Z4ARFF3325, DUKHCONP03Z5ARFF3310 FF+10d, DUKHCONP03Z5ARFF3320 SS+6d, DUKHCONP03Z5ARFF3310 SS+10d, DUKHCONP03Z5ARFF3320 FF+6d | 0d |  | TILE MASON SK [1144 h]; LABOR- SUBCONTRACTOR [643.5 h]; PORCELAIN FLOORING QTY [1001 Sqm] | 78,425 | 27 | REM | P3P5IFFF27 | DUKHCON3PP5ARFF3325 | DUKHCONP03Z5ARFF3325 | DH | CON | P3 | Z5 | FIN | IF | FF | B10 | B10-D10 | RES-3 |  |
| DUKHCONP03Z5ARFF3345 |  | Fixing of Suspension systems | 20d | 2014-04-13 | 2014-05-05 | DUKHCONP03Z5ARFF3330 SS+7d, DUKHCONP03Z4ARFF3345, DUKHCONP03Z5ELFF4045 SS+5d, DUKHCONP03Z5ELFF4045 FF+5d, DUKHCONP03Z5ARFF3330 FF+7d, DUKHCONP03Z5ARFF3325 FF+7d, DUKHCONP03Z5ARFF3325 SS+7d | 0d |  | LABOR- SUBCONTRACTOR [516.75 h]; SUSPENSION QTY [1147.5 Sqm]; FALSE CEILING SKILLED SK [918 h] | 22,044 | 36 | REM | P3P5IFFF36 | DUKHCON3PP5ARFF3345 | DUKHCONP03Z5ARFF3345 | DH | CON | P3 | Z5 | FIN | IF | FF | B10 | B10-D10 | RES-3 | SUS |
| DUKHCONP03Z5ARFF3335 |  | Slate Tile Flooring & Skirting | 15d | 2014-04-16 | 2014-05-03 | DUKHCONP03Z5ARFF3310 FF+13d, DUKHCONP03Z5ARFF3325 FF+5d, DUKHCONP03Z5ARFF3310 SS+13d, DUKHCONP03Z5ARFF3325 SS+13d | 12d |  | SUSPENSION QTY [1065 Sqm]; FALSE CEILING SKILLED SK [864 h]; SLATE TILE QTY [18 Sqm]; LABOR- SUBCONTRACTOR [486 h] | 4,202 | 30 |  | P3P5IFFF30 | DUKHCON3PP5ARFF3335 | DUKHCONP03Z5ARFF3335 | DH | CON | P3 | Z5 | FIN | IF | FF | B10 | B10-D10 | RES-3 |  |
| DUKHCONP03Z5ARFF3350 |  | Granite - Stair case flooring & Skirting | 20d | 2014-04-20 | 2014-05-12 | DUKHCONP03Z5ARFF3325 SS+13d, DUKHCONP03Z5ARFF3325 FF+13d | 4d |  | FALSE CEILING QTY [126 Sqm]; FALSE CEILING SKILLED SK [96 h]; LABOR- SUBCONTRACTOR [54 h] | 2,634 | 33 |  | P3P5IFFF33 | DUKHCON3PP5ARFF3350 | DUKHCONP03Z5ARFF3350 | DH | CON | P3 | Z5 | FIN | IF | FF | B10 | B10-D10 | RES-3 |  |
| DUKHCONP03Z5ARFF3360 |  | Gypsum board false ceiling | 25d | 2014-04-21 | 2014-05-19 | DUKHCONP03Z5ACFF4615 SS+7d, DUKHCONP03Z5ACFF4615 FF+7d, DUKHCONP03Z4ARFF3360, DUKHCONP03Z5ARFF3345 SS+7d, DUKHCONP03Z5ARFF3345 FF+7d | 0d |  | LABOR- SUBCONTRACTOR [467.51 h]; FALSE CEILING SKILLED SK [831.2 h]; FALSE CEILING QTY [1039 Sqm] | 57,405 | 39 | REM | P3P5IFFF39 | DUKHCON3PP5ARFF3360 | DUKHCONP03Z5ARFF3360 | DH | CON | P3 | Z5 | FIN | IF | FF | B10 | B10-D10 | RES-3 | GYP |
| DUKHCONP03Z5ARFF3355 |  | Aluminum tile false ceiling | 20d | 2014-04-24 | 2014-05-17 | DUKHCONP03Z5ARFF3345 FF+10d, DUKHCONP03Z5ACFF4615 FF+7d, DUKHCONP03Z5ACFF4615 SS+7d, DUKHCONP03Z4ARFF3355, DUKHCONP03Z5ARFF3345 SS+10d | 4d | 0d | LABOR- SUBCONTRACTOR [56.25 h]; FALSE CEILING SKILLED SK [100 h]; FALSE CEILING QTY [125 Sqm] | 8,583 | 39 | REM | P3P5IFFF38 | DUKHCON3PP5ARFF3355 | DUKHCONP03Z5ARFF3355 | DH | CON | P3 | Z5 | FIN | IF | FF | B10 | B10-D10 | RES-3 | ALU |
| DUKHCONP03Z5ARFF3365 |  | Wooden door | 15d | 2014-05-08 | 2014-05-25 | DUKHCONP03Z5ARFF3355 FF+3d, DUKHCONP03Z5ARFF3350 FF+7d, DUKHCONP03Z5ARFF3360 FF+5d, DUKHCONP03Z5ARFF3350 SS+7d, DUKHCONP03Z5ARFF3335 SS+7d, DUKHCONP03Z5ARFF3335 FF+7d, DUKHCONP03Z5ARFF3360 SS+5d, DUKHCONP03Z5ARFF3355 SS+3d, DUKHCONP03Z4ARFF3365 | 0d |  | LABOR- SUBCONTRACTOR [90 h]; WOODEN DOOR QTY [60 ea]; DOOR ERECTOR SK [240 h] | 178,634 | 42 | REM | P3P5IFFF42 | DUKHCON3PP5ARFF3365 | DUKHCONP03Z5ARFF3365 | DH | CON | P3 | Z5 | FIN | IF | FF | B10 | B10-D05 | RES-3 |  |
| DUKHCONP03Z5ARFF3370 |  | Aluminum Door | 20d | 2014-05-14 | 2014-06-05 | DUKHCONP03Z4ARFF3370, DUKHCONP03Z5ARFF3365 FF+5d, DUKHCONP03Z5ARFF3365 SS+5d | 0d |  | LABOR- SUBCONTRACTOR [27 h]; ALUMINIUM DOOR QTY [18 ea]; DOOR ERECTOR SK [72 h] | 47,668 | 45 | REM | P3P5IFFF45 | DUKHCON3PP5ARFF3370 | DUKHCONP03Z5ARFF3370 | DH | CON | P3 | Z5 | FIN | IF | FF | B10 | B10-D06 | RES-3 |  |
| DUKHCONP03Z5ARFF3380 |  | Aluminum windows | 20d | 2014-05-21 | 2014-06-12 | DUKHCONP03Z5ARFF3370 FF+6d, DUKHCONP03Z5ARFF3370 SS+6d | 11d |  | ALUMINIUM WINDOWS QTY [72 ea]; WINDOW ERECTOR SK [192 h]; LABOR- SUBCONTRACTOR [72 h] | 55,732 | 48 | REM | P3P5IFFF48 | DUKHCON3PP5ARFF3380 | DUKHCONP03Z5ARFF3380 | DH | CON | P3 | Z5 | FIN | IF | FF | B10 | B10-D06 | RES-3 |  |
| DUKHCONP03Z5ARFF3375 |  | Carpentry & Joinery Works | 25d | 2014-05-22 | 2014-06-19 | DUKHCONP03Z5ARFF3370 SS+7d, DUKHCONP03Z5ARFF3370 FF+5d, DUKHCONP03Z4ARFF3375 | 0d |  | LABOR- SUBCONTRACTOR [108 h]; S.S.BALUSTRADE QTY [96 lm]; HANDRAIL ERECTOR SKILLED [192 h]; CABINET QTY [36 ea] | 128,678 | 51 |  | P3P5IFFF51 | DUKHCON3PP5ARFF3375 | DUKHCONP03Z5ARFF3375 | DH | CON | P3 | Z5 | FIN | IF | FF | B10 | B10-D05 | RES-3 |  |
| DUKHCONP03Z5ARFF3385 |  | Handrail & Balustrade | 20d | 2014-06-03 | 2014-06-25 | DUKHCONP03Z5ARFF3350 FF+7d, DUKHCONP03Z5ARFF3350 SS+7d, DUKHCONP03Z5ARFF3375 SS+5d, DUKHCONP03Z5ARFF3375 FF+5d | 0d |  | LABOR- SUBCONTRACTOR [75 h]; HANDRAIL ERECTOR SKILLED [200 h]; S.S.BALUSTRADE QTY [15 lm] | 16,268 | 57 |  | P3P5IFFF57 | DUKHCON3PP5ARFF3385 | DUKHCONP03Z5ARFF3385 | DH | CON | P3 | Z5 | FIN | IF | FF | B10 | B10-D06 | RES-3 |  |
| DUKHCONP03Z5ARFF3390 |  | Installation of Granite Counter Top | 20d | 2014-06-07 | 2014-06-29 | DUKHCONP03Z5ARFF3375 FF+8d, DUKHCONP03Z5ARFF3375 SS+8d | 2d |  | GRANITE MASON SK [96 h]; LABOR- SUBCONTRACTOR [36 h]; GRANITE COUNTER TOP QTY [24 ea] | 23,258 | 54 | REM | P3P5IFFF54 | DUKHCON3PP5ARFF3390 | DUKHCONP03Z5ARFF3390 | DH | CON | P3 | Z5 | FIN | IF | FF | B10 | B10-D10 | RES-3 |  |
| DUKHCONP03Z5ARFF3395 |  | Final Painting | 25d | 2014-06-15 | 2014-07-13 | DUKHCONP03Z5ARFF3355 SS+10d, DUKHCONP03Z5ARFF3360 FF+10d, DUKHCONP03Z5ARFF3375 FF+8d, DUKHCONP03Z5ARFF3390 FF+8d, DUKHCONP03Z5ARFF3350 SS+8d, DUKHCONP03Z5ARFF3365 SS+8d, DUKHCONP03Z5ELFF4055, DUKHCONP03Z5ACFF4625 FF+10d, DUKHCONP03Z5ARFF3330 SS+10d, DUKHCONP03Z5ARFF3380 FF+10d, DUKHCONP03Z5ARFF3335 FF+8d, DUKHCONP03Z5ARFF3360 SS+10d, DUKHCONP03Z5ARFF3380 SS+10d, DUKHCONP03Z5ACFF4625 SS+10d, DUKHCONP03Z5ARFF3350 FF+8d, DUKHCONP03Z5ARFF3355 FF+10d, DUKHCONP03Z5ARFF3365 FF+8d, DUKHCONP03Z5ARFF3335 SS+8d, DUKHCONP03Z5ARFF3375 SS+8d, DUKHCONP03Z5ARFF3390 SS+5d, DUKHCONP03Z5ARFF3385 SS+10d, DUKHCONP03Z4ARFF3395, DUKHCONP03Z5ARFF3330 FF+10d, DUKHCONP03Z5ARFF3385 FF+10d | 0d |  | LABOR- SUBCONTRACTOR [993.75 h]; PAINTERS SK [2651 h]; PAINT QTY [3313.5 Sqm] | 43,143 | 60 | REM | P3P5IFFF60 | DUKHCON3PP5ARFF3395 | DUKHCONP03Z5ARFF3395 | DH | CON | P3 | Z5 | FIN | IF | FF | B10 | B10-D11 | RES-3 | PNT |
|  | 20 | **ROOF** |  | 2014-02-15 | 2014-04-20 |  |  |  |  |  |  |  |  |  |  |  |  |  |  |  |  |  |  |  |  |  |
| DUKHCONP03Z5ARRF3600 |  | Block work | 20d | 2014-02-15 | 2014-03-09 | DUKHCONP03Z5STRF2055 SS+21d, DUKHCONP03Z5STRF2055 FF+21d, DUKHCONP03Z4ARRF3600 | 67d | 0d | BLOCK MASON SK [312 h]; LABOR - CIVIL [175.5 h]; BLOCK QTY [156 Sqm] | 12,917 | 10 | REM | P3P5IFRF10 | DUKHCON3PP5ARRF3600 | DUKHCONP03Z5ARRF3600 | DH | CON | P3 | Z5 | FIN | IF | RF | B10 | B10-D03 | RES-3 |  |
| DUKHCONP03Z5ARRF3605 |  | Plastering work | 20d | 2014-02-23 | 2014-03-17 | DUKHCONP03Z5ARRF3600 FF+7d, DUKHCONP03Z5ARRF3600 SS+7d | 67d | 0d | PLASTER MASON SK [1248 h]; LABOR - CIVIL [702 h]; PLASTER QTY [780 Sqm] | 10,140 | 20 | REM | P3P5IFRF20 | DUKHCON3PP5ARRF3605 | DUKHCONP03Z5ARRF3605 | DH | CON | P3 | Z5 | FIN | IF | RF | B10 | B10-D10 | RES-3 |  |
| DUKHCONP03Z5ARRF3610 |  | Flooring screed | 15d | 2014-03-09 | 2014-03-25 | DUKHCONP03Z5ARRF3605 SS+7d, DUKHCONP03Z5ARRF3605 FF+7d | 72d | 0d | SCREED MASON SK [84 h]; LABOR - CIVIL [31.5 h]; FLOORING SCREED QTY [104 Sqm] | 3,435 | 30 | REM | P3P5IFRF30 | DUKHCON3PP5ARRF3610 | DUKHCONP03Z5ARRF3610 | DH | CON | P3 | Z5 | FIN | IF | RF | B10 | B10-D10 | RES-3 |  |
| DUKHCONP03Z5ARRF3695 |  | Painting | 20d | 2014-03-17 | 2014-04-08 | DUKHCONP03Z5ARRF3610 FF+7d, DUKHCONP03Z5ARRF3610 SS+7d | 72d | 0d | LABOR- SUBCONTRACTOR [144 h]; PAINT QTY [450 Sqm]; PAINTERS SK [360 h] | 6,202 | 40 |  | P3P5IFRF40 | DUKHCON3PP5ARRF3695 | DUKHCONP03Z5ARRF3695 | DH | CON | P3 | Z5 | FIN | IF | RF | B10 | B10-D11 | RES-3 |  |
| DUKHCONP03Z5ARRF3620 |  | Epoxy Painting | 15d | 2014-04-03 | 2014-04-20 | DUKHCONP03Z5ARRF3695 SS+10d, DUKHCONP03Z5ARRF3695 FF+10d | 72d |  | LABOR- SUBCONTRACTOR [6.75 h]; EPOXY QTY [33 Sqm]; EPOXY SK [18 h] | 2,352 | 50 | REM | P3P5IFRF50 | DUKHCON3PP5ARRF3620 | DUKHCONP03Z5ARRF3620 | DH | CON | P3 | Z5 | FIN | IF | RF | B10 | B10-D11 | RES-3 |  |

Notes:
- DUKHCONP03Z5ARFF3300: Expenses: P03-Block work 140077
- DUKHCONP03Z5ARFF3305: Expenses: P03-Finishes 33200
- DUKHCONP03Z5ARFF3310: Expenses: P03-Finishes 30918
- DUKHCONP03Z5ARFF3330: Expenses: P03-Painting and Decorating 18001
- DUKHCONP03Z5ARFF3315: Expenses: P03-Finishes 20805
- DUKHCONP03Z5ARFF3320: Expenses: P03-Finishes 48488
- DUKHCONP03Z5ARFF3325: Expenses: P03-Finishes 78425
- DUKHCONP03Z5ARFF3345: Expenses: P03-Finishes 22044
- DUKHCONP03Z5ARFF3335: Expenses: P03-Finishes 4202
- DUKHCONP03Z5ARFF3350: Expenses: P03-Finishes 2634
- DUKHCONP03Z5ARFF3360: Expenses: P03-Finishes 57405
- DUKHCONP03Z5ARFF3355: Expenses: P03-Finishes 8583
- DUKHCONP03Z5ARFF3365: Expenses: P03-Carpentry and Joinery 178634
- DUKHCONP03Z5ARFF3370: Expenses: P03-Metal work 47668
- DUKHCONP03Z5ARFF3380: Expenses: P03-Metal work 55732
- DUKHCONP03Z5ARFF3375: Expenses: P03-Carpentry and Joinery 128678
- DUKHCONP03Z5ARFF3385: Expenses: P03-Metal work 16268
- DUKHCONP03Z5ARFF3390: Expenses: P03-Finishes 23258
- DUKHCONP03Z5ARFF3395: Expenses: P03-Painting and Decorating 43143
- DUKHCONP03Z5ARRF3600: Expenses: P03-Block work 12917
- DUKHCONP03Z5ARRF3605: Expenses: P03-Finishes 10140
- DUKHCONP03Z5ARRF3610: Expenses: P03-Finishes 3435
- DUKHCONP03Z5ARRF3695: Expenses: P03-Painting and Decorating 6202
- DUKHCONP03Z5ARRF3620: Expenses: P03-Painting and Decorating 2352

| ID | WBS | Activity | Duration | Start | Finish | Predecessors | Total float | Free float | Resources | Cost | CODE | rem | P3 ACTID | P6 ID (old) | NP61D | PROJECT | PHASES | PACKAGE | PART | ELEMENTS | STEP | FLOORS | BILL NOS | BILL DIVISION | RES PACK |
| --- | --- | --- | --- | --- | --- | --- | --- | --- | --- | --- | --- | --- | --- | --- | --- | --- | --- | --- | --- | --- | --- | --- | --- | --- | --- |
|  | 15 | **EXTERNAL FINISHES** |  | 2014-02-20 | 2014-05-10 |  |  |  |  |  |  |  |  |  |  |  |  |  |  |  |  |  |  |  |  |
|  | 10 | **ROOF** |  | 2014-02-20 | 2014-04-26 |  |  |  |  |  |  |  |  |  |  |  |  |  |  |  |  |  |  |  |  |
| DUKHCONP03Z5ARRF3630 |  | Leveling Screed for Waterproofing | 25d | 2014-02-20 | 2014-03-20 | DUKHCONP03Z5STRF2065 FF+10d, DUKHCONP03Z5STRF2060 FF+10d, DUKHCONP03Z5STRF2065 SS+10d, DUKHCONP03Z4ARRF3630, DUKHCONP03Z5STRF2060 SS+10d | 62d | 0d | SCREED MASON SK [470 h]; LABOR- SUBCONTRACTOR [264.75 h]; ROOF WP SCREED QTY [1173 Sqm] | 46,704 | 10 | REM | P3P5EFRF10 | DUKHCON3PP5ARRF3630 | DUKHCONP03Z5ARRF3630 | DH | CON | P3 | Z5 | FIN | EF | RF | B10 | B10-D04 | RES-3 |
| DUKHCONP03Z5ARRF3635 |  | Laying of Waterproofing Membrane | 25d | 2014-02-24 | 2014-03-24 | DUKHCONP03Z5ARRF3630 SS+3d, DUKHCONP03Z5ARRF3630 FF+3d | 62d | 0d | LABOR- SUBCONTRACTOR [557.25 h]; ROOF WP MEMBRANE QTY [2784 Sqm]; WATERPROOFING SPECIALIST SK [1485 h] | 61,507 | 15 | REM | P3P5EFRF15 | DUKHCON3PP5ARRF3635 | DUKHCONP03Z5ARRF3635 | DH | CON | P3 | Z5 | FIN | EF | RF | B10 | B10-D04 | RES-3 |
| DUKHCONP03Z5ARRF3640 |  | Installation of Insulation & Protection | 25d | 2014-03-01 | 2014-03-29 | DUKHCONP03Z5ARRF3635 FF+4d, DUKHCONP03Z5ARRF3635 SS+4d | 62d | 0d | LABOR- SUBCONTRACTOR [352.5 h]; ROOF WP INSULATION QTY [2346 Sqm]; WATERPROOFING SPECIALIST SK [939 h] | 34,449 | 20 | REM | P3P5EFRF20 | DUKHCON3PP5ARRF3640 | DUKHCONP03Z5ARRF3640 | DH | CON | P3 | Z5 | FIN | EF | RF | B10 | B10-D04 | RES-3 |
| DUKHCONP03Z5ARRF3645 |  | Lime Stone Chips & Paving slab Installation | 25d | 2014-03-05 | 2014-04-02 | DUKHCONP03Z5ARRF3640 SS+4d, DUKHCONP03Z5ARRF3640 FF+4d | 62d | 0d | TILE MASON SK [95 h]; LABOR- SUBCONTRACTOR [202.5 h]; LIME STONE QTY [237 Sqm]; PRECAST PAVING SLAB QTY [1110 Sqm]; PRE CAST CONCRETE SK [444 h] | 84,498 | 25 | REM | P3P5EFRF25 | DUKHCON3PP5ARRF3645 | DUKHCONP03Z5ARRF3645 | DH | CON | P3 | Z5 | FIN | EF | RF | B10 | B10-D04 | RES-3 |
| DUKHCONP03Z5ARRF3650 |  | Install. of Gal. Frame & Aluminum Slat Screen | 25d | 2014-03-13 | 2014-04-10 | DUKHCONP03Z5ARRF3645 SS+7d, DUKHCONP03Z5ARRF3645 FF+7d | 62d | 0d | LABOR- SUBCONTRACTOR [378 h]; ALUMINIUM SCREEN QTY [189 Sqm]; DOOR ERECTOR SK [504 h] | 53,449 | 35 | REM | P3P5EFRF35 | DUKHCON3PP5ARRF3650 | DUKHCONP03Z5ARRF3650 | DH | CON | P3 | Z5 | FIN | EF | RF | B10 | B10-D06 | RES-3 |
| DUKHCONP03Z5ARRF3655 |  | Installation of Pumps Protection cabinets | 20d | 2014-03-29 | 2014-04-20 | DUKHCONP03Z4ARRF3655, DUKHCONP03Z5ARRF3645 FF+7d, DUKHCONP03Z5ARRF3650 SS+8d, DUKHCONP03Z5ARRF3650 FF+8d, DUKHCONP03Z5ARRF3645 SS+7d | 62d | 0d | LABOR- SUBCONTRACTOR [63 h]; CABINET QTY [21 ea]; JOINERY WORK SK [168 h] | 9,975 | 30 | REM | P3P5EFRF30 | DUKHCON3PP5ARRF3655 | DUKHCONP03Z5ARRF3655 | DH | CON | P3 | Z5 | FIN | EF | RF | B10 | B10-D04 | RES-3 |
| DUKHCONP03Z5ARRF3660 |  | Installation of Access Ladder | 15d | 2014-04-09 | 2014-04-26 | DUKHCONP03Z5ARRF3655 SS+5d, DUKHCONP03Z5ARRF3655 FF+5d | 67d |  | LABOR- SUBCONTRACTOR [54 h]; LADDER QTY [18 ea]; LADDER ERECTOR SK [144 h] | 19,196 | 40 | REM | P3P5EFRF40 | DUKHCON3PP5ARRF3660 | DUKHCONP03Z5ARRF3660 | DH | CON | P3 | Z5 | FIN | EF | RF | B10 | B10-D06 | RES-3 |
|  | 15 | **ELEVATION** |  | 2014-03-19 | 2014-05-10 |  |  |  |  |  |  |  |  |  |  |  |  |  |  |  |  |  |  |  |  |
| DUKHCONP03Z5AREL3665 |  | External Plastering | 25d | 2014-03-19 | 2014-04-16 | DUKHCONP03Z5STRF2065 SS+7d, DUKHCONP03Z5STRF2065 FF+7d, DUKHCONP03Z5ARRF3605 SS+7d, DUKHCONP03Z5ARFF3305 SS+7d, DUKHCONP03Z5ARFF3305 FF+7d, DUKHCONP03Z4AREL3665 | 53d | 0d | PLASTER MASON SK [5862 h]; LABOR - CIVIL [3297.75 h]; EXTERNAL PLASTER QTY [2931 Sqm] | 71,672 | 10 | REM | P3P5EFEL10 | DUKHCON3PP5AREL3665 | DUKHCONP03Z5AREL3665 | DH | CON | P3 | Z5 | FIN | EF | EL | B10 | B10-D10 | RES-3 |
| DUKHCONP03Z5AREL3675 |  | GRC Panel Works | 20d | 2014-04-06 | 2014-04-28 | DUKHCONP03Z5AREL3665 FF+10d, DUKHCONP03Z4AREL3675, DUKHCONP03Z5AREL3665 SS+10d | 55d | 0d | LABOR- SUBCONTRACTOR [150 h]; GRC SK [400 h] | 20,058 | 15 |  | P3P5EFEL18 | DUKHCON3PP5AREL3675 | DUKHCONP03Z5AREL3675 | DH | CON | P3 | Z5 | FIN | EF | EL | B10 | B10-D10 | RES-3 |
| DUKHCONP03Z5AREL3680 |  | External Painting | 20d | 2014-04-17 | 2014-05-10 | DUKHCONP03Z5AREL3675 SS+10d, DUKHCONP03Z5ARRF3695 FF+4d, DUKHCONP03Z4AREL3680, DUKHCONP03Z5AREL3675 FF+10d, DUKHCONP03Z5ARRF3695 SS+4d | 55d |  | LABOR- SUBCONTRACTOR [882 h]; PAINT QTY [2931 Sqm]; PAINTERS SK [2352 h] | 106,011 | 20 |  | P3P5EFEL20 | DUKHCON3PP5AREL3680 | DUKHCONP03Z5AREL3680 | DH | CON | P3 | Z5 | FIN | EF | EL | B10 | B10-D11 | RES-3 |
|  | 20 | **MEP WORKS** |  | 2013-09-05 | 2014-07-15 |  |  |  |  |  |  |  |  |  |  |  |  |  |  |  |  |  |  |  |  |
|  | 10 | **ELECTRICAL WORKS** |  | 2013-12-21 | 2014-07-15 |  |  |  |  |  |  |  |  |  |  |  |  |  |  |  |  |  |  |  |  |
|  | 10 | **GROUND FLOOR** |  | 2013-12-21 | 2014-04-29 |  |  |  |  |  |  |  |  |  |  |  |  |  |  |  |  |  |  |  |  |
| DUKHCONP03Z5ELGF4000 |  | Fixing of wall conduits & switch socket boxes | 25d | 2013-12-21 | 2014-01-18 | DUKHCONP03Z5ARGF3000 FF+5d, DUKHCONP03Z5ARGF3000 SS+5d | 49d | 0d | LABOR- SUBCONTRACTOR [162 h]; ELECTRICIANS SK [940.8 h]; SOCKET BOXES QTY [645 ea]; CODUITS QTY [180 lm] | 28,763 | 10 |  | P3P5EWGF10 | DUKHCON3PP5ELGF4000 | DUKHCONP03Z5ELGF4000 | DH | CON | P3 | Z5 | MEP | EW | GF | B10 | B10-D09 | RES-3 |
| DUKHCONP03Z5ELGF4005 |  | Cable tray & trunking installation | 20d | 2014-01-01 | 2014-01-23 | DUKHCONP03Z5ELGF4000 SS+5d, DUKHCONP03Z4ELGF4005, DUKHCONP03Z5ELGF4000 FF+5d | 69d | 0d | LABOR- SUBCONTRACTOR [396 h]; ELECTRICIANS SK [1444.8 h]; CABLE TRAY QTY [255 lm] | 19,776 | 15 |  | P3P5EWGF15 | DUKHCON3PP5ELGF4005 | DUKHCONP03Z5ELGF4005 | DH | CON | P3 | Z5 | MEP | EW | GF | B10 | B10-D09 | RES-3 |
| DUKHCONP03Z5ELGF4010 |  | Installation of wiring & Main Cabling | 25d | 2014-01-09 | 2014-02-06 | DUKHCONP03Z5ELGF4005 SS+7d, DUKHCONP03Z5ELGF4005 FF+7d | 69d | 27d | LABOR- SUBCONTRACTOR [144 h]; ELECTRICIANS SK [504 h]; CABLE QTY [450 lm] | 105,208 | 20 |  | P3P5EWGF20 | DUKHCON3PP5ELGF4010 | DUKHCONP03Z5ELGF4010 | DH | CON | P3 | Z5 | MEP | EW | GF | B10 | B10-D09 | RES-3 |
| DUKHCONP03Z5ELGF4015 |  | Install. of CAMS & Fire Fighting Accessories | 25d | 2014-03-15 | 2014-04-12 | DUKHCONP03Z5ARGF3060 FF+7d, DUKHCONP03Z5ARGF3055 FF+7d, DUKHCONP03Z5ARGF3055 SS+7d, DUKHCONP03Z5ARGF3060 SS+7d, DUKHCONP03Z4ELGF4015 | 49d | 37d | LABOR- SUBCONTRACTOR [522 h]; MECHANICALS SK [939.6 h]; SMOKE DETECTOR POINTS QTY [150 ea]; FIRE EXTINGUISHER QTY [21 ea] | 64,049 | 35 |  | P3P5EWGF35 | DUKHCON3PP5ELGF4015 | DUKHCONP03Z5ELGF4015 | DH | CON | P3 | Z5 | MEP | EW | GF | B10 | B10-D09 | RES-3 |
| DUKHCONP03Z5ELGF4020 |  | Installation of DBS,MCCB Accessories. | 20d | 2014-03-20 | 2014-04-12 | DUKHCONP03Z5ARGF3055 FF+7d, DUKHCONP03Z5ELGF4010 FF+5d, DUKHCONP03Z5ARGF3060 SS+7d, DUKHCONP03Z5ARGF3060 FF+7d, DUKHCONP03Z5ARGF3055 SS+7d, DUKHCONP03Z5ELGF4010 SS+5d | 42d | 0d | LABOR- SUBCONTRACTOR [54 h]; ELECTRICIANS SK [168 h]; MCCB QTY [15 ea]; DB QTY [12 ea] | 82,222 | 25 |  | P3P5EWGF25 | DUKHCON3PP5ELGF4020 | DUKHCONP03Z5ELGF4020 | DH | CON | P3 | Z5 | MEP | EW | GF | B10 | B10-D09 | RES-3 |
| DUKHCONP03Z5ELGF4025 |  | Installation of Lighting fixtures & Accessories | 25d | 2014-04-01 | 2014-04-29 | DUKHCONP03Z5ELGF4020 FF+10d, DUKHCONP03Z5ELGF4020 SS+10d, DUKHCONP03Z4ELGF4025, DUKHCONP03Z5ARGF3060 FF+10d, DUKHCONP03Z5ARGF3055 SS+10d, DUKHCONP03Z5ARGF3055 FF+10d, DUKHCONP03Z5ARGF3060 SS+10d | 44d | 36d | LABOR- SUBCONTRACTOR [900 h]; ELECTRICIANS SK [1680 h]; LIGHTS QTY [744 ea] | 118,790 | 30 |  | P3P5EWGF30 | DUKHCON3PP5ELGF4025 | DUKHCONP03Z5ELGF4025 | DH | CON | P3 | Z5 | MEP | EW | GF | B10 | B10-D09 | RES-3 |
| DUKHCONP03Z5ELGF4030 |  | Installation of Telephone System | 20d | 2014-04-01 | 2014-04-23 | DUKHCONP03Z4ELGF4030, DUKHCONP03Z5ELGF4020 FF+10d, DUKHCONP03Z5ARGF3060 FF+5d, DUKHCONP03Z5ELGF4020 SS+10d, DUKHCONP03Z5ARGF3060 SS+5d | 42d | 15d | LABOR- SUBCONTRACTOR [72 h]; ELECTRICIANS SK [470.4 h]; TELEPHONE SOCKETS QTY [42 ea] | 25,360 | 40 |  | P3P5EWGF40 | DUKHCON3PP5ELGF4030 | DUKHCONP03Z5ELGF4030 | DH | CON | P3 | Z5 | MEP | EW | GF | B10 | B10-D09 | RES-3 |
|  | 15 | **FIRST FLOORS** |  | 2014-02-01 | 2014-06-16 |  |  |  |  |  |  |  |  |  |  |  |  |  |  |  |  |  |  |  |  |
| DUKHCONP03Z5ELFF4035 |  | Fixing of wall conduits & switch socket boxes | 25d | 2014-02-01 | 2014-03-02 | DUKHCONP03Z5ARFF3300 SS+5d, DUKHCONP03Z5ARFF3300 FF+5d | 11d | 0d | LABOR- SUBCONTRACTOR [162 h]; ELECTRICIANS SK [940.8 h]; SOCKET BOXES QTY [645 ea]; CODUITS QTY [180 lm] | 28,166 | 10 |  | P3P5EWFF10 | DUKHCON3PP5ELFF4035 | DUKHCONP03Z5ELFF4035 | DH | CON | P3 | Z5 | MEP | EW | FF | B10 | B10-D09 | RES-3 |
| DUKHCONP03Z5ELFF4040 |  | Cable tray & trunking installation | 20d | 2014-02-13 | 2014-03-08 | DUKHCONP03Z5ELFF4035 FF+5d, DUKHCONP03Z5ELFF4035 SS+5d | 33d | 3d | LABOR- SUBCONTRACTOR [396 h]; ELECTRICIANS SK [1444.8 h]; CABLE TRAY QTY [255 lm] | 19,770 | 15 |  | P3P5EWFF15 | DUKHCON3PP5ELFF4040 | DUKHCONP03Z5ELFF4040 | DH | CON | P3 | Z5 | MEP | EW | FF | B10 | B10-D09 | RES-3 |
| DUKHCONP03Z5ELFF4045 |  | Installation of wiring & Main Cabling | 25d | 2014-02-25 | 2014-03-25 | DUKHCONP03Z5ELFF4040 FF+7d, DUKHCONP03Z5ELFF4040 SS+7d, DUKHCONP03Z4ELFF4045 | 30d |  | LABOR- SUBCONTRACTOR [144 h]; ELECTRICIANS SK [504 h]; CABLE QTY [444 lm] | 102,805 | 20 |  | P3P5EWFF20 | DUKHCON3PP5ELFF4045 | DUKHCONP03Z5ELFF4045 | DH | CON | P3 | Z5 | MEP | EW | FF | B10 | B10-D09 | RES-3 |
| DUKHCONP03Z5ELFF4050 |  | Installation of Telephone System | 25d | 2014-04-30 | 2014-05-28 | DUKHCONP03Z5MSEX5010 FF, DUKHCONP03Z5ELGF4030 SS+10d, DUKHCONP03Z5ARFF3355 FF+5d, DUKHCONP03Z5ARFF3360 SS+5d, DUKHCONP03Z5ARFF3355 SS+5d, DUKHCONP03Z5ELGF4030 FF+10d, DUKHCONP03Z5ARFF3360 FF+5d | 27d | 19d | LABOR- SUBCONTRACTOR [72 h]; ELECTRICIANS SK [470.4 h]; TELEPHONE SOCKETS QTY [42 ea] | 24,744 | 40 |  | P3P5EWFF40 | DUKHCON3PP5ELFF4050 | DUKHCONP03Z5ELFF4050 | DH | CON | P3 | Z5 | MEP | EW | FF | B10 | B10-D09 | RES-3 |
| DUKHCONP03Z5ELFF4055 |  | Install. of CAMS & Fire Fighting Accessories | 25d | 2014-05-03 | 2014-05-31 | DUKHCONP03Z5ELGF4015 SS+5d, DUKHCONP03Z5ARFF3360 FF+7d, DUKHCONP03Z5ARFF3360 SS+7d, DUKHCONP03Z5ARFF3355 SS+7d, DUKHCONP03Z5ARFF3355 FF+7d, DUKHCONP03Z4ELFF4055, DUKHCONP03Z5ELGF4015 FF+5d | 12d |  | LABOR- SUBCONTRACTOR [576 h]; MECHANICALS SK [1036.8 h]; SMOKE DETECTOR POINTS QTY [147 ea]; FIRE EXTINGUISHER QTY [42 ea] | 64,049 | 35 |  | P3P5EWFF35 | DUKHCON3PP5ELFF4055 | DUKHCONP03Z5ELFF4055 | DH | CON | P3 | Z5 | MEP | EW | FF | B10 | B10-D09 | RES-3 |
| DUKHCONP03Z5ELFF4060 |  | Installation of DBS,MCCB Accessories. | 20d | 2014-05-06 | 2014-05-28 | DUKHCONP03Z5ARFF3355 SS+8d, DUKHCONP03Z5ELFF4045 FF+5d, DUKHCONP03Z5ELFF4045 SS+5d, DUKHCONP03Z5ARFF3355 FF+8d, DUKHCONP03Z4ELFF4060, DUKHCONP03Z5ARFF3360 SS+8d, DUKHCONP03Z5ARFF3360 FF+8d | 8d | 0d | LABOR- SUBCONTRACTOR [54 h]; ELECTRICIANS SK [134.4 h]; MCCB QTY [15 ea]; DB QTY [9 ea] | 9,226 | 25 |  | P3P5EWFF25 | DUKHCON3PP5ELFF4060 | DUKHCONP03Z5ELFF4060 | DH | CON | P3 | Z5 | MEP | EW | FF | B10 | B10-D09 | RES-3 |
| DUKHCONP03Z5ELFF4065 |  | Installation of Lighting fixtures & Accessories | 25d | 2014-05-19 | 2014-06-16 | DUKHCONP03Z5ELGF4025 FF+5d, DUKHCONP03Z5ELFF4060 FF+11d, DUKHCONP03Z5ARFF3355 FF+10d, DUKHCONP03Z4ELFF4065, DUKHCONP03Z5ELFF4060 SS+11d, DUKHCONP03Z5ARFF3360 FF+10d, DUKHCONP03Z5ARFF3360 SS+10d, DUKHCONP03Z5ELGF4025 SS+5d, DUKHCONP03Z5ARFF3355 SS+10d | 8d | 0d | LABOR- SUBCONTRACTOR [882 h]; ELECTRICIANS SK [1646.4 h]; LIGHTS QTY [741 ea] | 118,791 | 30 |  | P3P5EWFF30 | DUKHCON3PP5ELFF4065 | DUKHCONP03Z5ELFF4065 | DH | CON | P3 | Z5 | MEP | EW | FF | B10 | B10-D09 | RES-3 |

Notes:
- DUKHCONP03Z5ARRF3630: Expenses: P03-Roofing 46704
- DUKHCONP03Z5ARRF3635: Expenses: P03-Roofing 61507
- DUKHCONP03Z5ARRF3640: Expenses: P03-Roofing 34449
- DUKHCONP03Z5ARRF3645: Expenses: P03-Roofing 84498
- DUKHCONP03Z5ARRF3650: Expenses: P03-Metal work 53449
- DUKHCONP03Z5ARRF3655: Expenses: P03-Roofing 9975
- DUKHCONP03Z5ARRF3660: Expenses: P03-Metal work 19196
- DUKHCONP03Z5AREL3665: Expenses: P03-Finishes 71672
- DUKHCONP03Z5AREL3675: Expenses: P03-Finishes 20058
- DUKHCONP03Z5AREL3680: Expenses: P03-Painting and Decorating 106011
- DUKHCONP03Z5ELGF4000: Expenses: P03-Electrical Installations 28763
- DUKHCONP03Z5ELGF4005: Expenses: P03-Electrical Installations 19776
- DUKHCONP03Z5ELGF4010: Expenses: P03-Electrical Installations 105208
- DUKHCONP03Z5ELGF4015: Expenses: P03-Electrical Installations 64049
- DUKHCONP03Z5ELGF4020: Expenses: P03-Electrical Installations 82222
- DUKHCONP03Z5ELGF4025: Expenses: P03-Electrical Installations 118790
- DUKHCONP03Z5ELGF4030: Expenses: P03-Electrical Installations 25360
- DUKHCONP03Z5ELFF4035: Expenses: P03-Electrical Installations 28166
- DUKHCONP03Z5ELFF4040: Expenses: P03-Electrical Installations 19770
- DUKHCONP03Z5ELFF4045: Expenses: P03-Electrical Installations 102805
- DUKHCONP03Z5ELFF4050: Expenses: P03-Electrical Installations 24744
- DUKHCONP03Z5ELFF4055: Expenses: P03-Electrical Installations 64049
- DUKHCONP03Z5ELFF4060: Expenses: P03-Electrical Installations 9226
- DUKHCONP03Z5ELFF4065: Expenses: P03-Electrical Installations 118791

| ID | WBS | Activity | Duration | Start | Finish | Predecessors | Total float | Free float | Resources | Cost | CODE | P3 ACTID | P6 ID (old) | NP61D | PROJECT | PHASES | PACKAGE | PART | ELEMENTS | STEP | FLOORS | BILL NOS | BILL DIVISION | RES PACK |
| --- | --- | --- | --- | --- | --- | --- | --- | --- | --- | --- | --- | --- | --- | --- | --- | --- | --- | --- | --- | --- | --- | --- | --- | --- |
|  | 20 | **ROOF** |  | 2014-06-08 | 2014-07-15 |  |  |  |  |  |  |  |  |  |  |  |  |  |  |  |  |  |  |  |
| DUKHCONP03Z5ELRF4070 |  | Installation of Isolator | 18d | 2014-06-08 | 2014-06-28 | DUKHCONP03Z5ELFF4065 FF+10d, DUKHCONP03Z5ELFF4050 SS+5d, DUKHCONP03Z5ARRF3645 SS+7d, DUKHCONP03Z5ARRF3645 FF+7d, DUKHCONP03Z5ELFF4045 SS+10d, DUKHCONP03Z5ELFF4050 FF+7d, DUKHCONP03Z5ELFF4045 FF+10d, DUKHCONP03Z5ELFF4065 SS+10d | 8d | 0d | LABOR- SUBCONTRACTOR [108 h]; ELECTRICIANS SK [201.6 h]; ISOLATOR QTY [36 ea] | 41,395 | 10 | P3P5EWRF10 | DUKHCON3PP5ELRF4070 | DUKHCONP03Z5ELRF4070 | DH | CON | P3 | Z5 | MEP | EW | RF | B10 | B10-D09 | RES-3 |
| DUKHCONP03Z5ELRF4075 |  | Installation of TV Dish Antenna | 23d | 2014-06-19 | 2014-07-15 | DUKHCONP03Z5ELRF4070 SS+10d, DUKHCONP03Z5ELRF4070 FF+10d | 8d |  | LABOR- SUBCONTRACTOR [1332 h]; ELECTRICIANS SK [3393.6 h]; CONTROL BOX QTY [162 ea]; SWITCHING BOX QTY [141 ea] | 30,342 | 15 | P3P5EWRF15 | DUKHCON3PP5ELRF4075 | DUKHCONP03Z5ELRF4075 | DH | CON | P3 | Z5 | MEP | EW | RF | B10 | B10-D09 | RES-3 |
|  | 15 | **PLUMBING, DRAINAGE & FIRE FIGHTING WORKS** |  | 2013-09-05 | 2014-06-29 |  |  |  |  |  |  |  |  |  |  |  |  |  |  |  |  |  |  |  |
|  | 10 | **GROUND FLOOR** |  | 2013-09-05 | 2014-04-29 |  |  |  |  |  |  |  |  |  |  |  |  |  |  |  |  |  |  |  |
| DUKHCONP03Z5PLUG4300 |  | Drainage / Storm Pipes in Grade Slab | 20d | 2013-09-05 | 2013-09-28 | DUKHCONP03Z5STUG1040 SS+10d, DUKHCONP03Z5STUG1040 FF+10d | 0d |  | LABOR- SUBCONTRACTOR [36 h]; MECHANICALS SK [129.6 h]; DRAINAGE PIPES QTY [234 lm] | 14,418 | 10 | P3P5PLUG10 | DUKHCON3PP5PLUG4300 | DUKHCONP03Z5PLUG4300 | DH | CON | P3 | Z5 | ST | SB | UG | B10 | B10-D07 | RES-3 |
| DUKHCONP03Z5PLGF4305 |  | Installation of Plumbing pipes & testing | 18d | 2013-12-31 | 2014-01-20 | DUKHCONP03Z4PLGF4305, DUKHCONP03Z5ARGF3000 FF+7d, DUKHCONP03Z5ARGF3000 SS+7d | 40d | 0d | LABOR- SUBCONTRACTOR [594 h]; MECHANICALS SK [2138.4 h]; PLUMB PIPES QTY [1986 lm] | 84,763 | 10 | P3P5PLGF10 | DUKHCON3PP5PLGF4305 | DUKHCONP03Z5PLGF4305 | DH | CON | P3 | Z5 | MEP | PL | GF | B10 | B10-D07 | RES-3 |
| DUKHCONP03Z5PLGF4310 |  | Installation of Drainage pipes &testing | 18d | 2013-12-31 | 2014-01-20 | DUKHCONP03Z5ARGF3000 FF+7d, DUKHCONP03Z5ARGF3000 SS+7d, DUKHCONP03Z5PLGF4305 SS, DUKHCONP03Z5PLGF4305 FF | 61d | 17d | LABOR- SUBCONTRACTOR [54 h]; MECHANICALS SK [162 h]; DRAINAGE PIPES QTY [324 lm] | 1,912 | 15 | P3P5PLGF15 | DUKHCON3PP5PLGF4310 | DUKHCONP03Z5PLGF4310 | DH | CON | P3 | Z5 | MEP | PL | GF | B10 | B10-D07 | RES-3 |
| DUKHCONP03Z5PLGF4315 |  | Sanitary Fittings & Accessories | 20d | 2014-04-01 | 2014-04-23 | DUKHCONP03Z5PLGF4310 FF+5d, DUKHCONP03Z5ARGF3065 FF+5d, DUKHCONP03Z4PLGF4315, DUKHCONP03Z5ARGF3065 SS+5d, DUKHCONP03Z5PLGF4310 SS+5d | 64d | 0d | LABOR- SUBCONTRACTOR [126 h]; MECHANICALS SK [226.8 h]; SANITARY ACC QTY [216 ea] | 92,011 | 20 | P3P5PLGF20 | DUKHCON3PP5PLGF4315 | DUKHCONP03Z5PLGF4315 | DH | CON | P3 | Z5 | MEP | PL | GF | B10 | B10-D07 | RES-3 |
| DUKHCONP03Z5PLGF4320 |  | Installation of Water Heater | 15d | 2014-04-13 | 2014-04-29 | DUKHCONP03Z5ARGF3060 FF+5d, DUKHCONP03Z5PLGF4315 SS+5d, DUKHCONP03Z5PLGF4315 FF+5d, DUKHCONP03Z5ARGF3060 SS+5d, DUKHCONP03Z4PLGF4320 | 64d |  | LABOR- SUBCONTRACTOR [18 h]; MECHANICALS SK [32.4 h]; WATER HEATER QTY [6 ea] | 1,055 | 25 | P3P5PLGF25 | DUKHCON3PP5PLGF4320 | DUKHCONP03Z5PLGF4320 | DH | CON | P3 | Z5 | MEP | PL | GF | B10 | B10-D07 | RES-3 |
|  | 15 | **FIRST FLOORS** |  | 2014-02-10 | 2014-06-11 |  |  |  |  |  |  |  |  |  |  |  |  |  |  |  |  |  |  |  |
| DUKHCONP03Z5PLFF4325 |  | Installation of Plumbing pipes & testing | 18d | 2014-02-10 | 2014-03-03 | DUKHCONP03Z5ARFF3300 SS+6d, DUKHCONP03Z5ARFF3300 FF+6d | 0d |  | LABOR- SUBCONTRACTOR [594 h]; MECHANICALS SK [2138.4 h]; PLUMB PIPES QTY [1986 lm] | 78,473 | 10 | P3P5PLFF10 | DUKHCON3PP5PLFF4325 | DUKHCONP03Z5PLFF4325 | DH | CON | P3 | Z5 | MEP | PL | FF | B10 | B10-D07 | RES-3 |
| DUKHCONP03Z5PLFF4330 |  | Installation of Drainage pipes & testing | 18d | 2014-02-12 | 2014-03-04 | DUKHCONP03Z5PLFF4325 FF, DUKHCONP03Z4PLFF4330, DUKHCONP03Z5PLFF4325 SS, DUKHCONP03Z5ARFF3300 FF+7d, DUKHCONP03Z5ARFF3300 SS+7d | 26d |  | LABOR- SUBCONTRACTOR [54 h]; MECHANICALS SK [162 h]; DRAINAGE PIPES QTY [324 lm] | 1,639 | 15 | P3P5PLFF15 | DUKHCON3PP5PLFF4330 | DUKHCONP03Z5PLFF4330 | DH | CON | P3 | Z5 | MEP | PL | FF | B10 | B10-D07 | RES-3 |
| DUKHCONP03Z5PLFF4335 |  | Sanitary Fittings & Accessories | 20d | 2014-05-14 | 2014-06-05 | DUKHCONP03Z5PLFF4330 FF+5d, DUKHCONP03Z5PLFF4330 SS+5d, DUKHCONP03Z5ARFF3365 FF+5d, DUKHCONP03Z5ARFF3365 SS+5d | 12d | 0d | LABOR- SUBCONTRACTOR [126 h]; MECHANICALS SK [226.8 h]; SANITARY ACC QTY [216 ea] | 92,011 | 20 | P3P5PLFF20 | DUKHCON3PP5PLFF4335 | DUKHCONP03Z5PLFF4335 | DH | CON | P3 | Z5 | MEP | PL | FF | B10 | B10-D07 | RES-3 |
| DUKHCONP03Z5PLFF4340 |  | Installation of Water Heater | 15d | 2014-05-26 | 2014-06-11 | DUKHCONP03Z5PLFF4335 FF+5d, DUKHCONP03Z5PLFF4335 SS+5d, DUKHCONP03Z5ARFF3355 FF+5d, DUKHCONP03Z5ARFF3355 SS+5d, DUKHCONP03Z5ARFF3360 SS+5d, DUKHCONP03Z5ARFF3360 FF+5d, DUKHCONP03Z4PLFF4340 | 12d | 0d | LABOR- SUBCONTRACTOR [18 h]; MECHANICALS SK [32.4 h]; WATER HEATER QTY [6 ea] | 1,055 | 25 | P3P5PLFF25 | DUKHCON3PP5PLFF4340 | DUKHCONP03Z5PLFF4340 | DH | CON | P3 | Z5 | MEP | PL | FF | B10 | B10-D07 | RES-3 |
|  | 20 | **ROOF** |  | 2014-03-09 | 2014-06-29 |  |  |  |  |  |  |  |  |  |  |  |  |  |  |  |  |  |  |  |
| DUKHCONP03Z5PLRF4345 |  | Installation of Plumbing pipes & fittings | 15d | 2014-03-09 | 2014-03-25 | DUKHCONP03Z5ARRF3605 SS+7d, DUKHCONP03Z5ARRF3605 FF+7d | 71d | 18d | LABOR- SUBCONTRACTOR [360 h]; MECHANICALS SK [1263.6 h]; PLUMB PIPES QTY [1155 lm] | 12,374 | 10 | P3P5PLRF10 | DUKHCON3PP5PLRF4345 | DUKHCONP03Z5PLRF4345 | DH | CON | P3 | Z5 | MEP | PL | RF | B10 | B10-D07 | RES-3 |
| DUKHCONP03Z5PLRF4350 |  | Installation of Rain water Pipes | 15d | 2014-04-08 | 2014-04-24 | DUKHCONP03Z5PLFF4330 SS+5d, DUKHCONP03Z5PLRF4345 FF+8d, DUKHCONP03Z5PLRF4345 SS+8d, DUKHCONP03Z5ARRF3645 SS+5d, DUKHCONP03Z5AREL3665 SS+7d, DUKHCONP03Z5AREL3665 FF+7d, DUKHCONP03Z5ARRF3645 FF+5d, DUKHCONP03Z4PLRF4350, DUKHCONP03Z5PLFF4330 FF+5d | 53d | 34d | LABOR- SUBCONTRACTOR [18 h]; MECHANICALS SK [64.8 h]; DRAINAGE PIPES QTY [105 lm] | 88,600 | 15 | P3P5PLRF15 | DUKHCON3PP5PLRF4350 | DUKHCONP03Z5PLRF4350 | DH | CON | P3 | Z5 | MEP | PL | RF | B10 | B10-D07 | RES-3 |
| DUKHCONP03Z5PLRF4355 |  | Roof Water Tank Installation & Connections | 25d | 2014-06-01 | 2014-06-29 | DUKHCONP03Z5PLFF4340 SS+5d, DUKHCONP03Z5PLRF4345 SS+8d, DUKHCONP03Z5PLRF4345 FF+8d, DUKHCONP03Z5ARRF3655 FF+5d, DUKHCONP03Z4PLRF4355, DUKHCONP03Z5PLFF4340 FF+5d, DUKHCONP03Z5PLRF4350 SS+5d, DUKHCONP03Z5PLRF4350 FF+5d, DUKHCONP03Z5ARRF3655 SS+5d | 12d |  | WATER TANK QTY [6 ea]; LABOR- SUBCONTRACTOR [36 h]; MECHANICALS SK [64.8 h] | 879,962 | 20 | P3P5PLRF20 | DUKHCON3PP5PLRF4355 | DUKHCONP03Z5PLRF4355 | DH | CON | P3 | Z5 | MEP | PL | RF | B10 | B10-D07 | RES-3 |
|  | 20 | **AC WORKS** |  | 2014-01-20 | 2014-06-26 |  |  |  |  |  |  |  |  |  |  |  |  |  |  |  |  |  |  |  |
|  | 10 | **GROUND FLOOR** |  | 2014-01-20 | 2014-04-27 |  |  |  |  |  |  |  |  |  |  |  |  |  |  |  |  |  |  |  |
| DUKHCONP03Z5ACGF4600 |  | Installation AC Pipes | 20d | 2014-01-20 | 2014-02-12 | DUKHCONP03Z5ARGF3005 SS+7d, DUKHCONP03Z4ACGF4600, DUKHCONP03Z5ARGF3005 FF+7d | 73d | 28d | LABOR- SUBCONTRACTOR [72 h]; AC TECHNICIAN SK [268.8 h]; AC PIPES QTY [684 lm] | 7,244 | 10 | P3P5ACGF10 | DUKHCON3PP5ACGF4600 | DUKHCONP03Z5ACGF4600 | DH | CON | P3 | Z5 | MEP | AC | GF | B10 | B10-D08 | RES-3 |
| DUKHCONP03Z5ACGF4605 |  | Fixing of Ventilation Equipments | 25d | 2014-03-15 | 2014-04-12 | DUKHCONP03Z5ACGF4600 SS+10d, DUKHCONP03Z5ARGF3055 SS+7d, DUKHCONP03Z5ARGF3055 FF+7d, DUKHCONP03Z5ARGF3060 FF+7d, DUKHCONP03Z5ACGF4600 FF+10d, DUKHCONP03Z5ARGF3060 SS+7d, DUKHCONP03Z4ACGF4605 | 51d | 0d | LABOR- SUBCONTRACTOR [36 h]; AC TECHNICIAN SK [100.8 h]; VENTILIATION EQP QTY [39 ea] | 27,766 | 15 | P3P5ACGF15 | DUKHCON3PP5ACGF4605 | DUKHCONP03Z5ACGF4605 | DH | CON | P3 | Z5 | MEP | AC | GF | B10 | B10-D08 | RES-3 |
| DUKHCONP03Z5ACGF4610 |  | Fixing of Split AC | 20d | 2014-04-05 | 2014-04-27 | DUKHCONP03Z4ACGF4610, DUKHCONP03Z5ACGF4605 SS+13d, DUKHCONP03Z5ACGF4605 FF+13d | 51d | 11d | LABOR- SUBCONTRACTOR [126 h]; AC TECHNICIAN SK [235.2 h]; SPILIT UNIT QTY [39 ea] | 40,463 | 20 | P3P5ACGF20 | DUKHCON3PP5ACGF4610 | DUKHCONP03Z5ACGF4610 | DH | CON | P3 | Z5 | MEP | AC | GF | B10 | B10-D08 | RES-3 |

Notes:
- DUKHCONP03Z5ELRF4070: Expenses: P03-Electrical Installations 41395
- DUKHCONP03Z5ELRF4075: Expenses: P03-Electrical Installations 30342
- DUKHCONP03Z5PLUG4300: Expenses: P03-Plumbing and Drainage works 14418
- DUKHCONP03Z5PLGF4305: Expenses: P03-Plumbing and Drainage works 84763
- DUKHCONP03Z5PLGF4310: Expenses: P03-Plumbing and Drainage works 1912
- DUKHCONP03Z5PLGF4315: Expenses: P03-Plumbing and Drainage works 92011
- DUKHCONP03Z5PLGF4320: Expenses: P03-Plumbing and Drainage works 1055
- DUKHCONP03Z5PLFF4325: Expenses: P03-Plumbing and Drainage works 78473
- DUKHCONP03Z5PLFF4330: Expenses: P03-Plumbing and Drainage works 1639
- DUKHCONP03Z5PLFF4335: Expenses: P03-Plumbing and Drainage works 92011
- DUKHCONP03Z5PLFF4340: Expenses: P03-Plumbing and Drainage works 1055
- DUKHCONP03Z5PLRF4345: Expenses: P03-Plumbing and Drainage works 12374
- DUKHCONP03Z5PLRF4350: Expenses: P03-Plumbing and Drainage works 88600
- DUKHCONP03Z5PLRF4355: Expenses: P03-Plumbing and Drainage works 879962
- DUKHCONP03Z5ACGF4600: Expenses: P03-Air-conditioning and Ventilation works 7244
- DUKHCONP03Z5ACGF4605: Expenses: P03-Air-conditioning and Ventilation works 27766
- DUKHCONP03Z5ACGF4610: Expenses: P03-Air-conditioning and Ventilation works 40463

| ID | WBS | Activity | Duration | Start | Finish | Predecessors | Total float | Free float | Resources | Cost | CODE | P3 ACTID | P6 ID (old) | NP61D | PROJECT | PHASES | PACKAGE | PART | ELEMENTS | STEP | FLOORS | BILL NOS | BILL DIVISION | RES PACK |
| --- | --- | --- | --- | --- | --- | --- | --- | --- | --- | --- | --- | --- | --- | --- | --- | --- | --- | --- | --- | --- | --- | --- | --- | --- |
|  | 15 | **FIRST FLOORS** |  | 2014-03-06 | 2014-06-15 |  |  |  |  |  |  |  |  |  |  |  |  |  |  |  |  |  |  |  |
| DUKHCONP03Z5ACFF4615 |  | Installation AC Pipes | 20d | 2014-03-06 | 2014-03-29 | DUKHCONP03Z5ARFF3305 SS+7d, DUKHCONP03Z4ACFF4615, DUKHCONP03Z5ARFF3305 FF+7d | 32d | 1d | LABOR- SUBCONTRACTOR [72 h]; AC TECHNICIAN SK [268.8 h]; AC PIPES QTY [684 lm] | 6,520 | 10 | P3P5ACFF10 | DUKHCON3PP5ACFF4615 | DUKHCONP03Z5ACFF4615 | DH | CON | P3 | Z5 | MEP | AC | FF | B10 | B10-D08 | RES-3 |
| DUKHCONP03Z5ACFF4620 |  | Fixing of Ventilation Equipments | 25d | 2014-05-03 | 2014-05-31 | DUKHCONP03Z5ACFF4615 FF+10d, DUKHCONP03Z5ARFF3360 SS+7d, DUKHCONP03Z4ACFF4620, DUKHCONP03Z5ARFF3355 SS+7d, DUKHCONP03Z5ACFF4615 SS+10d, DUKHCONP03Z5ARFF3355 FF+7d, DUKHCONP03Z5ARFF3360 FF+7d | 9d | 0d | LABOR- SUBCONTRACTOR [36 h]; AC TECHNICIAN SK [100.8 h]; VENTILIATION EQP QTY [39 ea] | 23,247 | 15 | P3P5ACFF15 | DUKHCON3PP5ACFF4620 | DUKHCONP03Z5ACFF4620 | DH | CON | P3 | Z5 | MEP | AC | FF | B10 | B10-D08 | RES-3 |
| DUKHCONP03Z5ACFF4625 |  | Fixing of Split AC | 20d | 2014-05-24 | 2014-06-15 | DUKHCONP03Z5ACFF4620 FF+13d, DUKHCONP03Z5ACFF4620 SS+13d, DUKHCONP03Z4ACFF4625 | 9d | 0d | LABOR- SUBCONTRACTOR [126 h]; AC TECHNICIAN SK [235.2 h]; SPILIT UNIT QTY [39 ea] | 42,227 | 20 | P3P5ACFF20 | DUKHCON3PP5ACFF4625 | DUKHCONP03Z5ACFF4625 | DH | CON | P3 | Z5 | MEP | AC | FF | B10 | B10-D08 | RES-3 |
|  | 20 | **ROOF** |  | 2014-03-16 | 2014-06-26 |  |  |  |  |  |  |  |  |  |  |  |  |  |  |  |  |  |  |  |
| DUKHCONP03Z5ACRF4630 |  | Installation of Refrigerant Pipes | 25d | 2014-03-16 | 2014-04-13 | DUKHCONP03Z5ACGF4600 FF+7d, DUKHCONP03Z4ACRF4630, DUKHCONP03Z5ACFF4615 FF+7d, DUKHCONP03Z5ARRF3645 FF+7d, DUKHCONP03Z5ARRF3645 SS+7d, DUKHCONP03Z5ACFF4615 SS+7d, DUKHCONP03Z5ACGF4600 SS+7d | 73d | 59d | LABOR- SUBCONTRACTOR [36 h]; AC TECHNICIAN SK [134.4 h]; AC PIPES QTY [342 lm] | 20,514 | 10 | P3P5ACRF10 | DUKHCON3PP5ACRF4630 | DUKHCONP03Z5ACRF4630 | DH | CON | P3 | Z5 | MEP | AC | RF | B10 | B10-D08 | RES-3 |
| DUKHCONP03Z5ACRF4635 |  | Installation of Condensing Unit | 25d | 2014-05-29 | 2014-06-26 | DUKHCONP03Z5ACGF4610 SS+5d, DUKHCONP03Z5ACRF4630 SS+5d, DUKHCONP03Z5ACFF4625 SS+5d, DUKHCONP03Z5ACGF4610 FF+5d, DUKHCONP03Z5ACFF4625 FF+5d, DUKHCONP03Z5ACRF4630 FF+5d, DUKHCONP03Z4ACRF4635 | 14d |  | LABOR- SUBCONTRACTOR [126 h]; AC TECHNICIAN SK [436.8 h]; AC UNITS QTY [78 ea] | 106,501 | 15 | P3P5ACRF15 | DUKHCON3PP5ACRF4635 | DUKHCONP03Z5ACRF4635 | DH | CON | P3 | Z5 | MEP | AC | RF | B10 | B10-D08 | RES-3 |
|  | 25 | **EXTERNAL WORKS** |  | 2014-02-01 | 2014-06-21 |  |  |  |  |  |  |  |  |  |  |  |  |  |  |  |  |  |  |  |
|  | 10 | **MISCELLANEOUS** |  | 2014-02-01 | 2014-05-14 |  |  |  |  |  |  |  |  |  |  |  |  |  |  |  |  |  |  |  |
| DUKHCONP03Z5MSEX5000 |  | Construction of Manholes | 25d | 2014-02-01 | 2014-03-02 | DUKHCONP03Z5STRF2055 FF+10d, DUKHCONP03Z5PLGF4310 FF+10d, DUKHCONP03Z5STRF2055 SS+10d, DUKHCONP03Z5PLGF4310 SS+10d | 53d | 0d | CABINET QTY [12 ea]; JOINERY WORK SK [96 h]; LABOR- SUBCONTRACTOR [36 h] | 6,808 | 25 | P3P5MSEX25 | DUKHCON3PP5MS005000 | DUKHCONP03Z5MSEX5000 | DH | CON | P3 | Z5 | EX | MS |  | B10 | B10-D12 | RES-3 |
| DUKHCONP03Z5MSEX5005 |  | Construction of Soak pit, Chambers | 25d | 2014-02-16 | 2014-03-16 | DUKHCONP03Z5MSEX5000 FF+12d, DUKHCONP03Z5MSEX5000 SS+12d | 53d | 0d | LABOR - CIVIL [75 h]; MANHOLES SK [200 h] | 12,087 | 30 | P3P5MSEX30 | DUKHCON3PP5MS005005 | DUKHCONP03Z5MSEX5005 | DH | CON | P3 | Z5 | EX | MS |  | B10 | B10-D12 | RES-3 |
| DUKHCONP03Z5MSEX5015 |  | Construction of grease Trap | 20d | 2014-03-08 | 2014-03-30 | DUKHCONP03Z5MSEX5005 SS+12d, DUKHCONP03Z5MSEX5005 FF+12d | 53d | 0d | LABOR- SUBCONTRACTOR [18 h]; GREASE TRAP QTY [6 lm]; HANDRAIL ERECTOR SKILLED [24 h] | 17,022 | 20 | P3P5MSEX20 | DUKHCON3PP5MS005015 | DUKHCONP03Z5MSEX5015 | DH | CON | P3 | Z5 | EX | MS |  | B10 | B10-D12 | RES-3 |
| DUKHCONP03Z5MSEX5010 |  | Telephone cable laying | 25d | 2014-03-31 | 2014-04-28 | DUKHCONP03Z5MSEX5015 | 53d | 26d | LABOR - CIVIL [125 h]; LABOR- SUBCONTRACTOR [125 h]; ELECTRICIANS SK [125 h]; CONCRETE MASON SK [125 h] | 1,114 |  | P3P5MSEX40 | DUKHCON3PP5MS005010 | DUKHCONP03Z5MSEX5010 | DH | CON | P3 | Z5 | EX | MS |  | B10 | B10-D12 | RES-3 |
| DUKHCONP03Z5MSEX5020 |  | Construction Entrance Ramp | 25d | 2014-04-05 | 2014-05-03 | DUKHCONP03Z5STRF2055 FF, DUKHCONP03Z4MSEX5020, DUKHCONP03Z5STRF2055 SS | 21d | 0d | SCREED MASON SK [48 h]; CONCRETE MASON SK [48 h]; INTERLOCK MASON SK [48 h]; LABOR - CIVIL [54 h]; LABOR- SUBCONTRACTOR [18 h]; SCREED QTY [51 Sqm]; CONCRETE QTY [27 Cum]; INTERLOCK QTY [60 Sqm] | 10,659 | 10 | P3P5MSEX10 | DUKHCON3PP5MS005020 | DUKHCONP03Z5MSEX5020 | DH | CON | P3 | Z5 | EX | MS |  | B10 | B10-D12 | RES-3 |
| DUKHCONP03Z5MSEX5025 |  | SS.Handrails and Balustrades | 20d | 2014-04-22 | 2014-05-14 | DUKHCONP03Z5MSEX5020 FF+10d, DUKHCONP03Z5MSEX5020 SS+10d | 21d | 0d | LABOR- SUBCONTRACTOR [36 h]; S.S.BALUSTRADE QTY [30 lm]; HANDRAIL ERECTOR SKILLED [72 h] | 30,532 | 15 | P3P5MSEX15 | DUKHCON3PP5MS005025 | DUKHCONP03Z5MSEX5025 | DH | CON | P3 | Z5 | EX | MS |  | B10 | B10-D12 | RES-3 |
|  | 15 | **DOMESTIC WATER TANK & PUMP ROOM** |  | 2014-02-03 | 2014-06-21 |  |  |  |  |  |  |  |  |  |  |  |  |  |  |  |  |  |  |  |
| DUKHCONP03Z5WTEX5030 |  | Excavation | 20d | 2014-02-03 | 2014-02-26 | DUKHCONP03Z5STRF2055 SS+5d, DUKHCONP03Z5STRF2065 SS+5d, DUKHCONP03Z5STRF2055 FF+5d, DUKHCONP03Z4WTEX5030 | 58d | 0d | LABOR - CIVIL [36 h]; EXCAVATION QTY [54 Cum]; LOADER [20 h]; POCLAIN [40 h]; TRUCK [20 h]; EQUIP OPERATORS [80 h] | 1,647 | 10 | P3P5WEEX10 | DUKHCON3PP5WE005030 | DUKHCONP03Z5WTEX5030 | DH | CON | P3 | Z5 | EX | WE |  | B10 | B10-D12 | RES-3 |
| DUKHCONP03Z5WTEX5035 |  | Construction of Raft | 25d | 2014-02-09 | 2014-03-10 | DUKHCONP03Z5WTEX5030 SS+5d, DUKHCONP03Z5WTEX5030 FF+10d | 58d | 0d | CONCRETE MASON SK [120 h]; LABOR - CIVIL [90 h]; CONCRETE QTY [60 Cum] | 25,770 | 15 | P3P5WEEX15 | DUKHCON3PP5WE005035 | DUKHCONP03Z5WTEX5035 | DH | CON | P3 | Z5 | EX | WE |  | B10 | B10-D12 | RES-3 |
| DUKHCONP03Z5WTEX5040 |  | Block works & Plastering | 25d | 2014-02-19 | 2014-03-19 | DUKHCONP03Z5WTEX5035 SS+8d, DUKHCONP03Z5WTEX5035 FF+8d | 58d | 0d | BLOCK MASON SK [456 h]; PLASTER MASON SK [1104 h]; LABOR - CIVIL [882 h]; BLOCK QTY [225 Sqm]; PLASTER QTY [690 Sqm] | 46,391 | 20 | P3P5WEEX20 | DUKHCON3PP5WE005040 | DUKHCONP03Z5WTEX5040 | DH | CON | P3 | Z5 | EX | WE |  | B10 | B10-D12 | RES-3 |
| DUKHCONP03Z5WTEX5070 |  | Domestic Water Tank Plumbings works | 25d | 2014-02-27 | 2014-03-27 | DUKHCONP03Z5WTEX5080 SS | 58d | 0d | LABOR- SUBCONTRACTOR [100 h]; MECHANICALS SK [100 h] | 125,964 | 40 | P3P5WEEX70 | DUKHCON3PP5WE005070 | DUKHCONP03Z5WTEX5070 | DH | CON | P3 | Z5 | EX | WE |  | B10 | B10-D12 | RES-3 |
| DUKHCONP03Z5WTEX5075 |  | Domestic Water Tank AC works | 25d | 2014-02-27 | 2014-03-27 | DUKHCONP03Z5WTEX5070 SS | 58d | 0d | LABOR- SUBCONTRACTOR [100 h]; AC TECHNICIAN SK [75 h] | 8,274 | 40 | P3P5WEEX80 | DUKHCON3PP5WE005075 | DUKHCONP03Z5WTEX5075 | DH | CON | P3 | Z5 | EX | WE |  | B10 | B10-D12 | RES-3 |
| DUKHCONP03Z5WTEX5080 |  | Domestic Water Tank Electrical works | 25d | 2014-02-27 | 2014-03-27 | DUKHCONP03Z5WTEX5040 SS+7d | 58d | 0d | LABOR- SUBCONTRACTOR [100 h]; ELECTRICIANS SK [75 h] | 22,233 | 40 | P3P5WEEX60 | DUKHCON3PP5WE005080 | DUKHCONP03Z5WTEX5080 | DH | CON | P3 | Z5 | EX | WE |  | B10 | B10-D12 | RES-3 |
| DUKHCONP03Z5WTEX5085 |  | Domestic Water Tank Firefighting works | 25d | 2014-02-27 | 2014-03-27 | DUKHCONP03Z5WTEX5075 SS | 58d | 0d | LABOR- SUBCONTRACTOR [54 h]; MECHANICALS SK [64.8 h] | 12,708 | 40 | P3P5WEEX90 | DUKHCON3PP5WE005085 | DUKHCONP03Z5WTEX5085 | DH | CON | P3 | Z5 | EX | WE |  | B10 | B10-D12 | RES-3 |
| DUKHCONP03Z5WTEX5045 |  | Flooring & Painting | 25d | 2014-03-04 | 2014-04-01 | DUKHCONP03Z5WTEX5085 FF+4d, DUKHCONP03Z5WTEX5040 FF+10d, DUKHCONP03Z5WTEX5040 SS+10d | 58d | 37d | LABOR - CIVIL [36 h]; LABOR- SUBCONTRACTOR [216 h]; SCREED QTY [114 Sqm]; PAINT QTY [690 Sqm]; PAINTERS SK [552 h]; SCREED MASON SK [96 h] | 35,064 | 25 | P3P5WEEX25 | DUKHCON3PP5WE005045 | DUKHCONP03Z5WTEX5045 | DH | CON | P3 | Z5 | EX | WE |  | B10 | B10-D12 | RES-3 |
| DUKHCONP03Z5WTEX5050 |  | Installation of Steel Gate | 20d | 2014-05-04 | 2014-05-26 | DUKHCONP03Z5WTEX5045 FF+10d, DUKHCONP03Z5WTEX5045 SS+5d, DUKHCONP03Z5MSEX5025 FF+10d | 21d | 2d | LABOR- SUBCONTRACTOR [36 h]; LADDER QTY [3 ea]; GATE QTY [3 ea]; LADDER ERECTOR SK [24 h]; GATE ERECTOR SK [24 h] | 19,575 | 30 | P3P5WEEX30 | DUKHCON3PP5WE005050 | DUKHCONP03Z5WTEX5050 | DH | CON | P3 | Z5 | EX | WE |  | B10 | B10-D12 | RES-3 |
| DUKHCONP03Z5WTEX5060 |  | Structural steel & SS Shed cover installation | 25d | 2014-05-12 | 2014-06-09 | DUKHCONP03Z5WTEX5050 FF+10d, DUKHCONP03Z4WTEX5060, DUKHCONP03Z5WTEX5050 SS+5d, DUKHCONP03Z5MSEX5025 FF+10d | 19d | 0d | LABOR- SUBCONTRACTOR [252 h]; SS SHED COVER QTY [81 Sqm]; STEEL ERECTOR SK [336 h] | 22,930 | 35 | P3P5WEEX35 | DUKHCON3PP5WE005060 | DUKHCONP03Z5WTEX5060 | DH | CON | P3 | Z5 | EX | WE |  | B10 | B10-D12 | RES-3 |
| DUKHCONP03Z5WTEX5065 |  | Install. of Water Tank,Chiller,Pump & Meter | 25d | 2014-05-24 | 2014-06-21 | DUKHCONP03Z5WTEX5060 SS+10d, DUKHCONP03Z5PLRF4350 SS+5d, DUKHCONP03Z5PLRF4350 FF+5d, DUKHCONP03Z4WTEX5065, DUKHCONP03Z5MSEX5015 FF+5d, DUKHCONP03Z5WTEX5060 FF+10d, DUKHCONP03Z5MSEX5015 SS+5d | 19d |  | WATER TANK QTY [3 ea]; CHILLER QTY [30 ea]; PUMP QTY [3 ea]; LABOR- SUBCONTRACTOR [54 h]; AC TECHNICIAN SK [33.6 h]; MECHANICALS SK [64.8 h] | 212,221 | 40 | P3P5WEEX40 | DUKHCON3PP5WE005065 | DUKHCONP03Z5WTEX5065 | DH | CON | P3 | Z5 | EX | WE |  | B10 | B10-D12 | RES-3 |

Notes:
- DUKHCONP03Z5ACFF4615: Expenses: P03-Air-conditioning and Ventilation works 6520
- DUKHCONP03Z5ACFF4620: Expenses: P03-Air-conditioning and Ventilation works 23247
- DUKHCONP03Z5ACFF4625: Expenses: P03-Air-conditioning and Ventilation works 42227
- DUKHCONP03Z5ACRF4630: Expenses: P03-Air-conditioning and Ventilation works 20514
- DUKHCONP03Z5ACRF4635: Expenses: P03-Air-conditioning and Ventilation works 106501
- DUKHCONP03Z5MSEX5000: Expenses: P03-External works within the Plot Curtilage 6808
- DUKHCONP03Z5MSEX5005: Expenses: P03-External works within the Plot Curtilage 12087
- DUKHCONP03Z5MSEX5015: Expenses: P03-External works within the Plot Curtilage 17022
- DUKHCONP03Z5MSEX5010: Expenses: P03-External works within the Plot Curtilage 1114
- DUKHCONP03Z5MSEX5020: Expenses: P03-External works within the Plot Curtilage 10659
- DUKHCONP03Z5MSEX5025: Expenses: P03-External works within the Plot Curtilage 30532
- DUKHCONP03Z5WTEX5030: Expenses: P03-External works within the Plot Curtilage 1647
- DUKHCONP03Z5WTEX5035: Expenses: P03-External works within the Plot Curtilage 25770
- DUKHCONP03Z5WTEX5040: Expenses: P03-External works within the Plot Curtilage 46391
- DUKHCONP03Z5WTEX5070: Expenses: P03-External works within the Plot Curtilage 125964
- DUKHCONP03Z5WTEX5075: Expenses: P03-External works within the Plot Curtilage 8274
- DUKHCONP03Z5WTEX5080: Expenses: P03-External works within the Plot Curtilage 22233
- DUKHCONP03Z5WTEX5085: Expenses: P03-External works within the Plot Curtilage 12708
- DUKHCONP03Z5WTEX5045: Expenses: P03-External works within the Plot Curtilage 35064
- DUKHCONP03Z5WTEX5050: Expenses: P03-External works within the Plot Curtilage 19575
- DUKHCONP03Z5WTEX5060: Expenses: P03-External works within the Plot Curtilage 22930
- DUKHCONP03Z5WTEX5065: Expenses: P03-External works within the Plot Curtilage 212221

| ID | WBS | Activity | Duration | Start | Finish | Predecessors | Total float | Free float | Resources | Cost | P3 ACTID | P6 ID (old) | NP61D | PROJECT | PHASES | PACKAGE | PART | ELEMENTS | BILL NOS | BILL DIVISION | RES PACK | CODE | STEP |
| --- | --- | --- | --- | --- | --- | --- | --- | --- | --- | --- | --- | --- | --- | --- | --- | --- | --- | --- | --- | --- | --- | --- | --- |
|  | 30 | **TESTING AND COMMISSIONING** |  | 2014-07-14 | 2014-08-14 |  |  |  |  |  |  |  |  |  |  |  |  |  |  |  |  |  |  |
| DUKHCONP03Z5ACTC8000 |  | Pre-Commissioning & Testing of AC Works | 25d | 2014-07-14 | 2014-08-14 | DUKHCONP03Z5AREL3680, DUKHCONP03Z5ARRF3620, DUKHCONP03Z5ARGF3095, DUKHCONP03Z5ACRF4635, DUKHCONP03Z5ARRF3660, DUKHCONP03Z5MSEX5005, DUKHCONP03Z5ACFF4625, DUKHCONP03Z5ARFF3395, DUKHCONP03Z4ACTC8000 | 0d |  | LABOR- SUBCONTRACTOR [500 h]; AC TECHNICIAN SK [1000 h] | 915 | P3P5ACU100 | DUKHCON3PP5AC008000 | DUKHCONP03Z5ACTC8000 | DH | CON | P3 | Z5 | TES | B10 | B10-D08 | RES-3 |  |  |
| DUKHCONP03Z5ELTC8010 |  | Pre-Commissioning & Testing of Electrical Works | 25d | 2014-07-14 | 2014-08-14 | DUKHCONP03Z5ELFF4055, DUKHCONP03Z5ARRF3660, DUKHCONP03Z5ELGF4015, DUKHCONP03Z5ELRF4075 SS+13d, DUKHCONP03Z4ELTC8010, DUKHCONP03Z5ELFF4065, DUKHCONP03Z5ELGF4025, DUKHCONP03Z5ARRF3620, DUKHCONP03Z5ELFF4050, DUKHCONP03Z5ELGF4030, DUKHCONP03Z5ARRF3655, DUKHCONP03Z5AREL3680, DUKHCONP03Z5ARGF3095, DUKHCONP03Z5ARFF3395, DUKHCONP03Z5MSEX5005 | 0d |  | LABOR- SUBCONTRACTOR [1000 h]; ELECTRICIANS SK [2000 h] | 41,901 | P3P5ELE100 | DUKHCON3PP5EL008010 | DUKHCONP03Z5ELTC8010 | DH | CON | P3 | Z5 | TES | B10 | B10-D09 | RES-3 |  |  |
| DUKHCONP03Z5PLTC8005 |  | Pre-Commissioning & Testing of Plumbing Works | 25d | 2014-07-14 | 2014-08-14 | DUKHCONP03Z5PLRF4355, DUKHCONP03Z5ARRF3620, DUKHCONP03Z5ARFF3395, DUKHCONP03Z5AREL3680, DUKHCONP03Z5ARGF3095, DUKHCONP03Z4PLTC8005, DUKHCONP03Z5MSEX5005, DUKHCONP03Z5ARRF3655, DUKHCONP03Z5WTEX5065, DUKHCONP03Z5PLRF4350, DUKHCONP03Z5PLGF4320, DUKHCONP03Z5ARRF3660 | 0d |  | LABOR- SUBCONTRACTOR [1000 h]; MECHANICALS SK [2000 h] | 7,665 | P3P5PLU100 | DUKHCON3PP5PL008005 | DUKHCONP03Z5PLTC8005 | DH | CON | P3 | Z5 | TES | B10 | B10-D07 | RES-3 |  |  |
|  | L60 | **PACKAGE-3 INFRASTRUCTURE WORKS** |  | 2013-08-17 | 2014-08-05 |  |  |  |  |  |  |  |  |  |  |  |  |  |  |  |  |  |  |
|  | 10 | **ZONE - 1** |  | 2013-08-17 | 2014-04-26 |  |  |  |  |  |  |  |  |  |  |  |  |  |  |  |  |  |  |
|  | 10 | **INFRASTRUCTURE WORKS** |  | 2013-08-17 | 2014-04-26 |  |  |  |  |  |  |  |  |  |  |  |  |  |  |  |  |  |  |
|  | 10 | **DRAINAGE LINES** |  | 2013-08-17 | 2013-10-05 |  |  |  |  |  |  |  |  |  |  |  |  |  |  |  |  |  |  |
| DUKHCONI03Z1DRGL5115 |  | Excavation for Drainage line | 25d | 2013-08-17 | 2013-09-14 | DUKHCONP03Z2STFF2020 SS, DUKHENGI03DWDRAP5810 | 5d | 0d | LABOR - CIVIL [336 h]; EXCAVATION QTY [562 Cum]; LOADER [100 h]; POCLAIN [200 h]; TRUCK [100 h]; EQUIP OPERATORS [400 h] | 22,626.85 | P3P1DRFR10 | DUKHCON3PP1DRGL5115 | DUKHCONI03Z1DRGL5115 | DH | CON | 3IF | Z1 | FR | B11 | B11-D06 | RES-3 | 10 | DR |
| DUKHCONI03Z1DRGL5120 |  | Laying of Drainage line | 25d | 2013-08-24 | 2013-09-21 | DUKHCONI03Z1DRGL5115 SS+6d, DUKHCONI03Z1DRGL5115 FF+6d | 12d | 0d | LABOR- SUBCONTRACTOR [168 h]; MECHANICALS SK [604.8 h]; DRAINAGE PIPES QTY [1123 lm] | 70,021.5 | P3P1DRFR15 | DUKHCON3PP1DRGL5120 | DUKHCONI03Z1DRGL5120 | DH | CON | 3IF | Z1 | FR | B11 | B11-D06 | RES-3 | 15 | DR |
| DUKHCONI03Z1DRGL5125 |  | Testing of Drainage line | 25d | 2013-09-01 | 2013-09-29 | DUKHCONI03Z1DRGL5120 FF+7d, DUKHCONI03Z1DRGL5120 SS+7d | 12d | 0d | LABOR- SUBCONTRACTOR [168 h]; MECHANICALS SK [604.8 h]; DRAINAGE PIPES QTY [1123 lm] | 7,779.65 | P3P1DRFR20 | DUKHCON3PP1DRGL5125 | DUKHCONI03Z1DRGL5125 | DH | CON | 3IF | Z1 | FR | B11 | B11-D06 | RES-3 | 20 | DR |
| DUKHCONI03Z1DRGL5130 |  | Backfilling Drainage line | 15d | 2013-09-18 | 2013-10-05 | DUKHCONI03Z1DRGL5125 FF+5d, DUKHCONI03Z1DRGL5125 SS+10d | 12d | 0d | LABOR - CIVIL [138 h]; BACKFILLING QTY [562 Cum]; BOBCAT [150 h]; PLATE COMPACTOR [150 h]; TRUCK [30 h]; EQUIP OPERATORS [330 h] | 27,369.45 | P3P1DRFR25 | DUKHCON3PP1DRGL5130 | DUKHCONI03Z1DRGL5130 | DH | CON | 3IF | Z1 | FR | B11 | B11-D06 | RES-3 | 25 | DR |
|  | 15 | **MANHOLES & SOAKAWAY** |  | 2013-09-18 | 2013-12-10 |  |  |  |  |  |  |  |  |  |  |  |  |  |  |  |  |  |  |
| DUKHCONI03Z1SAGL5135 |  | Construction of manholes Drainage | 25d | 2013-09-18 | 2013-10-16 | DUKHCONI03Z1DRGL5115, DUKHCONI03Z1DRGL5130 FF+10d | 67d | 18d | LABOR - CIVIL [96 h]; MANHOLES QTY [31 ea]; MANHOLES SK [248 h] | 75,344.5 | P3P1SAFR10 | DUKHCON3PP1SAGL5135 | DUKHCONI03Z1SAGL5135 | DH | CON | 3IF | Z1 | FR | B11 | B11-D06 | RES-3 | 10 | SA |
| DUKHCONI03Z1SAGL5140 |  | Construction of soakaways | 25d | 2013-09-18 | 2013-10-16 | DUKHCONI03Z1DRGL5115, DUKHCONI03Z1DRGL5130 FF+10d | 14d | 0d | LABOR - CIVIL [66 h]; SOAKWAY QTY [22 ea]; MANHOLES SK [176 h] | 292,751.2 | P3P1SAFR15 | DUKHCON3PP1SAGL5140 | DUKHCONI03Z1SAGL5140 | DH | CON | 3IF | Z1 | FR | B11 | B11-D06 | RES-3 | 15 | SA |
| DUKHCONI03Z1SAGL5145 |  | Construction of Road gullies | 25d | 2013-10-20 | 2013-11-17 | DUKHCONI03Z1SAGL5140 | 14d | 0d | LABOR - CIVIL [78 h]; ROAD GULLY QTY [26 ea]; MANHOLES SK [208 h] | 48,976.9 | P3P1SAFR20 | DUKHCON3PP1SAGL5145 | DUKHCONI03Z1SAGL5145 | DH | CON | 3IF | Z1 | FR | B11 | B11-D06 | RES-3 | 20 | SA |
| DUKHCONI03Z1SAGL5150 |  | Connection with existing sewer manhole | 20d | 2013-11-18 | 2013-12-10 | DUKHCONI03Z1SAGL5145, DUKHCONI03Z1SAGL5135 | 42d | 30d | LABOR - CIVIL [96 h]; MANHOLES QTY [31 ea]; MANHOLES SK [248 h] | 3,973.55 | P3P1SAFR25 | DUKHCON3PP1SAGL5150 | DUKHCONI03Z1SAGL5150 | DH | CON | 3IF | Z1 | FR | B11 | B11-D06 | RES-3 | 25 | SA |
|  | 20 | **WATER SUPPLY SYSTEM** |  | 2013-09-30 | 2013-12-16 |  |  |  |  |  |  |  |  |  |  |  |  |  |  |  |  |  |  |
| DUKHCONI03Z1WSGL5155 |  | Excavation for water line | 25d | 2013-09-30 | 2013-10-30 | DUKHENGI03DWWSAP5830, DUKHCONI03Z1DRGL5130 SS+10d | 14d | 0d | EQUIP OPERATORS [500 h]; LABOR - CIVIL [474 h]; EXCAVATION QTY [784 Cum]; LOADER [125 h]; POCLAIN [250 h]; TRUCK [125 h] | 16,699.6 | P3P1WSFR10 | DUKHCON3PP1WSGL5155 | DUKHCONI03Z1WSGL5155 | DH | CON | 3IF | Z1 | FR | B11 | B11-D07 | RES-3 | 10 | WS |
| DUKHCONI03Z1WSGL5160 |  | Laying of water line | 25d | 2013-10-06 | 2013-11-05 | DUKHCONI03Z1WSGL5155 SS+5d | 14d | 0d | LABOR- SUBCONTRACTOR [240 h]; MECHANICALS SK [853.2 h]; PLUMB PIPES QTY [784 lm] | 85,583.2 | P3P1WSFR15 | DUKHCON3PP1WSGL5160 | DUKHCONI03Z1WSGL5160 | DH | CON | 3IF | Z1 | FR | B11 | B11-D07 | RES-3 | 15 | WS |
| DUKHCONI03Z1WSGL5165 |  | Testing of potable water line | 25d | 2013-10-12 | 2013-11-11 | DUKHCONI03Z1WSGL5160 SS+5d | 14d | 0d | LABOR- SUBCONTRACTOR [120 h]; MECHANICALS SK [432 h]; DRAINAGE PIPES QTY [784 lm] | 8,750.3 | P3P1WSFR20 | DUKHCON3PP1WSGL5165 | DUKHCONI03Z1WSGL5165 | DH | CON | 3IF | Z1 | FR | B11 | B11-D07 | RES-3 | 20 | WS |
| DUKHCONI03Z1WSGL5170 |  | Backfilling potable water line | 25d | 2013-10-20 | 2013-11-17 | DUKHCONI03Z1SAGL5145 FF, DUKHCONI03Z1WSGL5165 SS+5d | 14d | 0d | LABOR - CIVIL [192 h]; BACKFILLING QTY [784 Cum]; BOBCAT [250 h]; PLATE COMPACTOR [250 h]; TRUCK [50 h]; EQUIP OPERATORS [550 h] | 4,174.9 | P3P1WSFR25 | DUKHCON3PP1WSGL5170 | DUKHCONI03Z1WSGL5170 | DH | CON | 3IF | Z1 | FR | B11 | B11-D07 | RES-3 | 25 | WS |
| DUKHCONI03Z1WSGL5175 |  | Construction of valve chambers & Thrust Blocks | 25d | 2013-10-26 | 2013-11-23 | DUKHCONI03Z1WSGL5170 FF+5d, DUKHCONI03Z1WSGL5155 SS+10d | 37d | 0d | LABOR - CIVIL [24 h]; MANHOLES QTY [7 ea]; MANHOLES SK [56 h] | 2,086.7 | P3P1WSFR30 | DUKHCON3PP1WSGL5175 | DUKHCONI03Z1WSGL5175 | DH | CON | 3IF | Z1 | FR | B11 | B11-D07 | RES-3 | 30 | WS |
| DUKHCONI03Z1WSGL5180 |  | Installation of meter ,Accessories & Connection | 20d | 2013-11-24 | 2013-12-16 | DUKHCONI03Z1WSGL5175 | 37d | 22d | LABOR- SUBCONTRACTOR [12 h]; MECHANICALS SK [21.6 h]; CHAMPER QTY [7 lm] | 18,650.1 | P3P1WSFR35 | DUKHCON3PP1WSGL5180 | DUKHCONI03Z1WSGL5180 | DH | CON | 3IF | Z1 | FR | B11 | B11-D07 | RES-3 | 35 | WS |

Notes:
- DUKHCONP03Z5ACTC8000: Expenses: P03-Air-conditioning and Ventilation works 915
- DUKHCONP03Z5ELTC8010: Expenses: P03-Electrical Installations 41901
- DUKHCONP03Z5PLTC8005: Expenses: P03-Plumbing and Drainage works 7665
- DUKHCONI03Z1DRGL5115: Expenses: I03-Surface Water drainage and Sewerage system 22626.8
- DUKHCONI03Z1DRGL5120: Expenses: I03-Surface Water drainage and Sewerage system 70021.5
- DUKHCONI03Z1DRGL5125: Expenses: I03-Surface Water drainage and Sewerage system 7779.65
- DUKHCONI03Z1DRGL5130: Expenses: I03-Surface Water drainage and Sewerage system 27369.5
- DUKHCONI03Z1SAGL5135: Expenses: I03-Surface Water drainage and Sewerage system 75344.5
- DUKHCONI03Z1SAGL5140: Expenses: I03-Surface Water drainage and Sewerage system 292751
- DUKHCONI03Z1SAGL5145: Expenses: I03-Surface Water drainage and Sewerage system 48976.9
- DUKHCONI03Z1SAGL5150: Expenses: I03-Surface Water drainage and Sewerage system 3973.55
- DUKHCONI03Z1WSGL5155: Expenses: I03-Water supply system 16699.6
- DUKHCONI03Z1WSGL5160: Expenses: I03-Water supply system 85583.2
- DUKHCONI03Z1WSGL5165: Expenses: I03-Water supply system 8750.3
- DUKHCONI03Z1WSGL5170: Expenses: I03-Water supply system 4174.9
- DUKHCONI03Z1WSGL5175: Expenses: I03-Water supply system 2086.7
- DUKHCONI03Z1WSGL5180: Expenses: I03-Water supply system 18650.1

| ID | WBS | Activity | Duration | Start | Finish | Predecessors | Total float | Free float | Resources | Cost | CODE | P3 ACTID | P6 ID (old) | NP61D | PROJECT | PHASES | PACKAGE | PART | ELEMENTS | STEP | BILL NOS | BILL DIVISION | RES PACK |
| --- | --- | --- | --- | --- | --- | --- | --- | --- | --- | --- | --- | --- | --- | --- | --- | --- | --- | --- | --- | --- | --- | --- | --- |
|  | 25 | **FIREFIGHTING LINES** |  | 2013-10-26 | 2014-01-12 |  |  |  |  |  |  |  |  |  |  |  |  |  |  |  |  |  |  |
| DUKHCONI03Z1FFGL5185 |  | Excavation for firefighting line | 25d | 2013-10-26 | 2013-11-23 | DUKHENGI03DWFFAP5820, DUKHCONI03Z1WSGL5170 SS+5d | 14d | 6d | LABOR - CIVIL [222 h]; EXCAVATION QTY [361 Cum]; LOADER [63 h]; POCLAIN [125 h]; TRUCK [63 h]; EQUIP OPERATORS [251 h] | 20,245.2 | 10 | P3P1FFFR10 | DUKHCON3PP1FFGL5185 | DUKHCONI03Z1FFGL5185 | DH | CON | 3IF | Z1 | FR | FF | B11 | B11-D07 | RES-3 |
| DUKHCONI03Z1FFGL5190 |  | Laying of firefighting line | 25d | 2013-11-10 | 2013-12-08 | DUKHCONI03Z1FFGL5185 SS+7d, DUKHPROGEN00PRDV3540, DUKHPROGEN00PRDV3650 | 8d | 0d | LABOR- SUBCONTRACTOR [114 h]; MECHANICALS SK [399.6 h]; PLUMB PIPES QTY [361 lm] | 32,256.6 | 15 | P3P1FFFR15 | DUKHCON3PP1FFGL5190 | DUKHCONI03Z1FFGL5190 | DH | CON | 3IF | Z1 | FR | FF | B11 | B11-D07 | RES-3 |
| DUKHCONI03Z1FFGL5195 |  | Testing of firefighting line | 25d | 2013-11-16 | 2013-12-14 | DUKHCONI03Z1FFGL5190 SS+5d | 8d | 0d | LABOR- SUBCONTRACTOR [60 h]; MECHANICALS SK [205.2 h]; DRAINAGE PIPES QTY [361 lm] | 2,532.3 | 20 | P3P1FFFR20 | DUKHCON3PP1FFGL5195 | DUKHCONI03Z1FFGL5195 | DH | CON | 3IF | Z1 | FR | FF | B11 | B11-D07 | RES-3 |
| DUKHCONI03Z1FFGL5200 |  | Backfilling firefighting line | 25d | 2013-11-21 | 2013-12-21 | DUKHCONI03Z1FFGL5195 SS+5d | 8d | 0d | LABOR - CIVIL [90 h]; BACKFILLING QTY [361 Cum]; BOBCAT [125 h]; PLATE COMPACTOR [125 h]; TRUCK [25 h]; EQUIP OPERATORS [275 h] | 5,061.8 | 25 | P3P1FFFR25 | DUKHCON3PP1FFGL5200 | DUKHCONI03Z1FFGL5200 | DH | CON | 3IF | Z1 | FR | FF | B11 | B11-D07 | RES-3 |
| DUKHCONI03Z1FFGL5205 |  | Construction of valve chambers & Thrust Blocks | 25d | 2013-12-08 | 2014-01-06 | DUKHCONI03Z1FFGL5185 SS+10d, DUKHCONI03Z1FFGL5200 FF+5d, DUKHPROGEN00PRDV3690 | 15d | 0d | STEEL FIXERS SK [8 h]; CARPENTERS SK [24 h]; CONCRETE MASON SK [16 h]; LABOR - CIVIL [30 h]; REINFORCEMENT BARS QTY [37 kg]; FORMWORK QTY [9 Sqm]; CONCRETE QTY [6 Cum]; EXCAVATION QTY [6 Cum] | 11,370.1 | 30 | P3P1FFFR30 | DUKHCON3PP1FFGL5205 | DUKHCONI03Z1FFGL5205 | DH | CON | 3IF | Z1 | FR | FF | B11 | B11-D07 | RES-3 |
| DUKHCONI03Z1FFGL5210 |  | Connection with existing Firewater System | 25d | 2013-12-14 | 2014-01-12 | DUKHCONI03Z1WSGL5180 FF, DUKHCONI03Z1FFGL5205 FF+5d | 15d | 3d | STEEL FIXERS SK [8 h]; CARPENTERS SK [24 h]; CONCRETE MASON SK [16 h]; LABOR - CIVIL [30 h]; EXCAVATION QTY [6 Cum]; REINFORCEMENT BARS QTY [37 kg]; FORMWORK QTY [9 Sqm]; CONCRETE QTY [6 Cum] | 14,074.2 | 35 | P3P1FFFR35 | DUKHCON3PP1FFGL5210 | DUKHCONI03Z1FFGL5210 | DH | CON | 3IF | Z1 | FR | FF | B11 | B11-D07 | RES-3 |
|  | 30 | **ELECTRICAL LINES** |  | 2013-11-30 | 2014-01-26 |  |  |  |  |  |  |  |  |  |  |  |  |  |  |  |  |  |  |
| DUKHCONI03Z1ELGL5215 |  | Excavation Cable Trenches & Duct Banks | 25d | 2013-11-30 | 2013-12-29 | DUKHENGI03DWELAP5840, DUKHCONI03Z1FFGL5200 SS+7d | 12d | 0d | CONCRETE MASON SK [32 h]; LABOR - CIVIL [2340 h]; LABOR- SUBCONTRACTOR [108 h]; ELECTRICIANS SK [403.2 h]; EXCAVATION QTY [3858 Cum]; CONCRETE QTY [16 Cum]; CODUITS QTY [353 lm]; LOADER [250 h]; POCLAIN [500 h]; TRUCK [250 h]; EQUIP OPERATORS [1000 h] | 15,175.6 | 10 | P3P1ECFR10 | DUKHCON3PP1ELGL5215 | DUKHCONI03Z1ELGL5215 | DH | CON | 3IF | Z1 | FR | EC | B11 | B11-D04 | RES-3 |
| DUKHCONI03Z1ELGL5220 |  | Laying of electrical cables | 25d | 2013-12-05 | 2014-01-04 | DUKHCONI03Z1ELGL5215 SS+5d | 13d | 0d | LABOR- SUBCONTRACTOR [1374 h]; ELECTRICIANS SK [5118.4 h]; CABLE QTY [4563 lm]; MCCB QTY [4 ea] | 876,019.9 | 15 | P3P1ECFR15 | DUKHCON3PP1ELGL5220 | DUKHCONI03Z1ELGL5220 | DH | CON | 3IF | Z1 | FR | EC | B11 | B11-D04 | RES-3 |
| DUKHCONI03Z1ELGL5225 |  | Backfilling Electrical trench | 25d | 2013-12-16 | 2014-01-14 | DUKHCONI03Z1ELGL5215 FF+7d, DUKHCONI03Z1ELGL5220 SS+9d | 13d | 0d | LABOR - CIVIL [930 h]; BACKFILLING QTY [3858 Cum]; BOBCAT [500 h]; PLATE COMPACTOR [500 h]; TRUCK [100 h]; EQUIP OPERATORS [1100 h] | 6,502.75 | 20 | P3P1ECFR20 | DUKHCON3PP1ELGL5225 | DUKHCONI03Z1ELGL5225 | DH | CON | 3IF | Z1 | FR | EC | B11 | B11-D04 | RES-3 |
| DUKHCONI03Z1ELGL5230 |  | Construction of Submain Board & Feeder Pillar | 25d | 2013-12-29 | 2014-01-26 | DUKHCONI03Z1ELGL5225 SS+10d, DUKHCONI03Z1ELGL5225 FF+10d | 48d | 0d | STEEL FIXERS SK [8 h]; CARPENTERS SK [64 h]; CONCRETE MASON SK [8 h]; LABOR - CIVIL [54 h]; LABOR- SUBCONTRACTOR [120 h]; REINFORCEMENT BARS QTY [37 kg]; FORMWORK QTY [30 Sqm]; CONCRETE QTY [3 Cum]; DOOR ERECTOR SK [16 h]; ALUMINIUM DOOR QTY [4 ea]; EXPANSION JOINT QTY [38 Sqm]; EXPANSION JOINT SKILLED SK [304 h] | 109,292.75 | 25 | P3P1ECFR25 | DUKHCON3PP1ELGL5230 | DUKHCONI03Z1ELGL5230 | DH | CON | 3IF | Z1 | FR | EC | B11 | B11-D04 | RES-3 |
|  | 35 | **STREET LIGHTING** |  | 2013-11-30 | 2014-02-25 |  |  |  |  |  |  |  |  |  |  |  |  |  |  |  |  |  |  |
| DUKHCONI03Z1STGL5235 |  | Excavation for Street lighting | 25d | 2013-11-30 | 2013-12-29 | DUKHENGI03DWSTAP5850, DUKHCONI03Z1ELGL5215 SS | 12d | 0d | LABOR - CIVIL [18 h]; EXCAVATION QTY [29 Cum]; LOADER [13 h]; POCLAIN [25 h]; TRUCK [13 h]; EQUIP OPERATORS [51 h] | 3,023.3 | 10 | P3P1STFR10 | DUKHCON3PP1STGL5235 | DUKHCONI03Z1STGL5235 | DH | CON | 3IF | Z1 | FR | ST | B11 | B11-D09 | RES-3 |
| DUKHCONI03Z1STGL5240 |  | Construction of Duct Banks | 25d | 2013-12-05 | 2014-01-04 | DUKHCONI03Z1STGL5235 SS+5d | 12d | 0d | LABOR- SUBCONTRACTOR [294 h]; ELECTRICIANS SK [1086.4 h]; DUCT BANK QTY [387 lm] | 78,562.4 | 15 | P3P1STFR15 | DUKHCON3PP1STGL5240 | DUKHCONI03Z1STGL5240 | DH | CON | 3IF | Z1 | FR | ST | B11 | B11-D09 | RES-3 |
| DUKHCONI03Z1STGL5245 |  | Construction of Foundation | 25d | 2013-12-05 | 2014-01-04 | DUKHCONI03Z1STGL5240 SS | 12d | 0d | LABOR - CIVIL [192 h]; COLUMN BASE QTY [32 ea]; MANHOLES SK [504 h] | 30,080.9 | 20 | P3P1STFR20 | DUKHCON3PP1STGL5245 | DUKHCONI03Z1STGL5245 | DH | CON | 3IF | Z1 | FR | ST | B11 | B11-D09 | RES-3 |
| DUKHCONI03Z1STGL5250 |  | Backfilling Street Lighting | 25d | 2013-12-11 | 2014-01-09 | DUKHCONI03Z1STGL5245 SS+5d, DUKHCONI03Z1STGL5235 FF+5d | 12d | 0d | LABOR - CIVIL [12 h]; BACKFILLING QTY [29 Cum]; PLATE COMPACTOR [25 h]; TRUCK [5 h]; EQUIP OPERATORS [55 h]; BOBCAT [25 h] | 3,022.95 | 25 | P3P1STFR25 | DUKHCON3PP1STGL5250 | DUKHCONI03Z1STGL5250 | DH | CON | 3IF | Z1 | FR | ST | B11 | B11-D09 | RES-3 |
| DUKHCONI03Z1STGL5255 |  | Installation of light Post | 25d | 2014-01-13 | 2014-02-10 | DUKHPROGEN00PRDV3350, DUKHPROGEN00PRDV3250, DUKHCONI03Z1STGL5250 SS+10d, DUKHCONI03Z1ELGL5230 SS+13d | 53d | 0d | LABOR- SUBCONTRACTOR [54 h]; ELECTRICIANS SK [179.2 h]; LIGHTPOST COLUMN QTY [32 ea] | 377,635.85 | 30 | P3P1STFR30 | DUKHCON3PP1STGL5255 | DUKHCONI03Z1STGL5255 | DH | CON | 3IF | Z1 | FR | ST | B11 | B11-D09 | RES-3 |
| DUKHCONI03Z1STGL5260 |  | Electrical Works | 25d | 2014-01-27 | 2014-02-25 | DUKHCONI03Z1ELGL5230, DUKHCONI03Z1STGL5255 SS+7d | 48d | 15d | LABOR- SUBCONTRACTOR [120 h]; ELECTRICIANS SK [436.8 h]; CABLE QTY [387 lm] | 17,581.95 | 35 | P3P1STFR35 | DUKHCON3PP1STGL5260 | DUKHCONI03Z1STGL5260 | DH | CON | 3IF | Z1 | FR | ST | B11 | B11-D09 | RES-3 |
|  | 40 | **IRRIGATION LINES** |  | 2014-01-15 | 2014-03-23 |  |  |  |  |  |  |  |  |  |  |  |  |  |  |  |  |  |  |
| DUKHCONI03Z1IRGL5265 |  | Excavation for irrigation line | 25d | 2014-01-15 | 2014-02-13 | DUKHCONI03Z1ELGL5225, DUKHENGI03DWIRAP5870 | 21d | 0d | LABOR - CIVIL [366 h]; EXCAVATION QTY [604 Cum]; LOADER [125 h]; POCLAIN [250 h]; TRUCK [125 h]; EQUIP OPERATORS [500 h] | 11,302 | 10 | P3P1IRFR10 | DUKHCON3PP1IRGL5265 | DUKHCONI03Z1IRGL5265 | DH | CON | 3IF | Z1 | FR | IR | B11 | B11-D07 | RES-3 |
| DUKHCONI03Z1IRGL5270 |  | Laying of irrigationline | 25d | 2014-01-21 | 2014-02-19 | DUKHCONI03Z1IRGL5265 SS+5d | 21d | 0d | IRRIGATION PIPES QTY [1723 lm]; LABOR- SUBCONTRACTOR [486 h]; MECHANICALS SK [874.8 h]; CHAMPER QTY [151 lm] | 25,326.8 | 15 | P3P1IRFR15 | DUKHCON3PP1IRGL5270 | DUKHCONI03Z1IRGL5270 | DH | CON | 3IF | Z1 | FR | IR | B11 | B11-D07 | RES-3 |
| DUKHCONI03Z1IRGL5275 |  | Testing of irrigation line | 25d | 2014-01-27 | 2014-02-25 | DUKHCONI03Z1IRGL5270 SS+5d | 21d | 0d | LABOR- SUBCONTRACTOR [264 h]; MECHANICALS SK [939.6 h]; DRAINAGE PIPES QTY [1723 lm] | 3,657.85 | 20 | P3P1IRFR20 | DUKHCON3PP1IRGL5275 | DUKHCONI03Z1IRGL5275 | DH | CON | 3IF | Z1 | FR | IR | B11 | B11-D07 | RES-3 |
| DUKHCONI03Z1IRGL5280 |  | Backfilling irrigation line | 25d | 2014-02-02 | 2014-03-03 | DUKHCONI03Z1IRGL5275 SS+5d | 21d | 0d | PLATE COMPACTOR [250 h]; TRUCK [50 h]; EQUIP OPERATORS [550 h]; LABOR - CIVIL [150 h]; BACKFILLING QTY [604 Cum]; BOBCAT [250 h] | 2,825.5 | 25 | P3P1IRFR25 | DUKHCON3PP1IRGL5280 | DUKHCONI03Z1IRGL5280 | DH | CON | 3IF | Z1 | FR | IR | B11 | B11-D07 | RES-3 |
| DUKHCONI03Z1IRGL5285 |  | Construction of Thrust Blocks,Pull boxes | 25d | 2014-02-15 | 2014-03-15 | DUKHCONI03Z1IRGL5280 FF+10d, DUKHCONI03Z1ELGL5225 SS+10d | 31d | 0d | STEEL FIXERS SK [24 h]; CARPENTERS SK [184 h]; CONCRETE MASON SK [144 h]; LABOR - CIVIL [276 h]; EXCAVATION QTY [43 Cum]; REINFORCEMENT BARS QTY [210 kg]; FORMWORK QTY [88 Sqm]; CONCRETE QTY [70 Cum] | 6,535.45 | 30 | P3P1IRFR30 | DUKHCON3PP1IRGL5285 | DUKHCONI03Z1IRGL5285 | DH | CON | 3IF | Z1 | FR | IR | B11 | B11-D07 | RES-3 |
| DUKHCONI03Z1IRGL5290 |  | Irrigation Fittings (Nozzle,Values) | 25d | 2014-02-23 | 2014-03-23 | DUKHPROGEN00PRDV3870, DUKHPROGEN00PRDV3760, DUKHPROGEN00PRDV3840, DUKHPROGEN00PRDV3860, DUKHCONI03Z1IRGL5280 SS+10d, DUKHCONI03Z1IRGL5285 SS+7d, DUKHPROGEN00PRDV3810, DUKHPROGEN00PRDV3830 | 31d | 0d | LABOR- SUBCONTRACTOR [75 h]; ELECTRICIANS SK [280 h] | 59,976.2 | 35 | P3P1IRFR35 | DUKHCON3PP1IRGL5290 | DUKHCONI03Z1IRGL5290 | DH | CON | 3IF | Z1 | FR | IR | B11 | B11-D07 | RES-3 |

Notes:
- DUKHCONI03Z1FFGL5185: Expenses: I03-Water supply system 20245.2
- DUKHCONI03Z1FFGL5190: Expenses: I03-Water supply system 32256.6
- DUKHCONI03Z1FFGL5195: Expenses: I03-Water supply system 2532.3
- DUKHCONI03Z1FFGL5200: Expenses: I03-Water supply system 5061.8
- DUKHCONI03Z1FFGL5205: Expenses: I03-Water supply system 11370.1
- DUKHCONI03Z1FFGL5210: Expenses: I03-Water supply system 14074.2
- DUKHCONI03Z1ELGL5215: Expenses: I03-Electrical power supply and distribution 15175.6
- DUKHCONI03Z1ELGL5220: Expenses: I03-Electrical power supply and distribution 876020
- DUKHCONI03Z1ELGL5225: Expenses: I03-Electrical power supply and distribution 6502.75
- DUKHCONI03Z1ELGL5230: Expenses: I03-Electrical power supply and distribution 109293
- DUKHCONI03Z1STGL5235: Expenses: I03-Street lighting 3023.3
- DUKHCONI03Z1STGL5240: Expenses: I03-Street lighting 78562.4
- DUKHCONI03Z1STGL5245: Expenses: I03-Street lighting 30080.9
- DUKHCONI03Z1STGL5250: Expenses: I03-Street lighting 3022.95
- DUKHCONI03Z1STGL5255: Expenses: I03-Street lighting 377636
- DUKHCONI03Z1STGL5260: Expenses: I03-Street lighting 17582
- DUKHCONI03Z1IRGL5265: Expenses: I03-Water supply system 11302
- DUKHCONI03Z1IRGL5270: Expenses: I03-Water supply system 25326.8
- DUKHCONI03Z1IRGL5275: Expenses: I03-Water supply system 3657.85
- DUKHCONI03Z1IRGL5280: Expenses: I03-Water supply system 2825.5
- DUKHCONI03Z1IRGL5285: Expenses: I03-Water supply system 6535.45
- DUKHCONI03Z1IRGL5290: Expenses: I03-Water supply system 59976.2

| ID | WBS | Activity | Duration | Start | Finish | Predecessors | Total float | Free float | Resources | Cost | CODE | P3 ACTID | P6 ID (old) | NP61D | PROJECT | PHASES | PACKAGE | PART | ELEMENTS | STEP | BILL NOS | BILL DIVISION | RES PACK |
| --- | --- | --- | --- | --- | --- | --- | --- | --- | --- | --- | --- | --- | --- | --- | --- | --- | --- | --- | --- | --- | --- | --- | --- |
|  | 45 | **TELECOMMUNICATION LINES** |  | 2013-12-24 | 2014-04-26 |  |  |  |  |  |  |  |  |  |  |  |  |  |  |  |  |  |  |
| DUKHCONI03Z1TCGL5295 |  | Excavation Telecommunication trenches | 20d | 2013-12-24 | 2014-01-15 | DUKHCONI03Z1STGL5250 SS+10d, DUKHENGI03DWTCAP5860 | 12d | 0d | LABOR - CIVIL [186 h]; EXCAVATION QTY [304 Cum]; LOADER [50 h]; POCLAIN [100 h]; TRUCK [50 h]; EQUIP OPERATORS [200 h] | 7,232.35 | 10 | P3P1TCFR10 | DUKHCON3PP1TCGL5295 | DUKHCONI03Z1TCGL5295 | DH | CON | 3IF | Z1 | FR | TC | B11 | B11-D05 | RES-3 |
| DUKHCONI03Z1TCGL5300 |  | Laying of cables | 20d | 2013-12-30 | 2014-01-21 | DUKHCONI03Z1TCGL5295 SS+5d | 12d | 0d | LABOR- SUBCONTRACTOR [138 h]; ELECTRICIANS SK [515.2 h]; CABLE QTY [455 lm] | 2,546.4 | 15 | P3P1TCFR15 | DUKHCON3PP1TCGL5300 | DUKHCONI03Z1TCGL5300 | DH | CON | 3IF | Z1 | FR | TC | B11 | B11-D05 | RES-3 |
| DUKHCONI03Z1TCGL5305 |  | Backfilling telecommunication trench | 20d | 2014-01-05 | 2014-01-27 | DUKHCONI03Z1TCGL5300 SS+5d | 12d | 0d | LABOR - CIVIL [78 h]; BACKFILLING QTY [304 Cum]; BOBCAT [100 h]; PLATE COMPACTOR [100 h]; TRUCK [20 h]; EQUIP OPERATORS [220 h] | 3,099.7 | 20 | P3P1TCFR20 | DUKHCON3PP1TCGL5305 | DUKHCONI03Z1TCGL5305 | DH | CON | 3IF | Z1 | FR | TC | B11 | B11-D05 | RES-3 |
| DUKHCONI03Z1TCGL5310 |  | Connection & Installation | 20d | 2014-04-03 | 2014-04-26 | DUKHCONI03Z1PSGL7015 FF, DUKHCONI03Z1TCGL5305 FF+10d, DUKHCONI03Z1TCGL5305 SS+10d | 22d | 0d | LABOR- SUBCONTRACTOR [24 h]; ELECTRICIANS SK [179.2 h]; TELEPHONE SOCKETS QTY [16 ea] | 73,468.2 | 25 | P3P1TCFR25 | DUKHCON3PP1TCGL5310 | DUKHCONI03Z1TCGL5310 | DH | CON | 3IF | Z1 | FR | TC | B11 | B11-D05 | RES-3 |
|  | 50 | **BOUNDARY WALL** |  | 2013-12-24 | 2014-02-06 |  |  |  |  |  |  |  |  |  |  |  |  |  |  |  |  |  |  |
| DUKHCONI03Z1BWGL5315 |  | Construction of Boundary Wall (Ht-3m) | 25d | 2013-12-24 | 2014-01-21 | DUKHENGI03DWBWAP5890, DUKHCONI03Z1STGL5250 SS+10d, DUKHPROGEN00PRDV3820 | 53d | 0d | BOUNDARY WIRE MESH QTY [264 Sqm]; STEEL FIXERS SK [104 h]; LABOR - CIVIL [78 h] | 413,675.55 | 10 | P3P1BWFR10 | DUKHCON3PP1ARGL5315 | DUKHCONI03Z1BWGL5315 | DH | CON | 3IF | Z1 | FR | BW | B11 | B11-D10 | RES-3 |
| DUKHCONI03Z1BWGL5320 |  | Install.Steel Gate,Entance Barrier (3m Wall) | 25d | 2014-01-09 | 2014-02-06 | DUKHPROGEN00PRDV3800, DUKHCONI03Z1BWGL5315 SS+14d | 53d | 17d | GATE QTY [1 ea]; GATE ERECTOR SK [8 h]; LABOR- SUBCONTRACTOR [6 h] | 6,983.4 | 15 | P3P1BWFR15 | DUKHCON3PP1ARGL5320 | DUKHCONI03Z1BWGL5320 | DH | CON | 3IF | Z1 | FR | BW | B11 | B11-D10 | RES-3 |
|  | 55 | **ROAD WORKS** |  | 2014-01-16 | 2014-04-02 |  |  |  |  |  |  |  |  |  |  |  |  |  |  |  |  |  |  |
| DUKHCONI03Z1RWGL6000 |  | Excavation & Earth Filling | 10d | 2014-01-16 | 2014-01-27 | DUKHCONI03Z1FFGL5210, DUKHCONI03Z1TCGL5305 SS+10d, DUKHCONI03Z1ELGL5225, DUKHENGI03DWBWAP5890, DUKHCONI03Z1STGL5250, DUKHCONI03Z1SAGL5150, DUKHCONI03Z1FFGL5200 | 12d | 0d | LABOR - CIVIL [1182 h]; EXCAVATION QTY [1402 Cum]; BACKFILLING QTY [1402 Cum]; LOADER [150 h]; POCLAIN [300 h]; TRUCK [150 h]; EQUIP OPERATORS [600 h] | 121,276.65 | 10 | P3P1RDFR10 | DUKHCON3PP1RDGL6000 | DUKHCONI03Z1RWGL6000 | DH | CON | 3IF | Z1 | FR | RD | B11 | B11-D08 | RES-3 |
| DUKHCONI03Z1RWGL6005 |  | Laying of Sub Grade | 25d | 2014-01-28 | 2014-02-26 | DUKHCONI03Z1RWGL6000 | 12d | 0d | LABOR- SUBCONTRACTOR [36 h]; SUBGRADE QTY [523 Sqm] | 160,582.8 | 15 | P3P1RDFR15 | DUKHCON3PP1RDGL6005 | DUKHCONI03Z1RWGL6005 | DH | CON | 3IF | Z1 | FR | RD | B11 | B11-D08 | RES-3 |
| DUKHCONI03Z1RWGL6010 |  | Laying of Precast Kerbs | 25d | 2014-02-09 | 2014-03-10 | DUKHCONI03Z1RWGL6005 SS+10d | 12d | 0d | LABOR- SUBCONTRACTOR [426 h]; KERBSTONE QTY [468 lm]; EDGE STONE QTY [468 Sqm]; KERBSTONE MASON SK [752 h] | 106,835.2 | 20 | P3P1RDFR20 | DUKHCON3PP1RDGL6010 | DUKHCONI03Z1RWGL6010 | DH | CON | 3IF | Z1 | FR | RD | B11 | B11-D08 | RES-3 |
| DUKHCONI03Z1RWGL6015 |  | Laying of Granular Sub Base Coarse | 20d | 2014-02-22 | 2014-03-16 | DUKHCONI03Z1RWGL6010 SS+10d | 12d | 0d | TRUCK [100 h]; EQUIP OPERATORS [600 h]; LABOR- SUBCONTRACTOR [36 h]; GRANULAR SUBBASE QTY [523 Sqm]; HEAVY ROLLER [400 h]; LOADER [100 h] | 80,291.4 | 25 | P3P1RDFR25 | DUKHCON3PP1RDGL6015 | DUKHCONI03Z1RWGL6015 | DH | CON | 3IF | Z1 | FR | RD | B11 | B11-D08 | RES-3 |
| DUKHCONI03Z1RWGL6020 |  | Laying of Road Base Asphalt Concrete | 5d | 2014-03-17 | 2014-03-22 | DUKHCONI03Z1RWGL6015 | 22d | 0d | LABOR- SUBCONTRACTOR [36 h]; ASPHALT CONCRETE QTY [2657 Cum]; ASPHALT PAVER MACHINE [50 h]; HAND ROLLER [100 h]; EQUIP OPERATORS [150 h] | 207,536.5 | 30 | P3P1RDFR30 | DUKHCON3PP1RDGL6020 | DUKHCONI03Z1RWGL6020 | DH | CON | 3IF | Z1 | FR | RD | B11 | B11-D08 | RES-3 |
| DUKHCONI03Z1RWGL6025 |  | Laying of Asphalt Wearing Coarse | 5d | 2014-03-23 | 2014-03-27 | DUKHCONI03Z1RWGL6020 | 37d | 0d | LABOR- SUBCONTRACTOR [36 h]; ASPHALT WEARING COURSE QTY [2657 Sqm]; ASPHALT PAVER MACHINE [50 h]; HAND ROLLER [100 h]; EQUIP OPERATORS [150 h] | 108,120 | 35 | P3P1RDFR35 | DUKHCON3PP1RDGL6025 | DUKHCONI03Z1RWGL6025 | DH | CON | 3IF | Z1 | FR | RD | B11 | B11-D08 | RES-3 |
| DUKHCONI03Z1RWGL6030 |  | Traffic Signage & Road Marking | 5d | 2014-03-29 | 2014-04-02 | DUKHCONI03Z1RWGL6025, DUKHPROGEN00PRDV3700, DUKHPROGEN00PRDV3710, DUKHPROGEN00PRDV3720 | 37d | 15d | LABOR- SUBCONTRACTOR [120 h]; STEEL ERECTOR SK [112 h]; TRAFFIC SIGN QTY [69 ea]; ROAD MARKING QTY [117 lm]; ASPHALT SK [192 h] | 30,786.7 | 40 | P3P1RDFR40 | DUKHCON3PP1RDGL6030 | DUKHCONI03Z1RWGL6030 | DH | CON | 3IF | Z1 | FR | RD | B11 | B11-D08 | RES-3 |
|  | 60 | **PARKING SHED** |  | 2014-02-27 | 2014-04-26 |  |  |  |  |  |  |  |  |  |  |  |  |  |  |  |  |  |  |
| DUKHCONI03Z1PSGL7000 |  | Excavation | 15d | 2014-02-27 | 2014-03-16 | DUKHENGI03DWPSAP5900, DUKHCONI03Z1RWGL6015 SS+5d | 27d | 5d | LABOR - CIVIL [6 h]; EXCAVATION QTY [7 Cum]; LOADER [8 h]; POCLAIN [15 h]; TRUCK [8 h]; EQUIP OPERATORS [31 h] | 46,551.75 | 10 | P3P1PSFR10 | DUKHCON3PP1PSGL7000 | DUKHCONI03Z1PSGL7000 | DH | CON | 3IF | Z1 | FR | PS | B11 | B11-D08 | RES-3 |
| DUKHCONI03Z1PSGL7005 |  | Foundation casting | 15d | 2014-03-11 | 2014-03-27 | DUKHCONI03Z1PSGL7000 FF+5d, DUKHCONI03Z1RWGL6015 FF+10d, DUKHCONI03Z1PSGL7000 SS+5d | 22d | 0d | STEEL FIXERS SK [224 h]; CARPENTERS SK [168 h]; CONCRETE MASON SK [344 h]; LABOR - CIVIL [540 h]; REINFORCEMENT BARS QTY [2730 kg]; FORMWORK QTY [81 Sqm]; CONCRETE QTY [170 Cum] | 46,551.75 | 15 | P3P1PSFR15 | DUKHCON3PP1PSGL7005 | DUKHCONI03Z1PSGL7005 | DH | CON | 3IF | Z1 | FR | PS | B11 | B11-D08 | RES-3 |
| DUKHCONI03Z1PSGL7010 |  | Column, Frame& Fabrics Erection | 25d | 2014-03-23 | 2014-04-20 | DUKHCONI03Z1RWGL6020, DUKHPROGEN00PRDV3730, DUKHCONI03Z1RWGL6030 FF, DUKHCONI03Z1PSGL7005 SS+10d | 22d | 0d | LABOR- SUBCONTRACTOR [156 h]; STEEL ERECTOR SK [272 h]; PARKING SHED QTY [840 ea] | 232,764.2 | 20 | P3P1PSFR20 | DUKHCON3PP1PSGL7010 | DUKHCONI03Z1PSGL7010 | DH | CON | 3IF | Z1 | FR | PS | B11 | B11-D08 | RES-3 |
| DUKHCONI03Z1PSGL7015 |  | Electrical Works-Parking Shed | 25d | 2014-03-29 | 2014-04-26 | DUKHCONI03Z1STGL5260, DUKHCONI03Z1PSGL7010 SS+5d | 22d | 0d | LABOR- SUBCONTRACTOR [66 h]; ELECTRICIANS SK [123.2 h]; LIGHTS QTY [54 ea] | 23,276.55 | 25 | P3P1PSFR25 | DUKHCON3PP1PSGL7015 | DUKHCONI03Z1PSGL7015 | DH | CON | 3IF | Z1 | FR | PS | B11 | B11-D08 | RES-3 |
|  | 65 | **HARD LANDSCAPING** |  | 2014-01-16 | 2014-04-08 |  |  |  |  |  |  |  |  |  |  |  |  |  |  |  |  |  |  |
| DUKHCONI03Z1HDGL7020 |  | Precast Concrete Kerbs works | 20d | 2014-01-16 | 2014-02-08 | DUKHCONI03Z1RWGL6000 SS, DUKHENGI03DWSLAP5880 | 32d | 0d | LABOR- SUBCONTRACTOR [672 h]; KERBSTONE QTY [1490 lm]; KERBSTONE MASON SK [1200 h] | 178,263.25 | 10 | P3P1HDFR10 | DUKHCON3PP1HDGL7020 | DUKHCONI03Z1HDGL7020 | DH | CON | 3IF | Z1 | FR | HD | B11 | B11-D10 | RES-3 |
| DUKHCONI03Z1HDGL7025 |  | Interlocking for Walkways | 25d | 2014-01-28 | 2014-02-26 | DUKHCONI03Z1HDGL7020 SS+10d, DUKHPROGEN00PRDV3600 | 32d | 0d | INTERLOCK MASON SK [880 h]; LABOR- SUBCONTRACTOR [330 h]; INTERLOCK QTY [1101 Sqm] | 151,381.25 | 15 | P3P1HDFR15 | DUKHCON3PP1HDGL7025 | DUKHCONI03Z1HDGL7025 | DH | CON | 3IF | Z1 | FR | HD | B11 | B11-D10 | RES-3 |
| DUKHCONI03Z1HDGL7030 |  | Construction of Retaining wall | 25d | 2014-02-09 | 2014-03-10 | DUKHCONI03Z1HDGL7025 SS+10d | 32d | 0d | STEEL FIXERS SK [16 h]; CARPENTERS SK [128 h]; CONCRETE MASON SK [24 h]; LABOR - CIVIL [126 h]; EXCAVATION QTY [16 Cum]; REINFORCEMENT BARS QTY [175 kg]; FORMWORK QTY [62 Sqm]; CONCRETE QTY [9 Cum] | 10,484.75 | 20 | P3P1HDFR20 | DUKHCON3PP1HDGL7030 | DUKHCONI03Z1HDGL7030 | DH | CON | 3IF | Z1 | FR | HD | B11 | B11-D10 | RES-3 |
| DUKHCONI03Z1HDGL7035 |  | Construction of Wash Stone Boulders | 25d | 2014-02-09 | 2014-03-10 | DUKHPROGEN00PRDV3740, DUKHCONI03Z1HDGL7030 SS | 32d | 1d | TILE MASON SK [32 h]; LABOR- SUBCONTRACTOR [18 h]; STONE BOULDERS QTY [16 Sqm] | 9,277.25 | 25 | P3P1HDFR25 | DUKHCON3PP1HDGL7035 | DUKHCONI03Z1HDGL7035 | DH | CON | 3IF | Z1 | FR | HD | B11 | B11-D10 | RES-3 |
| DUKHCONI03Z1HDGL7040 |  | Construction of Speed Humps | 10d | 2014-03-29 | 2014-04-08 | DUKHCONI03Z1HDGL7035 SS, DUKHCONI03Z1RWGL6025, DUKHPROGEN00PRDV3750 | 57d | 6d | CONCRETE MASON SK [8 h]; LABOR - CIVIL [6 h]; SPEED HUMPS [2 ea] | 1,994 | 30 | P3P1HDFR30 | DUKHCON3PP1HDGL7040 | DUKHCONI03Z1HDGL7040 | DH | CON | 3IF | Z1 | FR | HD | B11 | B11-D10 | RES-3 |

Notes:
- DUKHCONI03Z1TCGL5295: Expenses: I03-Telecommunication 7232.35
- DUKHCONI03Z1TCGL5300: Expenses: I03-Telecommunication 2546.4
- DUKHCONI03Z1TCGL5305: Expenses: I03-Telecommunication 3099.7
- DUKHCONI03Z1TCGL5310: Expenses: I03-Telecommunication 73468.2
- DUKHCONI03Z1BWGL5315: Expenses: I03-Hard and soft landscaping 413676
- DUKHCONI03Z1BWGL5320: Expenses: I03-Hard and soft landscaping 6983.4
- DUKHCONI03Z1RWGL6000: Expenses: I03-Road work 121277
- DUKHCONI03Z1RWGL6005: Expenses: I03-Road work 160583
- DUKHCONI03Z1RWGL6010: Expenses: I03-Road work 106835
- DUKHCONI03Z1RWGL6015: Expenses: I03-Road work 80291.4
- DUKHCONI03Z1RWGL6020: Expenses: I03-Road work 207536
- DUKHCONI03Z1RWGL6025: Expenses: I03-Road work 108120
- DUKHCONI03Z1RWGL6030: Expenses: I03-Road work 30786.7
- DUKHCONI03Z1PSGL7000: Expenses: I03-Road work 46551.8
- DUKHCONI03Z1PSGL7005: Expenses: I03-Road work 46551.8
- DUKHCONI03Z1PSGL7010: Expenses: I03-Road work 232764
- DUKHCONI03Z1PSGL7015: Expenses: I03-Road work 23276.5
- DUKHCONI03Z1HDGL7020: Expenses: I03-Hard and soft landscaping 178263
- DUKHCONI03Z1HDGL7025: Expenses: I03-Hard and soft landscaping 151381
- DUKHCONI03Z1HDGL7030: Expenses: I03-Hard and soft landscaping 10484.8
- DUKHCONI03Z1HDGL7035: Expenses: I03-Hard and soft landscaping 9277.25
- DUKHCONI03Z1HDGL7040: Expenses: I03-Hard and soft landscaping 1994

| ID | WBS | Activity | Duration | Start | Finish | Predecessors | Total float | Free float | Resources | Cost | CODE | P3 ACTID | P6 ID (old) | NP61D | PROJECT | PHASES | PACKAGE | PART | ELEMENTS | STEP | BILL NOS | BILL DIVISION | RES PACK |
| --- | --- | --- | --- | --- | --- | --- | --- | --- | --- | --- | --- | --- | --- | --- | --- | --- | --- | --- | --- | --- | --- | --- | --- |
|  | 70 | **SOFT LANDSCAPING** |  | 2014-02-23 | 2014-04-15 |  |  |  |  |  |  |  |  |  |  |  |  |  |  |  |  |  |  |
| DUKHCONI03Z1SLGL7200 |  | Excavation | 25d | 2014-02-23 | 2014-03-23 | DUKHCONI03Z1IRGL5290 SS, DUKHCONI03Z1HDGL7035 SS+10d, DUKHENGI03DWSLAP5880 | 31d | 0d | LABOR - CIVIL [36 h]; EXCAVATION QTY [56 Cum]; LOADER [13 h]; POCLAIN [25 h]; TRUCK [13 h]; EQUIP OPERATORS [51 h] | 78,051.75 | 10 | P3P1SLFR10 | DUKHCON3PP1SLGL7200 | DUKHCONI03Z1SLGL7200 | DH | CON | 3IF | Z1 | FR | SL | B11 | B11-D10 | RES-3 |
| DUKHCONI03Z1SLGL7205 |  | Sweet Soil Laying | 25d | 2014-03-06 | 2014-04-03 | DUKHCONI03Z1SLGL7200 SS+10d | 31d | 0d | LABOR- SUBCONTRACTOR [642 h]; SWEET SOIL QTY [5305 Cum]; LANDSCAPING SK [856 h] | 442,294.5 | 15 | P3P1SLFR15 | DUKHCON3PP1SLGL7205 | DUKHCONI03Z1SLGL7205 | DH | CON | 3IF | Z1 | FR | SL | B11 | B11-D10 | RES-3 |
| DUKHCONI03Z1SLGL7210 |  | Plantation works | 25d | 2014-03-18 | 2014-04-15 | DUKHCONI03Z1HDGL7040 FF, DUKHCONI03Z1SLGL7205 SS+10d | 51d | 16d | LANDSCAPING SK [1280 h]; LABOR- SUBCONTRACTOR [960 h]; PLAM TREES QTY [56 ea]; GROUND COVER QTY [10150 Sqm]; SHRUBS QTY [301 ea] | 483,041.2 | 20 | P3P1SLFR20 | DUKHCON3PP1SLGL7210 | DUKHCONI03Z1SLGL7210 | DH | CON | 3IF | Z1 | FR | SL | B11 | B11-D10 | RES-3 |
|  | 15 | **ZONE- 2** |  | 2013-10-06 | 2014-06-14 |  |  |  |  |  |  |  |  |  |  |  |  |  |  |  |  |  |  |
|  | 10 | **INFRASTRUCTURE WORKS** |  | 2013-10-06 | 2014-06-14 |  |  |  |  |  |  |  |  |  |  |  |  |  |  |  |  |  |  |
|  | 10 | **DRAINAGE LINES** |  | 2013-10-06 | 2013-11-26 |  |  |  |  |  |  |  |  |  |  |  |  |  |  |  |  |  |  |
| DUKHCONI03Z2DRGL5115 |  | Excavation for Drainage line | 25d | 2013-10-06 | 2013-11-05 | DUKHCONI03Z1DRGL5130 | 12d | 0d | LABOR - CIVIL [336 h]; EXCAVATION QTY [562 Cum]; LOADER [100 h]; POCLAIN [200 h]; TRUCK [100 h]; EQUIP OPERATORS [400 h] | 22,626.85 | 10 | P3P2DRFR10 | DUKHCON3PP2DRGL5115 | DUKHCONI03Z2DRGL5115 | DH | CON | 3IF | Z2 | FR | DR | B11 | B11-D06 | RES-3 |
| DUKHCONI03Z2DRGL5120 |  | Laying of Drainage line | 25d | 2013-10-13 | 2013-11-12 | DUKHCONI03Z2DRGL5115 FF+6d, DUKHCONI03Z2DRGL5115 SS+6d | 12d | 0d | LABOR- SUBCONTRACTOR [168 h]; MECHANICALS SK [604.8 h]; DRAINAGE PIPES QTY [1123 lm] | 70,021.5 | 15 | P3P2DRFR15 | DUKHCON3PP2DRGL5120 | DUKHCONI03Z2DRGL5120 | DH | CON | 3IF | Z2 | FR | DR | B11 | B11-D06 | RES-3 |
| DUKHCONI03Z2DRGL5125 |  | Testing of Drainage line | 25d | 2013-10-23 | 2013-11-20 | DUKHCONI03Z2DRGL5120 SS+7d, DUKHCONI03Z2DRGL5120 FF+7d | 12d | 0d | LABOR- SUBCONTRACTOR [168 h]; MECHANICALS SK [604.8 h]; DRAINAGE PIPES QTY [1123 lm] | 7,779.65 | 20 | P3P2DRFR20 | DUKHCON3PP2DRGL5125 | DUKHCONI03Z2DRGL5125 | DH | CON | 3IF | Z2 | FR | DR | B11 | B11-D06 | RES-3 |
| DUKHCONI03Z2DRGL5130 |  | Backfilling Drainage line | 15d | 2013-11-10 | 2013-11-26 | DUKHCONI03Z2DRGL5125 SS+10d, DUKHCONI03Z2DRGL5125 FF+5d | 12d | 0d | TRUCK [30 h]; EQUIP OPERATORS [330 h]; PLATE COMPACTOR [150 h]; LABOR - CIVIL [138 h]; BACKFILLING QTY [562 Cum]; BOBCAT [150 h] | 27,369.45 | 25 | P3P2DRFR25 | DUKHCON3PP2DRGL5130 | DUKHCONI03Z2DRGL5130 | DH | CON | 3IF | Z2 | FR | DR | B11 | B11-D06 | RES-3 |
|  | 15 | **MANHOLES & SOAKAWAY** |  | 2013-11-10 | 2014-01-30 |  |  |  |  |  |  |  |  |  |  |  |  |  |  |  |  |  |  |
| DUKHCONI03Z2SAGL5135 |  | Construction of manholes Drainage | 25d | 2013-11-10 | 2013-12-08 | DUKHCONI03Z2DRGL5130 FF+10d, DUKHCONI03Z1SAGL5135, DUKHCONI03Z2DRGL5115 | 64d | 18d | LABOR - CIVIL [96 h]; MANHOLES QTY [31 ea]; MANHOLES SK [248 h] | 75,344.5 | 10 | P3P2SAFR10 | DUKHCON3PP2SAGL5135 | DUKHCONI03Z2SAGL5135 | DH | CON | 3IF | Z2 | FR | SA | B11 | B11-D06 | RES-3 |
| DUKHCONI03Z2SAGL5140 |  | Construction of soakaways | 25d | 2013-11-10 | 2013-12-08 | DUKHCONI03Z2DRGL5130 FF+10d, DUKHCONI03Z2DRGL5115 | 13d | 0d | LABOR - CIVIL [66 h]; SOAKWAY QTY [22 ea]; MANHOLES SK [176 h] | 292,751.2 | 15 | P3P2SAFR15 | DUKHCON3PP2SAGL5140 | DUKHCONI03Z2SAGL5140 | DH | CON | 3IF | Z2 | FR | SA | B11 | B11-D06 | RES-3 |
| DUKHCONI03Z2SAGL5145 |  | Construction of Road gullies | 25d | 2013-12-09 | 2014-01-07 | DUKHCONI03Z1SAGL5145, DUKHCONI03Z2SAGL5140 | 13d | 0d | LABOR - CIVIL [78 h]; ROAD GULLY QTY [26 ea]; MANHOLES SK [208 h] | 48,976.9 | 20 | P3P2SAFR20 | DUKHCON3PP2SAGL5145 | DUKHCONI03Z2SAGL5145 | DH | CON | 3IF | Z2 | FR | SA | B11 | B11-D06 | RES-3 |
| DUKHCONI03Z2SAGL5150 |  | Connection with existing sewer manhole | 20d | 2014-01-08 | 2014-01-30 | DUKHCONI03Z2SAGL5135, DUKHCONI03Z2SAGL5145 | 39d | 29d | LABOR - CIVIL [96 h]; MANHOLES QTY [31 ea]; MANHOLES SK [248 h] | 3,973.55 | 25 | P3P2SAFR25 | DUKHCON3PP2SAGL5150 | DUKHCONI03Z2SAGL5150 | DH | CON | 3IF | Z2 | FR | SA | B11 | B11-D06 | RES-3 |
|  | 20 | **WATER SUPPLY SYSTEM** |  | 2013-11-21 | 2014-02-05 |  |  |  |  |  |  |  |  |  |  |  |  |  |  |  |  |  |  |
| DUKHCONI03Z2WSGL5155 |  | Excavation for water line | 25d | 2013-11-21 | 2013-12-21 | DUKHCONI03Z1WSGL5170, DUKHCONI03Z2DRGL5130 SS+10d | 13d | 0d | LABOR - CIVIL [474 h]; EXCAVATION QTY [784 Cum]; LOADER [125 h]; POCLAIN [250 h]; TRUCK [125 h]; EQUIP OPERATORS [500 h] | 16,699.6 | 10 | P3P2WSFR10 | DUKHCON3PP2WSGL5155 | DUKHCONI03Z2WSGL5155 | DH | CON | 3IF | Z2 | FR | WS | B11 | B11-D07 | RES-3 |
| DUKHCONI03Z2WSGL5160 |  | Laying of water line | 25d | 2013-11-27 | 2013-12-26 | DUKHCONI03Z2WSGL5155 SS+5d | 13d | 0d | LABOR- SUBCONTRACTOR [240 h]; MECHANICALS SK [853.2 h]; PLUMB PIPES QTY [784 lm] | 85,583.2 | 15 | P3P2WSFR15 | DUKHCON3PP2WSGL5160 | DUKHCONI03Z2WSGL5160 | DH | CON | 3IF | Z2 | FR | WS | B11 | B11-D07 | RES-3 |
| DUKHCONI03Z2WSGL5165 |  | Testing of potable water line | 25d | 2013-12-03 | 2014-01-01 | DUKHCONI03Z2WSGL5160 SS+5d | 13d | 0d | LABOR- SUBCONTRACTOR [120 h]; MECHANICALS SK [432 h]; DRAINAGE PIPES QTY [784 lm] | 8,750.3 | 20 | P3P2WSFR20 | DUKHCON3PP2WSGL5165 | DUKHCONI03Z2WSGL5165 | DH | CON | 3IF | Z2 | FR | WS | B11 | B11-D07 | RES-3 |
| DUKHCONI03Z2WSGL5170 |  | Backfilling potable water line | 25d | 2013-12-09 | 2014-01-07 | DUKHCONI03Z2SAGL5145 FF, DUKHCONI03Z2WSGL5165 SS+5d | 13d | 0d | TRUCK [50 h]; EQUIP OPERATORS [550 h]; LABOR - CIVIL [192 h]; BACKFILLING QTY [784 Cum]; BOBCAT [250 h]; PLATE COMPACTOR [250 h] | 4,174.9 | 25 | P3P2WSFR25 | DUKHCON3PP2WSGL5170 | DUKHCONI03Z2WSGL5170 | DH | CON | 3IF | Z2 | FR | WS | B11 | B11-D07 | RES-3 |
| DUKHCONI03Z2WSGL5175 |  | Construction of valve chambers & Thrust Blocks | 25d | 2013-12-15 | 2014-01-13 | DUKHCONI03Z1WSGL5175, DUKHCONI03Z2WSGL5155 SS+10d, DUKHCONI03Z2WSGL5170 FF+5d | 34d | 0d | LABOR - CIVIL [24 h]; MANHOLES QTY [7 ea]; MANHOLES SK [56 h] | 2,086.7 | 30 | P3P2WSFR30 | DUKHCON3PP2WSGL5175 | DUKHCONI03Z2WSGL5175 | DH | CON | 3IF | Z2 | FR | WS | B11 | B11-D07 | RES-3 |
| DUKHCONI03Z2WSGL5180 |  | Installation of meter ,Accessories & Connection | 20d | 2014-01-14 | 2014-02-05 | DUKHCONI03Z2WSGL5175, DUKHCONI03Z1WSGL5180 | 34d | 12d | LABOR- SUBCONTRACTOR [12 h]; MECHANICALS SK [21.6 h]; CHAMPER QTY [7 lm] | 18,650.1 | 35 | P3P2WSFR35 | DUKHCON3PP2WSGL5180 | DUKHCONI03Z2WSGL5180 | DH | CON | 3IF | Z2 | FR | WS | B11 | B11-D07 | RES-3 |
|  | 25 | **FIREFIGHTING LINES** |  | 2013-12-22 | 2014-02-20 |  |  |  |  |  |  |  |  |  |  |  |  |  |  |  |  |  |  |
| DUKHCONI03Z2FFGL5185 |  | Excavation for firefighting line | 25d | 2013-12-22 | 2014-01-19 | DUKHCONI03Z1FFGL5200, DUKHCONI03Z2WSGL5170 SS+5d | 8d | 0d | LABOR - CIVIL [222 h]; EXCAVATION QTY [361 Cum]; LOADER [63 h]; POCLAIN [125 h]; TRUCK [63 h]; EQUIP OPERATORS [251 h] | 20,245.2 | 10 | P3P2FFFR10 | DUKHCON3PP2FFGL5185 | DUKHCONI03Z2FFGL5185 | DH | CON | 3IF | Z2 | FR | FF | B11 | B11-D07 | RES-3 |
| DUKHCONI03Z2FFGL5190 |  | Laying of firefighting line | 25d | 2013-12-30 | 2014-01-27 | DUKHCONI03Z2FFGL5185 SS+7d | 8d | 0d | LABOR- SUBCONTRACTOR [114 h]; MECHANICALS SK [399.6 h]; PLUMB PIPES QTY [361 lm] | 32,256.6 | 15 | P3P2FFFR15 | DUKHCON3PP2FFGL5190 | DUKHCONI03Z2FFGL5190 | DH | CON | 3IF | Z2 | FR | FF | B11 | B11-D07 | RES-3 |
| DUKHCONI03Z2FFGL5195 |  | Testing of firefighting line | 25d | 2014-01-05 | 2014-02-02 | DUKHCONI03Z2FFGL5190 SS+5d | 8d | 0d | LABOR- SUBCONTRACTOR [60 h]; MECHANICALS SK [205.2 h]; DRAINAGE PIPES QTY [361 lm] | 2,532.3 | 20 | P3P2FFFR20 | DUKHCON3PP2FFGL5195 | DUKHCONI03Z2FFGL5195 | DH | CON | 3IF | Z2 | FR | FF | B11 | B11-D07 | RES-3 |
| DUKHCONI03Z2FFGL5200 |  | Backfilling firefighting line | 25d | 2014-01-11 | 2014-02-08 | DUKHCONI03Z2FFGL5195 SS+5d | 8d | 0d | LABOR - CIVIL [90 h]; BACKFILLING QTY [361 Cum]; BOBCAT [125 h]; PLATE COMPACTOR [125 h]; TRUCK [25 h]; EQUIP OPERATORS [275 h] | 5,061.8 | 25 | P3P2FFFR25 | DUKHCON3PP2FFGL5200 | DUKHCONI03Z2FFGL5200 | DH | CON | 3IF | Z2 | FR | FF | B11 | B11-D07 | RES-3 |
| DUKHCONI03Z2FFGL5205 |  | Construction of valve chambers & Thrust Blocks | 25d | 2014-01-16 | 2014-02-15 | DUKHCONI03Z2FFGL5185 SS+10d, DUKHCONI03Z1FFGL5205, DUKHCONI03Z2FFGL5200 FF+5d | 22d | 0d | STEEL FIXERS SK [8 h]; CARPENTERS SK [24 h]; CONCRETE MASON SK [16 h]; LABOR - CIVIL [30 h]; EXCAVATION QTY [6 Cum]; REINFORCEMENT BARS QTY [37 kg]; FORMWORK QTY [9 Sqm]; CONCRETE QTY [6 Cum] | 11,370.1 | 30 | P3P2FFFR30 | DUKHCON3PP2FFGL5205 | DUKHCONI03Z2FFGL5205 | DH | CON | 3IF | Z2 | FR | FF | B11 | B11-D07 | RES-3 |
| DUKHCONI03Z2FFGL5210 |  | Connection with existing Firewater System | 25d | 2014-01-22 | 2014-02-20 | DUKHCONI03Z1FFGL5210, DUKHCONI03Z2WSGL5180 FF, DUKHCONI03Z2FFGL5205 FF+5d | 22d | 12d | STEEL FIXERS SK [8 h]; CARPENTERS SK [24 h]; CONCRETE MASON SK [16 h]; LABOR - CIVIL [30 h]; EXCAVATION QTY [6 Cum]; REINFORCEMENT BARS QTY [37 kg]; FORMWORK QTY [9 Sqm]; CONCRETE QTY [6 Cum] | 14,074.2 | 35 | P3P2FFFR35 | DUKHCON3PP2FFGL5210 | DUKHCONI03Z2FFGL5210 | DH | CON | 3IF | Z2 | FR | FF | B11 | B11-D07 | RES-3 |

Notes:
- DUKHCONI03Z1SLGL7200: Expenses: I03-Hard and soft landscaping 78051.8
- DUKHCONI03Z1SLGL7205: Expenses: I03-Hard and soft landscaping 442294
- DUKHCONI03Z1SLGL7210: Expenses: I03-Hard and soft landscaping 483041
- DUKHCONI03Z2DRGL5115: Expenses: I03-Surface Water drainage and Sewerage system 22626.8
- DUKHCONI03Z2DRGL5120: Expenses: I03-Surface Water drainage and Sewerage system 70021.5
- DUKHCONI03Z2DRGL5125: Expenses: I03-Surface Water drainage and Sewerage system 7779.65
- DUKHCONI03Z2DRGL5130: Expenses: I03-Surface Water drainage and Sewerage system 27369.5
- DUKHCONI03Z2SAGL5135: Expenses: I03-Surface Water drainage and Sewerage system 75344.5
- DUKHCONI03Z2SAGL5140: Expenses: I03-Surface Water drainage and Sewerage system 292751
- DUKHCONI03Z2SAGL5145: Expenses: I03-Surface Water drainage and Sewerage system 48976.9
- DUKHCONI03Z2SAGL5150: Expenses: I03-Surface Water drainage and Sewerage system 3973.55
- DUKHCONI03Z2WSGL5155: Expenses: I03-Water supply system 16699.6
- DUKHCONI03Z2WSGL5160: Expenses: I03-Water supply system 85583.2
- DUKHCONI03Z2WSGL5165: Expenses: I03-Water supply system 8750.3
- DUKHCONI03Z2WSGL5170: Expenses: I03-Water supply system 4174.9
- DUKHCONI03Z2WSGL5175: Expenses: I03-Water supply system 2086.7
- DUKHCONI03Z2WSGL5180: Expenses: I03-Water supply system 18650.1
- DUKHCONI03Z2FFGL5185: Expenses: I03-Water supply system 20245.2
- DUKHCONI03Z2FFGL5190: Expenses: I03-Water supply system 32256.6
- DUKHCONI03Z2FFGL5195: Expenses: I03-Water supply system 2532.3
- DUKHCONI03Z2FFGL5200: Expenses: I03-Water supply system 5061.8
- DUKHCONI03Z2FFGL5205: Expenses: I03-Water supply system 11370.1
- DUKHCONI03Z2FFGL5210: Expenses: I03-Water supply system 14074.2

| ID | WBS | Activity | Duration | Start | Finish | Predecessors | Total float | Free float | Resources | Cost | CODE | P3 ACTID | P6 ID (old) | NP61D | PROJECT | PHASES | PACKAGE | PART | ELEMENTS | STEP | BILL NOS | BILL DIVISION | RES PACK |
| --- | --- | --- | --- | --- | --- | --- | --- | --- | --- | --- | --- | --- | --- | --- | --- | --- | --- | --- | --- | --- | --- | --- | --- |
|  | 30 | **ELECTRICAL LINES** |  | 2014-01-19 | 2014-03-15 |  |  |  |  |  |  |  |  |  |  |  |  |  |  |  |  |  |  |
| DUKHCONI03Z2ELGL5215 |  | Excavation Cable Trenches & Duct Banks | 25d | 2014-01-19 | 2014-02-17 | DUKHCONI03Z2FFGL5200 SS+7d, DUKHCONI03Z1ELGL5225 | 10d | 0d | CONCRETE MASON SK [32 h]; LABOR - CIVIL [2340 h]; LABOR- SUBCONTRACTOR [108 h]; ELECTRICIANS SK [403.2 h]; EXCAVATION QTY [3858 Cum]; CONCRETE QTY [16 Cum]; CODUITS QTY [353 lm]; LOADER [250 h]; POCLAIN [500 h]; TRUCK [250 h]; EQUIP OPERATORS [1000 h] | 15,175.6 | 10 | P3P2ECFR10 | DUKHCON3PP2ELGL5215 | DUKHCONI03Z2ELGL5215 | DH | CON | 3IF | Z2 | FR | EC | B11 | B11-D04 | RES-3 |
| DUKHCONI03Z2ELGL5220 |  | Laying of electrical cables | 25d | 2014-01-25 | 2014-02-23 | DUKHCONI03Z2ELGL5215 SS+5d | 13d | 0d | LABOR- SUBCONTRACTOR [1374 h]; ELECTRICIANS SK [5118.4 h]; CABLE QTY [4563 lm]; MCCB QTY [4 ea] | 876,019.9 | 15 | P3P2ECFR15 | DUKHCON3PP2ELGL5220 | DUKHCONI03Z2ELGL5220 | DH | CON | 3IF | Z2 | FR | EC | B11 | B11-D04 | RES-3 |
| DUKHCONI03Z2ELGL5225 |  | Backfilling Electrical trench | 25d | 2014-02-02 | 2014-03-03 | DUKHCONI03Z2ELGL5215 FF+7d, DUKHCONI03Z2ELGL5220 SS+7d | 13d | 0d | LABOR - CIVIL [930 h]; BACKFILLING QTY [3858 Cum]; BOBCAT [500 h]; PLATE COMPACTOR [500 h]; TRUCK [100 h]; EQUIP OPERATORS [1100 h] | 6,502.75 | 20 | P3P2ECFR20 | DUKHCON3PP2ELGL5225 | DUKHCONI03Z2ELGL5225 | DH | CON | 3IF | Z2 | FR | EC | B11 | B11-D04 | RES-3 |
| DUKHCONI03Z2ELGL5230 |  | Construction of Submain Board & Feeder Pillar | 25d | 2014-02-15 | 2014-03-15 | DUKHCONI03Z1ELGL5230, DUKHCONI03Z2ELGL5225 SS+10d, DUKHCONI03Z2ELGL5225 FF+10d | 53d | 0d | DOOR ERECTOR SK [16 h]; ALUMINIUM DOOR QTY [4 ea]; EXPANSION JOINT QTY [38 Sqm]; EXPANSION JOINT SKILLED SK [304 h]; STEEL FIXERS SK [8 h]; CARPENTERS SK [64 h]; CONCRETE MASON SK [8 h]; LABOR - CIVIL [54 h]; LABOR- SUBCONTRACTOR [120 h]; REINFORCEMENT BARS QTY [37 kg]; FORMWORK QTY [30 Sqm]; CONCRETE QTY [3 Cum] | 109,292.75 | 25 | P3P2ECFR25 | DUKHCON3PP2ELGL5230 | DUKHCONI03Z2ELGL5230 | DH | CON | 3IF | Z2 | FR | EC | B11 | B11-D04 | RES-3 |
|  | 35 | **STREET LIGHTING** |  | 2014-01-19 | 2014-04-13 |  |  |  |  |  |  |  |  |  |  |  |  |  |  |  |  |  |  |
| DUKHCONI03Z2STGL5235 |  | Excavation for Street lighting | 25d | 2014-01-19 | 2014-02-17 | DUKHCONI03Z1STGL5250 SS+10d, DUKHCONI03Z2ELGL5215 SS | 10d | 0d | LABOR - CIVIL [18 h]; EXCAVATION QTY [29 Cum]; LOADER [13 h]; POCLAIN [25 h]; TRUCK [13 h]; EQUIP OPERATORS [51 h] | 3,023.3 | 10 | P3P2STFR10 | DUKHCON3PP2STGL5235 | DUKHCONI03Z2STGL5235 | DH | CON | 3IF | Z2 | FR | ST | B11 | B11-D09 | RES-3 |
| DUKHCONI03Z2STGL5240 |  | Construction of Duct Banks | 25d | 2014-01-25 | 2014-02-23 | DUKHCONI03Z2STGL5235 SS+5d | 10d | 0d | LABOR- SUBCONTRACTOR [294 h]; ELECTRICIANS SK [1086.4 h]; DUCT BANK QTY [387 lm] | 78,562.4 | 15 | P3P2STFR15 | DUKHCON3PP2STGL5240 | DUKHCONI03Z2STGL5240 | DH | CON | 3IF | Z2 | FR | ST | B11 | B11-D09 | RES-3 |
| DUKHCONI03Z2STGL5245 |  | Construction of Foundation | 25d | 2014-01-25 | 2014-02-23 | DUKHCONI03Z2STGL5240 SS | 10d | 0d | LABOR - CIVIL [192 h]; COLUMN BASE QTY [32 ea]; MANHOLES SK [504 h] | 30,080.9 | 20 | P3P2STFR20 | DUKHCON3PP2STGL5245 | DUKHCONI03Z2STGL5245 | DH | CON | 3IF | Z2 | FR | ST | B11 | B11-D09 | RES-3 |
| DUKHCONI03Z2STGL5250 |  | Backfilling Street Lighting | 25d | 2014-01-30 | 2014-03-01 | DUKHCONI03Z2STGL5245 SS+5d, DUKHCONI03Z2STGL5235 FF+5d | 10d | 0d | LABOR - CIVIL [12 h]; BACKFILLING QTY [29 Cum]; BOBCAT [25 h]; PLATE COMPACTOR [25 h]; TRUCK [5 h]; EQUIP OPERATORS [55 h] | 3,022.95 | 25 | P3P2STFR25 | DUKHCON3PP2STGL5250 | DUKHCONI03Z2STGL5250 | DH | CON | 3IF | Z2 | FR | ST | B11 | B11-D09 | RES-3 |
| DUKHCONI03Z2STGL5255 |  | Installation of light Post | 25d | 2014-02-12 | 2014-03-12 | DUKHCONI03Z1STGL5255, DUKHCONI03Z2STGL5250 SS+10d | 73d | 17d | LABOR- SUBCONTRACTOR [54 h]; ELECTRICIANS SK [179.2 h]; LIGHTPOST COLUMN QTY [32 ea] | 377,635.85 | 30 | P3P2STFR30 | DUKHCON3PP2STGL5255 | DUKHCONI03Z2STGL5255 | DH | CON | 3IF | Z2 | FR | ST | B11 | B11-D09 | RES-3 |
| DUKHCONI03Z2STGL5260 |  | Electrical Works | 25d | 2014-03-16 | 2014-04-13 | DUKHCONI03Z2STGL5255 SS+7d, DUKHCONI03Z1STGL5260, DUKHCONI03Z2ELGL5230 | 53d | 17d | LABOR- SUBCONTRACTOR [120 h]; ELECTRICIANS SK [436.8 h]; CABLE QTY [387 lm] | 17,581.95 | 35 | P3P2STFR35 | DUKHCON3PP2STGL5260 | DUKHCONI03Z2STGL5260 | DH | CON | 3IF | Z2 | FR | ST | B11 | B11-D09 | RES-3 |
|  | 40 | **IRRIGATION LINES** |  | 2014-03-04 | 2014-05-08 |  |  |  |  |  |  |  |  |  |  |  |  |  |  |  |  |  |  |
| DUKHCONI03Z2IRGL5265 |  | Excavation for irrigation line | 25d | 2014-03-04 | 2014-04-01 | DUKHCONI03Z1IRGL5280, DUKHCONI03Z2ELGL5225 | 21d | 0d | LABOR - CIVIL [366 h]; EXCAVATION QTY [604 Cum]; LOADER [125 h]; POCLAIN [250 h]; TRUCK [125 h]; EQUIP OPERATORS [500 h] | 11,302 | 10 | P3P2IRFR10 | DUKHCON3PP2IRGL5265 | DUKHCONI03Z2IRGL5265 | DH | CON | 3IF | Z2 | FR | IR | B11 | B11-D07 | RES-3 |
| DUKHCONI03Z2IRGL5270 |  | Laying of irrigationline | 25d | 2014-03-10 | 2014-04-07 | DUKHCONI03Z2IRGL5265 SS+5d | 21d | 0d | LABOR- SUBCONTRACTOR [486 h]; MECHANICALS SK [874.8 h]; CHAMPER QTY [151 lm]; IRRIGATION PIPES QTY [1723 lm] | 25,326.8 | 15 | P3P2IRFR15 | DUKHCON3PP2IRGL5270 | DUKHCONI03Z2IRGL5270 | DH | CON | 3IF | Z2 | FR | IR | B11 | B11-D07 | RES-3 |
| DUKHCONI03Z2IRGL5275 |  | Testing of irrigation line | 25d | 2014-03-16 | 2014-04-13 | DUKHCONI03Z2IRGL5270 SS+5d | 21d | 0d | LABOR- SUBCONTRACTOR [264 h]; MECHANICALS SK [939.6 h]; DRAINAGE PIPES QTY [1723 lm] | 3,657.85 | 20 | P3P2IRFR20 | DUKHCON3PP2IRGL5275 | DUKHCONI03Z2IRGL5275 | DH | CON | 3IF | Z2 | FR | IR | B11 | B11-D07 | RES-3 |
| DUKHCONI03Z2IRGL5280 |  | Backfilling irrigation line | 25d | 2014-03-22 | 2014-04-19 | DUKHCONI03Z2IRGL5275 SS+5d | 21d | 0d | LABOR - CIVIL [150 h]; BACKFILLING QTY [604 Cum]; BOBCAT [250 h]; PLATE COMPACTOR [250 h]; TRUCK [50 h]; EQUIP OPERATORS [550 h] | 2,825.5 | 25 | P3P2IRFR25 | DUKHCON3PP2IRGL5280 | DUKHCONI03Z2IRGL5280 | DH | CON | 3IF | Z2 | FR | IR | B11 | B11-D07 | RES-3 |
| DUKHCONI03Z2IRGL5285 |  | Construction of Thrust Blocks,Pull boxes | 25d | 2014-04-02 | 2014-04-30 | DUKHCONI03Z2ELGL5225 SS+10d, DUKHCONI03Z2IRGL5280 FF+10d | 26d | 0d | STEEL FIXERS SK [24 h]; CARPENTERS SK [184 h]; CONCRETE MASON SK [144 h]; LABOR - CIVIL [276 h]; EXCAVATION QTY [43 Cum]; REINFORCEMENT BARS QTY [210 kg]; FORMWORK QTY [88 Sqm]; CONCRETE QTY [70 Cum] | 6,535.45 | 30 | P3P2IRFR30 | DUKHCON3PP2IRGL5285 | DUKHCONI03Z2IRGL5285 | DH | CON | 3IF | Z2 | FR | IR | B11 | B11-D07 | RES-3 |
| DUKHCONI03Z2IRGL5290 |  | Irrigation Fittings (Nozzle,Values) | 25d | 2014-04-10 | 2014-05-08 | DUKHCONI03Z2IRGL5285 SS+7d, DUKHCONI03Z2IRGL5280 SS+10d | 26d | 1d | LABOR- SUBCONTRACTOR [75 h]; ELECTRICIANS SK [280 h] | 59,976.2 | 35 | P3P2IRFR35 | DUKHCON3PP2IRGL5290 | DUKHCONI03Z2IRGL5290 | DH | CON | 3IF | Z2 | FR | IR | B11 | B11-D07 | RES-3 |
|  | 45 | **TELECOMMUNICATION LINES** |  | 2014-02-12 | 2014-05-19 |  |  |  |  |  |  |  |  |  |  |  |  |  |  |  |  |  |  |
| DUKHCONI03Z2TCGL5295 |  | Excavation Telecommunication trenches | 20d | 2014-02-12 | 2014-03-06 | DUKHCONI03Z1TCGL5305 SS+10d, DUKHCONI03Z2STGL5250 SS+10d | 10d | 0d | LABOR - CIVIL [186 h]; EXCAVATION QTY [304 Cum]; LOADER [50 h]; POCLAIN [100 h]; TRUCK [50 h]; EQUIP OPERATORS [200 h] | 7,232.35 | 10 | P3P2TCFR10 | DUKHCON3PP2TCGL5295 | DUKHCONI03Z2TCGL5295 | DH | CON | 3IF | Z2 | FR | TC | B11 | B11-D05 | RES-3 |
| DUKHCONI03Z2TCGL5300 |  | Laying of cables | 20d | 2014-02-18 | 2014-03-12 | DUKHCONI03Z2TCGL5295 SS+5d | 10d | 0d | LABOR- SUBCONTRACTOR [138 h]; ELECTRICIANS SK [515.2 h]; CABLE QTY [455 lm] | 2,546.4 | 15 | P3P2TCFR15 | DUKHCON3PP2TCGL5300 | DUKHCONI03Z2TCGL5300 | DH | CON | 3IF | Z2 | FR | TC | B11 | B11-D05 | RES-3 |
| DUKHCONI03Z2TCGL5305 |  | Backfilling telecommunication trench | 20d | 2014-02-24 | 2014-03-18 | DUKHCONI03Z2TCGL5300 SS+5d | 10d | 0d | LABOR - CIVIL [78 h]; BACKFILLING QTY [304 Cum]; BOBCAT [100 h]; PLATE COMPACTOR [100 h]; TRUCK [20 h]; EQUIP OPERATORS [220 h] | 3,099.7 | 20 | P3P2TCFR20 | DUKHCON3PP2TCGL5305 | DUKHCONI03Z2TCGL5305 | DH | CON | 3IF | Z2 | FR | TC | B11 | B11-D05 | RES-3 |
| DUKHCONI03Z2TCGL5310 |  | Connection & Installation | 20d | 2014-04-27 | 2014-05-19 | DUKHCONI03Z1TCGL5310, DUKHCONI03Z2TCGL5305 SS+10d | 22d | 0d | LABOR- SUBCONTRACTOR [24 h]; ELECTRICIANS SK [179.2 h]; TELEPHONE SOCKETS QTY [16 ea] | 73,468.2 | 25 | P3P2TCFR25 | DUKHCON3PP2TCGL5310 | DUKHCONI03Z2TCGL5310 | DH | CON | 3IF | Z2 | FR | TC | B11 | B11-D05 | RES-3 |

Notes:
- DUKHCONI03Z2ELGL5215: Expenses: I03-Electrical power supply and distribution 15175.6
- DUKHCONI03Z2ELGL5220: Expenses: I03-Electrical power supply and distribution 876020
- DUKHCONI03Z2ELGL5225: Expenses: I03-Electrical power supply and distribution 6502.75
- DUKHCONI03Z2ELGL5230: Expenses: I03-Electrical power supply and distribution 109293
- DUKHCONI03Z2STGL5235: Expenses: I03-Street lighting 3023.3
- DUKHCONI03Z2STGL5240: Expenses: I03-Street lighting 78562.4
- DUKHCONI03Z2STGL5245: Expenses: I03-Street lighting 30080.9
- DUKHCONI03Z2STGL5250: Expenses: I03-Street lighting 3022.95
- DUKHCONI03Z2STGL5255: Expenses: I03-Street lighting 377636
- DUKHCONI03Z2STGL5260: Expenses: I03-Street lighting 17582
- DUKHCONI03Z2IRGL5265: Expenses: I03-Water supply system 11302
- DUKHCONI03Z2IRGL5270: Expenses: I03-Water supply system 25326.8
- DUKHCONI03Z2IRGL5275: Expenses: I03-Water supply system 3657.85
- DUKHCONI03Z2IRGL5280: Expenses: I03-Water supply system 2825.5
- DUKHCONI03Z2IRGL5285: Expenses: I03-Water supply system 6535.45
- DUKHCONI03Z2IRGL5290: Expenses: I03-Water supply system 59976.2
- DUKHCONI03Z2TCGL5295: Expenses: I03-Telecommunication 7232.35
- DUKHCONI03Z2TCGL5300: Expenses: I03-Telecommunication 2546.4
- DUKHCONI03Z2TCGL5305: Expenses: I03-Telecommunication 3099.7
- DUKHCONI03Z2TCGL5310: Expenses: I03-Telecommunication 73468.2

| ID | WBS | Activity | Duration | Start | Finish | Predecessors | Total float | Free float | Resources | Cost | CODE | P3 ACTID | P6 ID (old) | NP61D | PROJECT | PHASES | PACKAGE | PART | ELEMENTS | STEP | BILL NOS | BILL DIVISION | RES PACK |
| --- | --- | --- | --- | --- | --- | --- | --- | --- | --- | --- | --- | --- | --- | --- | --- | --- | --- | --- | --- | --- | --- | --- | --- |
|  | 50 | **BOUNDARY WALL** |  | 2014-02-12 | 2014-03-29 |  |  |  |  |  |  |  |  |  |  |  |  |  |  |  |  |  |  |
| DUKHCONI03Z2BWGL5315 |  | Construction of Boundary Wall (Ht-3m) | 25d | 2014-02-12 | 2014-03-12 | DUKHCONI03Z2STGL5250 SS+10d, DUKHCONI03Z1BWGL5315 | 36d | 0d | BOUNDARY WIRE MESH QTY [264 Sqm]; STEEL FIXERS SK [104 h]; LABOR - CIVIL [78 h] | 413,675.55 | 10 | P3P2BWFR10 | DUKHCON3PP2ARGL5315 | DUKHCONI03Z2BWGL5315 | DH | CON | 3IF | Z2 | FR | BW | B11 | B11-D10 | RES-3 |
| DUKHCONI03Z2BWGL5320 |  | Install.Steel Gate,Entance Barrier (3m Wall) | 25d | 2014-03-01 | 2014-03-29 | DUKHCONI03Z2BWGL5315 SS+14d, DUKHCONI03Z1BWGL5320 | 36d | 17d | GATE QTY [1 ea]; GATE ERECTOR SK [8 h]; LABOR- SUBCONTRACTOR [6 h] | 6,983.4 | 15 | P3P2BWFR15 | DUKHCON3PP2ARGL5320 | DUKHCONI03Z2BWGL5320 | DH | CON | 3IF | Z2 | FR | BW | B11 | B11-D10 | RES-3 |
|  | 55 | **ROAD WORKS** |  | 2014-03-08 | 2014-05-21 |  |  |  |  |  |  |  |  |  |  |  |  |  |  |  |  |  |  |
| DUKHCONI03Z2RWGL6000 |  | Excavation & Earth Filling | 10d | 2014-03-08 | 2014-03-18 | DUKHCONI03Z2ELGL5225, DUKHCONI03Z1RWGL6015 SS+10d, DUKHCONI03Z2STGL5250, DUKHCONI03Z2FFGL5200, DUKHCONI03Z2TCGL5305 SS+10d, DUKHCONI03Z2FFGL5210, DUKHCONI03Z2SAGL5150 | 10d | 0d | LABOR - CIVIL [1182 h]; EXCAVATION QTY [1402 Cum]; BACKFILLING QTY [1402 Cum]; LOADER [150 h]; POCLAIN [300 h]; TRUCK [150 h]; EQUIP OPERATORS [600 h] | 121,276.65 | 10 | P3P2RDFR10 | DUKHCON3PP2RDGL6000 | DUKHCONI03Z2RWGL6000 | DH | CON | 3IF | Z2 | FR | RD | B11 | B11-D08 | RES-3 |
| DUKHCONI03Z2RWGL6005 |  | Laying of Sub Grade | 25d | 2014-03-19 | 2014-04-16 | DUKHCONI03Z2RWGL6000 | 10d | 0d | LABOR- SUBCONTRACTOR [36 h]; SUBGRADE QTY [523 Sqm] | 160,582.8 | 15 | P3P2RDFR15 | DUKHCON3PP2RDGL6005 | DUKHCONI03Z2RWGL6005 | DH | CON | 3IF | Z2 | FR | RD | B11 | B11-D08 | RES-3 |
| DUKHCONI03Z2RWGL6010 |  | Laying of Precast Kerbs | 25d | 2014-03-31 | 2014-04-28 | DUKHCONI03Z2RWGL6005 SS+10d | 10d | 0d | LABOR- SUBCONTRACTOR [426 h]; KERBSTONE QTY [468 lm]; EDGE STONE QTY [468 Sqm]; KERBSTONE MASON SK [752 h] | 106,835.2 | 20 | P3P2RDFR20 | DUKHCON3PP2RDGL6010 | DUKHCONI03Z2RWGL6010 | DH | CON | 3IF | Z2 | FR | RD | B11 | B11-D08 | RES-3 |
| DUKHCONI03Z2RWGL6015 |  | Laying of Granular Sub Base Coarse | 20d | 2014-04-12 | 2014-05-04 | DUKHCONI03Z2RWGL6010 SS+10d | 10d | 0d | LABOR- SUBCONTRACTOR [36 h]; GRANULAR SUBBASE QTY [523 Sqm]; HEAVY ROLLER [400 h]; LOADER [100 h]; EQUIP OPERATORS [600 h]; TRUCK [100 h] | 80,291.4 | 25 | P3P2RDFR25 | DUKHCON3PP2RDGL6015 | DUKHCONI03Z2RWGL6015 | DH | CON | 3IF | Z2 | FR | RD | B11 | B11-D08 | RES-3 |
| DUKHCONI03Z2RWGL6020 |  | Laying of Road Base Asphalt Concrete | 5d | 2014-05-05 | 2014-05-10 | DUKHCONI03Z2RWGL6015 | 25d | 0d | LABOR- SUBCONTRACTOR [36 h]; ASPHALT CONCRETE QTY [2657 Cum]; ASPHALT PAVER MACHINE [50 h]; HAND ROLLER [100 h]; EQUIP OPERATORS [150 h] | 207,536.5 | 30 | P3P2RDFR30 | DUKHCON3PP2RDGL6020 | DUKHCONI03Z2RWGL6020 | DH | CON | 3IF | Z2 | FR | RD | B11 | B11-D08 | RES-3 |
| DUKHCONI03Z2RWGL6025 |  | Laying of Asphalt Wearing Coarse | 5d | 2014-05-11 | 2014-05-15 | DUKHCONI03Z1RWGL6025, DUKHCONI03Z2RWGL6020 | 40d | 0d | LABOR- SUBCONTRACTOR [36 h]; ASPHALT WEARING COURSE QTY [2657 Sqm]; ASPHALT PAVER MACHINE [50 h]; HAND ROLLER [100 h]; EQUIP OPERATORS [150 h] | 108,120 | 35 | P3P2RDFR35 | DUKHCON3PP2RDGL6025 | DUKHCONI03Z2RWGL6025 | DH | CON | 3IF | Z2 | FR | RD | B11 | B11-D08 | RES-3 |
| DUKHCONI03Z2RWGL6030 |  | Traffic Signage & Road Marking | 5d | 2014-05-17 | 2014-05-21 | DUKHCONI03Z1RWGL6030, DUKHCONI03Z2RWGL6025 | 40d | 15d | LABOR- SUBCONTRACTOR [120 h]; STEEL ERECTOR SK [112 h]; TRAFFIC SIGN QTY [69 ea]; ROAD MARKING QTY [117 lm]; ASPHALT SK [192 h] | 30,786.7 | 40 | P3P2RDFR40 | DUKHCON3PP2RDGL6030 | DUKHCONI03Z2RWGL6030 | DH | CON | 3IF | Z2 | FR | RD | B11 | B11-D08 | RES-3 |
|  | 60 | **PARKING SHED** |  | 2014-04-17 | 2014-06-14 |  |  |  |  |  |  |  |  |  |  |  |  |  |  |  |  |  |  |
| DUKHCONI03Z2PSGL7000 |  | Excavation | 15d | 2014-04-17 | 2014-05-04 | DUKHCONI03Z2RWGL6015 SS+5d, DUKHCONI03Z1PSGL7005 | 30d | 5d | LABOR - CIVIL [6 h]; EXCAVATION QTY [7 Cum]; LOADER [8 h]; POCLAIN [15 h]; TRUCK [8 h]; EQUIP OPERATORS [31 h] | 46,551.75 | 10 | P3P2PSFR10 | DUKHCON3PP2PSGL7000 | DUKHCONI03Z2PSGL7000 | DH | CON | 3IF | Z2 | FR | PS | B11 | B11-D08 | RES-3 |
| DUKHCONI03Z2PSGL7005 |  | Foundation casting | 15d | 2014-04-29 | 2014-05-15 | DUKHCONI03Z2PSGL7000 FF+5d, DUKHCONI03Z2RWGL6015 FF+10d, DUKHCONI03Z2PSGL7000 SS+5d | 25d | 0d | STEEL FIXERS SK [224 h]; CARPENTERS SK [168 h]; CONCRETE MASON SK [344 h]; LABOR - CIVIL [540 h]; REINFORCEMENT BARS QTY [2730 kg]; FORMWORK QTY [81 Sqm]; CONCRETE QTY [170 Cum] | 46,551.75 | 15 | P3P2PSFR15 | DUKHCON3PP2PSGL7005 | DUKHCONI03Z2PSGL7005 | DH | CON | 3IF | Z2 | FR | PS | B11 | B11-D08 | RES-3 |
| DUKHCONI03Z2PSGL7010 |  | Column, Frame& Fabrics Erection | 25d | 2014-05-11 | 2014-06-08 | DUKHCONI03Z1PSGL7010, DUKHCONI03Z2PSGL7005 SS+10d, DUKHCONI03Z2RWGL6020, DUKHCONI03Z2RWGL6030 FF | 25d | 0d | LABOR- SUBCONTRACTOR [156 h]; STEEL ERECTOR SK [272 h]; PARKING SHED QTY [840 ea] | 232,764.2 | 20 | P3P2PSFR20 | DUKHCON3PP2PSGL7010 | DUKHCONI03Z2PSGL7010 | DH | CON | 3IF | Z2 | FR | PS | B11 | B11-D08 | RES-3 |
| DUKHCONI03Z2PSGL7015 |  | Electrical Works-Parking Shed | 25d | 2014-05-17 | 2014-06-14 | DUKHCONI03Z1PSGL7015, DUKHCONI03Z2PSGL7010 SS+5d, DUKHCONI03Z2STGL5260 | 25d | 17d | LABOR- SUBCONTRACTOR [66 h]; ELECTRICIANS SK [123.2 h]; LIGHTS QTY [54 ea] | 23,276.55 | 25 | P3P2PSFR25 | DUKHCON3PP2PSGL7015 | DUKHCONI03Z2PSGL7015 | DH | CON | 3IF | Z2 | FR | PS | B11 | B11-D08 | RES-3 |
|  | 65 | **HARD LANDSCAPING** |  | 2014-03-08 | 2014-05-27 |  |  |  |  |  |  |  |  |  |  |  |  |  |  |  |  |  |  |
| DUKHCONI03Z2HDGL7020 |  | Precast Concrete Kerbs works | 20d | 2014-03-08 | 2014-03-30 | DUKHCONI03Z2RWGL6000 SS | 25d | 0d | LABOR- SUBCONTRACTOR [672 h]; KERBSTONE QTY [1490 lm]; KERBSTONE MASON SK [1200 h] | 178,263.25 | 10 | P3P2HDFR10 | DUKHCON3PP2HDGL7020 | DUKHCONI03Z2HDGL7020 | DH | CON | 3IF | Z2 | FR | HD | B11 | B11-D10 | RES-3 |
| DUKHCONI03Z2HDGL7025 |  | Interlocking for Walkways | 25d | 2014-03-19 | 2014-04-16 | DUKHCONI03Z2HDGL7020 SS+10d | 25d | 0d | INTERLOCK MASON SK [880 h]; LABOR- SUBCONTRACTOR [330 h]; INTERLOCK QTY [1101 Sqm] | 151,381.25 | 15 | P3P2HDFR15 | DUKHCON3PP2HDGL7025 | DUKHCONI03Z2HDGL7025 | DH | CON | 3IF | Z2 | FR | HD | B11 | B11-D10 | RES-3 |
| DUKHCONI03Z2HDGL7030 |  | Construction of Retaining wall | 25d | 2014-03-31 | 2014-04-28 | DUKHCONI03Z2HDGL7025 SS+10d, DUKHCONI03Z1HDGL7030 | 25d | 0d | STEEL FIXERS SK [16 h]; CARPENTERS SK [128 h]; CONCRETE MASON SK [24 h]; LABOR - CIVIL [126 h]; EXCAVATION QTY [16 Cum]; REINFORCEMENT BARS QTY [175 kg]; FORMWORK QTY [62 Sqm]; CONCRETE QTY [9 Cum] | 10,484.75 | 20 | P3P2HDFR20 | DUKHCON3PP2HDGL7030 | DUKHCONI03Z2HDGL7030 | DH | CON | 3IF | Z2 | FR | HD | B11 | B11-D10 | RES-3 |
| DUKHCONI03Z2HDGL7035 |  | Construction of Wash Stone Boulders | 25d | 2014-03-31 | 2014-04-28 | DUKHCONI03Z1HDGL7035, DUKHCONI03Z2HDGL7030 SS | 25d | 0d | TILE MASON SK [32 h]; LABOR- SUBCONTRACTOR [18 h]; STONE BOULDERS QTY [16 Sqm] | 9,277.25 | 25 | P3P2HDFR25 | DUKHCON3PP2HDGL7035 | DUKHCONI03Z2HDGL7035 | DH | CON | 3IF | Z2 | FR | HD | B11 | B11-D10 | RES-3 |
| DUKHCONI03Z2HDGL7040 |  | Construction of Speed Humps | 10d | 2014-05-17 | 2014-05-27 | DUKHCONI03Z1HDGL7040, DUKHCONI03Z2RWGL6025, DUKHCONI03Z2HDGL7035 SS | 55d | 32d | CONCRETE MASON SK [8 h]; LABOR - CIVIL [6 h]; SPEED HUMPS [2 ea] | 1,994 | 30 | P3P2HDFR30 | DUKHCON3PP2HDGL7040 | DUKHCONI03Z2HDGL7040 | DH | CON | 3IF | Z2 | FR | HD | B11 | B11-D10 | RES-3 |
|  | 70 | **SOFT LANDSCAPING** |  | 2014-04-12 | 2014-06-02 |  |  |  |  |  |  |  |  |  |  |  |  |  |  |  |  |  |  |
| DUKHCONI03Z2SLGL7200 |  | Excavation | 25d | 2014-04-12 | 2014-05-10 | DUKHCONI03Z2HDGL7035 SS+10d, DUKHCONI03Z2IRGL5290 SS, DUKHCONI03Z1SLGL7205 | 25d | 0d | LABOR - CIVIL [36 h]; EXCAVATION QTY [56 Cum]; LOADER [13 h]; POCLAIN [25 h]; TRUCK [13 h]; EQUIP OPERATORS [51 h] | 78,051.75 | 10 | P3P2SLFR10 | DUKHCON3PP2SLGL7200 | DUKHCONI03Z2SLGL7200 | DH | CON | 3IF | Z2 | FR | SL | B11 | B11-D10 | RES-3 |
| DUKHCONI03Z2SLGL7205 |  | Sweet Soil Laying | 25d | 2014-04-23 | 2014-05-21 | DUKHCONI03Z2SLGL7200 SS+10d | 25d | 0d | LABOR- SUBCONTRACTOR [642 h]; SWEET SOIL QTY [5305 Cum]; LANDSCAPING SK [856 h] | 442,294.5 | 15 | P3P2SLFR15 | DUKHCON3PP2SLGL7205 | DUKHCONI03Z2SLGL7205 | DH | CON | 3IF | Z2 | FR | SL | B11 | B11-D10 | RES-3 |
| DUKHCONI03Z2SLGL7210 |  | Plantation works | 25d | 2014-05-05 | 2014-06-02 | DUKHCONI03Z2SLGL7205 SS+10d, DUKHCONI03Z1SLGL7210 | 35d | 17d | LABOR- SUBCONTRACTOR [960 h]; PLAM TREES QTY [56 ea]; GROUND COVER QTY [10150 Sqm]; SHRUBS QTY [301 ea]; LANDSCAPING SK [1280 h] | 483,041.2 | 20 | P3P2SLFR20 | DUKHCON3PP2SLGL7210 | DUKHCONI03Z2SLGL7210 | DH | CON | 3IF | Z2 | FR | SL | B11 | B11-D10 | RES-3 |

Notes:
- DUKHCONI03Z2BWGL5315: Expenses: I03-Hard and soft landscaping 413676
- DUKHCONI03Z2BWGL5320: Expenses: I03-Hard and soft landscaping 6983.4
- DUKHCONI03Z2RWGL6000: Expenses: I03-Road work 121277
- DUKHCONI03Z2RWGL6005: Expenses: I03-Road work 160583
- DUKHCONI03Z2RWGL6010: Expenses: I03-Road work 106835
- DUKHCONI03Z2RWGL6015: Expenses: I03-Road work 80291.4
- DUKHCONI03Z2RWGL6020: Expenses: I03-Road work 207536
- DUKHCONI03Z2RWGL6025: Expenses: I03-Road work 108120
- DUKHCONI03Z2RWGL6030: Expenses: I03-Road work 30786.7
- DUKHCONI03Z2PSGL7000: Expenses: I03-Road work 46551.8
- DUKHCONI03Z2PSGL7005: Expenses: I03-Road work 46551.8
- DUKHCONI03Z2PSGL7010: Expenses: I03-Road work 232764
- DUKHCONI03Z2PSGL7015: Expenses: I03-Road work 23276.5
- DUKHCONI03Z2HDGL7020: Expenses: I03-Hard and soft landscaping 178263
- DUKHCONI03Z2HDGL7025: Expenses: I03-Hard and soft landscaping 151381
- DUKHCONI03Z2HDGL7030: Expenses: I03-Hard and soft landscaping 10484.8
- DUKHCONI03Z2HDGL7035: Expenses: I03-Hard and soft landscaping 9277.25
- DUKHCONI03Z2HDGL7040: Expenses: I03-Hard and soft landscaping 1994
- DUKHCONI03Z2SLGL7200: Expenses: I03-Hard and soft landscaping 78051.8
- DUKHCONI03Z2SLGL7205: Expenses: I03-Hard and soft landscaping 442294
- DUKHCONI03Z2SLGL7210: Expenses: I03-Hard and soft landscaping 483041

| ID | WBS | Activity | Duration | Start | Finish | Predecessors | Total float | Free float | Resources | Cost | CODE | P3 ACTID | P6 ID (old) | NP61D | PROJECT | PHASES | PACKAGE | PART | ELEMENTS | STEP | BILL NOS | BILL DIVISION | RES PACK |
| --- | --- | --- | --- | --- | --- | --- | --- | --- | --- | --- | --- | --- | --- | --- | --- | --- | --- | --- | --- | --- | --- | --- | --- |
|  | 20 | **ZONE - 3** |  | 2013-11-27 | 2014-08-05 |  |  |  |  |  |  |  |  |  |  |  |  |  |  |  |  |  |  |
|  | 10 | **INFRASTRUCTURE WORKS** |  | 2013-11-27 | 2014-08-05 |  |  |  |  |  |  |  |  |  |  |  |  |  |  |  |  |  |  |
|  | 10 | **DRAINAGE LINES** |  | 2013-11-27 | 2014-01-16 |  |  |  |  |  |  |  |  |  |  |  |  |  |  |  |  |  |  |
| DUKHCONI03Z3DRGL5115 |  | Excavation for Drainage line | 25d | 2013-11-27 | 2013-12-26 | DUKHCONI03Z2DRGL5130 | 12d | 0d | TRUCK [100 h]; EQUIP OPERATORS [400 h]; LABOR - CIVIL [288 h]; EXCAVATION QTY [481 Cum]; LOADER [100 h]; POCLAIN [200 h] | 19,394.3 | 10 | P3P3DRFR10 | DUKHCON3PP3DRGL5115 | DUKHCONI03Z3DRGL5115 | DH | CON | 3IF | Z3 | FR | DR | B11 | B11-D06 | RES-3 |
| DUKHCONI03Z3DRGL5120 |  | Laying of Drainage line | 25d | 2013-12-04 | 2014-01-02 | DUKHCONI03Z3DRGL5115 SS+6d, DUKHCONI03Z3DRGL5115 FF+6d | 12d | 0d | LABOR- SUBCONTRACTOR [144 h]; MECHANICALS SK [518.4 h]; DRAINAGE PIPES QTY [962 lm] | 60,018 | 15 | P3P3DRFR15 | DUKHCON3PP3DRGL5120 | DUKHCONI03Z3DRGL5120 | DH | CON | 3IF | Z3 | FR | DR | B11 | B11-D06 | RES-3 |
| DUKHCONI03Z3DRGL5125 |  | Testing of Drainage line | 25d | 2013-12-12 | 2014-01-11 | DUKHCONI03Z3DRGL5120 FF+7d, DUKHCONI03Z3DRGL5120 SS+7d | 12d | 0d | LABOR- SUBCONTRACTOR [144 h]; MECHANICALS SK [518.4 h]; DRAINAGE PIPES QTY [962 lm] | 6,668.7 | 20 | P3P3DRFR20 | DUKHCON3PP3DRGL5125 | DUKHCONI03Z3DRGL5125 | DH | CON | 3IF | Z3 | FR | DR | B11 | B11-D06 | RES-3 |
| DUKHCONI03Z3DRGL5130 |  | Backfilling Drainage line | 15d | 2013-12-31 | 2014-01-16 | DUKHCONI03Z3DRGL5125 FF+5d, DUKHCONI03Z3DRGL5125 SS+10d | 12d | 0d | LABOR - CIVIL [120 h]; BACKFILLING QTY [481 Cum]; BOBCAT [150 h]; PLATE COMPACTOR [150 h]; TRUCK [30 h]; EQUIP OPERATORS [330 h] | 23,459.1 | 25 | P3P3DRFR25 | DUKHCON3PP3DRGL5130 | DUKHCONI03Z3DRGL5130 | DH | CON | 3IF | Z3 | FR | DR | B11 | B11-D06 | RES-3 |
|  | 15 | **MANHOLES & SOAKAWAY** |  | 2013-12-31 | 2014-03-23 |  |  |  |  |  |  |  |  |  |  |  |  |  |  |  |  |  |  |
| DUKHCONI03Z3SAGL5135 |  | Construction of manholes Drainage | 25d | 2013-12-31 | 2014-01-28 | DUKHCONI03Z3DRGL5115, DUKHCONI03Z3DRGL5130 FF+10d, DUKHCONI03Z2SAGL5135 | 61d | 25d | LABOR - CIVIL [84 h]; MANHOLES QTY [27 ea]; MANHOLES SK [216 h] | 64,581 | 10 | P3P3SAFR10 | DUKHCON3PP3SAGL5135 | DUKHCONI03Z3SAGL5135 | DH | CON | 3IF | Z3 | FR | SA | B11 | B11-D06 | RES-3 |
| DUKHCONI03Z3SAGL5140 |  | Construction of soakaways | 25d | 2013-12-31 | 2014-01-28 | DUKHCONI03Z3DRGL5130 FF+10d, DUKHCONI03Z3DRGL5115 | 12d | 0d | LABOR - CIVIL [60 h]; SOAKWAY QTY [19 ea]; MANHOLES SK [152 h] | 250,929.6 | 15 | P3P3SAFR15 | DUKHCON3PP3SAGL5140 | DUKHCONI03Z3SAGL5140 | DH | CON | 3IF | Z3 | FR | SA | B11 | B11-D06 | RES-3 |
| DUKHCONI03Z3SAGL5145 |  | Construction of Road gullies | 25d | 2014-01-29 | 2014-02-27 | DUKHCONI03Z3SAGL5140, DUKHCONI03Z2SAGL5145 | 12d | 0d | LABOR - CIVIL [72 h]; ROAD GULLY QTY [23 ea]; MANHOLES SK [184 h] | 41,980.2 | 20 | P3P3SAFR20 | DUKHCON3PP3SAGL5145 | DUKHCONI03Z3SAGL5145 | DH | CON | 3IF | Z3 | FR | SA | B11 | B11-D06 | RES-3 |
| DUKHCONI03Z3SAGL5150 |  | Connection with existing sewer manhole | 20d | 2014-03-01 | 2014-03-23 | DUKHCONI03Z3SAGL5145, DUKHCONI03Z3SAGL5135 | 36d | 28d | LABOR - CIVIL [84 h]; MANHOLES QTY [27 ea]; MANHOLES SK [216 h] | 3,405.9 | 25 | P3P3SAFR25 | DUKHCON3PP3SAGL5150 | DUKHCONI03Z3SAGL5150 | DH | CON | 3IF | Z3 | FR | SA | B11 | B11-D06 | RES-3 |
|  | 20 | **WATER SUPPLY SYSTEM** |  | 2014-01-12 | 2014-03-29 |  |  |  |  |  |  |  |  |  |  |  |  |  |  |  |  |  |  |
| DUKHCONI03Z3WSGL5155 |  | Excavation for water line | 25d | 2014-01-12 | 2014-02-09 | DUKHCONI03Z3DRGL5130 SS+10d, DUKHCONI03Z2WSGL5170 | 12d | 0d | LABOR - CIVIL [408 h]; EXCAVATION QTY [672 Cum]; LOADER [125 h]; POCLAIN [250 h]; TRUCK [125 h]; EQUIP OPERATORS [500 h] | 14,313.8 | 10 | P3P3WSFR10 | DUKHCON3PP3WSGL5155 | DUKHCONI03Z3WSGL5155 | DH | CON | 3IF | Z3 | FR | WS | B11 | B11-D07 | RES-3 |
| DUKHCONI03Z3WSGL5160 |  | Laying of water line | 25d | 2014-01-18 | 2014-02-16 | DUKHCONI03Z3WSGL5155 SS+5d | 12d | 0d | LABOR- SUBCONTRACTOR [204 h]; MECHANICALS SK [734.4 h]; PLUMB PIPES QTY [672 lm] | 73,356.6 | 15 | P3P3WSFR15 | DUKHCON3PP3WSGL5160 | DUKHCONI03Z3WSGL5160 | DH | CON | 3IF | Z3 | FR | WS | B11 | B11-D07 | RES-3 |
| DUKHCONI03Z3WSGL5165 |  | Testing of potable water line | 25d | 2014-01-23 | 2014-02-22 | DUKHCONI03Z3WSGL5160 SS+5d | 12d | 0d | LABOR- SUBCONTRACTOR [102 h]; MECHANICALS SK [367.2 h]; DRAINAGE PIPES QTY [672 lm] | 7,500.4 | 20 | P3P3WSFR20 | DUKHCON3PP3WSGL5165 | DUKHCONI03Z3WSGL5165 | DH | CON | 3IF | Z3 | FR | WS | B11 | B11-D07 | RES-3 |
| DUKHCONI03Z3WSGL5170 |  | Backfilling potable water line | 25d | 2014-01-29 | 2014-02-27 | DUKHCONI03Z3SAGL5145 FF, DUKHCONI03Z3WSGL5165 SS+5d | 12d | 0d | LABOR - CIVIL [162 h]; BACKFILLING QTY [672 Cum]; BOBCAT [250 h]; PLATE COMPACTOR [250 h]; TRUCK [50 h]; EQUIP OPERATORS [550 h] | 3,578.2 | 25 | P3P3WSFR25 | DUKHCON3PP3WSGL5170 | DUKHCONI03Z3WSGL5170 | DH | CON | 3IF | Z3 | FR | WS | B11 | B11-D07 | RES-3 |
| DUKHCONI03Z3WSGL5175 |  | Construction of valve chambers & Thrust Blocks | 25d | 2014-02-04 | 2014-03-05 | DUKHCONI03Z3WSGL5170 FF+5d, DUKHCONI03Z3WSGL5155 SS+10d, DUKHCONI03Z2WSGL5175 | 31d | 0d | LABOR - CIVIL [18 h]; MANHOLES QTY [6 ea]; MANHOLES SK [48 h] | 1,788.6 | 30 | P3P3WSFR30 | DUKHCON3PP3WSGL5175 | DUKHCONI03Z3WSGL5175 | DH | CON | 3IF | Z3 | FR | WS | B11 | B11-D07 | RES-3 |
| DUKHCONI03Z3WSGL5180 |  | Installation of meter ,Accessories & Connection | 20d | 2014-03-06 | 2014-03-29 | DUKHCONI03Z3WSGL5175, DUKHCONI03Z2WSGL5180 | 31d | 11d | LABOR- SUBCONTRACTOR [12 h]; MECHANICALS SK [21.6 h]; CHAMPER QTY [6 lm] | 15,985.8 | 35 | P3P3WSFR35 | DUKHCON3PP3WSGL5180 | DUKHCONI03Z3WSGL5180 | DH | CON | 3IF | Z3 | FR | WS | B11 | B11-D07 | RES-3 |
|  | 25 | **FIREFIGHTING LINES** |  | 2014-02-09 | 2014-04-10 |  |  |  |  |  |  |  |  |  |  |  |  |  |  |  |  |  |  |
| DUKHCONI03Z3FFGL5185 |  | Excavation for firefighting line | 25d | 2014-02-09 | 2014-03-10 | DUKHCONI03Z3WSGL5170 SS+5d, DUKHCONI03Z2FFGL5200 | 8d | 0d | LABOR - CIVIL [186 h]; EXCAVATION QTY [309 Cum]; LOADER [63 h]; POCLAIN [125 h]; TRUCK [63 h]; EQUIP OPERATORS [251 h] | 17,353.6 | 10 | P3P3FFFR10 | DUKHCON3PP3FFGL5185 | DUKHCONI03Z3FFGL5185 | DH | CON | 3IF | Z3 | FR | FF | B11 | B11-D07 | RES-3 |
| DUKHCONI03Z3FFGL5190 |  | Laying of firefighting line | 25d | 2014-02-18 | 2014-03-18 | DUKHCONI03Z3FFGL5185 SS+7d | 8d | 0d | LABOR- SUBCONTRACTOR [96 h]; MECHANICALS SK [334.8 h]; PLUMB PIPES QTY [309 lm] | 27,650.8 | 15 | P3P3FFFR15 | DUKHCON3PP3FFGL5190 | DUKHCONI03Z3FFGL5190 | DH | CON | 3IF | Z3 | FR | FF | B11 | B11-D07 | RES-3 |
| DUKHCONI03Z3FFGL5195 |  | Testing of firefighting line | 25d | 2014-02-24 | 2014-03-24 | DUKHCONI03Z3FFGL5190 SS+5d | 8d | 0d | LABOR- SUBCONTRACTOR [48 h]; MECHANICALS SK [172.8 h]; DRAINAGE PIPES QTY [309 lm] | 2,170.4 | 20 | P3P3FFFR20 | DUKHCON3PP3FFGL5195 | DUKHCONI03Z3FFGL5195 | DH | CON | 3IF | Z3 | FR | FF | B11 | B11-D07 | RES-3 |
| DUKHCONI03Z3FFGL5200 |  | Backfilling firefighting line | 25d | 2014-03-02 | 2014-03-30 | DUKHCONI03Z3FFGL5195 SS+5d | 8d | 0d | LABOR - CIVIL [78 h]; BACKFILLING QTY [309 Cum]; BOBCAT [125 h]; PLATE COMPACTOR [125 h]; TRUCK [25 h]; EQUIP OPERATORS [275 h] | 4,338.4 | 25 | P3P3FFFR25 | DUKHCON3PP3FFGL5200 | DUKHCONI03Z3FFGL5200 | DH | CON | 3IF | Z3 | FR | FF | B11 | B11-D07 | RES-3 |
| DUKHCONI03Z3FFGL5205 |  | Construction of valve chambers & Thrust Blocks | 25d | 2014-03-08 | 2014-04-05 | DUKHCONI03Z3FFGL5200 FF+5d, DUKHCONI03Z2FFGL5205, DUKHCONI03Z3FFGL5185 SS+10d | 20d | 0d | STEEL FIXERS SK [8 h]; CARPENTERS SK [16 h]; CONCRETE MASON SK [16 h]; LABOR - CIVIL [24 h]; EXCAVATION QTY [5 Cum]; REINFORCEMENT BARS QTY [32 kg]; FORMWORK QTY [8 Sqm]; CONCRETE QTY [5 Cum] | 9,745.8 | 30 | P3P3FFFR30 | DUKHCON3PP3FFGL5205 | DUKHCONI03Z3FFGL5205 | DH | CON | 3IF | Z3 | FR | FF | B11 | B11-D07 | RES-3 |
| DUKHCONI03Z3FFGL5210 |  | Connection with existing Firewater System | 25d | 2014-03-13 | 2014-04-10 | DUKHCONI03Z3FFGL5205 FF+5d, DUKHCONI03Z2FFGL5210, DUKHCONI03Z3WSGL5180 FF | 20d | 12d | STEEL FIXERS SK [8 h]; CARPENTERS SK [16 h]; CONCRETE MASON SK [16 h]; LABOR - CIVIL [24 h]; EXCAVATION QTY [5 Cum]; REINFORCEMENT BARS QTY [32 kg]; FORMWORK QTY [8 Sqm]; CONCRETE QTY [5 Cum] | 12,063.6 | 35 | P3P3FFFR35 | DUKHCON3PP3FFGL5210 | DUKHCONI03Z3FFGL5210 | DH | CON | 3IF | Z3 | FR | FF | B11 | B11-D07 | RES-3 |

Notes:
- DUKHCONI03Z3DRGL5115: Expenses: I03-Surface Water drainage and Sewerage system 19394.3
- DUKHCONI03Z3DRGL5120: Expenses: I03-Surface Water drainage and Sewerage system 60018
- DUKHCONI03Z3DRGL5125: Expenses: I03-Surface Water drainage and Sewerage system 6668.7
- DUKHCONI03Z3DRGL5130: Expenses: I03-Surface Water drainage and Sewerage system 23459.1
- DUKHCONI03Z3SAGL5135: Expenses: I03-Surface Water drainage and Sewerage system 64581
- DUKHCONI03Z3SAGL5140: Expenses: I03-Surface Water drainage and Sewerage system 250930
- DUKHCONI03Z3SAGL5145: Expenses: I03-Surface Water drainage and Sewerage system 41980.2
- DUKHCONI03Z3SAGL5150: Expenses: I03-Surface Water drainage and Sewerage system 3405.9
- DUKHCONI03Z3WSGL5155: Expenses: I03-Water supply system 14313.8
- DUKHCONI03Z3WSGL5160: Expenses: I03-Water supply system 73356.6
- DUKHCONI03Z3WSGL5165: Expenses: I03-Water supply system 7500.4
- DUKHCONI03Z3WSGL5170: Expenses: I03-Water supply system 3578.2
- DUKHCONI03Z3WSGL5175: Expenses: I03-Water supply system 1788.6
- DUKHCONI03Z3WSGL5180: Expenses: I03-Water supply system 15985.8
- DUKHCONI03Z3FFGL5185: Expenses: I03-Water supply system 17353.6
- DUKHCONI03Z3FFGL5190: Expenses: I03-Water supply system 27650.8
- DUKHCONI03Z3FFGL5195: Expenses: I03-Water supply system 2170.4
- DUKHCONI03Z3FFGL5200: Expenses: I03-Water supply system 4338.4
- DUKHCONI03Z3FFGL5205: Expenses: I03-Water supply system 9745.8
- DUKHCONI03Z3FFGL5210: Expenses: I03-Water supply system 12063.6

| ID | WBS | Activity | Duration | Start | Finish | Predecessors | Total float | Free float | Resources | Cost | CODE | P3 ACTID | P6 ID (old) | NP61D | PROJECT | PHASES | PACKAGE | PART | ELEMENTS | STEP | BILL NOS | BILL DIVISION | RES PACK |
| --- | --- | --- | --- | --- | --- | --- | --- | --- | --- | --- | --- | --- | --- | --- | --- | --- | --- | --- | --- | --- | --- | --- | --- |
|  | 30 | **ELECTRICAL LINES** |  | 2014-03-10 | 2014-05-03 |  |  |  |  |  |  |  |  |  |  |  |  |  |  |  |  |  |  |
| DUKHCONI03Z3ELGL5215 |  | Excavation Cable Trenches & Duct Banks | 25d | 2014-03-10 | 2014-04-07 | DUKHCONI03Z2ELGL5225, DUKHCONI03Z3FFGL5200 SS+7d | 8d | 0d | CONCRETE MASON SK [32 h]; LABOR - CIVIL [2004 h]; LABOR- SUBCONTRACTOR [96 h]; ELECTRICIANS SK [347.2 h]; EXCAVATION QTY [3307 Cum]; CONCRETE QTY [13 Cum]; CODUITS QTY [303 lm]; LOADER [250 h]; POCLAIN [500 h]; TRUCK [250 h]; EQUIP OPERATORS [1000 h] | 13,007.8 | 10 | P3P3ECFR10 | DUKHCON3PP3ELGL5215 | DUKHCONI03Z3ELGL5215 | DH | CON | 3IF | Z3 | FR | EC | B11 | B11-D04 | RES-3 |
| DUKHCONI03Z3ELGL5220 |  | Laying of electrical cables | 25d | 2014-03-16 | 2014-04-13 | DUKHCONI03Z3ELGL5215 SS+5d | 11d | 0d | LABOR- SUBCONTRACTOR [1176 h]; ELECTRICIANS SK [4390.4 h]; CABLE QTY [3911 lm]; MCCB QTY [3 ea] | 750,874.2 | 15 | P3P3ECFR15 | DUKHCON3PP3ELGL5220 | DUKHCONI03Z3ELGL5220 | DH | CON | 3IF | Z3 | FR | EC | B11 | B11-D04 | RES-3 |
| DUKHCONI03Z3ELGL5225 |  | Backfilling Electrical trench | 25d | 2014-03-24 | 2014-04-21 | DUKHCONI03Z3ELGL5215 FF+7d, DUKHCONI03Z3ELGL5220 SS+7d | 11d | 0d | LABOR - CIVIL [798 h]; BACKFILLING QTY [3307 Cum]; BOBCAT [500 h]; PLATE COMPACTOR [500 h]; TRUCK [100 h]; EQUIP OPERATORS [1100 h] | 5,574.5 | 20 | P3P3ECFR20 | DUKHCON3PP3ELGL5225 | DUKHCONI03Z3ELGL5225 | DH | CON | 3IF | Z3 | FR | EC | B11 | B11-D04 | RES-3 |
| DUKHCONI03Z3ELGL5230 |  | Construction of Submain Board & Feeder Pillar | 25d | 2014-04-05 | 2014-05-03 | DUKHCONI03Z3ELGL5225 SS+10d, DUKHCONI03Z2ELGL5230, DUKHCONI03Z3ELGL5225 FF+10d | 36d | 0d | STEEL FIXERS SK [8 h]; CARPENTERS SK [56 h]; CONCRETE MASON SK [8 h]; LABOR - CIVIL [48 h]; LABOR- SUBCONTRACTOR [108 h]; REINFORCEMENT BARS QTY [32 kg]; FORMWORK QTY [26 Sqm]; CONCRETE QTY [2 Cum]; DOOR ERECTOR SK [16 h]; ALUMINIUM DOOR QTY [3 ea]; EXPANSION JOINT QTY [33 Sqm]; EXPANSION JOINT SKILLED SK [264 h] | 93,679.5 | 25 | P3P3ECFR25 | DUKHCON3PP3ELGL5230 | DUKHCONI03Z3ELGL5230 | DH | CON | 3IF | Z3 | FR | EC | B11 | B11-D04 | RES-3 |
|  | 35 | **STREET LIGHTING** |  | 2014-03-10 | 2014-06-01 |  |  |  |  |  |  |  |  |  |  |  |  |  |  |  |  |  |  |
| DUKHCONI03Z3STGL5235 |  | Excavation for Street lighting | 25d | 2014-03-10 | 2014-04-07 | DUKHCONI03Z3ELGL5215 SS, DUKHCONI03Z2STGL5250 SS+10d | 8d | 0d | LABOR - CIVIL [18 h]; EXCAVATION QTY [25 Cum]; LOADER [13 h]; POCLAIN [25 h]; TRUCK [13 h]; EQUIP OPERATORS [51 h] | 2,591.4 | 10 | P3P3STFR10 | DUKHCON3PP3STGL5235 | DUKHCONI03Z3STGL5235 | DH | CON | 3IF | Z3 | FR | ST | B11 | B11-D09 | RES-3 |
| DUKHCONI03Z3STGL5240 |  | Construction of Duct Banks | 25d | 2014-03-16 | 2014-04-13 | DUKHCONI03Z3STGL5235 SS+5d | 8d | 0d | LABOR- SUBCONTRACTOR [252 h]; ELECTRICIANS SK [929.6 h]; DUCT BANK QTY [332 lm] | 67,339.2 | 15 | P3P3STFR15 | DUKHCON3PP3STGL5240 | DUKHCONI03Z3STGL5240 | DH | CON | 3IF | Z3 | FR | ST | B11 | B11-D09 | RES-3 |
| DUKHCONI03Z3STGL5245 |  | Construction of Foundation | 25d | 2014-03-16 | 2014-04-13 | DUKHCONI03Z3STGL5240 SS | 8d | 0d | LABOR - CIVIL [162 h]; COLUMN BASE QTY [27 ea]; MANHOLES SK [432 h] | 25,783.2 | 20 | P3P3STFR20 | DUKHCON3PP3STGL5245 | DUKHCONI03Z3STGL5245 | DH | CON | 3IF | Z3 | FR | ST | B11 | B11-D09 | RES-3 |
| DUKHCONI03Z3STGL5250 |  | Backfilling Street Lighting | 25d | 2014-03-22 | 2014-04-19 | DUKHCONI03Z3STGL5235 FF+5d, DUKHCONI03Z3STGL5245 SS+5d | 8d | 0d | LABOR - CIVIL [6 h]; BACKFILLING QTY [25 Cum]; BOBCAT [25 h]; PLATE COMPACTOR [25 h]; TRUCK [5 h]; EQUIP OPERATORS [55 h] | 2,591.1 | 25 | P3P3STFR25 | DUKHCON3PP3STGL5250 | DUKHCONI03Z3STGL5250 | DH | CON | 3IF | Z3 | FR | ST | B11 | B11-D09 | RES-3 |
| DUKHCONI03Z3STGL5255 |  | Installation of light Post | 25d | 2014-04-02 | 2014-04-30 | DUKHCONI03Z3STGL5250 SS+10d, DUKHCONI03Z2STGL5255 | 56d | 20d | LABOR- SUBCONTRACTOR [42 h]; ELECTRICIANS SK [156.8 h]; LIGHTPOST COLUMN QTY [27 ea] | 323,687.3 | 30 | P3P3STFR30 | DUKHCON3PP3STGL5255 | DUKHCONI03Z3STGL5255 | DH | CON | 3IF | Z3 | FR | ST | B11 | B11-D09 | RES-3 |
| DUKHCONI03Z3STGL5260 |  | Electrical Works | 25d | 2014-05-04 | 2014-06-01 | DUKHCONI03Z3ELGL5230, DUKHCONI03Z2STGL5260, DUKHCONI03Z3STGL5255 SS+7d | 36d | 28d | LABOR- SUBCONTRACTOR [102 h]; ELECTRICIANS SK [380.8 h]; CABLE QTY [332 lm] | 15,070.1 | 35 | P3P3STFR35 | DUKHCON3PP3STGL5260 | DUKHCONI03Z3STGL5260 | DH | CON | 3IF | Z3 | FR | ST | B11 | B11-D09 | RES-3 |
|  | 40 | **IRRIGATION LINES** |  | 2014-04-22 | 2014-06-26 |  |  |  |  |  |  |  |  |  |  |  |  |  |  |  |  |  |  |
| DUKHCONI03Z3IRGL5265 |  | Excavation for irrigation line | 25d | 2014-04-22 | 2014-05-20 | DUKHCONI03Z2IRGL5280, DUKHCONI03Z3ELGL5225 | 19d | 0d | LABOR - CIVIL [312 h]; EXCAVATION QTY [518 Cum]; LOADER [125 h]; POCLAIN [250 h]; TRUCK [125 h]; EQUIP OPERATORS [500 h] | 9,688 | 10 | P3P3IRFR10 | DUKHCON3PP3IRGL5265 | DUKHCONI03Z3IRGL5265 | DH | CON | 3IF | Z3 | FR | IR | B11 | B11-D07 | RES-3 |
| DUKHCONI03Z3IRGL5270 |  | Laying of irrigationline | 25d | 2014-04-28 | 2014-05-26 | DUKHCONI03Z3IRGL5265 SS+5d | 19d | 0d | LABOR- SUBCONTRACTOR [414 h]; MECHANICALS SK [745.2 h]; CHAMPER QTY [129 lm]; IRRIGATION PIPES QTY [1477 lm] | 21,709.4 | 15 | P3P3IRFR15 | DUKHCON3PP3IRGL5270 | DUKHCONI03Z3IRGL5270 | DH | CON | 3IF | Z3 | FR | IR | B11 | B11-D07 | RES-3 |
| DUKHCONI03Z3IRGL5275 |  | Testing of irrigation line | 25d | 2014-05-04 | 2014-06-01 | DUKHCONI03Z3IRGL5270 SS+5d | 19d | 0d | LABOR- SUBCONTRACTOR [222 h]; MECHANICALS SK [799.2 h]; DRAINAGE PIPES QTY [1477 lm] | 3,135.3 | 20 | P3P3IRFR20 | DUKHCON3PP3IRGL5275 | DUKHCONI03Z3IRGL5275 | DH | CON | 3IF | Z3 | FR | IR | B11 | B11-D07 | RES-3 |
| DUKHCONI03Z3IRGL5280 |  | Backfilling irrigation line | 25d | 2014-05-10 | 2014-06-07 | DUKHCONI03Z3IRGL5275 SS+5d | 19d | 0d | LABOR - CIVIL [126 h]; BACKFILLING QTY [518 Cum]; BOBCAT [250 h]; PLATE COMPACTOR [250 h]; TRUCK [50 h]; EQUIP OPERATORS [550 h] | 2,422 | 25 | P3P3IRFR25 | DUKHCON3PP3IRGL5280 | DUKHCONI03Z3IRGL5280 | DH | CON | 3IF | Z3 | FR | IR | B11 | B11-D07 | RES-3 |
| DUKHCONI03Z3IRGL5285 |  | Construction of Thrust Blocks,Pull boxes | 25d | 2014-05-21 | 2014-06-18 | DUKHCONI03Z3IRGL5280 FF+10d, DUKHCONI03Z3ELGL5225 SS+10d | 19d | 0d | STEEL FIXERS SK [16 h]; CARPENTERS SK [152 h]; CONCRETE MASON SK [120 h]; LABOR - CIVIL [240 h]; EXCAVATION QTY [37 Cum]; REINFORCEMENT BARS QTY [180 kg]; FORMWORK QTY [75 Sqm]; CONCRETE QTY [60 Cum] | 5,602.1 | 30 | P3P3IRFR30 | DUKHCON3PP3IRGL5285 | DUKHCONI03Z3IRGL5285 | DH | CON | 3IF | Z3 | FR | IR | B11 | B11-D07 | RES-3 |
| DUKHCONI03Z3IRGL5290 |  | Irrigation Fittings (Nozzle,Values) | 25d | 2014-05-29 | 2014-06-26 | DUKHCONI03Z3IRGL5280 SS+10d, DUKHCONI03Z3IRGL5285 SS+7d | 19d | 1d | LABOR- SUBCONTRACTOR [75 h]; ELECTRICIANS SK [280 h] | 51,407.6 | 35 | P3P3IRFR35 | DUKHCON3PP3IRGL5290 | DUKHCONI03Z3IRGL5290 | DH | CON | 3IF | Z3 | FR | IR | B11 | B11-D07 | RES-3 |
|  | 45 | **TELECOMMUNICATION LINES** |  | 2014-04-02 | 2014-06-11 |  |  |  |  |  |  |  |  |  |  |  |  |  |  |  |  |  |  |
| DUKHCONI03Z3TCGL5295 |  | Excavation Telecommunication trenches | 20d | 2014-04-02 | 2014-04-24 | DUKHCONI03Z3STGL5250 SS+10d, DUKHCONI03Z2TCGL5305 SS+10d | 8d | 0d | LABOR - CIVIL [162 h]; EXCAVATION QTY [260 Cum]; LOADER [50 h]; POCLAIN [100 h]; TRUCK [50 h]; EQUIP OPERATORS [200 h] | 6,199.3 | 10 | P3P3TCFR10 | DUKHCON3PP3TCGL5295 | DUKHCONI03Z3TCGL5295 | DH | CON | 3IF | Z3 | FR | TC | B11 | B11-D05 | RES-3 |
| DUKHCONI03Z3TCGL5300 |  | Laying of cables | 20d | 2014-04-08 | 2014-04-30 | DUKHCONI03Z3TCGL5295 SS+5d | 8d | 0d | LABOR- SUBCONTRACTOR [120 h]; ELECTRICIANS SK [436.8 h]; CABLE QTY [390 lm] | 2,182.2 | 15 | P3P3TCFR15 | DUKHCON3PP3TCGL5300 | DUKHCONI03Z3TCGL5300 | DH | CON | 3IF | Z3 | FR | TC | B11 | B11-D05 | RES-3 |
| DUKHCONI03Z3TCGL5305 |  | Backfilling telecommunication trench | 20d | 2014-04-14 | 2014-05-06 | DUKHCONI03Z3TCGL5300 SS+5d | 8d | 0d | LABOR - CIVIL [66 h]; BACKFILLING QTY [260 Cum]; BOBCAT [100 h]; PLATE COMPACTOR [100 h]; TRUCK [20 h]; EQUIP OPERATORS [220 h] | 2,657.6 | 20 | P3P3TCFR20 | DUKHCON3PP3TCGL5305 | DUKHCONI03Z3TCGL5305 | DH | CON | 3IF | Z3 | FR | TC | B11 | B11-D05 | RES-3 |
| DUKHCONI03Z3TCGL5310 |  | Connection & Installation | 20d | 2014-05-20 | 2014-06-11 | DUKHCONI03Z3TCGL5305 SS+10d, DUKHCONI03Z2TCGL5310 | 22d | 0d | LABOR- SUBCONTRACTOR [24 h]; ELECTRICIANS SK [156.8 h]; TELEPHONE SOCKETS QTY [14 ea] | 62,972.6 | 25 | P3P3TCFR25 | DUKHCON3PP3TCGL5310 | DUKHCONI03Z3TCGL5310 | DH | CON | 3IF | Z3 | FR | TC | B11 | B11-D05 | RES-3 |

Notes:
- DUKHCONI03Z3ELGL5215: Expenses: I03-Electrical power supply and distribution 13007.8
- DUKHCONI03Z3ELGL5220: Expenses: I03-Electrical power supply and distribution 750874
- DUKHCONI03Z3ELGL5225: Expenses: I03-Electrical power supply and distribution 5574.5
- DUKHCONI03Z3ELGL5230: Expenses: I03-Electrical power supply and distribution 93679.5
- DUKHCONI03Z3STGL5235: Expenses: I03-Street lighting 2591.4
- DUKHCONI03Z3STGL5240: Expenses: I03-Street lighting 67339.2
- DUKHCONI03Z3STGL5245: Expenses: I03-Street lighting 25783.2
- DUKHCONI03Z3STGL5250: Expenses: I03-Street lighting 2591.1
- DUKHCONI03Z3STGL5255: Expenses: I03-Street lighting 323687
- DUKHCONI03Z3STGL5260: Expenses: I03-Street lighting 15070.1
- DUKHCONI03Z3IRGL5265: Expenses: I03-Water supply system 9688
- DUKHCONI03Z3IRGL5270: Expenses: I03-Water supply system 21709.4
- DUKHCONI03Z3IRGL5275: Expenses: I03-Water supply system 3135.3
- DUKHCONI03Z3IRGL5280: Expenses: I03-Water supply system 2422
- DUKHCONI03Z3IRGL5285: Expenses: I03-Water supply system 5602.1
- DUKHCONI03Z3IRGL5290: Expenses: I03-Water supply system 51407.6
- DUKHCONI03Z3TCGL5295: Expenses: I03-Telecommunication 6199.3
- DUKHCONI03Z3TCGL5300: Expenses: I03-Telecommunication 2182.2
- DUKHCONI03Z3TCGL5305: Expenses: I03-Telecommunication 2657.6
- DUKHCONI03Z3TCGL5310: Expenses: I03-Telecommunication 62972.6

| ID | WBS | Activity | Duration | Start | Finish | Predecessors | Total float | Free float | Resources | Cost | CODE | P3 ACTID | P6 ID (old) | NP61D | PROJECT | PHASES | PACKAGE | PART | ELEMENTS | STEP | BILL NOS | BILL DIVISION | RES PACK |
| --- | --- | --- | --- | --- | --- | --- | --- | --- | --- | --- | --- | --- | --- | --- | --- | --- | --- | --- | --- | --- | --- | --- | --- |
|  | 50 | **BOUNDARY WALL** |  | 2014-04-02 | 2014-05-17 |  |  |  |  |  |  |  |  |  |  |  |  |  |  |  |  |  |  |
| DUKHCONI03Z3BWGL5315 |  | Construction of Boundary Wall (Ht-3m) | 25d | 2014-04-02 | 2014-04-30 | DUKHCONI03Z2BWGL5315, DUKHCONI03Z3STGL5250 SS+10d | 19d | 0d | BOUNDARY WIRE MESH QTY [264 Sqm]; STEEL FIXERS SK [104 h]; LABOR - CIVIL [78 h] | 354,576.9 | 10 | P3P3BWFR10 | DUKHCON3PP3ARGL5315 | DUKHCONI03Z3BWGL5315 | DH | CON | 3IF | Z3 | FR | BW | B11 | B11-D10 | RES-3 |
| DUKHCONI03Z3BWGL5320 |  | Install.Steel Gate,Entance Barrier (3m Wall) | 25d | 2014-04-19 | 2014-05-17 | DUKHCONI03Z2BWGL5320, DUKHCONI03Z3BWGL5315 SS+14d | 19d | 1d | GATE ERECTOR SK [8 h]; LABOR- SUBCONTRACTOR [6 h]; GATE QTY [1 ea] | 5,985.2 | 15 | P3P3BWFR15 | DUKHCON3PP3ARGL5320 | DUKHCONI03Z3BWGL5320 | DH | CON | 3IF | Z3 | FR | BW | B11 | B11-D10 | RES-3 |
|  | 55 | **ROAD WORKS** |  | 2014-04-26 | 2014-07-09 |  |  |  |  |  |  |  |  |  |  |  |  |  |  |  |  |  |  |
| DUKHCONI03Z3RWGL6000 |  | Excavation & Earth Filling | 10d | 2014-04-26 | 2014-05-06 | DUKHCONI03Z3STGL5250, DUKHCONI03Z3SAGL5150, DUKHCONI03Z3FFGL5200, DUKHCONI03Z3TCGL5305 SS+10d, DUKHCONI03Z2RWGL6015 SS+10d, DUKHCONI03Z3FFGL5210, DUKHCONI03Z3ELGL5225 | 8d | 0d | LABOR - CIVIL [1014 h]; EXCAVATION QTY [1202 Cum]; BACKFILLING QTY [1202 Cum]; LOADER [150 h]; POCLAIN [300 h]; TRUCK [150 h]; EQUIP OPERATORS [600 h] | 103,950.7 | 10 | P3P3RDFR10 | DUKHCON3PP3RDGL6000 | DUKHCONI03Z3RWGL6000 | DH | CON | 3IF | Z3 | FR | RD | B11 | B11-D08 | RES-3 |
| DUKHCONI03Z3RWGL6005 |  | Laying of Sub Grade | 25d | 2014-05-07 | 2014-06-04 | DUKHCONI03Z3RWGL6000 | 8d | 0d | LABOR- SUBCONTRACTOR [30 h]; SUBGRADE QTY [449 Sqm] | 137,642.4 | 15 | P3P3RDFR15 | DUKHCON3PP3RDGL6005 | DUKHCONI03Z3RWGL6005 | DH | CON | 3IF | Z3 | FR | RD | B11 | B11-D08 | RES-3 |
| DUKHCONI03Z3RWGL6010 |  | Laying of Precast Kerbs | 25d | 2014-05-19 | 2014-06-16 | DUKHCONI03Z3RWGL6005 SS+10d | 8d | 0d | LABOR- SUBCONTRACTOR [366 h]; KERBSTONE QTY [401 lm]; EDGE STONE QTY [401 Sqm]; KERBSTONE MASON SK [648 h] | 91,572.6 | 20 | P3P3RDFR20 | DUKHCON3PP3RDGL6010 | DUKHCONI03Z3RWGL6010 | DH | CON | 3IF | Z3 | FR | RD | B11 | B11-D08 | RES-3 |
| DUKHCONI03Z3RWGL6015 |  | Laying of Granular Sub Base Coarse | 20d | 2014-05-31 | 2014-06-22 | DUKHCONI03Z3RWGL6010 SS+10d | 8d | 0d | LABOR- SUBCONTRACTOR [30 h]; GRANULAR SUBBASE QTY [449 Sqm]; HEAVY ROLLER [400 h]; LOADER [100 h]; TRUCK [100 h]; EQUIP OPERATORS [600 h] | 68,821.2 | 25 | P3P3RDFR25 | DUKHCON3PP3RDGL6015 | DUKHCONI03Z3RWGL6015 | DH | CON | 3IF | Z3 | FR | RD | B11 | B11-D08 | RES-3 |
| DUKHCONI03Z3RWGL6020 |  | Laying of Road Base Asphalt Concrete | 5d | 2014-06-23 | 2014-06-28 | DUKHCONI03Z3RWGL6015 | 8d | 0d | LABOR- SUBCONTRACTOR [30 h]; ASPHALT CONCRETE QTY [2277 Cum]; ASPHALT PAVER MACHINE [50 h]; HAND ROLLER [100 h]; EQUIP OPERATORS [150 h] | 177,889 | 30 | P3P3RDFR30 | DUKHCON3PP3RDGL6020 | DUKHCONI03Z3RWGL6020 | DH | CON | 3IF | Z3 | FR | RD | B11 | B11-D08 | RES-3 |
| DUKHCONI03Z3RWGL6025 |  | Laying of Asphalt Wearing Coarse | 5d | 2014-06-29 | 2014-07-03 | DUKHCONI03Z2RWGL6025, DUKHCONI03Z3RWGL6020 | 23d | 0d | LABOR- SUBCONTRACTOR [30 h]; ASPHALT WEARING COURSE QTY [2277 Sqm]; ASPHALT PAVER MACHINE [50 h]; HAND ROLLER [100 h]; EQUIP OPERATORS [150 h] | 92,674 | 35 | P3P3RDFR35 | DUKHCON3PP3RDGL6025 | DUKHCONI03Z3RWGL6025 | DH | CON | 3IF | Z3 | FR | RD | B11 | B11-D08 | RES-3 |
| DUKHCONI03Z3RWGL6030 |  | Traffic Signage & Road Marking | 5d | 2014-07-05 | 2014-07-09 | DUKHCONI03Z2RWGL6030, DUKHCONI03Z3RWGL6025 | 23d | 15d | LABOR- SUBCONTRACTOR [102 h]; STEEL ERECTOR SK [96 h]; TRAFFIC SIGN QTY [60 ea]; ROAD MARKING QTY [100 lm]; ASPHALT SK [168 h] | 26,387.6 | 40 | P3P3RDFR40 | DUKHCON3PP3RDGL6030 | DUKHCONI03Z3RWGL6030 | DH | CON | 3IF | Z3 | FR | RD | B11 | B11-D08 | RES-3 |
|  | 60 | **PARKING SHED** |  | 2014-06-05 | 2014-08-05 |  |  |  |  |  |  |  |  |  |  |  |  |  |  |  |  |  |  |
| DUKHCONI03Z3PSGL7000 |  | Excavation | 15d | 2014-06-05 | 2014-06-22 | DUKHCONI03Z2PSGL7005, DUKHCONI03Z3RWGL6015 SS+5d | 13d | 5d | LABOR - CIVIL [6 h]; EXCAVATION QTY [6 Cum]; LOADER [8 h]; POCLAIN [15 h]; TRUCK [8 h]; EQUIP OPERATORS [31 h] | 39,901.5 | 10 | P3P3PSFR10 | DUKHCON3PP3PSGL7000 | DUKHCONI03Z3PSGL7000 | DH | CON | 3IF | Z3 | FR | PS | B11 | B11-D08 | RES-3 |
| DUKHCONI03Z3PSGL7005 |  | Foundation casting | 15d | 2014-06-17 | 2014-07-03 | DUKHCONI03Z3RWGL6015 FF+10d, DUKHCONI03Z3PSGL7000 FF+5d, DUKHCONI03Z3PSGL7000 SS+5d | 8d | 0d | STEEL FIXERS SK [192 h]; CARPENTERS SK [144 h]; CONCRETE MASON SK [296 h]; LABOR - CIVIL [468 h]; REINFORCEMENT BARS QTY [2340 kg]; FORMWORK QTY [69 Sqm]; CONCRETE QTY [146 Cum] | 39,901.5 | 15 | P3P3PSFR15 | DUKHCON3PP3PSGL7005 | DUKHCONI03Z3PSGL7005 | DH | CON | 3IF | Z3 | FR | PS | B11 | B11-D08 | RES-3 |
| DUKHCONI03Z3PSGL7010 |  | Column, Frame& Fabrics Erection | 25d | 2014-06-29 | 2014-07-27 | DUKHCONI03Z3PSGL7005 SS+10d, DUKHCONI03Z3RWGL6020, DUKHCONI03Z3RWGL6030 FF, DUKHCONI03Z2PSGL7010 | 8d | 0d | LABOR- SUBCONTRACTOR [132 h]; STEEL ERECTOR SK [232 h]; PARKING SHED QTY [720 ea] | 199,509.6 | 20 | P3P3PSFR20 | DUKHCON3PP3PSGL7010 | DUKHCONI03Z3PSGL7010 | DH | CON | 3IF | Z3 | FR | PS | B11 | B11-D08 | RES-3 |
| DUKHCONI03Z3PSGL7015 |  | Electrical Works-Parking Shed | 25d | 2014-07-05 | 2014-08-05 | DUKHCONI03Z3STGL5260, DUKHCONI03Z2PSGL7015, DUKHCONI03Z3PSGL7010 SS+5d | 8d |  | LABOR- SUBCONTRACTOR [60 h]; ELECTRICIANS SK [112 h]; LIGHTS QTY [47 ea] | 19,950.9 | 25 | P3P3PSFR25 | DUKHCON3PP3PSGL7015 | DUKHCONI03Z3PSGL7015 | DH | CON | 3IF | Z3 | FR | PS | B11 | B11-D08 | RES-3 |
|  | 65 | **HARD LANDSCAPING** |  | 2014-04-26 | 2014-07-15 |  |  |  |  |  |  |  |  |  |  |  |  |  |  |  |  |  |  |
| DUKHCONI03Z3HDGL7020 |  | Precast Concrete Kerbs works | 20d | 2014-04-26 | 2014-05-18 | DUKHCONI03Z3RWGL6000 SS | 18d | 0d | LABOR- SUBCONTRACTOR [576 h]; KERBSTONE QTY [1277 lm]; KERBSTONE MASON SK [1024 h] | 152,796.5 | 10 | P3P3HDFR10 | DUKHCON3PP3HDGL7020 | DUKHCONI03Z3HDGL7020 | DH | CON | 3IF | Z3 | FR | HD | B11 | B11-D10 | RES-3 |
| DUKHCONI03Z3HDGL7025 |  | Interlocking for Walkways | 25d | 2014-05-07 | 2014-06-04 | DUKHCONI03SBGZGL7910 FF, DUKHCONI03Z3HDGL7020 SS+10d | 18d | 0d | INTERLOCK MASON SK [760 h]; LABOR- SUBCONTRACTOR [288 h]; INTERLOCK QTY [944 Sqm] | 124,110.22 | 15 | P3P3HDFR15 | DUKHCON3PP3HDGL7025 | DUKHCONI03Z3HDGL7025 | DH | CON | 3IF | Z3 | FR | HD | B11 | B11-D10 | RES-3 |
| DUKHCONI03Z3HDGL7030 |  | Construction of Retaining wall | 25d | 2014-05-19 | 2014-06-16 | DUKHCONI03Z2HDGL7030, DUKHCONI03Z3BWGL5320, DUKHCONI03Z3HDGL7025 SS+10d | 18d | 0d | STEEL FIXERS SK [16 h]; CARPENTERS SK [112 h]; CONCRETE MASON SK [16 h]; LABOR - CIVIL [108 h]; EXCAVATION QTY [14 Cum]; REINFORCEMENT BARS QTY [150 kg]; FORMWORK QTY [53 Sqm]; CONCRETE QTY [8 Cum] | 8,986.5 | 20 | P3P3HDFR20 | DUKHCON3PP3HDGL7030 | DUKHCONI03Z3HDGL7030 | DH | CON | 3IF | Z3 | FR | HD | B11 | B11-D10 | RES-3 |
| DUKHCONI03Z3HDGL7035 |  | Construction of Wash Stone Boulders | 25d | 2014-05-19 | 2014-06-16 | DUKHCONI03Z3HDGL7030 SS, DUKHCONI03Z2HDGL7035 | 18d | 0d | TILE MASON SK [32 h]; LABOR- SUBCONTRACTOR [12 h]; STONE BOULDERS QTY [14 Sqm] | 7,950.5 | 25 | P3P3HDFR25 | DUKHCON3PP3HDGL7035 | DUKHCONI03Z3HDGL7035 | DH | CON | 3IF | Z3 | FR | HD | B11 | B11-D10 | RES-3 |
| DUKHCONI03Z3HDGL7040 |  | Construction of Speed Humps | 10d | 2014-07-05 | 2014-07-15 | DUKHCONI03Z3RWGL6025, DUKHCONI03Z3HDGL7035 SS, DUKHCONI03Z2HDGL7040 | 23d |  | CONCRETE MASON SK [8 h]; LABOR - CIVIL [6 h]; SPEED HUMPS [2 ea] | 1,710 | 30 | P3P3HDFR30 | DUKHCON3PP3HDGL7040 | DUKHCONI03Z3HDGL7040 | DH | CON | 3IF | Z3 | FR | HD | B11 | B11-D10 | RES-3 |
|  | 70 | **SOFT LANDSCAPING** |  | 2014-05-31 | 2014-07-21 |  |  |  |  |  |  |  |  |  |  |  |  |  |  |  |  |  |  |
| DUKHCONI03Z3SLGL7200 |  | Excavation for Landscaping | 25d | 2014-05-31 | 2014-06-28 | DUKHCONI03Z3IRGL5290 SS, DUKHCONI03Z2SLGL7205, DUKHCONI03Z3HDGL7035 SS+10d | 18d | 0d | LABOR - CIVIL [30 h]; EXCAVATION QTY [48 Cum]; LOADER [13 h]; POCLAIN [25 h]; TRUCK [13 h]; EQUIP OPERATORS [51 h] | 66,901.5 | 10 | P3P3SLFR10 | DUKHCON3PP3SLGL7200 | DUKHCONI03Z3SLGL7200 | DH | CON | 3IF | Z3 | FR | SL | B11 | B11-D10 | RES-3 |
| DUKHCONI03Z3SLGL7205 |  | Sweet Soil Laying | 25d | 2014-06-11 | 2014-07-09 | DUKHCONI03Z3SLGL7200 SS+10d | 18d | 0d | LABOR- SUBCONTRACTOR [546 h]; SWEET SOIL QTY [4547 Cum]; LANDSCAPING SK [728 h] | 379,110 | 15 | P3P3SLFR15 | DUKHCON3PP3SLGL7205 | DUKHCONI03Z3SLGL7205 | DH | CON | 3IF | Z3 | FR | SL | B11 | B11-D10 | RES-3 |
| DUKHCONI03Z3SLGL7210 |  | Plantation works | 25d | 2014-06-23 | 2014-07-21 | DUKHCONI03Z2SLGL7210, DUKHCONI03Z3SLGL7205 SS+10d | 18d |  | LABOR- SUBCONTRACTOR [822 h]; PLAM TREES QTY [48 ea]; GROUND COVER QTY [8700 Sqm]; SHRUBS QTY [258 ea]; LANDSCAPING SK [1096 h] | 414,033.6 | 20 | P3P3SLFR20 | DUKHCON3PP3SLGL7210 | DUKHCONI03Z3SLGL7210 | DH | CON | 3IF | Z3 | FR | SL | B11 | B11-D10 | RES-3 |

Notes:
- DUKHCONI03Z3BWGL5315: Expenses: I03-Hard and soft landscaping 354577
- DUKHCONI03Z3BWGL5320: Expenses: I03-Hard and soft landscaping 5985.2
- DUKHCONI03Z3RWGL6000: Expenses: I03-Road work 103951
- DUKHCONI03Z3RWGL6005: Expenses: I03-Road work 137642
- DUKHCONI03Z3RWGL6010: Expenses: I03-Road work 91572.6
- DUKHCONI03Z3RWGL6015: Expenses: I03-Road work 68821.2
- DUKHCONI03Z3RWGL6020: Expenses: I03-Road work 177889
- DUKHCONI03Z3RWGL6025: Expenses: I03-Road work 92674
- DUKHCONI03Z3RWGL6030: Expenses: I03-Road work 26387.6
- DUKHCONI03Z3PSGL7000: Expenses: I03-Road work 39901.5
- DUKHCONI03Z3PSGL7005: Expenses: I03-Road work 39901.5
- DUKHCONI03Z3PSGL7010: Expenses: I03-Road work 199510
- DUKHCONI03Z3PSGL7015: Expenses: I03-Road work 19950.9
- DUKHCONI03Z3HDGL7020: Expenses: I03-Hard and soft landscaping 152796
- DUKHCONI03Z3HDGL7025: Expenses: I03-Hard and soft landscaping 124110
- DUKHCONI03Z3HDGL7030: Expenses: I03-Hard and soft landscaping 8986.5
- DUKHCONI03Z3HDGL7035: Expenses: I03-Hard and soft landscaping 7950.5
- DUKHCONI03Z3HDGL7040: Expenses: I03-Hard and soft landscaping 1710
- DUKHCONI03Z3SLGL7200: Expenses: I03-Hard and soft landscaping 66901.5
- DUKHCONI03Z3SLGL7205: Expenses: I03-Hard and soft landscaping 379110
- DUKHCONI03Z3SLGL7210: Expenses: I03-Hard and soft landscaping 414034

| ID | WBS | Activity | Duration | Start | Finish | Predecessors | Total float | Free float | Resources | Cost | CODE | P3 ACTID | P6 ID (old) | NP61D | PROJECT | PHASES | PACKAGE | PART | ELEMENTS | STEP | BILL NOS | BILL DIVISION | RES PACK |
| --- | --- | --- | --- | --- | --- | --- | --- | --- | --- | --- | --- | --- | --- | --- | --- | --- | --- | --- | --- | --- | --- | --- | --- |
|  | 25 | **SECONDARY BUILDINGS** |  | 2014-02-04 | 2014-07-24 |  |  |  |  |  |  |  |  |  |  |  |  |  |  |  |  |  |  |
|  | 10 | **INFRASTRUCTURE WORKS** |  | 2014-02-04 | 2014-07-24 |  |  |  |  |  |  |  |  |  |  |  |  |  |  |  |  |  |  |
|  | 10 | **IRRIGATION WATER TANK & PUMP ROOM** |  | 2014-02-04 | 2014-07-24 |  |  |  |  |  |  |  |  |  |  |  |  |  |  |  |  |  |  |
| DUKHCONI03SBIWGL7400 |  | Excavation | 15d | 2014-02-04 | 2014-02-22 | DUKHCONP03Z5STRF2055, DUKHENGI03DWIWAP5920 | 15d | 0d | LABOR - CIVIL [282 h]; EXCAVATION QTY [470 Cum]; LOADER [75 h]; POCLAIN [150 h]; TRUCK [75 h]; EQUIP OPERATORS [300 h] | 25,532 | 10 | P3OBIWFR10 | DUKHCON3POBIWGL7400 | DUKHCONI03SBIWGL7400 | DH | CON | 3IF | OB | FR | IW | B11 | B11-D07 | RES-3 |
| DUKHCONI03SBIWGL7405 |  | Blinding & base waterproofing | 10d | 2014-02-23 | 2014-03-05 | DUKHCONI03SBIWGL7400 | 15d | 0d | BLINDING MASON SK [128 h]; LABOR - CIVIL [96 h]; LABOR- SUBCONTRACTOR [48 h]; BLINDING QTY [156 Sqm]; WATERPROOFING QTY [156 Sqm]; WATERPROOFING SPECIALIST SK [128 h] | 11,821 | 15 | P3OBIWFR15 | DUKHCON3POBIWGL7405 | DUKHCONI03SBIWGL7405 | DH | CON | 3IF | OB | FR | IW | B11 | B11-D07 | RES-3 |
| DUKHCONI03SBIWGL7410 |  | Construction of Raft slab | 10d | 2014-03-06 | 2014-03-17 | DUKHCONI03SBIWGL7405 | 15d | 0d | REINFORCEMENT BARS QTY [6600 kg]; FORMWORK QTY [34 Sqm]; CONCRETE QTY [66 Cum]; STEEL FIXERS SK [528 h]; CARPENTERS SK [72 h]; CONCRETE MASON SK [136 h]; LABOR - CIVIL [552 h] | 36,610 | 20 | P3OBIWFR20 | DUKHCON3POBIWGL7410 | DUKHCONI03SBIWGL7410 | DH | CON | 3IF | OB | FR | IW | B11 | B11-D07 | RES-3 |
| DUKHCONI03SBIWGL7415 |  | Construction of RCC Wall | 25d | 2014-03-18 | 2014-04-15 | DUKHCONI03SBIWGL7410 | 15d | 0d | STEEL FIXERS SK [848 h]; CARPENTERS SK [1336 h]; CONCRETE MASON SK [216 h]; LABOR - CIVIL [1800 h]; REINFORCEMENT BARS QTY [10600 kg]; FORMWORK QTY [666 Sqm]; CONCRETE QTY [106 Cum] | 94,813 | 25 | P3OBIWFR25 | DUKHCON3POBIWGL7415 | DUKHCONI03SBIWGL7415 | DH | CON | 3IF | OB | FR | IW | B11 | B11-D07 | RES-3 |
| DUKHCONI03SBIWGL7420 |  | Construction of Roof Slab | 20d | 2014-04-16 | 2014-05-08 | DUKHCONI03SBIWGL7415 | 15d | 0d | STEEL FIXERS SK [112 h]; CARPENTERS SK [264 h]; CONCRETE MASON SK [56 h]; LABOR - CIVIL [324 h]; REINFORCEMENT BARS QTY [1402 kg]; FORMWORK QTY [132 Sqm]; CONCRETE QTY [28 Cum] | 26,221 | 30 | P3OBIWFR30 | DUKHCON3POBIWGL7420 | DUKHCONI03SBIWGL7420 | DH | CON | 3IF | OB | FR | IW | B11 | B11-D07 | RES-3 |
| DUKHCONI03SBIWGL7425 |  | Waterproofing & Backfilling | 15d | 2014-05-10 | 2014-05-26 | DUKHCONI03SBIWGL7420 | 21d | 0d | LABOR - CIVIL [18 h]; LABOR- SUBCONTRACTOR [60 h]; WATERPROOFING QTY [186 Sqm]; BACKFILLING QTY [66 Cum]; WATERPROOFING SPECIALIST SK [152 h]; BOBCAT [30 h]; PLATE COMPACTOR [30 h]; TRUCK [6 h]; EQUIP OPERATORS [66 h] | 25,340 | 35 | P3OBIWFR35 | DUKHCON3POBIWGL7425 | DUKHCONI03SBIWGL7425 | DH | CON | 3IF | OB | FR | IW | B11 | B11-D07 | RES-3 |
| DUKHCONI03SBIWGL7950 |  | Laying of Interlock | 10d | 2014-05-27 | 2014-06-07 | DUKHCONI03SBIWGL7425 | 36d | 0d | INTERLOCK MASON SK [40 h]; LABOR- SUBCONTRACTOR [18 h]; INTERLOCK QTY [50 Sqm] | 6,272.28 | 75 | P3OBIWFR75 | DUKHCON3POBIWGL7950 | DUKHCONI03SBIWGL7950 | DH | CON | 3IF | OB | FR | IW | B11 | B11-D10 | RES-3 |
| DUKHCONI03SBIWGL7430 |  | Floor screed | 5d | 2014-06-03 | 2014-06-08 | DUKHCONI03SBIWGL7420 FS+21d, DUKHCONI03SBIWGL7425 | 15d | 0d | SCREED MASON SK [104 h]; LABOR - CIVIL [42 h]; FLOORING SCREED QTY [128 Sqm] | 2,072 | 40 | P3OBIWFR40 | DUKHCON3POBIWGL7430 | DUKHCONI03SBIWGL7430 | DH | CON | 3IF | OB | FR | IW | B11 | B11-D07 | RES-3 |
| DUKHCONI03SBIWGL7435 |  | Installation of Boundary Fences | 15d | 2014-06-08 | 2014-06-24 | DUKHCONI03SBIWGL7950, DUKHPROGEN00PRDV3850 | 36d | 21d | STEEL FIXERS SK [48 h]; LABOR - CIVIL [36 h]; BOUNDARY WIRE MESH QTY [110 Sqm] | 32,769 | 80 | P3OBIWFR80 | DUKHCON3POBIWGL7435 | DUKHCONI03SBIWGL7435 | DH | CON | 3IF | OB | FR | IW | B11 | B11-D07 | RES-3 |
| DUKHCONI03SBIWGL7440 |  | Plumbing , Drainage & Firefighting works | 25d | 2014-06-09 | 2014-07-07 | DUKHCONI03Z2FFGL5210, DUKHCONI03Z1FFGL5210, DUKHCONI03Z3FFGL5210, DUKHCONI03SBIWGL7430 | 15d | 0d | LABOR- SUBCONTRACTOR [18 h]; MECHANICALS SK [32.4 h]; PUMP QTY [3 ea] | 153,477 | 60 | P3OBIWFR60 | DUKHCON3POBIWGL7440 | DUKHCONI03SBIWGL7440 | DH | CON | 3IF | OB | FR | IW | B11 | B11-D07 | RES-3 |
| DUKHCONI03SBIWGL7445 |  | AC Works | 25d | 2014-06-09 | 2014-07-07 | DUKHCONI03SBIWGL7440 SS | 15d | 0d | LABOR- SUBCONTRACTOR [6 h]; AC TECHNICIAN SK [11.2 h]; AC PIPES QTY [17 lm]; VENTILIATION EQP QTY [1 ea] | 2,104 | 65 | P3OBIWFR65 | DUKHCON3POBIWGL7445 | DUKHCONI03SBIWGL7445 | DH | CON | 3IF | OB | FR | IW | B11 | B11-D07 | RES-3 |
| DUKHCONI03SBIWGL7450 |  | Electrical Works | 25d | 2014-06-09 | 2014-07-07 | DUKHCONI03Z3STGL5260 SS, DUKHCONI03Z3ELGL5230, DUKHCONI03SBIWGL7445 SS | 15d | 0d | LABOR- SUBCONTRACTOR [90 h]; ELECTRICIANS SK [235.2 h]; CODUITS QTY [60 lm]; CABLE QTY [50 lm]; DB QTY [2 ea]; LIGHTS QTY [31 ea]; ISOLATOR QTY [4 ea] | 9,783 | 70 | P3OBIWFR70 | DUKHCON3POBIWGL7450 | DUKHCONI03SBIWGL7450 | DH | CON | 3IF | OB | FR | IW | B11 | B11-D07 | RES-3 |
| DUKHCONI03SBIWGL7455 |  | Internal epoxy coating & Painting | 5d | 2014-07-08 | 2014-07-13 | DUKHCONI03SBIWGL7450 | 15d | 0d | LABOR- SUBCONTRACTOR [30 h]; EPOXY QTY [128 Sqm]; EPOXY SK [72 h] | 6,198 | 45 | P3OBIWFR45 | DUKHCON3POBIWGL7455 | DUKHCONI03SBIWGL7455 | DH | CON | 3IF | OB | FR | IW | B11 | B11-D07 | RES-3 |
| DUKHCONI03SBIWGL7460 |  | Installation of Steel Ladder | 5d | 2014-07-14 | 2014-07-19 | DUKHCONI03SBIWGL7455 | 15d | 0d | LABOR- SUBCONTRACTOR [6 h]; LADDER QTY [1 ea]; LADDER ERECTOR SK [8 h] | 3,970 | 50 | P3OBIWFR50 | DUKHCON3POBIWGL7460 | DUKHCONI03SBIWGL7460 | DH | CON | 3IF | OB | FR | IW | B11 | B11-D07 | RES-3 |
| DUKHCONI03SBIWGL7465 |  | Installation of G.I Handrails | 5d | 2014-07-20 | 2014-07-24 | DUKHCONI03SBIWGL7435, DUKHCONI03SBIWGL7460 | 15d |  | LABOR- SUBCONTRACTOR [120 h]; STEEL ERECTOR SK [208 h]; HANDRAIL QTY [103 lm] | 18,447 | 55 | P3OBIWFR55 | DUKHCON3POBIWGL7465 | DUKHCONI03SBIWGL7465 | DH | CON | 3IF | OB | FR | IW | B11 | B11-D07 | RES-3 |
|  | 15 | **TELECOMMUNICATION ROOM** |  | 2014-02-23 | 2014-07-16 |  |  |  |  |  |  |  |  |  |  |  |  |  |  |  |  |  |  |
| DUKHCONI03SBTRGL7600 |  | Excavation | 10d | 2014-02-23 | 2014-03-05 | DUKHCONI03SBIWGL7400, DUKHENGI03DWTRAP5930 | 25d | 0d | LABOR - CIVIL [12 h]; EXCAVATION QTY [20 Cum]; LOADER [5 h]; POCLAIN [10 h]; TRUCK [5 h]; EQUIP OPERATORS [20 h] | 6,092 | 10 | P3OBTRFR10 | DUKHCON3POBTRGL7600 | DUKHCONI03SBTRGL7600 | DH | CON | 3IF | OB | FR | TR | B11 | B11-D05 | RES-3 |
| DUKHCONI03SBTRGL7605 |  | Construction of foundation & Grade slab | 20d | 2014-03-06 | 2014-03-29 | DUKHCONI03SBTRGL7600 | 35d | 0d | STEEL FIXERS SK [32 h]; CARPENTERS SK [80 h]; CONCRETE MASON SK [48 h]; LABOR - CIVIL [120 h]; REINFORCEMENT BARS QTY [356 kg]; FORMWORK QTY [40 Sqm]; CONCRETE QTY [25 Cum] | 18,276 | 15 | P3OBTRFR15 | DUKHCON3POBTRGL7605 | DUKHCONI03SBTRGL7605 | DH | CON | 3IF | OB | FR | TR | B11 | B11-D05 | RES-3 |
| DUKHCONI03SBTRGL7610 |  | Construction Column,Beams & Roof Slab | 20d | 2014-03-30 | 2014-04-21 | DUKHCONI03SBTRGL7605 | 35d | 0d | STEEL FIXERS SK [32 h]; CARPENTERS SK [80 h]; CONCRETE MASON SK [48 h]; LABOR - CIVIL [120 h]; REINFORCEMENT BARS QTY [356 kg]; FORMWORK QTY [40 Sqm]; CONCRETE QTY [25 Cum] | 18,276 | 20 | P3OBTRFR20 | DUKHCON3POBTRGL7610 | DUKHCONI03SBTRGL7610 | DH | CON | 3IF | OB | FR | TR | B11 | B11-D05 | RES-3 |
| DUKHCONI03SBTRGL7615 |  | Finishing Works | 25d | 2014-05-17 | 2014-06-14 | DUKHCONI03SBTRGL7610 FS+21d | 35d | 0d | SCREED MASON SK [40 h]; PLASTER MASON SK [400 h]; LABOR - CIVIL [246 h]; LABOR- SUBCONTRACTOR [90 h]; SCREED QTY [52 Sqm]; PLASTER QTY [248 Sqm]; PAINT QTY [248 Sqm]; PAINTERS SK [200 h]; EPOXY QTY [52 Sqm]; EPOXY SK [24 h] | 12,184 | 25 | P3OBTRFR25 | DUKHCON3POBTRGL7615 | DUKHCONI03SBTRGL7615 | DH | CON | 3IF | OB | FR | TR | B11 | B11-D05 | RES-3 |
| DUKHCONI03SBTRGL7620 |  | Plumbing , Drainage & Firefighting works | 25d | 2014-05-28 | 2014-06-25 | DUKHCONI03SBTRGL7615 SS+10d | 35d | 0d | LABOR- SUBCONTRACTOR [78 h]; MECHANICALS SK [172.8 h]; CABINET QTY [4 ea]; DRAINAGE PIPES QTY [15 lm]; PLUMB PIPES QTY [97 lm]; WATER TANK QTY [1 ea]; PUMP QTY [4 ea]; JOINERY WORK SK [32 h] | 3,276 | 30 | P3OBTRFR30 | DUKHCON3POBTRGL7620 | DUKHCONI03SBTRGL7620 | DH | CON | 3IF | OB | FR | TR | B11 | B11-D05 | RES-3 |
| DUKHCONI03SBTRGL7625 |  | AC Works | 25d | 2014-05-28 | 2014-06-25 | DUKHCONI03SBTRGL7620 SS | 35d | 13d | AC PIPES QTY [10 lm]; VENTILIATION EQP QTY [1 ea]; LABOR- SUBCONTRACTOR [150 h]; AC TECHNICIAN SK [560 h] | 2,194 | 35 | P3OBTRFR35 | DUKHCON3POBTRGL7625 | DUKHCONI03SBTRGL7625 | DH | CON | 3IF | OB | FR | TR | B11 | B11-D05 | RES-3 |
| DUKHCONI03SBTRGL7630 |  | Electrical Works-Telecom Room | 25d | 2014-06-12 | 2014-07-10 | DUKHCONI03Z1TCGL5310, DUKHCONI03SBTRGL7625 SS, DUKHCONI03Z2TCGL5310, DUKHCONI03Z3TCGL5310 | 22d | 0d | LABOR- SUBCONTRACTOR [114 h]; ELECTRICIANS SK [291.2 h]; MECHANICALS SK [10.8 h]; CABLE QTY [50 lm]; DB QTY [1 ea]; LIGHTS QTY [24 ea]; FIRE EXTINGUISHER QTY [2 ea]; ISOLATOR QTY [5 ea]; CABLE TRAY QTY [24 lm] | 6,722 | 40 | P3OBTRFR40 | DUKHCON3POBTRGL7630 | DUKHCONI03SBTRGL7630 | DH | CON | 3IF | OB | FR | TR | B11 | B11-D05 | RES-3 |
| DUKHCONI03SBTRGL7635 |  | Final Paintings | 5d | 2014-07-12 | 2014-07-16 | DUKHCONI03SBTRGL7625, DUKHCONI03SBTRGL7630, DUKHCONI03SBTRGL7620, DUKHCONI03SBTRGL7615 | 22d |  | LABOR- SUBCONTRACTOR [75 h]; PAINTERS SK [200 h] | 5,753 |  | P3OBTRFR42 | DUKHCON3POBTRGL7635 | DUKHCONI03SBTRGL7635 | DH | CON | 3IF | OB | FR | TR | B11 | B11-D05 | RES-3 |

Notes:
- DUKHCONI03SBIWGL7400: Expenses: I03-Water supply system 25532
- DUKHCONI03SBIWGL7405: Expenses: I03-Water supply system 11821
- DUKHCONI03SBIWGL7410: Expenses: I03-Water supply system 36610
- DUKHCONI03SBIWGL7415: Expenses: I03-Water supply system 94813
- DUKHCONI03SBIWGL7420: Expenses: I03-Water supply system 26221
- DUKHCONI03SBIWGL7425: Expenses: I03-Water supply system 25340
- DUKHCONI03SBIWGL7950: Expenses: I03-Hard and soft landscaping 6272.28
- DUKHCONI03SBIWGL7430: Expenses: I03-Water supply system 2072
- DUKHCONI03SBIWGL7435: Expenses: I03-Water supply system 32769
- DUKHCONI03SBIWGL7440: Expenses: I03-Water supply system 153477
- DUKHCONI03SBIWGL7445: Expenses: I03-Water supply system 2104
- DUKHCONI03SBIWGL7450: Expenses: I03-Water supply system 9783
- DUKHCONI03SBIWGL7455: Expenses: I03-Water supply system 6198
- DUKHCONI03SBIWGL7460: Expenses: I03-Water supply system 3970
- DUKHCONI03SBIWGL7465: Expenses: I03-Water supply system 18447
- DUKHCONI03SBTRGL7600: Expenses: I03-Telecommunication 6092
- DUKHCONI03SBTRGL7605: Expenses: I03-Telecommunication 18276
- DUKHCONI03SBTRGL7610: Expenses: I03-Telecommunication 18276
- DUKHCONI03SBTRGL7615: Expenses: I03-Telecommunication 12184
- DUKHCONI03SBTRGL7620: Expenses: I03-Telecommunication 3276
- DUKHCONI03SBTRGL7625: Expenses: I03-Telecommunication 2194
- DUKHCONI03SBTRGL7630: Expenses: I03-Telecommunication 6722
- DUKHCONI03SBTRGL7635: Expenses: I03-Telecommunication 5753

| ID | WBS | Activity | Duration | Start | Finish | Predecessors | Total float | Free float | Resources | Cost | CODE | P3 ACTID | P6 ID (old) | NP61D | PROJECT | PHASES | PACKAGE | PART | ELEMENTS | STEP | BILL NOS | BILL DIVISION | RES PACK |
| --- | --- | --- | --- | --- | --- | --- | --- | --- | --- | --- | --- | --- | --- | --- | --- | --- | --- | --- | --- | --- | --- | --- | --- |
|  | 20 | **GUARD HOUSE** |  | 2014-03-06 | 2014-07-13 |  |  |  |  |  |  |  |  |  |  |  |  |  |  |  |  |  |  |
| DUKHCONI03SBGHGL7800 |  | Excavation | 10d | 2014-03-06 | 2014-03-17 | DUKHCONI03SBTRGL7600, DUKHENGI03DWGHAP5950 | 25d | 0d | LABOR - CIVIL [12 h]; EXCAVATION QTY [20 Cum]; LOADER [5 h]; POCLAIN [10 h]; TRUCK [5 h]; EQUIP OPERATORS [20 h] | 3,352 | 10 | P3OBGHFR10 | DUKHCON3POBGHGL7800 | DUKHCONI03SBGHGL7800 | DH | CON | 3IF | OB | FR | GH | B11 | B11-D10 | RES-3 |
| DUKHCONI03SBGHGL7805 |  | Construction of foundation & Grade slab | 20d | 2014-03-18 | 2014-04-09 | DUKHCONI03SBGHGL7800 | 25d | 0d | STEEL FIXERS SK [32 h]; CARPENTERS SK [80 h]; CONCRETE MASON SK [48 h]; LABOR - CIVIL [120 h]; REINFORCEMENT BARS QTY [356 kg]; FORMWORK QTY [40 Sqm]; CONCRETE QTY [25 Cum] | 13,408 | 15 | P3OBGHFR15 | DUKHCON3POBGHGL7805 | DUKHCONI03SBGHGL7805 | DH | CON | 3IF | OB | FR | GH | B11 | B11-D10 | RES-3 |
| DUKHCONI03SBGHGL7810 |  | Construction Column,Beams & Roof Slab | 20d | 2014-04-10 | 2014-05-03 | DUKHCONI03SBGHGL7805 | 25d | 0d | STEEL FIXERS SK [32 h]; CARPENTERS SK [80 h]; CONCRETE MASON SK [48 h]; LABOR - CIVIL [120 h]; REINFORCEMENT BARS QTY [356 kg]; FORMWORK QTY [40 Sqm]; CONCRETE QTY [25 Cum] | 13,408 | 20 | P3OBGHFR20 | DUKHCON3POBGHGL7810 | DUKHCONI03SBGHGL7810 | DH | CON | 3IF | OB | FR | GH | B11 | B11-D10 | RES-3 |
| DUKHCONI03SBGHGL7815 |  | Finishing Works | 25d | 2014-05-28 | 2014-06-25 | DUKHCONI03SBGHGL7810 FS+21d | 25d | 0d | SCREED MASON SK [40 h]; PLASTER MASON SK [400 h]; LABOR - CIVIL [246 h]; LABOR- SUBCONTRACTOR [90 h]; SCREED QTY [52 Sqm]; PLASTER QTY [248 Sqm]; PAINT QTY [248 Sqm]; PAINTERS SK [200 h]; EPOXY QTY [52 Sqm]; EPOXY SK [24 h] | 13,408 | 25 | P3OBGHFR25 | DUKHCON3POBGHGL7815 | DUKHCONI03SBGHGL7815 | DH | CON | 3IF | OB | FR | GH | B11 | B11-D10 | RES-3 |
| DUKHCONI03SBGHGL7820 |  | Plumbing , Drainage & Firefighting works | 25d | 2014-06-09 | 2014-07-07 | DUKHCONI03SBGHGL7815 SS+10d | 25d | 0d | DRAINAGE PIPES QTY [15 lm]; PLUMB PIPES QTY [97 lm]; WATER TANK QTY [1 ea]; PUMP QTY [4 ea]; JOINERY WORK SK [32 h]; LABOR- SUBCONTRACTOR [78 h]; MECHANICALS SK [172.8 h]; CABINET QTY [4 ea] | 7,449 | 30 | P3OBGHFR30 | DUKHCON3POBGHGL7820 | DUKHCONI03SBGHGL7820 | DH | CON | 3IF | OB | FR | GH | B11 | B11-D10 | RES-3 |
| DUKHCONI03SBGHGL7825 |  | AC Works | 25d | 2014-06-09 | 2014-07-07 | DUKHCONI03SBGHGL7820 SS | 25d | 0d | AC PIPES QTY [10 lm]; VENTILIATION EQP QTY [1 ea]; LABOR- SUBCONTRACTOR [150 h]; AC TECHNICIAN SK [560 h] | 7,449 | 35 | P3OBGHFR35 | DUKHCON3POBGHGL7825 | DUKHCONI03SBGHGL7825 | DH | CON | 3IF | OB | FR | GH | B11 | B11-D10 | RES-3 |
| DUKHCONI03SBGHGL7830 |  | Electrical Works-Telecom Room | 25d | 2014-06-09 | 2014-07-07 | DUKHCONI03SBGHGL7825 SS | 25d | 0d | LABOR- SUBCONTRACTOR [114 h]; ELECTRICIANS SK [291.2 h]; MECHANICALS SK [10.8 h]; CABLE QTY [50 lm]; DB QTY [1 ea]; LIGHTS QTY [24 ea]; FIRE EXTINGUISHER QTY [2 ea]; ISOLATOR QTY [5 ea]; CABLE TRAY QTY [24 lm] | 7,449 | 40 | P3OBGHFR40 | DUKHCON3POBGHGL7830 | DUKHCONI03SBGHGL7830 | DH | CON | 3IF | OB | FR | GH | B11 | B11-D10 | RES-3 |
| DUKHCONI03SBGHGL7835 |  | Final Paintings | 5d | 2014-07-08 | 2014-07-13 | DUKHCONI03SBGHGL7830, DUKHCONI03SBGHGL7815, DUKHCONI03SBGHGL7820, DUKHCONI03SBGHGL7825 | 25d |  | LABOR- SUBCONTRACTOR [75 h]; PAINTERS SK [200 h] | 2,793 |  | P3OBGHFR42 | DUKHCON3POBGHGL7835 | DUKHCONI03SBGHGL7835 | DH | CON | 3IF | OB | FR | GH | B11 | B11-D10 | RES-3 |
|  | 25 | **GAZEBO** |  | 2014-03-31 | 2014-05-27 |  |  |  |  |  |  |  |  |  |  |  |  |  |  |  |  |  |  |
| DUKHCONI03SBGZGL7900 |  | Construction of Concrete structure | 20d | 2014-03-31 | 2014-04-22 | DUKHCONI03Z2HDGL7020, DUKHENGI03DWGZAP5940, DUKHPROGEN00PRDV3780 | 25d | 0d | STEEL FIXERS SK [8 h]; CARPENTERS SK [32 h]; CONCRETE MASON SK [24 h]; LABOR - CIVIL [60 h]; EXCAVATION QTY [20 Cum]; REINFORCEMENT BARS QTY [85 kg]; FORMWORK QTY [15 Sqm]; CONCRETE QTY [10 Cum] | 4,276 | 10 | P3OBGZFR10 | DUKHCON3POBGZGL7900 | DUKHCONI03SBGZGL7900 | DH | CON | 3IF | OB | FR | GZ | B11 | B11-D10 | RES-3 |
| DUKHCONI03SBGZGL7905 |  | Installation of Wooden Works | 25d | 2014-04-12 | 2014-05-10 | DUKHCONI03SBGZGL7900 SS+10d | 25d | 0d | LABOR- SUBCONTRACTOR [100 h]; WOODEN WORKS QTY [1 ea]; DOOR WORK SK [200 h] | 42,754 | 15 | P3OBGZFR15 | DUKHCON3POBGZGL7905 | DUKHCONI03SBGZGL7905 | DH | CON | 3IF | OB | FR | GZ | B11 | B11-D10 | RES-3 |
| DUKHCONI03SBGZGL7915 |  | Park Benches Installation | 25d | 2014-04-12 | 2014-05-10 | DUKHCONI03SBGZGL7905 SS | 25d | 0d | LABOR- SUBCONTRACTOR [200 h]; WOODEN WORKS QTY [9 ea] | 76,958 | 20 | P3OBGZFR30 | DUKHCON3POBGZGL7915 | DUKHCONI03SBGZGL7915 | DH | CON | 3IF | OB | FR | GZ | B11 | B11-D10 | RES-3 |
| DUKHCONI03SBGZGL7910 |  | Electrical Works-Gazebo | 15d | 2014-05-11 | 2014-05-27 | DUKHCONI03SBGZGL7905, DUKHCONI03SBGZGL7915 | 25d | 7d | LABOR- SUBCONTRACTOR [36 h]; ELECTRICIANS SK [89.6 h]; CABLE QTY [50 lm]; LIGHTS QTY [15 ea] | 17,102 | 20 | P3OBGZFR20 | DUKHCON3POBGZGL7910 | DUKHCONI03SBGZGL7910 | DH | CON | 3IF | OB | FR | GZ | B11 | B11-D10 | RES-3 |
|  | 30 | **PLAY GROUND** |  | 2014-04-23 | 2014-07-01 |  |  |  |  |  |  |  |  |  |  |  |  |  |  |  |  |  |  |
| DUKHCONI03SBPGGL7940 |  | Intial Work Play Ground Works | 30d | 2014-04-23 | 2014-05-27 | DUKHCONI03SBGZGL7900 | 35d | 0d | LABOR- SUBCONTRACTOR [480 h] | 424,634 | 20 | 3AOBPGFR10 | DUKHCON3POBPGGL7940 | DUKHCONI03SBPGGL7940 | DH | CON | 3IF | OB | FR | PG | B11 | B11-D10 | RES-3 |
| DUKHCONI03SBPGGL7945 |  | Final Work Play Ground Works | 30d | 2014-05-28 | 2014-07-01 | DUKHCONI03SBPGGL7940 | 35d |  | LABOR- SUBCONTRACTOR [480 h] | 424,633 |  | 3AOBPGFR15 | DUKHCON3POBPGGL7945 | DUKHCONI03SBPGGL7945 | DH | CON | 3IF | OB | FR | PG | B11 | B11-D10 | RES-3 |
|  | K35 | **COMMISSIONING & HANDING OVER** |  | 2014-06-15 | 2015-03-31 |  |  |  |  |  |  |  |  |  |  |  |  |  |  |  |  |  |  |
|  | L20 | **PACKAGE-1A** |  | 2014-12-15 | 2015-03-31 |  |  |  |  |  |  |  |  |  |  |  |  |  |  |  |  |  |  |
| DUKHHANP1AGNACTC9000 |  | Submission & Clearance of Punch list,Final Testing & Commissioning of AC Works | 30d | 2014-12-15 | 2015-01-19 | DUKHCONP1AZ6ACTC8000, DUKHCONP1AZ7ACTC8000, DUKHCONP1AZ1ACTC8000, DUKHCONP1AZ4ACTC8000, DUKHCONP1AZ2ACTC8000, DUKHCONP1AZ5ACTC8000, DUKHCONI1ASBIWGL7465, DUKHCONI1ASBGHGL7835, DUKHCONI1ASBTRGL7635, DUKHCONP1AZ9ACTC8000, DUKHCONP1AZ3ACTC8000, DUKHCONP1AZ8ACTC8000 | 0d |  | AC TECHNICIAN SK [1200 h]; LABOR- SUBCONTRACTOR [600 h] | 19,610 |  | 1AP1ACUF00 | DUKHHAN1AP1AC009000 | DUKHHANP1AGNACTC9000 | DH | HAN | 1A |  |  |  | B02 | B02-D08 | RES-1A |
| DUKHHANP1AGNELTC9010 |  | Submission & Clearance Punch list,Final Testing & Commissioning of Electrical Works | 30d | 2014-12-15 | 2015-01-19 | DUKHCONP1AZ2ELTC8010, DUKHCONI1AZ5HDGL7040, DUKHCONP1AZ9MSEX5335, DUKHCONP1AZ9ELTC8010, DUKHCONI1AZ5PSGL7015 FF+14d, DUKHCONP1AZ8ELTC8010, DUKHCONI1AZ5FFGL5210, DUKHCONI1AZ5WSGL5180, DUKHCONI1ASBGHGL7835, DUKHCONP1AZ3ELTC8010, DUKHCONP1AZ6ELTC8010, DUKHCONP1AZ7ELTC8010, DUKHCONP1AZ4ELTC8010, DUKHCONI1AZ5SLGL7210 FF+10d, DUKHCONI1AZ5STGL5260, DUKHCONI1AZ5TCGL5310, DUKHCONI1ASBTRGL7635, DUKHCONI1ASBIWGL7465, DUKHCONP1AZ5ELTC8010, DUKHCONP1AZ1ELTC8010 | 0d |  | LABOR- SUBCONTRACTOR [1200 h]; ELECTRICIANS SK [2400 h] | 224,738 |  | 1AP1ELEF00 | DUKHHAN1AP1EL009010 | DUKHHANP1AGNELTC9010 | DH | HAN | 1A |  |  |  | B02 | B02-D09 | RES-1A |
| DUKHHANP1AGNPLTC9005 |  | Submission & Clearance of Punch list, Final Testing &Commissioning of Plumbing/Drainage | 30d | 2014-12-15 | 2015-01-19 | DUKHCONP1AZ8ELTC8010, DUKHCONP1AZ1PLTC8005, DUKHCONI1AZ5SLGL7210 FF+10d, DUKHCONI1AZ5TCGL5310, DUKHCONP1AZ1ELTC8010, DUKHCONP1AZ4PLTC8005, DUKHCONP1AZ5PLTC8005, DUKHCONP1AZ9MSEX5335, DUKHCONP1AZ6ELTC8010, DUKHCONI1AZ5HDGL7040, DUKHCONI1ASBIWGL7465, DUKHCONP1AZ8PLTC8005, DUKHCONP1AZ4ELTC8010, DUKHCONI1AZ5STGL5260, DUKHCONI1AZ5PSGL7015 FF+14d, DUKHCONP1AZ3ELTC8010, DUKHCONP1AZ5ELTC8010, DUKHCONP1AZ9PLTC8005, DUKHCONP1AZ7ELTC8010, DUKHCONP1AZ2PLTC8005, DUKHCONI1AZ5WSGL5180, DUKHCONP1AZ3PLTC8005, DUKHCONP1AZ2ELTC8010, DUKHCONP1AZ9ELTC8010, DUKHCONP1AZ6PLTC8005, DUKHCONP1AZ7PLTC8005, DUKHCONI1AZ5FFGL5210, DUKHCONI1ASBGHGL7835, DUKHCONI1ASBTRGL7635 | 0d |  | LABOR- SUBCONTRACTOR [1200 h]; MECHANICALS SK [2400 h] | 44,104 |  | 1AP1PLUF00 | DUKHHAN1AP1PL009005 | DUKHHANP1AGNPLTC9005 | DH | HAN | 1A |  |  |  | B02 | B02-D07 | RES-1A |
| DUKHHANP1AGNAB009015 |  | Submission & Approval of As-Built Drawings & O&M Manuals | 20d | 2015-01-08 | 2015-01-31 | DUKHHANP1AGNACTC9000 SS+10d, DUKHHANP1AGNPLTC9005 SS+10d, DUKHHANP1AGNACTC9000 FF+10d, DUKHHANP1AGNPLTC9005 FF+10d, DUKHHANP1AGNELTC9010 FF+10d, DUKHHANP1AGNELTC9010 SS+10d | 0d |  | DRAFTMAN SK [320 h] | 39,549 |  | 1APHAND110 | DUKHHAN1AGN00009015 | DUKHHANP1AGNAB009015 | DH | HAN | 1A |  |  |  | B01 | B01-D01 | RES-1A |
| DUKHHANP1AGNDM009020 |  | Demobilization & Handing Over | 60d | 2015-01-20 | 2015-03-31 | DUKHHANP1AGNELTC9010, DUKHHANP1AGNACTC9000, DUKHHANP1AGNPLTC9005, DUKHHANP1AGNAB009015 FF+10d, DUKHHANP1AGNAB009015 SS+10d | 0d |  | LABOR- SUBCONTRACTOR [6000 h]; LABOR - CIVIL [300 h]; DRAFTMAN SK [200 h]; AC TECHNICIAN SK [2400 h]; ELECTRICIANS SK [4800 h]; MECHANICALS SK [4800 h] | 471,960 |  | 1APHAND120 | DUKHHAN1AGN00009020 | DUKHHANP1AGNDM009020 | DH | HAN | 1A |  |  |  | B01 | B01-D01 | RES-1A |

Notes:
- DUKHCONI03SBGHGL7800: Expenses: I03-Hard and soft landscaping 3352
- DUKHCONI03SBGHGL7805: Expenses: I03-Hard and soft landscaping 13408
- DUKHCONI03SBGHGL7810: Expenses: I03-Hard and soft landscaping 13408
- DUKHCONI03SBGHGL7815: Expenses: I03-Hard and soft landscaping 13408
- DUKHCONI03SBGHGL7820: Expenses: I03-Hard and soft landscaping 7449
- DUKHCONI03SBGHGL7825: Expenses: I03-Hard and soft landscaping 7449
- DUKHCONI03SBGHGL7830: Expenses: I03-Hard and soft landscaping 7449
- DUKHCONI03SBGHGL7835: Expenses: I03-Hard and soft landscaping 2793
- DUKHCONI03SBGZGL7900: Expenses: I03-Hard and soft landscaping 4276
- DUKHCONI03SBGZGL7905: Expenses: I03-Hard and soft landscaping 42754
- DUKHCONI03SBGZGL7915: Expenses: I03-Hard and soft landscaping 76958
- DUKHCONI03SBGZGL7910: Expenses: I03-Hard and soft landscaping 17102
- DUKHCONI03SBPGGL7940: Expenses: I03-Hard and soft landscaping 424634
- DUKHCONI03SBPGGL7945: Expenses: I03-Hard and soft landscaping 424633
- DUKHHANP1AGNACTC9000: Expenses: P1A-Air-conditioning and Ventilation works 19610
- DUKHHANP1AGNELTC9010: Expenses: P1A-Electrical Installations 224738
- DUKHHANP1AGNPLTC9005: Expenses: P1A-Plumbing and Drainage works 44104
- DUKHHANP1AGNAB009015: Expenses: GEN-Preliminaries for all Packages 39549
- DUKHHANP1AGNDM009020: Expenses: GEN-Preliminaries for all Packages 471960

| ID | WBS | Activity | Duration | Start | Finish | Predecessors | Total float | Resources | Cost | P3 ACTID | P6 ID (old) | NP61D | PROJECT | PHASES | PACKAGE | BILL NOS | BILL DIVISION | RES PACK |
| --- | --- | --- | --- | --- | --- | --- | --- | --- | --- | --- | --- | --- | --- | --- | --- | --- | --- | --- |
|  | L25 | **PACKAGE-1B** |  | 2014-12-15 | 2015-03-31 |  |  |  |  |  |  |  |  |  |  |  |  |  |
| DUKHHANP1BGNACTC9000 |  | Submission & Clearance of Punch list,Final Testing & Commissioning of AC Works | 30d | 2014-12-15 | 2015-01-19 | DUKHCONP1BZ5ACTC8000, DUKHCONP1BZ3ACTC8000, DUKHCONI1BZ4PSGL7015 FF+9d, DUKHCONP1BZ4ACTC8000, DUKHCONI1BSBIWGL7465, DUKHCONP1BZ6ACTC8000, DUKHCONI1BSBTRGL7635, DUKHCONP1BZ1ACTC8000, DUKHCONI1BZ4HDGL7040, DUKHCONP1BZ2ACTC8000, DUKHCONI1BSBGHGL7835 | 0d | LABOR- SUBCONTRACTOR [600 h]; AC TECHNICIAN SK [1200 h] | 7,332 | 1BP1ACUF00 | DUKHHAN1BP1AC009000 | DUKHHANP1BGNACTC9000 | DH | HAN | 1B | B04 | B04-D08 | RES-1B |
| DUKHHANP1BGNELTC9010 |  | Submission & Clearance Punch list,Final Testing & Commissioning of Electrical Works | 30d | 2014-12-15 | 2015-01-19 | DUKHCONP1BZ2ELTC8010, DUKHCONP1BZ3ELTC8010, DUKHCONP1BZ4MSEX5335, DUKHCONI1BZ4FFGL5210, DUKHCONI1BZ4PSGL7015 FF+9d, DUKHCONI1BSBIWGL7465, DUKHCONI1BZ4HDGL7040, DUKHCONI1BZ4WSGL5180, DUKHCONP1BZ1ELTC8010, DUKHCONP1BZ4ELTC8010, DUKHCONP1BZ6MSEX5335, DUKHCONP1BZ6ELTC8010, DUKHCONI1BZ4STGL5260, DUKHCONP1BZ5ELTC8010, DUKHCONI1BSBTRGL7635, DUKHCONP1BZ5MSEX5335, DUKHCONI1BSBGHGL7835, DUKHCONI1BZ4TCGL5310 | 0d | LABOR- SUBCONTRACTOR [1200 h]; ELECTRICIANS SK [2400 h] | 179,192 | 1BP1ELEF00 | DUKHHAN1BP1EL009010 | DUKHHANP1BGNELTC9010 | DH | HAN | 1B | B04 | B04-D09 | RES-1B |
| DUKHHANP1BGNPLTC9005 |  | Submission & Clearance of Punch list, Final Testing &Commissioning of Plumbing/Drainage | 30d | 2014-12-15 | 2015-01-19 | DUKHCONI1BSBIWGL7465, DUKHCONP1BZ5MSEX5335, DUKHCONP1BZ5ELTC8010, DUKHCONP1BZ1ELTC8010, DUKHCONP1BZ1PLTC8005, DUKHCONP1BZ4PLTC8005, DUKHCONP1BZ6ELTC8010, DUKHCONI1BZ4HDGL7040, DUKHCONP1BZ4MSEX5335, DUKHCONP1BZ6PLTC8005, DUKHCONI1BSBGHGL7835, DUKHCONI1BZ4STGL5260, DUKHCONI1BZ4PSGL7015 FF+9d, DUKHCONP1BZ5PLTC8005, DUKHCONP1BZ4ELTC8010, DUKHCONI1BZ4SLGL7210, DUKHCONP1BZ2ELTC8010, DUKHCONP1BZ6MSEX5335, DUKHCONI1BSBTRGL7635, DUKHCONI1BZ4TCGL5310, DUKHCONP1BZ3ELTC8010, DUKHCONP1BZ2PLTC8005, DUKHCONP1BZ3PLTC8005, DUKHCONI1BZ4FFGL5210, DUKHCONI1BZ4WSGL5180 | 0d | LABOR- SUBCONTRACTOR [1200 h]; MECHANICALS SK [2400 h] | 22,828 | 1BP1PLUF00 | DUKHHAN1BP1PL009005 | DUKHHANP1BGNPLTC9005 | DH | HAN | 1B | B04 | B04-D07 | RES-1B |
| DUKHHANP1BGNAB009015 |  | Submission & Approval of As-Built Drawings & O&M Manuals | 20d | 2015-01-08 | 2015-01-31 | DUKHHANP1BGNPLTC9005 FF+10d, DUKHHANP1BGNPLTC9005 SS+10d, DUKHHANP1BGNACTC9000 SS+10d, DUKHHANP1BGNELTC9010 SS+10d, DUKHHANP1BGNACTC9000 FF+10d, DUKHHANP1BGNELTC9010 FF+10d | 0d | DRAFTMAN SK [320 h] | 29,794 | 1BPHAND110 | DUKHHAN1BGN00009015 | DUKHHANP1BGNAB009015 | DH | HAN | 1B | B01 | B01-D01 | RES-1B |
| DUKHHANP1BGNDM009020 |  | Demobilization & Handing Over | 60d | 2015-01-20 | 2015-03-31 | DUKHHANP1BGNACTC9000, DUKHHANP1BGNPLTC9005, DUKHHANP1BGNAB009015 FF+10d, DUKHHANP1BGNAB009015 SS+10d, DUKHHANP1BGNELTC9010 | 0d | LABOR- SUBCONTRACTOR [6000 h]; LABOR - CIVIL [300 h]; DRAFTMAN SK [200 h]; AC TECHNICIAN SK [2400 h]; ELECTRICIANS SK [4800 h]; MECHANICALS SK [4800 h] | 356,040 | 1BPHAND120 | DUKHHAN1BGN00009020 | DUKHHANP1BGNDM009020 | DH | HAN | 1B | B01 | B01-D01 | RES-1B |
|  | L35 | **PACKAGE-2A** |  | 2014-06-15 | 2014-09-30 |  |  |  |  |  |  |  |  |  |  |  |  |  |
| DUKHHANP2AGNACTC9000 |  | Submission & Clearance of Punch list,Final Testing & Commissioning of AC Works | 30d | 2014-06-15 | 2014-07-19 | DUKHCONI2AZ2TCGL5310, DUKHCONI2AZ2STGL5260, DUKHCONP2AZ1ACTC8000, DUKHCONI2AZ2WSGL5180, DUKHCONP2AZ2MSEX5335, DUKHCONP2AZ2ACTC8000, DUKHCONI2ASBIWGL7465, DUKHCONI2AZ2FFGL5210, DUKHCONP2AZ2ELTC8010, DUKHHANP2AGNELTC9010 FF, DUKHCONP2AZ1ELTC8010 | 0d | LABOR- SUBCONTRACTOR [600 h]; AC TECHNICIAN SK [1200 h] | 1,308 | 2AP1ACUF00 | DUKHHAN2AP1AC009000 | DUKHHANP2AGNACTC9000 | DH | HAN | 2A | B06 | B06-D08 | RSE-2A |
| DUKHHANP2AGNELTC9010 |  | Submission & Clearance Punch list,Final Testing & Commissioning of Electrical Works | 30d | 2014-06-15 | 2014-07-19 | DUKHCONI2AZ2WSGL5180, DUKHCONI2AZ2TCGL5310, DUKHCONI2AZ2PSGL7015 FF+12d, DUKHCONP2AZ2ELTC8010, DUKHCONI2AZ2FFGL5210, DUKHCONI2AZ2HDGL7040, DUKHCONP2AZ1ELTC8010, DUKHCONI2ASBIWGL7465, DUKHCONI2AZ2STGL5260, DUKHCONP2AZ2MSEX5335 | 0d | LABOR- SUBCONTRACTOR [1200 h]; ELECTRICIANS SK [2400 h] | 21,612 | 2AP1ELEF00 | DUKHHAN2AP1EL009010 | DUKHHANP2AGNELTC9010 | DH | HAN | 2A | B06 | B06-D09 | RSE-2A |
| DUKHHANP2AGNPLTC9005 |  | Submission & Clearance of Punch list, Final Testing &Commissioning of Plumbing/Drainage | 30d | 2014-06-15 | 2014-07-19 | DUKHCONP2AZ1PLTC8005, DUKHHANP2AGNELTC9010 FF, DUKHCONI2AZ2HDGL7040 FF, DUKHCONI2AZ2STGL5260, DUKHCONI2AZ2WSGL5180, DUKHCONP2AZ2MSEX5335, DUKHCONP2AZ2PLTC8005, DUKHCONI2ASBIWGL7465, DUKHCONI2AZ2SLGL7210 FF+10d, DUKHCONI2AZ2TCGL5310, DUKHCONI2AZ2FFGL5210 | 0d | LABOR- SUBCONTRACTOR [1200 h]; MECHANICALS SK [2400 h] | 3,864 | 2AP1PLUF00 | DUKHHAN2AP1PL009005 | DUKHHANP2AGNPLTC9005 | DH | HAN | 2A | B06 | B06-D07 | RSE-2A |
| DUKHHANP2AGNAB009015 |  | Submission & Approval of As-Built Drawings & O&M Manuals | 20d | 2014-07-08 | 2014-07-30 | DUKHHANP2AGNELTC9010 FF+10d, DUKHHANP2AGNACTC9000 FF+10d, DUKHHANP2AGNPLTC9005 SS+10d, DUKHHANP2AGNELTC9010 SS+10d, DUKHHANP2AGNACTC9000 SS+10d, DUKHHANP2AGNPLTC9005 FF+10d | 0d | DRAFTMAN SK [320 h] | 4,769 | 2APHAND110 | DUKHHAN2AGN00009015 | DUKHHANP2AGNAB009015 | DH | HAN | 2A | B01 | B01-D01 | RSE-2A |
| DUKHHANP2AGNDM009020 |  | Demobilization & Handing Over | 60d | 2014-07-20 | 2014-09-30 | DUKHHANP2AGNAB009015 FF+10d, DUKHHANP2AGNAB009015 SS+10d, DUKHHANP2AGNACTC9000, DUKHHANP2AGNELTC9010, DUKHHANP2AGNPLTC9005 | 0d | LABOR- SUBCONTRACTOR [6000 h]; LABOR - CIVIL [4800 h]; DRAFTMAN SK [480 h]; AC TECHNICIAN SK [2400 h]; ELECTRICIANS SK [4800 h]; MECHANICALS SK [4800 h] | 56,760 | 2APHAND120 | DUKHHAN2AGN00009020 | DUKHHANP2AGNDM009020 | DH | HAN | 2A | B01 | B01-D01 | RSE-2A |
|  | L40 | **PACKAGE-2B** |  | 2014-06-15 | 2014-09-30 |  |  |  |  |  |  |  |  |  |  |  |  |  |
| DUKHHANP2BGNACTC9000 |  | Submission & Clearance of Punch list,Final Testing & Commissioning of AC Works | 30d | 2014-06-15 | 2014-07-19 | DUKHCONI2BZ2TCGL5310, DUKHCONP2BZ5ELTC8010, DUKHCONP2BZ5MSEX5335 FF+10d, DUKHCONI2BZ2WSGL5180, DUKHCONP2BZ4ELTC8010, DUKHCONP2BZ3ELTC8010, DUKHCONP2BZ4ACTC8000, DUKHCONP2BZ5ACTC8000, DUKHCONI2BZ2SLGL7210 FF, DUKHCONI2BZ2FFGL5210, DUKHCONI2BZ2STGL5260, DUKHCONI2BSBIWGL7465, DUKHCONP2BZ3ACTC8000, DUKHCONI2BZ2PSGL7015 FF+10d | 0d | LABOR- SUBCONTRACTOR [600 h]; AC TECHNICIAN SK [1200 h] | 1,170 | 2BP3ACUF00 | DUKHHAN2BP3AC009000 | DUKHHANP2BGNACTC9000 | DH | HAN | 2B | B08 | B08-D08 | RES-2B |
| DUKHHANP2BGNELTC9010 |  | Submission & Clearance Punch list,Final Testing & Commissioning of Electrical Works | 30d | 2014-06-15 | 2014-07-19 | DUKHCONI2BZ2HDGL7040, DUKHCONI2BSBIWGL7465, DUKHCONP2BZ4MSEX5335, DUKHCONI2BZ2PSGL7015, DUKHCONI2BZ2FFGL5210, DUKHCONP2BZ5ELTC8010, DUKHCONP2BZ5MSEX5335, DUKHCONP2BZ4ELTC8010, DUKHCONI2BZ2STGL5260, DUKHCONP2BZ3ELTC8010, DUKHCONI2BZ2TCGL5310 | 0d | LABOR- SUBCONTRACTOR [1200 h]; ELECTRICIANS SK [2400 h] | 32,436 | 2BP3ELEF00 | DUKHHAN2BP3EL009010 | DUKHHANP2BGNELTC9010 | DH | HAN | 2B | B08 | B08-D09 | RES-2B |
| DUKHHANP2BGNPLTC9005 |  | Submission & Clearance of Punch list, Final Testing &Commissioning of Plumbing/Drainage | 30d | 2014-06-15 | 2014-07-19 | DUKHCONP2BZ3PLTC8005, DUKHCONP2BZ5MSEX5335, DUKHCONI2BZ2STGL5260, DUKHCONP2BZ4PLTC8005, DUKHCONI2BZ2HDGL7040, DUKHCONI2BSBIWGL7465, DUKHCONI2BZ2TCGL5310, DUKHCONI2BZ2FFGL5210, DUKHCONP2BZ5PLTC8005, DUKHCONI2BZ2PSGL7015, DUKHCONI2BZ2SLGL7210, DUKHCONI2BZ2WSGL5180 | 0d | LABOR- SUBCONTRACTOR [1200 h]; MECHANICALS SK [2400 h] | 5,796 | 2BP3PLUF00 | DUKHHAN2BP3PL009005 | DUKHHANP2BGNPLTC9005 | DH | HAN | 2B | B08 | B08-D07 | RES-2B |
| DUKHHANP2BGNAB009015 |  | Submission & Approval of As-Built Drawings & O&M Manuals | 20d | 2014-07-08 | 2014-07-30 | DUKHHANP2BGNPLTC9005 FF+10d, DUKHHANP2BGNPLTC9005 SS+10d, DUKHHANP2BGNACTC9000 SS+10d, DUKHHANP2BGNACTC9000 FF+10d, DUKHHANP2BGNELTC9010 FF+10d, DUKHHANP2BGNELTC9010 SS+10d | 0d | DRAFTMAN SK [320 h] | 6,322 | 2BPHAND110 | DUKHHAN2BGN00009015 | DUKHHANP2BGNAB009015 | DH | HAN | 2B | B01 | B01-D01 | RES-2B |
| DUKHHANP2BGNDM009020 |  | Demobilization & Handing Over | 60d | 2014-07-20 | 2014-09-30 | DUKHHANP2BGNAB009015 FF+10d, DUKHHANP2BGNPLTC9005, DUKHHANP2BGNACTC9000, DUKHHANP2BGNELTC9010, DUKHHANP2BGNAB009015 SS+10d | 0d | LABOR - CIVIL [4800 h]; DRAFTMAN SK [480 h]; AC TECHNICIAN SK [2400 h]; ELECTRICIANS SK [4800 h]; MECHANICALS SK [4800 h]; LABOR- SUBCONTRACTOR [6000 h] | 75,240 | 2BPHAND120 | DUKHHAN2BGN00009020 | DUKHHANP2BGNDM009020 | DH | HAN | 2B | B01 | B01-D01 | RES-2B |
|  | L45 | **PACKAGE-3** |  | 2014-08-16 | 2014-11-30 |  |  |  |  |  |  |  |  |  |  |  |  |  |
| DUKHHANP03GNACTC9000 |  | Submission & Clearance of Punch list,Final Testing & Commissioning of AC Works | 30d | 2014-08-16 | 2014-09-18 | DUKHCONP03Z4ELTC8010, DUKHCONP03Z3ELTC8010, DUKHCONI03Z3FFGL5210, DUKHCONP03Z2ACTC8000, DUKHCONI03SBTRGL7635, DUKHCONI03Z3TCGL5310, DUKHCONP03Z1ACTC8000, DUKHCONI03Z3STGL5260, DUKHCONI03Z3PSGL7015, DUKHCONI03SBIWGL7465, DUKHCONI03SBGHGL7835, DUKHCONP03Z5ACTC8000, DUKHCONI03SBPGGL7945, DUKHCONP03Z3ACTC8000, DUKHCONP03Z4ACTC8000, DUKHCONI03Z3HDGL7040 | 0d | LABOR- SUBCONTRACTOR [600 h]; AC TECHNICIAN SK [1200 h] | 3,045 | P3P1ACUF00 | DUKHHAN3PP1AC009000 | DUKHHANP03GNACTC9000 | DH | HAN | P3 | B10 | B10-D08 | RES-3 |
| DUKHHANP03GNELTC9010 |  | Submission & Clearance Punch list,Final Testing & Commissioning of Electrical Works | 30d | 2014-08-16 | 2014-09-18 | DUKHCONI03Z3WSGL5180, DUKHCONI03SBGHGL7835, DUKHCONI03Z3STGL5260, DUKHCONI03Z3TCGL5310, DUKHCONP03Z3ELTC8010, DUKHCONI03Z3FFGL5210, DUKHCONI03Z3SLGL7210, DUKHCONI03Z3HDGL7040, DUKHCONI03SBTRGL7635, DUKHCONP03Z4ELTC8010, DUKHCONI03Z3PSGL7015, DUKHCONP03Z2ELTC8010, DUKHCONP03Z5ELTC8010, DUKHCONI03SBIWGL7465, DUKHCONI03SBPGGL7945, DUKHCONP03Z1ELTC8010 | 0d | LABOR- SUBCONTRACTOR [1200 h]; ELECTRICIANS SK [2400 h] | 104,445 | P3P1ELEF00 | DUKHHAN3PP1EL009010 | DUKHHANP03GNELTC9010 | DH | HAN | P3 | B10 | B10-D09 | RES-3 |
| DUKHHANP03GNPLTC9005 |  | Submission & Clearance of Punch list, Final Testing &Commissioning of Plumbing/Drainage | 30d | 2014-08-16 | 2014-09-18 | DUKHCONI03Z3FFGL5210, DUKHCONI03Z3TCGL5310, DUKHCONI03SBIWGL7465, DUKHCONI03SBPGGL7945, DUKHCONP03Z4PLTC8005, DUKHCONI03Z3WSGL5180, DUKHCONP03Z2PLTC8005, DUKHCONI03SBGHGL7835, DUKHCONP03Z1PLTC8005, DUKHCONP03Z5PLTC8005, DUKHCONP03Z3PLTC8005, DUKHCONI03Z3PSGL7015, DUKHCONI03Z3SLGL7210, DUKHCONI03Z3HDGL7040, DUKHCONI03SBTRGL7635 | 0d | LABOR- SUBCONTRACTOR [1200 h]; MECHANICALS SK [2400 h] | 19,695 | P3P1PLUF00 | DUKHHAN3PP1PL009005 | DUKHHANP03GNPLTC9005 | DH | HAN | P3 | B10 | B10-D07 | RES-3 |
| DUKHHANP03GNAB009015 |  | Submission & Approval of As-Built Drawings & O&M Manuals | 20d | 2014-09-08 | 2014-09-30 | DUKHHANP03GNPLTC9005 SS+10d, DUKHHANP03GNACTC9000 FF+10d, DUKHHANP03GNELTC9010 SS+10d, DUKHHANP03GNACTC9000 SS+10d, DUKHHANP03GNELTC9010 FF+10d, DUKHHANP03GNPLTC9005 FF+10d | 0d | DRAFTMAN SK [320 h] | 19,566 | P3PHAND110 | DUKHHAN3PGN00009015 | DUKHHANP03GNAB009015 | DH | HAN | P3 | B01 | B01-D01 | RES-3 |
| DUKHHANP03GNDM009020 |  | Demobilization & Handing Over | 60d | 2014-09-20 | 2014-11-30 | DUKHHANP03GNAB009015 SS+10d, DUKHHANP03GNPLTC9005, DUKHHANP03GNACTC9000, DUKHHANP03GNAB009015 FF+10d, DUKHHANP03GNELTC9010 | 0d | LABOR- SUBCONTRACTOR [6000 h]; LABOR - CIVIL [960 h]; DRAFTMAN SK [480 h]; AC TECHNICIAN SK [2400 h]; ELECTRICIANS SK [4800 h]; MECHANICALS SK [4800 h] | 240,000 | P3PHAND120 | DUKHHAN3PGN00009020 | DUKHHANP03GNDM009020 | DH | HAN | P3 | B01 | B01-D01 | RES-3 |

Notes:
- DUKHHANP1BGNACTC9000: Expenses: P1B-Air-conditioning and Ventilation works 7332
- DUKHHANP1BGNELTC9010: Expenses: P1B-Electrical Installations 179192
- DUKHHANP1BGNPLTC9005: Expenses: P1B-Plumbing and Drainage works 22828
- DUKHHANP1BGNAB009015: Expenses: GEN-Preliminaries for all Packages 29794
- DUKHHANP1BGNDM009020: Expenses: GEN-Preliminaries for all Packages 356040
- DUKHHANP2AGNACTC9000: Expenses: P2A-Air-conditioning and Ventilation works 1308
- DUKHHANP2AGNELTC9010: Expenses: P2A-Electrical Installations 21612
- DUKHHANP2AGNPLTC9005: Expenses: P2A-Plumbing and Drainage works 3864
- DUKHHANP2AGNAB009015: Expenses: GEN-Preliminaries for all Packages 4769
- DUKHHANP2AGNDM009020: Expenses: GEN-Preliminaries for all Packages 56760
- DUKHHANP2BGNACTC9000: Expenses: P2B-Air-conditioning and Ventilation works 1170
- DUKHHANP2BGNELTC9010: Expenses: P2B-Electrical Installations 32436
- DUKHHANP2BGNPLTC9005: Expenses: P2B-Plumbing and Drainage works 5796
- DUKHHANP2BGNAB009015: Expenses: GEN-Preliminaries for all Packages 6322
- DUKHHANP2BGNDM009020: Expenses: GEN-Preliminaries for all Packages 75240
- DUKHHANP03GNACTC9000: Expenses: P03-Air-conditioning and Ventilation works 3045
- DUKHHANP03GNELTC9010: Expenses: P03-Electrical Installations 104445
- DUKHHANP03GNPLTC9005: Expenses: P03-Plumbing and Drainage works 19695
- DUKHHANP03GNAB009015: Expenses: GEN-Preliminaries for all Packages 19566
- DUKHHANP03GNDM009020: Expenses: GEN-Preliminaries for all Packages 240000

## Activity codes

| Code | Value | Meaning |
| --- | --- | --- |
| BILL DIVISION | B01-D01 | PRELIMINARIES |
| BILL DIVISION | B02-D01 | EXCAVATION AND EARTH WORK |
| BILL DIVISION | B02-D02 | CONCRETE WORK |
| BILL DIVISION | B02-D03 | BLOCK WORK |
| BILL DIVISION | B02-D04 | ROOFING |
| BILL DIVISION | B02-D05 | CARPENTRY AND JOINERY |
| BILL DIVISION | B02-D06 | METAL WORK |
| BILL DIVISION | B02-D07 | PLUMBING AND DRAINAGE WORKS |
| BILL DIVISION | B02-D08 | AIR-CONDITIONING AND VENTILATION WORKS |
| BILL DIVISION | B02-D09 | ELECTRICAL INSTALLATIONS |
| BILL DIVISION | B02-D10 | FINISHES |
| BILL DIVISION | B02-D11 | PAINTING AND DECORATING |
| BILL DIVISION | B02-D12 | EXTERNAL WORKS WITHIN THE PLOT CURTILAGE |
| BILL DIVISION | B02-D13 | PROVISIONAL SUMS |
| BILL DIVISION | B03-D01 | PROVISIONAL SUMS |
| BILL DIVISION | B03-D02 | DEMOLITION |
| BILL DIVISION | B03-D03 | SITE CLEARANCE, GENERAL EXCAVATION AND EARTHWORK |
| BILL DIVISION | B03-D04 | ELECTRICAL, POWER SUPPLY AND DISTRIBUTION |
| BILL DIVISION | B03-D05 | TELECOMMUNICATION |
| BILL DIVISION | B03-D06 | SURFACE WATER DRAINAGE AND SEWERAGE SYSTEM |
| BILL DIVISION | B03-D07 | WATER SUPPLY SYSTEM |
| BILL DIVISION | B03-D08 | ROAD WORK |
| BILL DIVISION | B03-D09 | STREET LIGHTING |
| BILL DIVISION | B03-D10 | SUBSTATION |
| BILL DIVISION | B03-D11 | HARD AND SOFT LANDSCAPING |
| BILL DIVISION | B04-D01 | EXCAVATION AND EARTH WORK |
| BILL DIVISION | B04-D02 | CONCRETE WORK |
| BILL DIVISION | B04-D03 | BLOCK WORK |
| BILL DIVISION | B04-D04 | ROOFING |
| BILL DIVISION | B04-D05 | CARPENTRY AND JOINERY |
| BILL DIVISION | B04-D06 | METAL WORK |
| BILL DIVISION | B04-D07 | PLUMBING AND DRAINAGE WORKS |
| BILL DIVISION | B04-D08 | AIR-CONDITIONING AND VENTILATION WORKS |
| BILL DIVISION | B04-D09 | ELECTRICAL INSTALLATIONS |
| BILL DIVISION | B04-D10 | FINISHES |
| BILL DIVISION | B04-D11 | PAINTING AND DECORATING |
| BILL DIVISION | B04-D12 | EXTERNAL WORKS WITHIN THE PLOT CURTILAGE |
| BILL DIVISION | B04-D13 | PROVISIONAL SUMS |
| BILL DIVISION | B05-D01 | PROVISIONAL SUMS |
| BILL DIVISION | B05-D02 | DEMOLITION |
| BILL DIVISION | B05-D03 | SITE CLEARANCE, GENERAL EXCAVATION AND EARTHWORK |
| BILL DIVISION | B05-D04 | ELECTRICAL, POWER SUPPLY AND DISTRIBUTION |
| BILL DIVISION | B05-D05 | TELECOMMUNICATION |
| BILL DIVISION | B05-D06 | SURFACE WATER DRAINAGE AND SEWERAGE SYSTEM |
| BILL DIVISION | B05-D07 | WATER SUPPLY SYSTEM |
| BILL DIVISION | B05-D08 | ROAD WORK |
| BILL DIVISION | B05-D09 | STREET LIGHTING |
| BILL DIVISION | B05-D10 | HARD AND SOFT LANDSCAPING |
| BILL DIVISION | B06-D01 | EXCAVATION AND EARTH WORK |
| BILL DIVISION | B06-D02 | CONCRETE WORK |
| BILL DIVISION | B06-D03 | BLOCK WORK |
| BILL DIVISION | B06-D04 | ROOFING |
| BILL DIVISION | B06-D05 | CARPENTRY AND JOINERY |
| BILL DIVISION | B06-D06 | METAL WORK |
| BILL DIVISION | B06-D07 | PLUMBING AND DRAINAGE WORKS |
| BILL DIVISION | B06-D08 | AIR-CONDITIONING AND VENTILATION WORKS |
| BILL DIVISION | B06-D09 | ELECTRICAL INSTALLATIONS |
| BILL DIVISION | B06-D10 | FINISHES |
| BILL DIVISION | B06-D11 | PAINTING AND DECORATING |
| BILL DIVISION | B06-D12 | EXTERNAL WORKS WITHIN THE PLOT CURTILAGE |
| BILL DIVISION | B06-D13 | PROVISIONAL SUMS |
| BILL DIVISION | B07-D01 | PROVISIONAL SUMS |
| BILL DIVISION | B07-D02 | DEMOLITION |
| BILL DIVISION | B07-D03 | SITE CLEARANCE, GENERAL EXCAVATION AND EARTHWORK |
| BILL DIVISION | B07-D04 | ELECTRICAL, POWER SUPPLY AND DISTRIBUTION |
| BILL DIVISION | B07-D05 | TELECOMMUNICATION |
| BILL DIVISION | B07-D06 | SURFACE WATER DRAINAGE AND SEWERAGE SYSTEM |
| BILL DIVISION | B07-D07 | WATER SUPPLY SYSTEM |
| BILL DIVISION | B07-D08 | ROADWORK |
| BILL DIVISION | B07-D09 | STREET LIGHTING |
| BILL DIVISION | B07-D10 | HARD AND SOFT LANDSCAPING |
| BILL DIVISION | B08-D01 | EXCAVATION AND EARTH WORK |
| BILL DIVISION | B08-D02 | CONCRETE WORK |
| BILL DIVISION | B08-D03 | BLOCK WORK |
| BILL DIVISION | B08-D04 | ROOFING |
| BILL DIVISION | B08-D05 | CARPENTRY AND JOINERY |
| BILL DIVISION | B08-D06 | METAL WORK |
| BILL DIVISION | B08-D07 | PLUMBING AND DRAINAGE WORKS |
| BILL DIVISION | B08-D08 | AIR-CONDITIONING AND VENTILATION WORKS |
| BILL DIVISION | B08-D09 | ELECTRICAL INSTALLATIONS |
| BILL DIVISION | B08-D10 | FINISHES |
| BILL DIVISION | B08-D11 | PAINTING AND DECORATING |
| BILL DIVISION | B08-D12 | EXTERNAL WORKS WITHIN THE PLOT CURTILAGE |
| BILL DIVISION | B08-D13 | PROVISIONAL SUMS |
| BILL DIVISION | B09-D01 | PROVISIONAL SUMS |
| BILL DIVISION | B09-D02 | DEMOLITION |
| BILL DIVISION | B09-D03 | SITE CLEARANCE, GENERAL EXCAVATION AND EARTHWORK |
| BILL DIVISION | B09-D04 | ELECTRICAL, POWER SUPPLY AND DISTRIBUTION |
| BILL DIVISION | B09-D05 | TELECOMMUNICATION |
| BILL DIVISION | B09-D06 | SURFACE WATER DRAINAGE AND SEWERAGE SYSTEM |
| BILL DIVISION | B09-D07 | WATER SUPPLY SYSTEM |
| BILL DIVISION | B09-D08 | ROADWORK |
| BILL DIVISION | B09-D09 | STREET LIGHTING |
| BILL DIVISION | B09-D10 | HARD AND SOFT LANDSCAPING |
| BILL DIVISION | B10-D01 | EXCAVATION AND EARTH WORK |
| BILL DIVISION | B10-D02 | CONCRETE WORK |
| BILL DIVISION | B10-D03 | BLOCK WORK |
| BILL DIVISION | B10-D04 | ROOFING |
| BILL DIVISION | B10-D05 | CARPENTRY AND JOINERY |
| BILL DIVISION | B10-D06 | METAL WORK |
| BILL DIVISION | B10-D07 | PLUMBING AND DRAINAGE WORKS |
| BILL DIVISION | B10-D08 | AIR-CONDITIONING AND VENTILATION WORKS |
| BILL DIVISION | B10-D09 | ELECTRICAL INSTALLATIONS |
| BILL DIVISION | B10-D10 | FINISHES |
| BILL DIVISION | B10-D11 | PAINTING AND DECORATING |
| BILL DIVISION | B10-D12 | EXTERNAL WORKS WITHIN THE PLOT CURTILAGE |
| BILL DIVISION | B10-D13 | PROVISIONAL SUMS |
| BILL DIVISION | B11-D01 | PROVISIONAL SUMS |
| BILL DIVISION | B11-D02 | DEMOLITION |
| BILL DIVISION | B11-D03 | SITE CLEARANCE, GENERAL EXCAVATION AND EARTHWORK |
| BILL DIVISION | B11-D04 | ELECTRICAL, POWER SUPPLY AND DISTRIBUTION |
| BILL DIVISION | B11-D05 | TELECOMMUNICATION |
| BILL DIVISION | B11-D06 | SURFACE WATER DRAINAGE AND SEWERAGE SYSTEM |
| BILL DIVISION | B11-D07 | WATER SUPPLY SYSTEM |
| BILL DIVISION | B11-D08 | ROADWORK |
| BILL DIVISION | B11-D09 | STREET LIGHTING |
| BILL DIVISION | B11-D10 | HARD AND SOFT LANDSCAPING |
| BILL NOS | B01 | PRELIMINARIES |
| BILL NOS | B02 | PACKAGE 1A - MODERN TYPE VILLAS |
| BILL NOS | B03 | PACKAGE 1A - INFRASTRUCTURE |
| BILL NOS | B04 | PACKAGE 1B - TRADITIONAL TYPE VILLAS |
| BILL NOS | B05 | PACKAGE 1B - INFRASTRUCTURE |
| BILL NOS | B06 | PACKAGE 2A - VILLAS |
| BILL NOS | B07 | PACKAGE 2A - INFRASTRUCTURE |
| BILL NOS | B08 | PACKAGE 2B - VILLAS |
| BILL NOS | B09 | PACKAGE 2B - INFRASTRUCTURE |
| BILL NOS | B10 | PACKAGE 3 - APARTMENTS |
| BILL NOS | B11 | PACKAGE 3 - INFRASTRUCTURE |
| ELEMENTS | 2APQ | 2ND APPROVAL PREQUALIFICATION |
| ELEMENTS | 2MAT | 2ND MATERIAL APPROVAL |
| ELEMENTS | 2SAT | 2ND SUBMISSION MATERIAL |
| ELEMENTS | 2SPQ | 2ND SUBMISSION PREQUALIFICATION |
| ELEMENTS | AMAT | APPROVAL OF MATERIAL |
| ELEMENTS | APRQ | APPROVAL OF PREQUALIFICATION |
| ELEMENTS | ARDW | ARCHITECTURAL DRAWINGS |
| ELEMENTS | ELDW | ELECTRICAL DRAWINGS |
| ELEMENTS | EX | EXTERNAL WORKS |
| ELEMENTS | FIN | FINISHING WORKS |
| ELEMENTS | FR | INFRA STRUCTURE WORKS |
| ELEMENTS | IFDW | INFRA STRUCTURE DRAWINGS |
| ELEMENTS | MEP | MEP WORKS |
| ELEMENTS | PLDW | PLUMBING,DRAINAGE,FIREFIGHTING & AC DRAWINGS |
| ELEMENTS | SMAT | SUBMISSION OF MATERIAL |
| ELEMENTS | SPRQ | SUBMISSION OF PREQUALIFICATION |
| ELEMENTS | ST | STRUCTURAL WORKS |
| ELEMENTS | STDW | STRUCTURAL DRAWINGS |
| ELEMENTS | TES | TESTING & COMMISSIONING |
| FLOORS | AC | AC ITEMS |
| FLOORS | CM | CENTRAL ALARM MONITORING SYSTEM |
| FLOORS | DR | DOORS & WINDOWS ITEMS |
| FLOORS | EC | ELECTRICAL ITEMS |
| FLOORS | EL | ELEVATION |
| FLOORS | FF | FIRST FLOORS |
| FLOORS | FG | FIRE FIGHTING ITEMS |
| FLOORS | FR | FLOOR ITEMS |
| FLOORS | FS | FALSE CEILING |
| FLOORS | GF | GROUND FLOOR |
| FLOORS | GL | GENERAL ITEMS |
| FLOORS | IN | INFRA STRUCTURE ITEMS |
| FLOORS | IR | SOFTLANDSCAPING & IRRIGATION |
| FLOORS | PB | PLUMBING ITEMS |
| FLOORS | PI | PAINTING ITEMS |
| FLOORS | RF | ROOF |
| FLOORS | SP | CARPENTERY ITEMS |
| FLOORS | TP | TELEPHONE & TELEVISION ITEMS |
| FLOORS | UG | UPTO GRADE SLAB |
| FLOORS | WI | EXTERNAL WITHIN THE PLOT |
| PACKAGE | 1A | PACKAGE-1A |
| PACKAGE | 1AF | PACKAGE-1A INFRASTRUCTURE WORKS |
| PACKAGE | 1B | PACKAGE-1B |
| PACKAGE | 1BF | PACKAGE-1B INFRASTRUCTURE WORKS |
| PACKAGE | 2A | PACKAGE-2A |
| PACKAGE | 2AF | PACKAGE-2A INFRASTRUCTURE WORKS |
| PACKAGE | 2B | PACKAGE-2B |
| PACKAGE | 2BF | PACKAGE-2B INFRASTRUCTURE WORKS |
| PACKAGE | 3IF | PACKAGE-3 INFRASTRUCTURE WORKS |
| PACKAGE | MO1 | MOBILIZATION PACKAGE-1 |
| PACKAGE | MO2 | MOBILIZATION PACKAGE-2 |
| PACKAGE | MO3 | MOBILIZATION PACKAGE-3 |
| PACKAGE | OA | GENERAL |
| PACKAGE | P3 | PACKAGE-3 |
| PART | DRWG | SHOP DRAWING SUBMISSION & APPROVAL |
| PART | MAT | MATERIAL SUBMITTAL & APPROVAL |
| PART | MK | MOCKUP VILLA |
| PART | OB | SECONDARY BULIDINGS |
| PART | PM | PROVISIONAL SUM |
| PART | PRO | MANUFACTURING,PROCUREMENT & DELIVERY |
| PART | PRQ | PREQUALIFICATION SUBMITTAL & APPROVAL |
| PART | SP | SITE PREPARATORY WORKS |
| PART | Z1 | ZONE-1 |
| PART | Z2 | ZONE-2 |
| PART | Z3 | ZONE-3 |
| PART | Z4 | ZONE-4 |
| PART | Z5 | ZONE-5 |
| PART | Z6 | ZONE-6 |
| PART | Z7 | ZONE-7 |
| PART | Z8 | ZONE-8 |
| PART | Z9 | ZONE-9 |
| PHASES | CON | CONSTRUCTION |
| PHASES | ENG | ENGINEERING |
| PHASES | HAN | HANDING OVER |
| PHASES | KYD | KEY DATES & MILESTONE |
| PHASES | MOB | MOBILIZATION |
| PHASES | PRO | PROCUREMENT |
| PROJECT | DH | DUKHAN HOUSING PROJECT IX |
| RES PACK | RES-1A | PACKAGE-1A |
| RES PACK | RES-1B | PACKAGE-1B |
| RES PACK | RES-2B | PACKAGE-2B |
| RES PACK | RES-3 | PACKAGE-3 |
| RES PACK | RSE-2A | PACKGAE-2A |
| STEP | AC | AC WORKS |
| STEP | APP | APPROVAL OF DRAWINGS |
| STEP | BW | BOUNDARY WALL |
| STEP | DR | DRAINAGE LINES |
| STEP | EC | ELECTRICAL LINES |
| STEP | EF | EXTERNAL FINISHES |
| STEP | EW | ELECTRICAL WORKS |
| STEP | FF | FIREFIGHTING LINES |
| STEP | FI | ARCH. ITEM |
| STEP | GH | GUARD HOUSE |
| STEP | GZ | GAZEBO |
| STEP | HD | HARD LANDSCAPING |
| STEP | IF | INTERNAL FINISHES |
| STEP | IR | IRRIGATION LINES |
| STEP | IW | IRRIGATION WATER TANK & PUMP ROOM |
| STEP | MP | MEP ITEMS |
| STEP | MS | MISCELLANEOUS |
| STEP | PG | PLAY GROUND |
| STEP | PL | PLUMBING, DRAIGNAGE & FIRE FIGHTING WORKS |
| STEP | PS | PARKING SHED |
| STEP | RD | ROAD WORKS |
| STEP | SA | MANHOLES & SOAKAWAY |
| STEP | SB | SUB STRUCTURE |
| STEP | SL | SOFT LANDSCAPING |
| STEP | SP | SUPER STRUCTURE |
| STEP | SS | SUBSTATION LANDSCAPING/CHANNEL WORKS |
| STEP | ST | STREET LIGHTING |
| STEP | SUB | SUBMISSION OF DRAWINGS |
| STEP | TC | TELECOMMUNICATION LINES |
| STEP | TR | TELECOMMUNICATION ROOM |
| STEP | TS | STRUCTURAL ITEMS |
| STEP | WE | WATER TANK ENCLOSURE |
| STEP | WS | WATER SUPPLY SYSTEM |
| STEP | XW | EXTERNAL ITEMS |
