# Polaris DC-1 - Aviapolis Data Campus Phase 1

Schedule from Primavera P6, 2026-01-16 to 2027-10-29, data date 2026-03-02, costs in EUR.
Must finish by 2027-10-29

## Calendars

- CAL-01 Site 5-day (FIN holidays + summer shutdown wk28-30): Mon-Fri 07:00-15:00; Sat-Sun off. Exceptions (off unless hours are given): 2026-04-03, 2026-04-06, 2026-05-01, 2026-05-14, 2026-06-19 to 2026-06-20, 2026-07-06 to 2026-07-26, 2026-10-31, 2026-12-06, 2026-12-24 to 2026-12-26, 2027-01-01, 2027-01-06, 2027-03-26, 2027-03-29, 2027-05-01, 2027-05-06, 2027-06-25 to 2027-06-26, 2027-07-12 to 2027-08-01.
- CAL-02 Design/Office/Authority 5-day (FIN holidays): Mon-Fri 07:00-15:00; Sat-Sun off. Exceptions (off unless hours are given): 2026-04-03, 2026-04-06, 2026-05-01, 2026-05-14, 2026-06-19 to 2026-06-20, 2026-10-31, 2026-12-06, 2026-12-24 to 2026-12-26, 2027-01-01, 2027-01-06, 2027-03-26, 2027-03-29, 2027-05-01, 2027-05-06, 2027-06-25 to 2027-06-26.
- CAL-03 Procurement/Manufacture 7-day elapsed: Mon-Sun 07:00-15:00.
- CAL-04 Continuous commissioning 7-day: Mon-Sun 07:00-15:00.

## Resources

| Resource | Group |
| --- | --- |
| Site Management | labor |
| Design Management | labor |
| Geotechnical Consultant | labor |
| Architectural Design | labor |
| MEP Design | labor |
| Structural Design | labor |
| Specialist Design | labor |
| BIM Team | labor |
| Procurement | labor |
| Vendor (HV Plant) | material |
| Vendor (Steel Fabricator) | material |
| Vendor (Generator) | material |
| Vendor (Precast Factory) | material |
| Vendor (Envelope) | material |
| Vendor (UPS/Battery) | material |
| Vendor (Cooling Plant) | material |
| Vendor (ELV/Fire) | material |
| Logistics | labor |
| QA/QC Inspector | labor |
| Site Establishment Crew | labor |
| Civil Crew | labor |
| Earthworks Crew | labor |
| Concrete Crew | labor |
| Blasting Crew | labor |
| Roofing Crew | labor |
| Piling Crew | labor |
| Structural Steel Crew | labor |
| Precast Erection Crew | labor |
| Fit-Out Crew | labor |
| Fire Protection Crew | labor |
| Envelope Crew | labor |
| Pipefitting Crew | labor |
| Mechanical Crew | labor |
| Commissioning Team | labor |
| Insulation Crew | labor |
| Electrical Crew | labor |
| HV Electrical Crew | labor |
| ELV/ICT Crew | labor |
| Security Systems Crew | labor |
| BMS Crew | labor |
| Landscaping Crew | labor |

## Schedule

| ID | WBS | Activity | Type | Duration | Start | Finish | Predecessors | Total float | Constraint | Calendar | Resources | Cost |
| --- | --- | --- | --- | --- | --- | --- | --- | --- | --- | --- | --- | --- |
|  | 1 | **1 Project Management, Design and Consents** |  |  | 2026-01-16 | 2027-08-31 |  |  |  |  |  |  |
|  | 1.1 | **1.1 Governance, Mobilisation and Statutory Appointments** |  |  | 2026-03-02 | 2026-04-14 |  |  |  |  |  |  |
| 1010 |  | M: Commencement Date (PDC-PC-001 Rev C Part A) | milestone | 0d | 2026-03-02 | 2026-03-02 |  | 3d | start on 2026-03-02 | CAL-02 Design/Office/Authority 5-day (FIN holidays) | Site Management |  |
| 1015 |  | Contract execution, mobilisation and project control systems |  | 10d | 2026-03-02 | 2026-03-13 | 1010 | 4d |  | CAL-02 Design/Office/Authority 5-day (FIN holidays) | Design Management [320 h] | 514,941.55 |
| 1020 |  | Appoint responsible site manager (vastaava tyonjohtaja), KVV and IV supervisors |  | 5d | 2026-03-02 | 2026-03-06 | 1010 | 6d |  | CAL-02 Design/Office/Authority 5-day (FIN holidays) | Site Management [120 h] | 151,050.4 |
| 1055 |  | Review PDC-SS-001, confirm foundation zoning and dewatering strategy |  | 10d | 2026-03-02 | 2026-03-13 | 1010 | 16d |  | CAL-02 Design/Office/Authority 5-day (FIN holidays) | Geotechnical Consultant [240 h] |  |
| 1060 |  | Supplementary ground investigation - boulder zone BH-07 to BH-09 (PDC-SS-001 7a) |  | 15d | 2026-03-16 | 2026-04-07 | 1055 | 168d |  | CAL-02 Design/Office/Authority 5-day (FIN holidays) | Geotechnical Consultant [360 h] | 90,619.91 |
| 1065 |  | Sulphide waste classification testing and disposal routing plan (BH-12, PDC-SS-001 7c) |  | 20d | 2026-03-16 | 2026-04-14 | 1055 | 43d |  | CAL-02 Design/Office/Authority 5-day (FIN holidays) | Geotechnical Consultant [320 h] | 90,619.91 |
| 1050 |  | Site boundary survey, setting-out and primary grid establishment |  | 8d | 2026-03-23 | 2026-04-01 | 1040 | 6d |  |  | Site Management [256 h] | 79,115.19 |
|  | 1.2 | **1.2 Design Development and Engineer Review (S1-S3)** |  |  | 2026-03-16 | 2026-08-17 |  |  |  |  |  |  |
| 1110 |  | S1 concept design - architecture, structure, single-line diagrams, cooling strategy |  | 15d | 2026-03-16 | 2026-04-07 | 1015 | 29d |  | CAL-02 Design/Office/Authority 5-day (FIN holidays) | Architectural Design [480 h] | 34,986.41 |
| 1112 |  | S1 concept design - MEP systems, commissioning strategy and metering |  | 15d | 2026-03-16 | 2026-04-07 | 1015 | 4d |  | CAL-02 Design/Office/Authority 5-day (FIN holidays) | MEP Design [480 h] | 34,986.41 |
| 1122 |  | Early design release - structural frame geometry and grid for fabrication |  | 12d | 2026-03-16 | 2026-03-31 | 1015, 1055 SS+5d | 12d |  | CAL-02 Design/Office/Authority 5-day (FIN holidays) | Structural Design [288 h] |  |
| 1125 |  | S2 detailed design - substructure, foundations, slab and dewatering |  | 18d | 2026-03-16 | 2026-04-10 | 1015, 1055 SS+3d | 9d |  | CAL-02 Design/Office/Authority 5-day (FIN holidays) | Structural Design [432 h] | 26,912.62 |
| 1162 |  | Acoustic modelling - generator enclosures and 45 dB(A) NE residential boundary |  | 18d | 2026-03-16 | 2026-04-10 | 1112 SS | 4d |  | CAL-02 Design/Office/Authority 5-day (FIN holidays) | Specialist Design [288 h] | 25,642.76 |
| 1155 |  | Fire engineering submission - EI 120 strategy and white space suppression method |  | 25d | 2026-03-23 | 2026-04-28 | 1112 SS+5d | 15d |  | CAL-02 Design/Office/Authority 5-day (FIN holidays) | Specialist Design [400 h] | 37,004.86 |
| 1130 |  | S2 detailed design - superstructure steel and precast |  | 25d | 2026-04-01 | 2026-05-08 | 1122 | 113d |  | CAL-02 Design/Office/Authority 5-day (FIN holidays) | Structural Design [600 h] | 102,267.96 |
| 1115 |  | Engineer review of S1 concept design (14 days, SP-20) |  | 10d | 2026-04-08 | 2026-04-21 | 1110, 1112 | 29d |  | CAL-02 Design/Office/Authority 5-day (FIN holidays) | Design Management [160 h] |  |
| 1180 |  | S3 construction issue - substructure (early release for foundations) |  | 10d | 2026-04-13 | 2026-04-24 | 1125 | 9d |  | CAL-02 Design/Office/Authority 5-day (FIN holidays) | Structural Design [240 h] | 26,912.62 |
| 1165 |  | BIM coordination and clash resolution - all disciplines, 2.4 m service zone |  | 40d | 2026-04-17 | 2026-06-15 | 1130 SS+10d | 128d |  | CAL-02 Design/Office/Authority 5-day (FIN holidays) | BIM Team [1280 h] | 282,582.52 |
| 1120 |  | M: S1 concept design accepted | milestone | 0d | 2026-04-22 | 2026-04-22 | 1115 | 28d |  | CAL-02 Design/Office/Authority 5-day (FIN holidays) | Design Management |  |
| 1135 |  | S2 detailed design - envelope, U-values, acoustic and airtightness |  | 25d | 2026-04-22 | 2026-05-28 | 1120 | 30d |  | CAL-02 Design/Office/Authority 5-day (FIN holidays) | Architectural Design [800 h] | 131,871.85 |
| 1140 |  | S2 detailed design - mechanical, cooling, free-cooling hours and water balance |  | 30d | 2026-04-22 | 2026-06-04 | 1120 | 29d |  | CAL-02 Design/Office/Authority 5-day (FIN holidays) | MEP Design [960 h] | 322,951.46 |
| 1145 |  | S2 detailed design - electrical HV/MV/LV, UPS and standby generation |  | 30d | 2026-04-22 | 2026-06-04 | 1120 | 33d |  | CAL-02 Design/Office/Authority 5-day (FIN holidays) | MEP Design [960 h] | 322,951.46 |
| 1182 |  | Engineer review - S3 substructure (14 days, SP-20) |  | 10d | 2026-04-27 | 2026-05-11 | 1180 | 9d |  | CAL-02 Design/Office/Authority 5-day (FIN holidays) | Design Management [160 h] |  |
| 1150 |  | S2 detailed design - ELV, BMS/DCIM, fire detection and security |  | 25d | 2026-04-29 | 2026-06-04 | 1120 FS+5d | 65d |  | CAL-02 Design/Office/Authority 5-day (FIN holidays) | MEP Design [600 h] | 74,009.71 |
| 1186 |  | S3 construction issue - steel and precast shop drawings, erection method statement |  | 20d | 2026-05-11 | 2026-06-08 | 1130 | 133d |  | CAL-02 Design/Office/Authority 5-day (FIN holidays) | Structural Design [480 h] | 102,267.96 |
| 1184 |  | M: Substructure construction-issue design released | milestone | 0d | 2026-05-12 | 2026-05-12 | 1182 | 8d |  | CAL-02 Design/Office/Authority 5-day (FIN holidays) | Structural Design |  |
| 1188 |  | S3 construction issue - envelope, air barrier and junction details |  | 20d | 2026-05-29 | 2026-06-26 | 1135 | 120d |  | CAL-02 Design/Office/Authority 5-day (FIN holidays) | Architectural Design [480 h] | 100,473.79 |
| 1170 |  | Engineer review of S2 detailed design (21 days, SP-20) |  | 15d | 2026-06-05 | 2026-06-26 | 1130, 1135, 1140, 1145, 1150 | 95d |  | CAL-02 Design/Office/Authority 5-day (FIN holidays) | Design Management [360 h] | 16,820.39 |
| 1175 |  | M: S2 detailed design accepted | milestone | 0d | 2026-06-29 | 2026-06-29 | 1170 | 94d |  | CAL-02 Design/Office/Authority 5-day (FIN holidays) | Design Management |  |
| 1190 |  | S3 construction issue - mechanical and electrical installation drawings |  | 25d | 2026-06-29 | 2026-07-31 | 1175 | 95d |  | CAL-02 Design/Office/Authority 5-day (FIN holidays) | MEP Design [800 h] | 322,951.46 |
| 1192 |  | S3 construction issue - ELV, containment and cause-and-effect matrix |  | 25d | 2026-06-29 | 2026-07-31 | 1175, 1160 | 95d |  | CAL-02 Design/Office/Authority 5-day (FIN holidays) | MEP Design [600 h] | 72,888.35 |
| 1194 |  | Engineer review - S3 construction issue (14 days, SP-20) |  | 10d | 2026-08-03 | 2026-08-14 | 1186, 1188, 1190, 1192, 1165 | 95d |  | CAL-02 Design/Office/Authority 5-day (FIN holidays) | Design Management [240 h] | 16,820.39 |
| 1196 |  | M: Construction-issue design complete | milestone | 0d | 2026-08-17 | 2026-08-17 | 1194 | 94d |  | CAL-02 Design/Office/Authority 5-day (FIN holidays) | Design Management |  |

| ID | WBS | Activity | Type | Duration | Start | Finish | Predecessors | Total float | Constraint | Calendar | Resources | Cost |
| --- | --- | --- | --- | --- | --- | --- | --- | --- | --- | --- | --- | --- |
|  | 1.3 | **1.3 Statutory Consents and Authority Gates** |  |  | 2026-03-02 | 2026-07-20 |  |  |  |  |  |  |
| 1030 |  | Lodge landscaping and stormwater securities (EUR 145,000) and permit fees |  | 5d | 2026-03-02 | 2026-03-06 | 1010 | 16d |  | CAL-02 Design/Office/Authority 5-day (FIN holidays) | Design Management [80 h] |  |
| 1035 |  | Notice of commencement (aloitusilmoitus) - 7 day statutory notice |  | 7d | 2026-03-07 | 2026-03-13 | 1020 | 17d |  | CAL-03 Procurement/Manufacture 7-day elapsed | Site Management [112 h] | 69,225.79 |
| 1025 |  | Building Control approval of appointed supervisors (Permit Cond. 1-3) |  | 10d | 2026-03-09 | 2026-03-20 | 1020 | 6d |  | CAL-02 Design/Office/Authority 5-day (FIN holidays) | Design Management [160 h] | 101,603.41 |
| 1210 |  | Blasting method statement, scaled-distance calculation and vibration monitoring plan |  | 15d | 2026-03-16 | 2026-04-07 | 1055 | 75d |  | CAL-02 Design/Office/Authority 5-day (FIN holidays) | Specialist Design [240 h] | 25,642.76 |
| 1235 |  | Archaeology - Museovirasto consultation and watching-brief protocol, NW made ground |  | 25d | 2026-03-16 | 2026-04-21 | 1055 | 70d |  | CAL-02 Design/Office/Authority 5-day (FIN holidays) | Specialist Design [400 h] |  |
| 1245 |  | Crane aviation obstacle clearance - Fintraffic/Finavia (21 day lead, Cond. 18) |  | 21d | 2026-03-21 | 2026-04-10 | 1122 SS+5d | 131d |  | CAL-03 Procurement/Manufacture 7-day elapsed | Design Management [336 h] |  |
| 1040 |  | M: Statutory supervisors approved - site works may commence (Permit Cond. 1-3) | milestone | 0d | 2026-03-23 | 2026-03-23 | 1025, 1035, 1030 | 5d |  | CAL-02 Design/Office/Authority 5-day (FIN holidays) | Site Management |  |
| 1045 |  | Building Control commencement inspection (5 working days notice, Cond. 5) |  | 3d | 2026-03-23 | 2026-03-25 | 1040 | 27d |  | CAL-02 Design/Office/Authority 5-day (FIN holidays) | Site Management [72 h] | 29,668.2 |
| 1215 |  | Blasting notification (louhintailmoitus) and rescue authority blasting permit |  | 25d | 2026-04-08 | 2026-05-13 | 1210 | 75d |  | CAL-02 Design/Office/Authority 5-day (FIN holidays) | Design Management [400 h] |  |
| 1220 |  | Pre-condition survey - NE residential boundary and Tikkurilantie logistics neighbour |  | 10d | 2026-04-08 | 2026-04-21 | 1210 | 75d |  |  | Geotechnical Consultant [240 h] | 51,285.53 |
| 1250 |  | M: Crane aviation clearance held on site | milestone | 0d | 2026-04-13 | 2026-04-13 | 1245 | 89d |  | CAL-02 Design/Office/Authority 5-day (FIN holidays) | Site Management |  |
| 1240 |  | M: Archaeological watching-brief condition discharged for NW made ground | milestone | 0d | 2026-04-22 | 2026-04-22 | 1235 | 69d |  | CAL-02 Design/Office/Authority 5-day (FIN holidays) | Specialist Design |  |
| 1160 |  | Authority fire engineering approval - suppression method and EI 120 details fixed |  | 25d | 2026-04-29 | 2026-06-04 | 1155 | 64d |  | CAL-02 Design/Office/Authority 5-day (FIN holidays) | Specialist Design [400 h] |  |
| 1225 |  | Neighbour written notice of blasting - 7 day statutory period (Cond. 12) |  | 7d | 2026-05-14 | 2026-05-20 | 1215, 1220 | 107d |  | CAL-03 Procurement/Manufacture 7-day elapsed | Site Management [56 h] | 69,225.79 |
| 1230 |  | M: Blasting permit, pre-condition survey and neighbour notice complete (Cond. 9-12) | milestone | 0d | 2026-05-21 | 2026-05-21 | 1225 | 75d |  | CAL-02 Design/Office/Authority 5-day (FIN holidays) | Site Management |  |
| 1255 |  | Protection coordination study - relay settings, discrimination, fault levels |  | 25d | 2026-06-05 | 2026-07-10 | 1145 | 151d |  | CAL-02 Design/Office/Authority 5-day (FIN holidays) | MEP Design [600 h] | 161,475.73 |
| 1280 |  | Application for Building Control exemption - 24 h load-bank testing (Cond. 15) |  | 10d | 2026-06-05 | 2026-06-18 | 1140 | 171d |  | CAL-02 Design/Office/Authority 5-day (FIN holidays) | Design Management [160 h] |  |
| 1285 |  | Building Control determination of load-bank testing exemption |  | 20d | 2026-06-22 | 2026-07-17 | 1280 | 171d |  | CAL-02 Design/Office/Authority 5-day (FIN holidays) | Design Management [160 h] |  |
| 1290 |  | M: 24 h load-bank testing exemption granted (Permit Cond. 15) | milestone | 0d | 2026-07-20 | 2026-07-20 | 1285 | 170d |  | CAL-02 Design/Office/Authority 5-day (FIN holidays) | Design Management |  |
|  | 1.4 | **1.4 Third-Party Interfaces (DNO, Offtaker, Tenant)** |  |  | 2026-01-16 | 2027-08-31 |  |  |  |  |  |  |
| 1305 |  | M: DNO compatibility submission lodged - ADVANCE INSTRUCTION (Assumption A-01) | milestone | 0d | 2026-01-16 | 2026-01-16 |  | 9d | start on 2026-01-16 | CAL-03 Procurement/Manufacture 7-day elapsed | MEP Design | 161,475.73 |
| 1315 |  | DNO compatibility review - 12 week pre-order period (PDC-GC-001 4.2) |  | 84d | 2026-01-16 | 2026-04-09 | 1305 | 10d |  | CAL-03 Procurement/Manufacture 7-day elapsed | Design Management [672 h] |  |
| 1325 |  | DNO 110 kV termination tower and metering compound (DNO scope - monitor) |  | 180d | 2026-04-01 | 2026-09-27 | 1010 FS+30d | 138d |  | CAL-03 Procurement/Manufacture 7-day elapsed | Site Management [2880 h] | 1,780,091.71 |
| 1320 |  | M: DNO compatibility review complete - HV long-lead orders may be placed | milestone | 0d | 2026-04-10 | 2026-04-10 | 1315 | 9d |  | CAL-03 Procurement/Manufacture 7-day elapsed | Design Management |  |
| 1270 |  | Serve 110 kV outage window notice to DNO (16 weeks minimum, PDC-GC-001 7.3) |  | 5d | 2026-06-05 | 2026-06-11 | 1145 | 115d |  | CAL-02 Design/Office/Authority 5-day (FIN holidays) | Design Management [80 h] |  |
| 1335 |  | District heating - boundary interface design agreement with Vantaan Energia |  | 20d | 2026-06-05 | 2026-07-03 | 1140 | 151d |  | CAL-02 Design/Office/Authority 5-day (FIN holidays) | MEP Design [320 h] |  |
| 1275 |  | DNO 16 week outage notice period |  | 112d | 2026-06-12 | 2026-10-01 | 1270 | 162d |  | CAL-03 Procurement/Manufacture 7-day elapsed | Design Management [896 h] |  |
| 1260 |  | DNO protection study review and approval (20 working days, PDC-GC-001 6.3) |  | 20d | 2026-07-13 | 2026-08-07 | 1255 | 151d |  | CAL-02 Design/Office/Authority 5-day (FIN holidays) | Design Management [320 h] |  |
| 1350 |  | Hall 1 Tenant containment interface drawing and countersignature (SPEC-04 4.3) |  | 10d | 2026-08-03 | 2026-08-14 | 1190 | 137d |  | CAL-02 Design/Office/Authority 5-day (FIN holidays) | Design Management [160 h] | 67,281.55 |
| 1265 |  | M: Protection study approved - precondition to energisation (PDC-GC-001 6.3) | milestone | 0d | 2026-08-10 | 2026-08-10 | 1260 | 150d |  | CAL-02 Design/Office/Authority 5-day (FIN holidays) | Design Management |  |
| 1330 |  | M: DNO 110 kV termination works complete (DNO scope) | milestone | 0d | 2026-09-28 | 2026-09-28 | 1325 | 95d |  | CAL-02 Design/Office/Authority 5-day (FIN holidays) | Site Management |  |
| 1345 |  | M: Hall 1 released for Tenant fit-out access (Month 12, PDC-ER-001 s9 / MS-10) | milestone | 0d | 2026-12-11 | 2026-12-11 | 3730 | 53d | finish on or before 2027-03-02 | CAL-02 Design/Office/Authority 5-day (FIN holidays) | Site Management |  |
| 1340 |  | M: Offtaker boundary-side works complete (PDC-DH-001 7.1 - 31 Aug 2027) | milestone | 0d | 2027-08-31 | 2027-08-31 | 1335 | 47d | start on 2027-08-31 | CAL-02 Design/Office/Authority 5-day (FIN holidays) | Site Management |  |

| ID | WBS | Activity | Type | Duration | Start | Finish | Predecessors | Total float | Constraint | Calendar | Resources | Cost |
| --- | --- | --- | --- | --- | --- | --- | --- | --- | --- | --- | --- | --- |
|  | 2 | **2 Procurement** |  |  | 2026-01-16 | 2027-01-30 |  |  |  |  |  |  |
|  | 2.1 | **2.1 Subcontract Packages TP-001 to TP-008** |  |  | 2026-03-02 | 2026-05-05 |  |  |  |  |  |  |
| 2010 |  | TP-001 Earthworks and Substructure - tender evaluation, negotiation and award |  | 18d | 2026-03-02 | 2026-03-25 | 1010 | 11d |  | CAL-02 Design/Office/Authority 5-day (FIN holidays) | Procurement [432 h] |  |
| 2020 |  | TP-002 Structural Steel and Precast - tender evaluation and award |  | 18d | 2026-03-02 | 2026-03-25 | 1010 | 16d |  | CAL-02 Design/Office/Authority 5-day (FIN holidays) | Procurement [432 h] |  |
| 2050 |  | TP-005 Mechanical - tender evaluation and award |  | 20d | 2026-03-02 | 2026-03-27 | 1010 | 74d |  | CAL-02 Design/Office/Authority 5-day (FIN holidays) | Procurement [480 h] |  |
| 2060 |  | TP-006 Electrical - tender evaluation and award |  | 20d | 2026-03-02 | 2026-03-27 | 1010 | 12d |  | CAL-02 Design/Office/Authority 5-day (FIN holidays) | Procurement [480 h] |  |
| 2080 |  | TP-008 External Works, Security and Fibre - tender evaluation and award |  | 18d | 2026-03-09 | 2026-04-01 | 1010 FS+5d | 12d |  | CAL-02 Design/Office/Authority 5-day (FIN holidays) | Procurement [432 h] |  |
| 2030 |  | TP-003 Envelope - tender evaluation and award |  | 18d | 2026-03-16 | 2026-04-10 | 1010 FS+10d | 47d |  | CAL-02 Design/Office/Authority 5-day (FIN holidays) | Procurement [432 h] |  |
| 2070 |  | TP-007 ELV, BMS and Fire - tender evaluation and award |  | 18d | 2026-03-23 | 2026-04-17 | 1010 FS+15d | 96d |  | CAL-02 Design/Office/Authority 5-day (FIN holidays) | Procurement [432 h] |  |
| 2012 |  | M: TP-001 awarded | milestone | 0d | 2026-03-26 | 2026-03-26 | 2010 | 10d |  | CAL-02 Design/Office/Authority 5-day (FIN holidays) | Procurement |  |
| 2022 |  | M: TP-002 awarded | milestone | 0d | 2026-03-26 | 2026-03-26 | 2020 | 15d |  | CAL-02 Design/Office/Authority 5-day (FIN holidays) | Procurement |  |
| 2052 |  | M: TP-005 awarded | milestone | 0d | 2026-03-30 | 2026-03-30 | 2050 | 73d |  | CAL-02 Design/Office/Authority 5-day (FIN holidays) | Procurement |  |
| 2062 |  | M: TP-006 awarded | milestone | 0d | 2026-03-30 | 2026-03-30 | 2060 | 11d |  | CAL-02 Design/Office/Authority 5-day (FIN holidays) | Procurement |  |
| 2082 |  | M: TP-008 awarded | milestone | 0d | 2026-04-02 | 2026-04-02 | 2080 | 11d |  | CAL-02 Design/Office/Authority 5-day (FIN holidays) | Procurement |  |
| 2040 |  | TP-004 Finishes and Containment - tender evaluation and award |  | 18d | 2026-04-08 | 2026-05-04 | 1010 FS+25d | 174d |  | CAL-02 Design/Office/Authority 5-day (FIN holidays) | Procurement [432 h] |  |
| 2032 |  | M: TP-003 awarded | milestone | 0d | 2026-04-13 | 2026-04-13 | 2030 | 46d |  | CAL-02 Design/Office/Authority 5-day (FIN holidays) | Procurement |  |
| 2072 |  | M: TP-007 awarded | milestone | 0d | 2026-04-20 | 2026-04-20 | 2070 | 95d |  | CAL-02 Design/Office/Authority 5-day (FIN holidays) | Procurement |  |
| 2042 |  | M: TP-004 awarded | milestone | 0d | 2026-05-05 | 2026-05-05 | 2040 | 173d |  | CAL-02 Design/Office/Authority 5-day (FIN holidays) | Procurement |  |
|  | 2.2 | **2.2 Long-Lead Equipment (PDC-LT-001)** |  |  | 2026-01-16 | 2027-01-30 |  |  |  |  |  |  |
| 2100 |  | M: LT-01 transformer order released - ADVANCE INSTRUCTION (Assumption A-01) | milestone | 0d | 2026-01-16 | 2026-01-16 |  | 4d | start on 2026-01-16 | CAL-03 Procurement/Manufacture 7-day elapsed | Procurement |  |
| 2102 |  | LT-01 110/20 kV transformers 2 nr 16 MVA - manufacture (52 weeks) |  | 357d | 2026-01-16 | 2027-01-07 | 2100 | 5d |  | CAL-03 Procurement/Manufacture 7-day elapsed | Vendor (HV Plant) [22848] |  |
| 2200 |  | LT-11 Structural steel - shop drawings, fabrication, NDT and inspection (18 weeks) |  | 126d | 2026-04-01 | 2026-08-04 | 2022, 1122 | 20d |  | CAL-03 Procurement/Manufacture 7-day elapsed | Vendor (Steel Fabricator) [12096] |  |
| 2110 |  | LT-02 20 kV switchgear and protection - order, manufacture and FAT (38 weeks) |  | 259d | 2026-04-10 | 2026-12-24 | 2062, 1320 | 10d |  | CAL-03 Procurement/Manufacture 7-day elapsed | Vendor (HV Plant) [16576] |  |
| 2120 |  | LT-03 Standby generators 8 nr 2.5 MVA - order, manufacture and FAT (40 weeks) |  | 273d | 2026-04-11 | 2027-01-08 | 2062, 1162 | 6d |  | CAL-03 Procurement/Manufacture 7-day elapsed | Vendor (Generator) [17472] |  |
| 2210 |  | LT-12 Precast concrete wall panels - production drawings and manufacture (16 weeks) |  | 112d | 2026-04-29 | 2026-08-18 | 2022, 1155 | 23d |  | CAL-03 Procurement/Manufacture 7-day elapsed | Vendor (Precast Factory) [13440] |  |
| 2220 |  | Envelope mock-up panel and precast-to-cladding junction sample (SPEC-03 7) |  | 20d | 2026-05-07 | 2026-06-04 | 2032, 1135 SS+10d | 30d |  | CAL-02 Design/Office/Authority 5-day (FIN holidays) | Vendor (Envelope) [800] | 32,295.15 |
| 2130 |  | LT-04 UPS modules 16 nr 1000 kVA - order, manufacture and FAT (30 weeks) |  | 203d | 2026-06-05 | 2026-12-24 | 2062, 1145 | 48d |  | CAL-03 Procurement/Manufacture 7-day elapsed | Vendor (UPS/Battery) [9744] |  |
| 2140 |  | LT-05 Lithium-ion battery systems - order and manufacture (24 weeks) |  | 161d | 2026-06-05 | 2026-11-12 | 2062, 1145 | 101d |  | CAL-03 Procurement/Manufacture 7-day elapsed | Vendor (UPS/Battery) [7728] |  |
| 2150 |  | LT-06 Overhead busway - order and manufacture (20 weeks) |  | 133d | 2026-06-05 | 2026-10-15 | 2062, 1145 | 111d |  | CAL-03 Procurement/Manufacture 7-day elapsed | Vendor (HV Plant) [6384] |  |
| 2160 |  | LT-07 Chillers 4 nr (N+1) - order, manufacture and FAT (26 weeks) |  | 175d | 2026-06-05 | 2026-11-26 | 2052, 1140 | 42d |  | CAL-03 Procurement/Manufacture 7-day elapsed | Vendor (Cooling Plant) [11200] |  |
| 2170 |  | LT-08 Dry coolers / adiabatic units 10 nr - order and manufacture (22 weeks) |  | 147d | 2026-06-05 | 2026-10-29 | 2052, 1140 | 70d |  | CAL-03 Procurement/Manufacture 7-day elapsed | Vendor (Cooling Plant) [9408] |  |
| 2180 |  | LT-09 CRAH units 28 nr (7 per hall, N+1) - order, manufacture and FAT (22 weeks) |  | 147d | 2026-06-05 | 2026-10-29 | 2052, 1140 | 84d |  | CAL-03 Procurement/Manufacture 7-day elapsed | Vendor (Cooling Plant) [9408] |  |
| 2222 |  | LT-13 Acoustic louvres and composite cladding - order and manufacture (16 weeks) |  | 112d | 2026-06-05 | 2026-09-24 | 2220 | 45d |  | CAL-03 Procurement/Manufacture 7-day elapsed | Vendor (Envelope) [17920] |  |
| 2230 |  | LT-14 BMS/DCIM hardware and licences - order and manufacture (16 weeks) |  | 112d | 2026-06-05 | 2026-09-24 | 2072, 1150 | 94d |  | CAL-03 Procurement/Manufacture 7-day elapsed | Vendor (ELV/Fire) [5376] |  |
| 2240 |  | LT-15 Data hall suppression system - order and manufacture (20 weeks) |  | 140d | 2026-06-05 | 2026-10-22 | 2072, 1160 | 91d |  | CAL-03 Procurement/Manufacture 7-day elapsed | Vendor (ELV/Fire) [6720] |  |
| 2190 |  | LT-10 Waste-heat recovery plant 4 MW at 70 C - order and manufacture (30 weeks) |  | 203d | 2026-07-04 | 2027-01-22 | 2052, 1335 | 219d |  | CAL-03 Procurement/Manufacture 7-day elapsed | Vendor (Cooling Plant) [12992] |  |
| 2202 |  | LT-11 structural steel - phased delivery to site |  | 7d | 2026-08-05 | 2026-08-11 | 2200 | 20d |  | CAL-03 Procurement/Manufacture 7-day elapsed | Logistics [112 h] |  |
| 2204 |  | M: LT-11 structural steel first delivery on site (need date 14 Aug 2026) | milestone | 0d | 2026-08-12 | 2026-08-12 | 2202 | 19d |  | CAL-03 Procurement/Manufacture 7-day elapsed | Procurement |  |
| 2212 |  | LT-12 precast panels - phased delivery to site |  | 7d | 2026-08-19 | 2026-08-25 | 2210 | 23d |  | CAL-03 Procurement/Manufacture 7-day elapsed | Logistics [168 h] |  |
| 2214 |  | M: LT-12 precast panels first delivery on site (need date 11 Sep 2026) | milestone | 0d | 2026-08-26 | 2026-08-26 | 2212 | 22d |  | CAL-03 Procurement/Manufacture 7-day elapsed | Procurement |  |
| 2224 |  | LT-13 envelope materials - phased delivery to site |  | 7d | 2026-09-25 | 2026-10-01 | 2222 | 45d |  | CAL-03 Procurement/Manufacture 7-day elapsed | Logistics [112 h] |  |
| 2232 |  | LT-14 BMS/DCIM - delivery to site |  | 7d | 2026-09-25 | 2026-10-01 | 2230 | 94d |  | CAL-03 Procurement/Manufacture 7-day elapsed | Logistics [112 h] | 280,236.58 |
| 2226 |  | M: LT-13 envelope materials first delivery on site (need date 8 Jan 2027) | milestone | 0d | 2026-10-02 | 2026-10-02 | 2224 | 44d |  | CAL-03 Procurement/Manufacture 7-day elapsed | Procurement |  |
| 2234 |  | M: LT-14 BMS/DCIM on site (need date 2 Apr 2027) | milestone | 0d | 2026-10-02 | 2026-10-02 | 2232 | 93d |  | CAL-03 Procurement/Manufacture 7-day elapsed | Procurement |  |
| 2152 |  | LT-06 busway - phased delivery to site |  | 7d | 2026-10-16 | 2026-10-22 | 2150 | 111d |  | CAL-03 Procurement/Manufacture 7-day elapsed | Logistics [112 h] | 1,292.43 |
| 2154 |  | M: LT-06 busway first delivery on site (need date 5 Mar 2027) | milestone | 0d | 2026-10-23 | 2026-10-23 | 2152 | 110d |  | CAL-03 Procurement/Manufacture 7-day elapsed | Procurement |  |
| 2242 |  | LT-15 suppression system - phased delivery to site |  | 7d | 2026-10-23 | 2026-10-29 | 2240 | 91d |  | CAL-03 Procurement/Manufacture 7-day elapsed | Logistics [112 h] | 640,031.85 |
| 2172 |  | LT-08 dry coolers - phased delivery to site |  | 7d | 2026-10-30 | 2026-11-05 | 2170 | 70d |  | CAL-03 Procurement/Manufacture 7-day elapsed | Logistics [112 h] | 2,220,937.69 |
| 2182 |  | LT-09 CRAH units - phased delivery to site |  | 7d | 2026-10-30 | 2026-11-05 | 2180 | 84d |  | CAL-03 Procurement/Manufacture 7-day elapsed | Logistics [112 h] | 1,681,198.19 |
| 2244 |  | M: LT-15 suppression system first delivery on site (need date 26 Mar 2027) | milestone | 0d | 2026-10-30 | 2026-10-30 | 2242 | 90d |  | CAL-03 Procurement/Manufacture 7-day elapsed | Procurement |  |
| 2174 |  | M: LT-08 dry coolers first delivery on site (need date 19 Feb 2027) | milestone | 0d | 2026-11-06 | 2026-11-06 | 2172 | 69d |  | CAL-03 Procurement/Manufacture 7-day elapsed | Procurement |  |
| 2184 |  | M: LT-09 CRAH units first delivery on site (need date 19 Mar 2027) | milestone | 0d | 2026-11-06 | 2026-11-06 | 2182 | 83d |  | CAL-03 Procurement/Manufacture 7-day elapsed | Procurement |  |
| 2142 |  | LT-05 battery systems - phased delivery to site |  | 7d | 2026-11-13 | 2026-11-19 | 2140 | 101d |  | CAL-03 Procurement/Manufacture 7-day elapsed | Logistics [112 h] | 735,294.69 |
| 2144 |  | M: LT-05 battery systems first delivery on site (need date 12 Mar 2027) | milestone | 0d | 2026-11-20 | 2026-11-20 | 2142 | 100d |  | CAL-03 Procurement/Manufacture 7-day elapsed | Procurement |  |
| 2162 |  | LT-07 witnessed factory acceptance test - chillers (L1) |  | 4d | 2026-11-23 | 2026-11-26 | 2160 FF | 26d |  | CAL-02 Design/Office/Authority 5-day (FIN holidays) | QA/QC Inspector [64 h] | 52,102.74 |
| 2164 |  | LT-07 chillers - delivery to site |  | 7d | 2026-11-27 | 2026-12-03 | 2160, 2162 | 42d |  | CAL-03 Procurement/Manufacture 7-day elapsed | Logistics [112 h] | 1,642,460.9 |
| 2166 |  | M: LT-07 chillers on site (need date 5 Feb 2027) | milestone | 0d | 2026-12-04 | 2026-12-04 | 2164 | 41d |  | CAL-03 Procurement/Manufacture 7-day elapsed | Procurement |  |
| 2132 |  | LT-04 witnessed factory acceptance test - UPS (L1) |  | 3d | 2026-12-22 | 2026-12-28 | 2130 FF | 30d |  | CAL-02 Design/Office/Authority 5-day (FIN holidays) | QA/QC Inspector [48 h] | 52,102.74 |
| 2112 |  | LT-02 20 kV switchgear - delivery to site |  | 7d | 2026-12-25 | 2026-12-31 | 2110 | 10d |  | CAL-03 Procurement/Manufacture 7-day elapsed | Logistics [112 h] | 842,246.65 |
| 2134 |  | LT-04 UPS modules - phased delivery to site |  | 7d | 2026-12-29 | 2027-01-04 | 2130, 2132 | 44d |  | CAL-03 Procurement/Manufacture 7-day elapsed | Logistics [112 h] | 2,331,218.41 |
| 2104 |  | LT-01 witnessed factory acceptance test - transformers (L1) |  | 5d | 2026-12-30 | 2027-01-07 | 2102 FF | 3d |  | CAL-02 Design/Office/Authority 5-day (FIN holidays) | QA/QC Inspector [80 h] | 104,205.48 |
| 2122 |  | LT-03 witnessed factory acceptance test - generators (L1) |  | 5d | 2026-12-31 | 2027-01-08 | 2120 FF | 4d |  | CAL-02 Design/Office/Authority 5-day (FIN holidays) | QA/QC Inspector [80 h] | 104,205.48 |
| 2114 |  | M: LT-02 20 kV switchgear on site (need date 29 Jan 2027) | milestone | 0d | 2027-01-01 | 2027-01-01 | 2112 | 9d |  | CAL-03 Procurement/Manufacture 7-day elapsed | Procurement |  |
| 2136 |  | M: LT-04 UPS modules first delivery on site (need date 26 Feb 2027) | milestone | 0d | 2027-01-05 | 2027-01-05 | 2134 | 43d |  | CAL-03 Procurement/Manufacture 7-day elapsed | Procurement |  |
| 2106 |  | LT-01 transformers - transport and delivery to site |  | 7d | 2027-01-08 | 2027-01-14 | 2102, 2104 | 5d |  | CAL-03 Procurement/Manufacture 7-day elapsed | Logistics [112 h] | 1,848,681.26 |
| 2124 |  | LT-03 generators - delivery to site |  | 7d | 2027-01-09 | 2027-01-15 | 2120, 2122 | 6d |  | CAL-03 Procurement/Manufacture 7-day elapsed | Logistics [112 h] | 6,172,715.34 |
| 2108 |  | M: LT-01 transformers on site (PDC-LT-001 need date 15 Jan 2027) | milestone | 0d | 2027-01-15 | 2027-01-15 | 2106 | 4d |  | CAL-03 Procurement/Manufacture 7-day elapsed | Procurement |  |
| 2126 |  | M: LT-03 generators on site (need date 12 Feb 2027) | milestone | 0d | 2027-01-16 | 2027-01-16 | 2124 | 5d |  | CAL-03 Procurement/Manufacture 7-day elapsed | Procurement |  |
| 2192 |  | LT-10 waste-heat plant - delivery to site |  | 7d | 2027-01-23 | 2027-01-29 | 2190 | 219d |  | CAL-03 Procurement/Manufacture 7-day elapsed | Logistics [112 h] | 2,814,909.4 |
| 2194 |  | M: LT-10 waste-heat recovery plant on site (need date 30 Apr 2027) | milestone | 0d | 2027-01-30 | 2027-01-30 | 2192 | 218d |  | CAL-03 Procurement/Manufacture 7-day elapsed | Procurement |  |

| ID | WBS | Activity | Type | Duration | Start | Finish | Predecessors | Total float | Resources | Cost |
| --- | --- | --- | --- | --- | --- | --- | --- | --- | --- | --- |
|  | 3 | **3 Section 1 - Hall 1, Primary Substation, Generation, Shared Spine, Site Access** |  |  | 2026-03-26 | 2027-04-30 |  |  |  |  |
|  | 3.1 | **3.1 Enabling Works and Site Establishment** |  |  | 2026-03-26 | 2026-05-25 |  |  |  |  |
| 3010 |  | Site establishment - offices, welfare, hoarding and temporary services |  | 20d | 2026-03-26 | 2026-04-24 | 1040, 1050 SS+3d | 19d | Site Establishment Crew [1600 h] | 1,141,828.77 |
| 3015 |  | Temporary power, water and telecoms connections |  | 15d | 2026-04-02 | 2026-04-24 | 3010 SS+5d | 19d | Civil Crew [720 h] | 329,001.51 |
| 3018 |  | Site clearance and topsoil strip - west and central zones (gridlines 1-18) |  | 16d | 2026-04-02 | 2026-04-27 | 1050, 2012 | 6d | Earthworks Crew [2048 h] | 112,278.07 |
| 3022 |  | Site haul road along gridline N and temporary access from Tikkurilantie |  | 12d | 2026-04-14 | 2026-04-29 | 3018 SS+6d | 62d | Civil Crew [1152 h] | 35,883.5 |
| 3025 |  | Perimeter fencing and intrusion detection - west zone (SPEC-08 4.1) |  | 10d | 2026-04-14 | 2026-04-27 | 3018 SS+6d, 2082 | 6d | Civil Crew [960 h] | 156,347.76 |
| 3020 |  | Site clearance and topsoil strip - east zone (gridlines 19-24) |  | 8d | 2026-04-28 | 2026-05-08 | 3018 | 58d | Earthworks Crew [1024 h] | 56,234.19 |
| 3027 |  | Perimeter fencing and intrusion detection - central zone |  | 8d | 2026-04-28 | 2026-05-08 | 3025 | 26d | Civil Crew [768 h] | 81,896.44 |
| 3045 |  | Tower and mobile crane erection - Section 1 positions |  | 8d | 2026-04-30 | 2026-05-12 | 3022, 1250 | 62d | Site Establishment Crew [640 h] | 568,979.08 |
| 3030 |  | Perimeter fencing and intrusion detection - east zone |  | 10d | 2026-05-11 | 2026-05-25 | 3027, 3020 | 58d | Civil Crew [960 h] | 160,070.32 |
| 3035 |  | M: West and central zones secured - substructure may commence (SPEC-08 4.1) | milestone | 0d | 2026-05-11 | 2026-05-11 | 3027 | 25d | Site Management |  |
|  | 3.2 | **3.2 Earthworks, Blasting and Substructure** |  |  | 2026-04-28 | 2026-09-22 |  |  |  |  |
| 3110 |  | Bulk excavation in glacial till - Hall 1 and gatehouse (west zone) |  | 12d | 2026-04-28 | 2026-05-15 | 3025, 1045 | 6d | Earthworks Crew [1536 h] | 95,244.72 |
| 3114 |  | NW made ground removal under archaeological watching brief (provisional) |  | 8d | 2026-04-28 | 2026-05-08 | 3110 SS, 1240 | 51d | Earthworks Crew [512 h] | 102,762.98 |
| 3116 |  | Dewatering / well-pointing installation and perched water control |  | 8d | 2026-05-04 | 2026-05-13 | 3110 SS+3d | 7d | Civil Crew [384 h] | 181,239.83 |
| 3111 |  | Bulk excavation in glacial till - primary substation and switchgear building |  | 8d | 2026-05-06 | 2026-05-18 | 3110 SS+5d | 7d | Earthworks Crew [1024 h] | 78,436.83 |
| 3112 |  | Bulk excavation in glacial till - shared MEP spine and cooling yard |  | 14d | 2026-05-11 | 2026-05-29 | 3035, 1065 | 26d | Earthworks Crew [1792 h] | 121,577.08 |
| 3130 |  | Pad and strip foundations on till - Hall 1 and gatehouse |  | 14d | 2026-05-18 | 2026-06-04 | 3110, 1184, 3116, 3015 | 6d | Concrete Crew [2240 h] | 178,219.16 |
| 3132 |  | Pad foundations and transformer plinths - primary substation |  | 12d | 2026-05-19 | 2026-06-03 | 3111, 1184 | 7d | Concrete Crew [960 h] | 71,287.67 |
| 3120 |  | Drill and blast - generator compound (Section 1 rock, east zone) |  | 15d | 2026-05-26 | 2026-06-15 | 1230, 3030 | 58d | Blasting Crew [720 h] | 164,974.92 |
| 3122 |  | Rock excavation, mucking away and vibration record - generator compound |  | 8d | 2026-06-02 | 2026-06-11 | 3120 SS+5d | 58d | Earthworks Crew [512 h] | 88,046.62 |
| 3142 |  | Substation cable basement waterproofing and drainage layer |  | 8d | 2026-06-04 | 2026-06-15 | 3132 | 67d | Roofing Crew [320 h] | 159,491.05 |
| 3136 |  | Plate load tests and pier integrity testing - Section 1 zones (SPEC-01 6) |  | 5d | 2026-06-05 | 2026-06-11 | 3130, 3132 | 6d | Geotechnical Consultant [120 h] | 26,912.62 |
| 3134 |  | Rock-socketed piers and generator plinths - generator compound |  | 12d | 2026-06-12 | 2026-06-30 | 3122, 1184 | 58d | Piling Crew [576 h] | 148,012.52 |
| 3138 |  | Building Control foundation inspection - Section 1 (5 wd notice, Cond. 5) |  | 3d | 2026-06-12 | 2026-06-16 | 3136 | 6d | Site Management [72 h] | 29,668.2 |
| 3140 |  | Ground beams and pile caps - Hall 1, gatehouse and substation |  | 16d | 2026-06-17 | 2026-07-30 | 3130 SS+8d, 3132 SS+6d, 3138 | 6d | Concrete Crew [2560 h] | 239,236.57 |
| 3141 |  | Ground beams and pile caps - shared MEP spine and cooling yard |  | 10d | 2026-06-30 | 2026-08-03 | 3112, 3140 SS+8d | 6d | Concrete Crew [1600 h] | 106,134.04 |
| 3153 |  | Sub-base, capping and geotextile - generator compound |  | 3d | 2026-07-01 | 2026-07-03 | 3134 | 58d | Earthworks Crew [192 h] | 48,783.72 |
| 3157 |  | Ground-bearing slab 250 mm - generator compound |  | 5d | 2026-07-27 | 2026-07-31 | 3153 | 58d | Concrete Crew [400 h] | 169,308.21 |
| 3150 |  | Sub-base, capping and geotextile - Hall 1 and gatehouse |  | 5d | 2026-07-31 | 2026-08-06 | 3140, 3114 | 9d | Earthworks Crew [640 h] | 106,707.97 |
| 3151 |  | Sub-base, capping and geotextile - primary substation |  | 3d | 2026-07-31 | 2026-08-04 | 3142, 3140 | 50d | Earthworks Crew [192 h] | 56,486.41 |
| 3152 |  | Sub-base, capping and geotextile - shared MEP spine |  | 6d | 2026-08-04 | 2026-08-11 | 3141 | 6d | Earthworks Crew [768 h] | 148,918.73 |
| 3155 |  | Ground-bearing slab 250 mm - primary substation |  | 6d | 2026-08-05 | 2026-08-12 | 3151 | 50d | Concrete Crew [960 h] | 196,041.08 |
| 3160 |  | Ground-bearing slab 250 mm - Hall 1 (25 kN/m2, FM2) |  | 8d | 2026-08-07 | 2026-08-18 | 3150 | 9d | Concrete Crew [1280 h] | 307,962.71 |
| 3162 |  | Ground-bearing slab 250 mm - shared MEP spine and mezzanine base |  | 12d | 2026-08-12 | 2026-08-27 | 3152 | 6d | Concrete Crew [1920 h] | 516,835.57 |
| 3164 |  | Ground-bearing slab - gatehouse and loading area |  | 3d | 2026-08-14 | 2026-08-18 | 3150, 3160 SS+5d | 46d | Concrete Crew [240 h] | 62,376.71 |
| 3170 |  | M: Section 1 substructure complete | milestone | 0d | 2026-08-28 | 2026-08-28 | 3162, 3155, 3157, 3164, 3160 | 38d | Site Management |  |
| 3166 |  | Slab cure, 28 day cube results and FM2 flatness survey - Section 1 |  | 5d | 2026-09-16 | 2026-09-22 | 3160 FS+20d | 101d | QA/QC Inspector [80 h] | 26,912.62 |

| ID | WBS | Activity | Type | Duration | Start | Finish | Predecessors | Total float | Resources | Cost |
| --- | --- | --- | --- | --- | --- | --- | --- | --- | --- | --- |
|  | 3.3 | **3.3 Superstructure** |  |  | 2026-08-12 | 2026-10-30 |  |  |  |  |
| 3212 |  | Structural steel erection - generator compound enclosure |  | 5d | 2026-08-12 | 2026-08-18 | 3157, 2204 | 55d | Structural Steel Crew [400 h] | 142,329.92 |
| 3210 |  | Structural steel erection - primary substation and switchgear building |  | 6d | 2026-08-13 | 2026-08-20 | 3155, 2204, 3045 | 53d | Structural Steel Crew [960 h] | 201,634.05 |
| 3214 |  | Structural steel erection - Hall 1 frame (18 m clear span) |  | 7d | 2026-08-19 | 2026-08-27 | 3160, 2204, 3045 | 9d | Structural Steel Crew [1120 h] | 541,787.38 |
| 3230 |  | Precast wall panel erection - primary substation and generator enclosure |  | 9d | 2026-08-26 | 2026-09-07 | 3210, 3212, 2214 | 50d | Precast Erection Crew [1152 h] | 546,752.79 |
| 3216 |  | Structural steel erection - shared MEP spine and mezzanine |  | 14d | 2026-08-28 | 2026-09-16 | 3162, 3214 SS+4d | 6d | Structural Steel Crew [2240 h] | 536,052.59 |
| 3218 |  | Structural steel erection - gatehouse |  | 3d | 2026-08-28 | 2026-09-01 | 3164, 3214 | 60d | Structural Steel Crew [240 h] | 47,443.31 |
| 3232 |  | Precast wall panel erection - Hall 1 perimeter |  | 5d | 2026-08-28 | 2026-09-03 | 3214, 2214 | 15d | Precast Erection Crew [640 h] | 354,087.52 |
| 3238 |  | Panel joint gasketing and sealing - Section 1 (within 5 wd of erection, SPEC-02 4.4) |  | 8d | 2026-09-02 | 2026-09-11 | 3232 SS+3d, 3230 SS+3d | 66d | Precast Erection Crew [512 h] | 106,932.94 |
| 3234 |  | Precast EI 120 separating wall - Hall 1 / Hall 2 line (foundation to roof deck) |  | 4d | 2026-09-04 | 2026-09-09 | 3232 | 48d | Precast Erection Crew [256 h] | 118,029.17 |
| 3220 |  | Weld NDT, bolt torque inspection and frame dimensional survey - Section 1 |  | 8d | 2026-09-07 | 2026-09-16 | 3216 SS+6d, 3214, 3210 | 49d | QA/QC Inspector [128 h] | 106,932.94 |
| 3240 |  | In-situ RC blast and fire separation walls - primary substation |  | 12d | 2026-09-08 | 2026-09-23 | 3230 | 58d | Concrete Crew [960 h] | 476,084.06 |
| 3244 |  | Metal deck, roof purlins and side rails - substation, generator compound, gatehouse |  | 8d | 2026-09-08 | 2026-09-17 | 3230 | 50d | Structural Steel Crew [1280 h] | 181,803.97 |
| 3245 |  | Metal deck, roof purlins and side rails - Hall 1 |  | 5d | 2026-09-10 | 2026-09-16 | 3232, 3234 | 48d | Structural Steel Crew [800 h] | 130,898.86 |
| 3222 |  | Building Control structural frame inspection - Section 1 (Cond. 5) |  | 3d | 2026-09-17 | 2026-09-21 | 3220 | 49d | Site Management [72 h] | 29,668.2 |
| 3236 |  | Precast wall panel erection - shared MEP spine |  | 7d | 2026-09-17 | 2026-09-25 | 3216, 3232 | 6d | Precast Erection Crew [896 h] | 416,573.55 |
| 3250 |  | Applied fire protection to structural steel - Section 1 |  | 20d | 2026-09-22 | 2026-10-19 | 3245, 3244 SS+5d, 3222 | 49d | Fit-Out Crew [3200 h] | 262,697.63 |
| 3246 |  | Metal deck, roof purlins and side rails - shared MEP spine |  | 10d | 2026-09-28 | 2026-10-09 | 3236 | 6d | Structural Steel Crew [1600 h] | 219,679.8 |
| 3255 |  | Fire-stopping to EI 120 penetrations and witnessed inspection - Section 1 |  | 12d | 2026-10-12 | 2026-10-27 | 3250 SS+8d, 3246 | 47d | Fire Protection Crew [576 h] | 106,932.94 |
| 3260 |  | M: Section 1 structure complete | milestone | 0d | 2026-10-12 | 2026-10-12 | 3246, 3245, 3244, 3240 | 51d | Site Management |  |
| 3258 |  | Building Control fire compartmentation inspection - Section 1 (Cond. 5) |  | 3d | 2026-10-28 | 2026-10-30 | 3255 | 47d | Site Management [72 h] | 29,668.2 |
|  | 3.4 | **3.4 Envelope** |  |  | 2026-09-11 | 2026-11-16 |  |  |  |  |
| 3310 |  | Warm roof build-up and single-ply membrane - primary substation |  | 5d | 2026-09-11 | 2026-09-17 | 3244 SS+3d | 50d | Roofing Crew [400 h] | 126,338.96 |
| 3314 |  | Warm roof build-up and single-ply membrane - Hall 1 |  | 7d | 2026-09-17 | 2026-09-25 | 3245 | 48d | Roofing Crew [560 h] | 198,467.03 |
| 3312 |  | Warm roof build-up and single-ply membrane - generator compound |  | 4d | 2026-09-18 | 2026-09-23 | 3310 | 50d | Roofing Crew [160 h] | 109,110.92 |
| 3316 |  | Warm roof build-up and single-ply membrane - shared MEP spine |  | 10d | 2026-10-02 | 2026-10-15 | 3246 SS+4d | 7d | Roofing Crew [800 h] | 333,075.45 |
| 3330 |  | Insulated composite cladding - primary substation and generator enclosure |  | 14d | 2026-10-02 | 2026-10-21 | 3230, 2226 | 36d | Envelope Crew [1792 h] | 506,550.63 |
| 3332 |  | Insulated composite cladding - Hall 1 |  | 7d | 2026-10-02 | 2026-10-12 | 3232, 2226 | 31d | Envelope Crew [1344 h] | 306,673.84 |
| 3336 |  | Air barrier lap inspection and photographic record - Section 1 (SPEC-03 6) |  | 6d | 2026-10-07 | 2026-10-14 | 3332 SS+3d, 3330 SS+3d, 3238 | 49d | QA/QC Inspector [96 h] | 38,693.3 |
| 3334 |  | Insulated composite cladding - shared MEP spine and gatehouse |  | 10d | 2026-10-13 | 2026-10-26 | 3236, 3332, 3218 | 31d | Envelope Crew [1920 h] | 214,847.33 |
| 3318 |  | Roof membrane seam testing, flashings, upstands and plant curbs - Section 1 |  | 8d | 2026-10-16 | 2026-10-27 | 3316, 3314, 3312 | 34d | Roofing Crew [640 h] | 60,189.58 |
| 3320 |  | Rainwater goods, outlets and syphonic drainage - Section 1 |  | 10d | 2026-10-21 | 2026-11-03 | 3318 SS+3d | 35d | Roofing Crew [400 h] | 243,215.06 |
| 3342 |  | Personnel and equipment doors - Section 1 |  | 8d | 2026-10-22 | 2026-11-02 | 3332, 3330 | 36d | Envelope Crew [512 h] | 165,987.64 |
| 3340 |  | Acoustic louvres to cooling intake and discharge - Section 1 |  | 10d | 2026-10-27 | 2026-11-09 | 3334, 2226 | 31d | Envelope Crew [640 h] | 287,878.18 |
| 3322 |  | Roof safety line, walkways and access hatches - Section 1 |  | 6d | 2026-10-28 | 2026-11-04 | 3318 | 34d | Roofing Crew [240 h] | 120,379.17 |
| 3350 |  | Airtightness test q50 <= 1.0 - Section 1 (before fit-out closes junctions) |  | 4d | 2026-11-10 | 2026-11-13 | 3340, 3342, 3318, 3334, 3260, 3320, 3322, 3336 | 31d | QA/QC Inspector [64 h] | 58,039.95 |
| 3355 |  | M: Section 1 weathertight and enclosed | milestone | 0d | 2026-11-16 | 2026-11-16 | 3350 | 30d | Site Management |  |

| ID | WBS | Activity | Type | Duration | Start | Finish | Predecessors | Total float | Resources | Cost |
| --- | --- | --- | --- | --- | --- | --- | --- | --- | --- | --- |
|  | 3.5 | **3.5 Shared MEP Spine and Cooling Yard (full 10 MW)** |  |  | 2026-08-28 | 2027-01-11 |  |  |  |  |
| 3410 |  | Chiller yard and dry-cooler bases, plinths and bunding |  | 12d | 2026-08-28 | 2026-09-14 | 3152, 3170 | 39d | Concrete Crew [960 h] |  |
| 3412 |  | Chilled-water pipework - shared MEP spine, full length, welded and pre-insulated |  | 28d | 2026-10-12 | 2026-11-18 | 3316 SS+5d, 3246 | 6d | Pipefitting Crew [4032 h] | 961,115.09 |
| 3414 |  | Chilled-water pipework - cooling yard headers and hall risers |  | 14d | 2026-10-28 | 2026-11-16 | 3412 SS+12d, 3410 | 8d | Pipefitting Crew [1344 h] | 265,135.2 |
| 3424 |  | Primary and secondary pump sets, inverters and buffer vessels |  | 15d | 2026-11-02 | 2026-11-20 | 3412 SS+15d | 21d | Mechanical Crew [1920 h] | 795,405.59 |
| 3422 |  | Dry cooler / adiabatic unit installation - Section 1 allocation |  | 8d | 2026-11-06 | 2026-11-17 | 3410, 2174 | 46d | Mechanical Crew [1024 h] | 740,312.56 |
| 3416 |  | Pressure test 1.5x design 4 h witnessed - spine pipework (before insulation) |  | 5d | 2026-11-19 | 2026-11-25 | 3412, 3414 | 6d | Commissioning Team [240 h] | 304,979.26 |
| 3426 |  | Pressurisation, glycol dosing to -29 C and water treatment plant |  | 12d | 2026-11-23 | 2026-12-08 | 3424 | 21d | Mechanical Crew [768 h] | 800,570.56 |
| 3418 |  | Thermal insulation, identification and labelling - spine pipework |  | 15d | 2026-11-26 | 2026-12-16 | 3416 | 6d | Insulation Crew [480 h] | 600,120.49 |
| 3430 |  | Valves, strainers, commissioning sets and instrumentation - Section 1 |  | 18d | 2026-12-03 | 2026-12-30 | 3418 SS+5d | 17d | Pipefitting Crew [1728 h] | 914,937.78 |
| 3420 |  | Chiller installation 4 nr (N+1) - shared backup chiller zone |  | 8d | 2026-12-04 | 2026-12-15 | 3410, 2166 | 26d | Mechanical Crew [1024 h] | 547,486.96 |
| 3432 |  | Ventilation, smoke extract and comfort cooling - substation, spine and ancillary |  | 20d | 2026-12-08 | 2027-01-08 | 3418 SS+8d | 6d | Mechanical Crew [2560 h] | 1,872,302.12 |
| 3428 |  | Adiabatic make-up water system and WUE metering |  | 10d | 2026-12-09 | 2026-12-22 | 3426 | 21d | Mechanical Crew [640 h] | 895,261.7 |
| 3434 |  | M: Shared cooling spine mechanically complete (full 10 MW capacity) | milestone | 0d | 2027-01-11 | 2027-01-11 | 3430, 3420, 3422, 3428, 3432 | 11d | Site Management |  |
|  | 3.6 | **3.6 Primary Substation, HV and MV** |  |  | 2026-09-24 | 2027-02-22 |  |  |  |  |
| 3510 |  | Primary substation internal fit-out, containment and cable basement |  | 15d | 2026-09-24 | 2026-10-14 | 3240, 3310 | 58d | Fit-Out Crew [1200 h] |  |
| 3512 |  | Earthing, bonding, common bonding network and lightning protection - Section 1 |  | 15d | 2026-10-01 | 2026-10-21 | 3510 SS+5d | 98d | Electrical Crew [960 h] | 710,227.83 |
| 3514 |  | 110 kV termination, revenue metering and protection panels |  | 20d | 2026-10-15 | 2026-11-11 | 3510, 1330 | 83d | HV Electrical Crew [960 h] | 1,524,900.93 |
| 3520 |  | 20 kV ring cable installation along shared MEP spine to all four halls |  | 22d | 2026-10-26 | 2026-11-24 | 3246, 3412 SS+10d | 41d | Electrical Crew [2816 h] | 334,224.86 |
| 3522 |  | Hall 1 substation 20/0.4 kV - install and test |  | 8d | 2026-11-25 | 2026-12-04 | 3520, 3355 SS | 41d | Electrical Crew [512 h] | 279,913.32 |
| 3518 |  | 20 kV ring main switchboard and protection relays - install and test |  | 25d | 2027-01-04 | 2027-02-08 | 3510, 2114 | 4d | HV Electrical Crew [1200 h] | 280,748.88 |
| 3516 |  | 110/20 kV transformers - offload, position, oil fill, dry-out and HV site test |  | 20d | 2027-01-15 | 2027-02-11 | 3510, 2108 | 3d | HV Electrical Crew [960 h] | 616,227.09 |
| 3521 |  | 20 kV terminations, ring testing and hall substation connections |  | 12d | 2027-01-26 | 2027-02-10 | 3520, 3518 SS+15d | 22d | HV Electrical Crew [576 h] | 280,748.88 |
| 3524 |  | Arc-flash hazard analysis, labelling and safety signage (before energisation) |  | 6d | 2027-02-12 | 2027-02-19 | 3518, 3516, 3521 SS+6d | 15d | HV Electrical Crew [288 h] | 87,734.03 |
| 3526 |  | M: HV and MV installation complete and site-tested | milestone | 0d | 2027-02-22 | 2027-02-22 | 3524, 3514, 3521, 3512 | 14d | Site Management |  |

| ID | WBS | Activity | Type | Duration | Start | Finish | Predecessors | Total float | Resources | Cost |
| --- | --- | --- | --- | --- | --- | --- | --- | --- | --- | --- |
|  | 3.7 | **3.7 Generator Compound and Fuel System** |  |  | 2026-08-03 | 2027-02-25 |  |  |  |  |
| 3610 |  | Generator bases, bunding, oil separators and sealed drainage (Cond. 20) |  | 15d | 2026-08-03 | 2026-08-21 | 3157 | 105d | Civil Crew [1440 h] |  |
| 3614 |  | Bulk fuel storage, bunding, polishing plant and day tanks (48 h at full load) |  | 20d | 2026-08-24 | 2026-09-18 | 3610 | 113d | Mechanical Crew [1280 h] | 1,232,454.17 |
| 3612 |  | Standby generator installation 8 nr 2.5 MVA and acoustic enclosures |  | 16d | 2027-01-18 | 2027-02-08 | 3610, 3312, 2126 | 4d | Electrical Crew [2048 h] | 2,057,571.8 |
| 3616 |  | Generator exhaust, silencers and acoustic treatment to 45 dB(A) NE boundary |  | 12d | 2027-01-22 | 2027-02-08 | 3612 SS+4d | 16d | Mechanical Crew [768 h] | 167,112.43 |
| 3618 |  | Generator paralleling switchgear, ATS and control system |  | 12d | 2027-02-09 | 2027-02-24 | 3612, 3518 | 4d | Electrical Crew [768 h] | 1,378,677.55 |
| 3620 |  | M: Generator compound complete (20 MVA installed, N+1 for full site) | milestone | 0d | 2027-02-25 | 2027-02-25 | 3616, 3618, 3614 | 3d | Site Management |  |
|  | 3.8 | **3.8 Hall 1 MEP, ELV and Fit-Out** |  |  | 2026-08-11 | 2027-02-08 |  |  |  |  |
| 3748 |  | Two diverse fibre entry routes, ducts and meet-me room termination |  | 18d | 2026-08-11 | 2026-09-03 | 3022, 3152 SS+5d | 120d | ELV/ICT Crew [1152 h] | 298,842.64 |
| 3756 |  | Foul, water and utility connections at SW corner chamber |  | 10d | 2026-08-18 | 2026-08-31 | 3152 SS+10d | 119d | Civil Crew [480 h] | 436,099.09 |
| 3710 |  | Hall 1 - overhead containment, cable tray and busway support installation |  | 12d | 2026-11-16 | 2026-12-01 | 3250, 3355 SS, 1196 | 30d | Electrical Crew [1536 h] | 334,224.86 |
| 3722 |  | Hall 1 - CRAH units 7 nr (N+1) install and connect |  | 7d | 2026-11-16 | 2026-11-24 | 3355, 2184 | 50d | Mechanical Crew [896 h] | 140,099.85 |
| 3726 |  | Hall 1 - internal partitions, linings and fire-rated boarding |  | 10d | 2026-11-16 | 2026-11-27 | 3355, 3255, 2042, 3258 | 37d | Fit-Out Crew [1600 h] | 240,590.29 |
| 3752 |  | Site roads, hardstanding and service yard - Section 1 and gatehouse |  | 14d | 2026-11-16 | 2026-12-03 | 3355, 3022 | 55d | Civil Crew [1344 h] | 358,060.3 |
| 3738 |  | Section 1 - addressable fire detection and sprinkler to ancillary areas |  | 16d | 2026-11-23 | 2026-12-14 | 3710 SS+5d, 3510 | 41d | Fire Protection Crew [768 h] | 324,670.7 |
| 3744 |  | Section 1 - access control 5 layers, mantrap and ANPR vehicle gate |  | 20d | 2026-11-23 | 2026-12-18 | 3726 SS+5d, 3030 | 37d | Security Systems Crew [640 h] | 299,235.67 |
| 3754 |  | Stormwater attenuation, oil separators and discharge control - Section 1 |  | 16d | 2026-11-23 | 2026-12-14 | 3752 SS+5d, 3756 | 60d | Civil Crew [1536 h] | 355,765.04 |
| 3724 |  | Hall 1 - chilled-water riser, connections, pressure test and insulation |  | 10d | 2026-11-26 | 2026-12-09 | 3722 SS+3d, 3416 | 63d | Pipefitting Crew [960 h] | 165,709.5 |
| 3728 |  | Hall 1 - plant room and battery room floor and wall finishes |  | 8d | 2026-11-30 | 2026-12-09 | 3726 | 63d | Fit-Out Crew [640 h] | 103,293.21 |
| 3730 |  | Hall 1 - anti-static sealed floor coating (slab moisture hold, 2 coats) |  | 9d | 2026-11-30 | 2026-12-10 | 3726, 3166 | 53d | Fit-Out Crew [720 h] | 123,883.49 |
| 3746 |  | Section 1 - CCTV, 90 day retention and perimeter analytics |  | 15d | 2026-11-30 | 2026-12-18 | 3744 SS+5d | 37d | Security Systems Crew [480 h] | 199,490.45 |
| 3750 |  | Section 1 - structured cabling, containment and meet-me room fit-out |  | 12d | 2026-11-30 | 2026-12-15 | 3748, 3726 | 59d | ELV/ICT Crew [384 h] | 159,592.36 |
| 3718 |  | Hall 1 - overhead busway to rack PDU positions |  | 8d | 2026-12-02 | 2026-12-11 | 3710, 2154 | 47d | Electrical Crew [512 h] | 155,091.45 |
| 3734 |  | Hall 1 - aspirating smoke detection to white space |  | 8d | 2026-12-02 | 2026-12-11 | 3710 | 30d | Fire Protection Crew [384 h] | 76,471.34 |
| 3758 |  | External lighting, small power and gatehouse fit-out |  | 12d | 2026-12-04 | 2026-12-21 | 3752 | 55d | Electrical Crew [768 h] | 289,776.36 |
| 3712 |  | Hall 1 - LV main switchboards and distribution |  | 8d | 2026-12-07 | 2026-12-16 | 3522, 3710 SS+5d | 41d | Electrical Crew [512 h] | 274,807.11 |
| 3720 |  | Hall 1 - small power, lighting and per-feed energy metering |  | 14d | 2026-12-14 | 2027-01-05 | 3718 | 47d | Electrical Crew [1792 h] | 421,958.89 |
| 3732 |  | Hall 1 - cold-aisle containment framework and blanking (doors by Tenant) |  | 9d | 2026-12-14 | 2026-12-28 | 3730, 3718, 1350 | 52d | Fit-Out Crew [1440 h] | 205,048.54 |
| 3736 |  | Hall 1 - gaseous / water-mist suppression installation |  | 12d | 2026-12-14 | 2026-12-31 | 3734, 2244 | 30d | Fire Protection Crew [576 h] | 160,007.96 |
| 3740 |  | Section 1 - BMS field devices, panels and BACnet/IP integration |  | 25d | 2026-12-22 | 2027-01-29 | 3432 SS+10d, 2234 | 6d | BMS Crew [800 h] | 280,236.58 |
| 3714 |  | Hall 1 - UPS modules 4 nr 1000 kVA (N+1) install |  | 7d | 2027-01-05 | 2027-01-14 | 3712, 2136 | 31d | Electrical Crew [896 h] | 194,268.2 |
| 3716 |  | Hall 1 - battery room, lithium-ion system and off-gas detection |  | 10d | 2027-01-15 | 2027-01-28 | 3714, 2144 | 31d | Electrical Crew [640 h] | 91,911.84 |
| 3742 |  | Section 1 - DCIM install, point mapping and per-hall reporting configuration |  | 15d | 2027-01-18 | 2027-02-05 | 3740 SS+15d | 6d | BMS Crew [480 h] | 212,789.81 |
| 3760 |  | M: Section 1 installation complete - ready for L3 | milestone | 0d | 2027-02-08 | 2027-02-08 | 3732, 3736, 3720, 3742, 3746, 3750, 3758, 3724, 3716, 3754, 3738, 3728 | 24d | Site Management |  |

| ID | WBS | Activity | Type | Duration | Start | Finish | Predecessors | Total float | Constraint | Calendar | Resources | Cost |
| --- | --- | --- | --- | --- | --- | --- | --- | --- | --- | --- | --- | --- |
|  | 3.9 | **3.9 Section 1 Commissioning, Inspection and Handover** |  |  | 2026-12-15 | 2027-04-30 |  |  |  |  |  |  |
| 3824 |  | Stormwater attenuation witnessed flow test at boundary discharge (SPEC-08 6.2) |  | 3d | 2026-12-15 | 2026-12-17 | 3754 | 82d |  |  | Civil Crew [144 h] |  |
| 3822 |  | Fibre route as-built separation survey and acceptance (SPEC-08 6.1) |  | 4d | 2026-12-16 | 2026-12-21 | 3748, 3750 | 80d |  |  | ELV/ICT Crew [128 h] |  |
| 3828 |  | As-built drawings, O&M manuals and statutory certificates - Section 1 |  | 20d | 2027-01-18 | 2027-02-12 | 3722, 3742 SS | 45d |  |  | BIM Team [640 h] | 49,734.43 |
| 3810 |  | L2 site delivery, static inspection, IR testing and nameplate verification - Section 1 |  | 12d | 2027-01-19 | 2027-02-03 | 3434 SS+5d, 3518 SS+10d | 10d |  |  | Commissioning Team [576 h] | 60,182.84 |
| 3812 |  | L3 mechanical component start-up - chillers, dry coolers, pumps, CRAH (Hall 1) |  | 15d | 2027-01-26 | 2027-02-15 | 3434, 3810 SS+5d, 3722 | 10d |  |  | Commissioning Team [720 h] | 60,182.84 |
| 3816 |  | L3 ELV, BMS/DCIM point-to-point and cause-and-effect witness - Section 1 |  | 15d | 2027-02-08 | 2027-02-26 | 3742, 3736, 3746, 3738, 3812 SS+5d | 6d |  |  | Commissioning Team [720 h] | 40,121.9 |
| 3814 |  | L3 electrical component start-up, relay testing and switchgear functional test |  | 18d | 2027-02-12 | 2027-03-09 | 3516, 3518, 3810 SS+5d | 3d |  |  | Commissioning Team [864 h] | 60,182.84 |
| 3826 |  | Operator training - Section 1 (5 days per discipline) |  | 10d | 2027-02-15 | 2027-02-26 | 3816 SS+5d | 35d |  |  | Commissioning Team [480 h] | 24,867.22 |
| 3815 |  | L3 generator, ATS and paralleling functional test (09:00-16:00 window, Cond. 15) |  | 8d | 2027-02-25 | 2027-03-08 | 3618, 3614, 3616, 3620 | 4d |  |  | Commissioning Team [384 h] |  |
| 3820 |  | Suppression discharge test, witnessed (before occupancy inspection, SPEC-07 6.2) |  | 4d | 2027-03-01 | 2027-03-04 | 3816, 3736 | 6d |  |  | Commissioning Team [192 h] | 12,342.26 |
| 3818 |  | Discrimination study re-verification against as-built settings (SPEC-06 5.3.2) |  | 5d | 2027-03-03 | 2027-03-09 | 3814 SS+13d | 3d |  |  | MEP Design [120 h] | 16,820.39 |
| 3830 |  | M: Section 1 ready for energisation (all L3 complete, arc-flash labelled) | milestone | 0d | 2027-03-10 | 2027-03-10 | 3818, 3816, 3815, 3820, 3524, 3812, 3526, 3760 | 2d |  |  | Site Management |  |
| 3840 |  | M: DNO Stage 1 grid energisation - 110 kV live, 6.5 MVA released (MS-09) | milestone | 0d | 2027-03-12 | 2027-03-12 | 3830, 1265, 1275, 1330, 3514 | 0d | start on 2027-03-12 |  | Site Management |  |
| 3842 |  | HV/MV energisation, revenue metering and protection intertrip proving |  | 5d | 2027-03-12 | 2027-03-18 | 3840 | 1d |  |  | HV Electrical Crew [240 h] |  |
| 3844 |  | L4 integrated systems test - black building, loss of utility, chiller, UPS and generator |  | 15d | 2027-03-19 | 2027-04-12 | 3842, 1290 | 1d |  |  | Commissioning Team [720 h] | 136,414.45 |
| 3846 |  | L5 24 h continuous load-bank test at full 10 MW shared capacity |  | 4d | 2027-04-13 | 2027-04-16 | 3844 | 1d |  | CAL-04 Continuous commissioning 7-day | Commissioning Team [192 h] | 212,741.58 |
| 3848 |  | L5 repeat 10 s load acceptance with one generator out of service (N+1 proof) |  | 3d | 2027-04-17 | 2027-04-19 | 3846 | 1d |  | CAL-04 Continuous commissioning 7-day | Commissioning Team [144 h] | 64,959.26 |
| 3850 |  | Final snagging close-out and Section 1 completion documentation |  | 3d | 2027-04-20 | 2027-04-22 | 3848, 3828, 3826, 3822, 3824 | 1d |  |  | Site Management [144 h] | 46,488.58 |
| 3852 |  | Occupancy inspection - kayttoonottotarkastus Section 1 (Permit Cond. 6) |  | 2d | 2027-04-23 | 2027-04-26 | 3850 | 1d |  |  | Site Management [48 h] | 32,121.06 |
| 3854 |  | Tenant technical acceptance and credential database integration - Hall 1 |  | 3d | 2027-04-27 | 2027-04-29 | 3852, 1345 | 1d |  |  | Commissioning Team [144 h] |  |
| 3860 |  | M: SECTION 1 TAKING OVER (contract Month 14 - 2 May 2027) | milestone | 0d | 2027-04-30 | 2027-04-30 | 3854 | 0d | finish on or before 2027-05-02 |  | Site Management |  |
|  | 4 | **4 Section 2 - Data Hall 2 and Associated Plant** |  |  | 2026-08-28 | 2027-05-28 |  |  |  |  |  |  |
|  | 4.1 | **4.1 Substructure** |  |  | 2026-08-28 | 2026-11-23 |  |  |  |  |  |  |
| 4110 |  | Bulk excavation in glacial till - Hall 2 (central zone) |  | 6d | 2026-08-28 | 2026-09-04 | 3112, 3232 SS | 63d |  |  | Earthworks Crew [768 h] | 72,834.2 |
| 4115 |  | Pad foundations on till / rock-founded piers - Hall 2 (confirmed hole by hole) |  | 12d | 2026-09-07 | 2026-09-22 | 4110, 1184, 3130, 1060 | 63d |  |  | Concrete Crew [1920 h] | 106,931.5 |
| 4120 |  | Ground beams and pile caps - Hall 2 |  | 8d | 2026-09-23 | 2026-10-02 | 4115 | 63d |  |  | Concrete Crew [1280 h] | 94,824.68 |
| 4125 |  | Sub-base, capping and geotextile - Hall 2 |  | 4d | 2026-10-05 | 2026-10-08 | 4120 | 63d |  |  | Earthworks Crew [256 h] | 88,735.02 |
| 4130 |  | Ground-bearing slab 250 mm - Hall 2 (25 kN/m2, FM2) |  | 8d | 2026-10-09 | 2026-10-20 | 4125, 3160 | 63d |  |  | Concrete Crew [1280 h] | 307,962.71 |
| 4140 |  | M: Hall 2 substructure complete | milestone | 0d | 2026-10-21 | 2026-10-21 | 4130 | 62d |  |  | Site Management |  |
| 4135 |  | Slab cure, cube results and FM2 flatness survey - Hall 2 |  | 4d | 2026-11-18 | 2026-11-23 | 4130 FS+20d | 94d |  |  | QA/QC Inspector [64 h] | 26,912.62 |

| ID | WBS | Activity | Type | Duration | Start | Finish | Predecessors | Total float | Resources | Cost |
| --- | --- | --- | --- | --- | --- | --- | --- | --- | --- | --- |
|  | 4.2 | **4.2 Superstructure and Envelope** |  |  | 2026-10-21 | 2026-12-11 |  |  |  |  |
| 4210 |  | Structural steel erection - Hall 2 frame |  | 7d | 2026-10-21 | 2026-10-29 | 4130, 2204, 3214, 4140 | 63d | Structural Steel Crew [1120 h] | 636,617.23 |
| 4215 |  | Weld NDT, bolt torque inspection and frame dimensional survey - Hall 2 |  | 5d | 2026-10-30 | 2026-11-05 | 4210 | 95d | QA/QC Inspector [80 h] | 53,466.47 |
| 4220 |  | Precast wall panel erection - Hall 2 perimeter |  | 5d | 2026-10-30 | 2026-11-05 | 4210, 3234 | 63d | Precast Erection Crew [640 h] | 354,087.52 |
| 4230 |  | Panel joint gasketing and sealing - Hall 2 (within 5 wd, SPEC-02 4.4) |  | 4d | 2026-11-04 | 2026-11-09 | 4220 SS+3d | 85d | Precast Erection Crew [256 h] | 53,466.47 |
| 4225 |  | Precast EI 120 separating wall - Hall 2 / Hall 3 line (foundation to roof deck) |  | 4d | 2026-11-06 | 2026-11-11 | 4220 | 67d | Precast Erection Crew [256 h] | 118,029.17 |
| 4260 |  | Insulated composite cladding - Hall 2 |  | 7d | 2026-11-06 | 2026-11-16 | 4220, 3334 | 72d | Envelope Crew [1344 h] | 306,673.84 |
| 4235 |  | Metal deck, roof purlins and side rails - Hall 2 |  | 5d | 2026-11-12 | 2026-11-18 | 4220, 4225 | 67d | Structural Steel Crew [800 h] | 130,898.86 |
| 4250 |  | Warm roof build-up and single-ply membrane - Hall 2 |  | 7d | 2026-11-17 | 2026-11-25 | 4235 SS+3d, 3316 | 67d | Roofing Crew [560 h] | 198,467.03 |
| 4265 |  | Acoustic louvres and doors - Hall 2 |  | 8d | 2026-11-17 | 2026-11-26 | 4260 | 72d | Envelope Crew [512 h] | 144,527.23 |
| 4240 |  | Applied fire protection to structural steel - Hall 2 |  | 8d | 2026-11-19 | 2026-11-30 | 4235, 3250 | 74d | Fit-Out Crew [640 h] | 68,106.79 |
| 4245 |  | Fire-stopping to EI 120 penetrations and witnessed inspection - Hall 2 |  | 8d | 2026-11-25 | 2026-12-04 | 4240 SS+4d | 74d | Fire Protection Crew [384 h] | 53,466.47 |
| 4255 |  | Roof seam testing, flashings, upstands and rainwater goods - Hall 2 |  | 6d | 2026-11-26 | 2026-12-03 | 4250 | 67d | Roofing Crew [240 h] | 90,898.56 |
| 4270 |  | Air barrier lap inspection and airtightness test q50 <= 1.0 - Hall 2 |  | 5d | 2026-12-04 | 2026-12-10 | 4265, 4255, 4230 | 67d | QA/QC Inspector [80 h] | 38,693.3 |
| 4248 |  | Building Control frame and fire compartmentation inspection - Hall 2 |  | 3d | 2026-12-07 | 2026-12-09 | 4245, 4215 | 74d | Site Management [72 h] | 29,668.2 |
| 4275 |  | M: Hall 2 weathertight and enclosed | milestone | 0d | 2026-12-11 | 2026-12-11 | 4270 | 66d | Site Management |  |
|  | 4.3 | **4.3 MEP, ELV and Fit-Out** |  |  | 2026-12-11 | 2027-03-15 |  |  |  |  |
| 4310 |  | Hall 2 - overhead containment, cable tray and busway supports |  | 10d | 2026-12-11 | 2026-12-28 | 4240, 4275 SS, 3710 | 66d | Electrical Crew [1280 h] | 167,112.43 |
| 4340 |  | Hall 2 - internal partitions, linings and fire-rated boarding |  | 8d | 2026-12-11 | 2026-12-22 | 4275, 4245, 3234, 4248 | 73d | Fit-Out Crew [1280 h] | 240,590.29 |
| 4345 |  | Hall 2 - plant room and battery room finishes |  | 6d | 2026-12-23 | 2027-01-04 | 4340 | 85d | Fit-Out Crew [480 h] | 103,293.21 |
| 4350 |  | Hall 2 - anti-static sealed floor coating (moisture hold, 2 coats) |  | 9d | 2026-12-23 | 2027-01-08 | 4340, 4135 | 73d | Fit-Out Crew [720 h] | 123,883.49 |
| 4370 |  | Hall 2 - access control, CCTV and structured cabling |  | 12d | 2026-12-23 | 2027-01-13 | 4340, 3746 | 79d | Security Systems Crew [384 h] | 246,038.22 |
| 4325 |  | Hall 2 - overhead busway, small power, lighting and metering |  | 14d | 2026-12-29 | 2027-01-19 | 4310, 2154 | 66d | Electrical Crew [1792 h] | 409,937.91 |
| 4360 |  | Hall 2 - aspirating smoke detection and suppression installation |  | 14d | 2027-01-04 | 2027-01-22 | 4310, 2244, 3736 | 72d | Fire Protection Crew [672 h] | 198,243.63 |
| 4330 |  | Hall 2 - CRAH units 7 nr (N+1), chilled-water riser and connections |  | 10d | 2027-01-11 | 2027-01-22 | 4275, 2184, 3434 | 58d | Mechanical Crew [1280 h] | 305,809.35 |
| 4355 |  | Hall 2 - cold-aisle containment framework and blanking |  | 9d | 2027-01-20 | 2027-02-01 | 4350, 4325 | 66d | Fit-Out Crew [1440 h] | 205,048.54 |
| 4335 |  | Hall 2 - pipework pressure test 4 h witnessed and insulation |  | 8d | 2027-01-25 | 2027-02-03 | 4330 | 64d | Pipefitting Crew [384 h] | 455,009.38 |
| 4365 |  | Hall 2 - BMS/DCIM field devices, points and integration |  | 14d | 2027-02-08 | 2027-02-25 | 4330, 3742 | 48d | BMS Crew [448 h] | 246,513.19 |
| 4315 |  | Hall 2 - substation 20/0.4 kV, LV switchboards and distribution |  | 10d | 2027-02-11 | 2027-02-24 | 4310 SS+5d, 3521 | 37d | Electrical Crew [640 h] | 554,720.43 |
| 4320 |  | Hall 2 - UPS modules 4 nr (N+1) and battery room installation |  | 12d | 2027-02-25 | 2027-03-12 | 4315, 2136, 2144, 3716 | 37d | Electrical Crew [1536 h] | 286,180.04 |
| 4375 |  | M: Hall 2 installation complete - ready for L3 | milestone | 0d | 2027-03-15 | 2027-03-15 | 4355, 4360, 4365, 4370, 4320, 4335, 4345 | 36d | Site Management |  |

| ID | WBS | Activity | Type | Duration | Start | Finish | Predecessors | Total float | Constraint | Calendar | Resources | Cost |
| --- | --- | --- | --- | --- | --- | --- | --- | --- | --- | --- | --- | --- |
|  | 4.4 | **4.4 Commissioning, Inspection and Handover** |  |  | 2027-03-15 | 2027-05-28 |  |  |  |  |  |  |
| 4410 |  | L2/L3 component start-up and functional testing - Hall 2 |  | 15d | 2027-03-15 | 2027-04-06 | 4375, 3816 | 37d |  |  | Commissioning Team [720 h] | 40,121.9 |
| 4415 |  | Discrimination re-verification and cause-and-effect witness - Hall 2 |  | 5d | 2027-04-07 | 2027-04-13 | 4410 | 37d |  |  | Commissioning Team [240 h] | 12,342.26 |
| 4430 |  | Suppression discharge test, operator training and as-built documentation - Hall 2 |  | 8d | 2027-04-12 | 2027-04-21 | 4415 SS+3d | 42d |  |  | Commissioning Team [384 h] | 24,867.22 |
| 4420 |  | L4 integrated systems test - Hall 2 (failure modes, loss of utility) |  | 10d | 2027-04-30 | 2027-05-14 | 4415, 3860 | 25d |  |  | Commissioning Team [480 h] | 136,414.45 |
| 4425 |  | L5 24 h continuous load-bank test at full Section 2 load (2.5 MW) |  | 3d | 2027-05-15 | 2027-05-17 | 4420, 1290 | 35d |  | CAL-04 Continuous commissioning 7-day | Commissioning Team [144 h] | 147,782.32 |
| 4435 |  | Final snagging close-out and Section 2 completion documentation |  | 3d | 2027-05-18 | 2027-05-20 | 4425, 4430 | 25d |  |  | Site Management [144 h] | 29,668.2 |
| 4440 |  | Occupancy inspection - kayttoonottotarkastus Section 2 (Permit Cond. 6) |  | 2d | 2027-05-21 | 2027-05-24 | 4435 | 25d |  |  | Site Management [48 h] | 32,121.06 |
| 4445 |  | Tenant technical acceptance - Hall 2 |  | 3d | 2027-05-25 | 2027-05-27 | 4440 | 25d |  |  | Commissioning Team [144 h] |  |
| 4450 |  | M: SECTION 2 TAKING OVER (contract Month 16 - 2 July 2027) | milestone | 0d | 2027-05-28 | 2027-05-28 | 4445 | 24d | finish on or before 2027-07-02 |  | Site Management |  |
|  | 5 | **5 Section 3 - Data Hall 3 and Associated Plant** |  |  | 2026-10-30 | 2027-06-24 |  |  |  |  |  |  |
|  | 5.1 | **5.1 Substructure** |  |  | 2026-10-30 | 2027-02-10 |  |  |  |  |  |  |
| 5110 |  | Bulk excavation in glacial till - Hall 3 (central zone, winter productivity applied) |  | 9d | 2026-10-30 | 2026-11-11 | 4110, 4220 SS | 63d |  |  | Earthworks Crew [1152 h] | 72,834.2 |
| 5115 |  | Pad foundations on till / rock-founded piers - Hall 3 |  | 14d | 2026-11-12 | 2026-12-01 | 5110, 4115 | 63d |  |  | Concrete Crew [2240 h] | 106,931.5 |
| 5120 |  | Ground beams and pile caps - Hall 3 |  | 9d | 2026-12-02 | 2026-12-14 | 5115 | 63d |  |  | Concrete Crew [1440 h] | 94,824.68 |
| 5125 |  | Sub-base, capping and geotextile - Hall 3 |  | 5d | 2026-12-15 | 2026-12-21 | 5120 | 63d |  |  | Earthworks Crew [320 h] | 88,735.02 |
| 5130 |  | Ground-bearing slab 250 mm - Hall 3 (winter concreting allowance) |  | 9d | 2026-12-22 | 2027-01-07 | 5125, 4130 | 63d |  |  | Concrete Crew [1440 h] | 307,962.71 |
| 5140 |  | M: Hall 3 substructure complete | milestone | 0d | 2027-01-08 | 2027-01-08 | 5130 | 62d |  |  | Site Management |  |
| 5135 |  | Slab cure, cube results and FM2 flatness survey - Hall 3 |  | 4d | 2027-02-05 | 2027-02-10 | 5130 FS+20d | 90d |  |  | QA/QC Inspector [64 h] | 26,912.62 |
|  | 5.2 | **5.2 Superstructure and Envelope** |  |  | 2027-01-08 | 2027-03-02 |  |  |  |  |  |  |
| 5210 |  | Structural steel erection - Hall 3 frame |  | 7d | 2027-01-08 | 2027-01-18 | 5130, 4210, 5140 | 63d |  |  | Structural Steel Crew [1120 h] | 636,617.23 |
| 5215 |  | Weld NDT, bolt torque inspection and frame dimensional survey - Hall 3 |  | 5d | 2027-01-19 | 2027-01-25 | 5210 | 91d |  |  | QA/QC Inspector [80 h] | 53,466.47 |
| 5220 |  | Precast wall panel erection - Hall 3 perimeter |  | 5d | 2027-01-19 | 2027-01-25 | 5210, 4225 | 63d |  |  | Precast Erection Crew [640 h] | 354,087.52 |
| 5230 |  | Panel joint gasketing and sealing - Hall 3 (within 5 wd, SPEC-02 4.4) |  | 4d | 2027-01-22 | 2027-01-27 | 5220 SS+3d | 81d |  |  | Precast Erection Crew [256 h] | 53,466.47 |
| 5225 |  | Precast EI 120 separating wall - Hall 3 / Hall 4 line (foundation to roof deck) |  | 4d | 2027-01-26 | 2027-01-29 | 5220 | 63d |  |  | Precast Erection Crew [256 h] | 118,029.17 |
| 5260 |  | Insulated composite cladding - Hall 3 |  | 7d | 2027-01-26 | 2027-02-03 | 5220, 4260 | 68d |  |  | Envelope Crew [1344 h] | 306,673.84 |
| 5235 |  | Metal deck, roof purlins and side rails - Hall 3 |  | 5d | 2027-02-01 | 2027-02-05 | 5220, 5225 | 63d |  |  | Structural Steel Crew [800 h] | 130,898.86 |
| 5250 |  | Warm roof build-up and single-ply membrane - Hall 3 |  | 7d | 2027-02-04 | 2027-02-12 | 5235 SS+3d, 4250 | 63d |  |  | Roofing Crew [560 h] | 198,467.03 |
| 5265 |  | Acoustic louvres and doors - Hall 3 |  | 8d | 2027-02-04 | 2027-02-15 | 5260 | 68d |  |  | Envelope Crew [512 h] | 144,527.23 |
| 5240 |  | Applied fire protection to structural steel - Hall 3 |  | 8d | 2027-02-08 | 2027-02-17 | 5235, 4240 | 70d |  |  | Fit-Out Crew [640 h] | 68,106.79 |
| 5245 |  | Fire-stopping to EI 120 penetrations and witnessed inspection - Hall 3 |  | 8d | 2027-02-12 | 2027-02-23 | 5240 SS+4d | 70d |  |  | Fire Protection Crew [384 h] | 53,466.47 |
| 5255 |  | Roof seam testing, flashings, upstands and rainwater goods - Hall 3 |  | 6d | 2027-02-15 | 2027-02-22 | 5250 | 63d |  |  | Roofing Crew [240 h] | 90,898.56 |
| 5270 |  | Air barrier lap inspection and airtightness test q50 <= 1.0 - Hall 3 |  | 5d | 2027-02-23 | 2027-03-01 | 5265, 5255, 5230 | 63d |  |  | QA/QC Inspector [80 h] | 38,693.3 |
| 5248 |  | Building Control frame and fire compartmentation inspection - Hall 3 |  | 3d | 2027-02-24 | 2027-02-26 | 5245, 5215 | 70d |  |  | Site Management [72 h] | 29,668.2 |
| 5275 |  | M: Hall 3 weathertight and enclosed | milestone | 0d | 2027-03-02 | 2027-03-02 | 5270 | 62d |  |  | Site Management |  |

| ID | WBS | Activity | Type | Duration | Start | Finish | Predecessors | Total float | Constraint | Calendar | Resources | Cost |
| --- | --- | --- | --- | --- | --- | --- | --- | --- | --- | --- | --- | --- |
|  | 5.3 | **5.3 MEP, ELV and Fit-Out** |  |  | 2027-03-02 | 2027-04-20 |  |  |  |  |  |  |
| 5310 |  | Hall 3 - overhead containment, cable tray and busway supports |  | 10d | 2027-03-02 | 2027-03-15 | 5240, 5275 SS, 4310 | 62d |  |  | Electrical Crew [1280 h] | 167,112.43 |
| 5330 |  | Hall 3 - CRAH units 7 nr (N+1), chilled-water riser and connections |  | 10d | 2027-03-02 | 2027-03-15 | 5275, 2184, 3434, 4330 | 71d |  |  | Mechanical Crew [1280 h] | 305,809.35 |
| 5340 |  | Hall 3 - internal partitions, linings and fire-rated boarding |  | 8d | 2027-03-02 | 2027-03-11 | 5275, 5245, 4225, 4340, 5248 | 69d |  |  | Fit-Out Crew [1280 h] | 240,590.29 |
| 5315 |  | Hall 3 - substation 20/0.4 kV, LV switchboards and distribution |  | 10d | 2027-03-09 | 2027-03-22 | 5310 SS+5d, 3521 | 68d |  |  | Electrical Crew [640 h] | 554,720.43 |
| 5345 |  | Hall 3 - plant room and battery room finishes |  | 6d | 2027-03-12 | 2027-03-19 | 5340, 4345 | 81d |  |  | Fit-Out Crew [480 h] | 103,293.21 |
| 5350 |  | Hall 3 - anti-static sealed floor coating (moisture hold, 2 coats) |  | 9d | 2027-03-12 | 2027-03-24 | 5340, 5135, 4350 | 69d |  |  | Fit-Out Crew [720 h] | 123,883.49 |
| 5370 |  | Hall 3 - access control, CCTV and structured cabling |  | 12d | 2027-03-12 | 2027-03-31 | 5340, 4370 | 75d |  |  | Security Systems Crew [384 h] | 246,038.22 |
| 5325 |  | Hall 3 - overhead busway, small power, lighting and metering |  | 14d | 2027-03-16 | 2027-04-06 | 5310, 2154, 4325 | 62d |  |  | Electrical Crew [1792 h] | 409,937.91 |
| 5335 |  | Hall 3 - pipework pressure test 4 h witnessed and insulation |  | 8d | 2027-03-16 | 2027-03-25 | 5330, 4335 | 77d |  |  | Pipefitting Crew [384 h] | 455,009.38 |
| 5360 |  | Hall 3 - aspirating smoke detection and suppression installation |  | 14d | 2027-03-16 | 2027-04-06 | 5310, 2244, 4360 | 71d |  |  | Fire Protection Crew [672 h] | 198,243.63 |
| 5365 |  | Hall 3 - BMS/DCIM field devices, points and integration |  | 14d | 2027-03-16 | 2027-04-06 | 5330, 4365 | 71d |  |  | BMS Crew [448 h] | 246,513.19 |
| 5320 |  | Hall 3 - UPS modules 4 nr (N+1) and battery room installation |  | 12d | 2027-03-23 | 2027-04-09 | 5315, 4320 | 68d |  |  | Electrical Crew [1536 h] | 286,180.04 |
| 5355 |  | Hall 3 - cold-aisle containment framework and blanking |  | 9d | 2027-04-07 | 2027-04-19 | 5350, 5325, 4355 | 62d |  |  | Fit-Out Crew [1440 h] | 205,048.54 |
| 5375 |  | M: Hall 3 installation complete - ready for L3 | milestone | 0d | 2027-04-20 | 2027-04-20 | 5355, 5360, 5365, 5370, 5320, 5335, 5345 | 61d |  |  | Site Management |  |
|  | 5.4 | **5.4 Commissioning, Inspection and Handover** |  |  | 2027-04-20 | 2027-06-24 |  |  |  |  |  |  |
| 5410 |  | L2/L3 component start-up and functional testing - Hall 3 |  | 15d | 2027-04-20 | 2027-05-11 | 5375, 4410 | 62d |  |  | Commissioning Team [720 h] | 40,121.9 |
| 5415 |  | Discrimination re-verification and cause-and-effect witness - Hall 3 |  | 5d | 2027-05-12 | 2027-05-18 | 5410 | 62d |  |  | Commissioning Team [240 h] | 12,342.26 |
| 5430 |  | Suppression discharge test, operator training and as-built documentation - Hall 3 |  | 8d | 2027-05-17 | 2027-05-26 | 5415 SS+3d | 68d |  |  | Commissioning Team [384 h] | 24,867.22 |
| 5420 |  | L4 integrated systems test - Hall 3 (failure modes, loss of utility) |  | 10d | 2027-05-28 | 2027-06-10 | 5415, 4450 | 55d |  |  | Commissioning Team [480 h] | 136,414.45 |
| 5425 |  | L5 24 h continuous load-bank test at full Section 3 load (2.5 MW) |  | 3d | 2027-06-11 | 2027-06-13 | 5420, 1290 | 100d |  | CAL-04 Continuous commissioning 7-day | Commissioning Team [144 h] | 147,782.32 |
| 5435 |  | Final snagging close-out and Section 3 completion documentation |  | 3d | 2027-06-14 | 2027-06-16 | 5425, 5430 | 56d |  |  | Site Management [144 h] | 29,668.2 |
| 5440 |  | Occupancy inspection - kayttoonottotarkastus Section 3 (Permit Cond. 6) |  | 2d | 2027-06-17 | 2027-06-18 | 5435 | 56d |  |  | Site Management [48 h] | 32,121.06 |
| 5445 |  | Tenant technical acceptance - Hall 3 |  | 3d | 2027-06-21 | 2027-06-23 | 5440 | 56d |  |  | Commissioning Team [144 h] |  |
| 5450 |  | M: SECTION 3 TAKING OVER (contract Month 19 - 2 October 2027) | milestone | 0d | 2027-06-24 | 2027-06-24 | 5445 | 55d | finish on or before 2027-10-02 |  | Site Management |  |

| ID | WBS | Activity | Type | Duration | Start | Finish | Predecessors | Total float | Resources | Cost |
| --- | --- | --- | --- | --- | --- | --- | --- | --- | --- | --- |
|  | 6 | **6 Section 4 - Data Hall 4, Admin/NOC Block and External Works** |  |  | 2026-06-16 | 2027-10-29 |  |  |  |  |
|  | 6.1 | **6.1 Substructure** |  |  | 2026-06-16 | 2027-03-03 |  |  |  |  |
| 6105 |  | Drill and blast - Hall 4, admin/NOC and east external works (single 2026 campaign) |  | 20d | 2026-06-16 | 2026-08-04 | 3120 | 172d | Blasting Crew [960 h] | 221,854.6 |
| 6108 |  | Rock excavation, mucking away and vibration record - east zone |  | 12d | 2026-06-25 | 2026-07-31 | 6105 SS+6d | 172d | Earthworks Crew [1536 h] | 144,926.3 |
| 6110 |  | Bulk excavation in glacial till - Hall 4 and admin/NOC block |  | 8d | 2026-11-20 | 2026-12-01 | 6108, 5110, 4220 SS+15d | 93d | Earthworks Crew [1024 h] | 97,093.59 |
| 6115 |  | Direct-to-rock and rock-socketed foundations - Hall 4 and admin/NOC |  | 14d | 2026-12-02 | 2026-12-21 | 6110, 1184, 5115 | 93d | Piling Crew [1344 h] | 293,306.45 |
| 6120 |  | Ground beams and pile caps - Section 4 |  | 10d | 2026-12-22 | 2027-01-08 | 6115 | 93d | Concrete Crew [1600 h] | 95,694.63 |
| 6125 |  | Sub-base, capping and geotextile - Section 4 |  | 6d | 2027-01-11 | 2027-01-18 | 6120 | 93d | Earthworks Crew [384 h] | 120,829.57 |
| 6130 |  | Ground-bearing slab 250 mm - Hall 4 (25 kN/m2, FM2) |  | 8d | 2027-01-19 | 2027-01-28 | 6125, 5130 | 93d | Concrete Crew [1280 h] | 307,962.71 |
| 6132 |  | Ground-bearing slab and ground floor structure - admin/NOC block |  | 5d | 2027-01-25 | 2027-01-29 | 6125, 6130 SS+4d | 93d | Concrete Crew [400 h] | 111,386.98 |
| 6140 |  | M: Section 4 substructure complete | milestone | 0d | 2027-02-01 | 2027-02-01 | 6130, 6132 | 92d | Site Management |  |
| 6135 |  | Slab cure, cube results and FM2 flatness survey - Hall 4 |  | 4d | 2027-02-26 | 2027-03-03 | 6130 FS+20d | 135d | QA/QC Inspector [64 h] | 26,912.62 |
|  | 6.2 | **6.2 Superstructure and Envelope** |  |  | 2027-02-01 | 2027-03-18 |  |  |  |  |
| 6210 |  | Structural steel erection - Hall 4 frame |  | 7d | 2027-02-01 | 2027-02-09 | 6130, 5210, 6140 | 93d | Structural Steel Crew [1120 h] | 636,617.23 |
| 6215 |  | Weld NDT, bolt torque inspection and frame dimensional survey - Hall 4 |  | 5d | 2027-02-10 | 2027-02-16 | 6210 | 135d | QA/QC Inspector [80 h] | 53,466.47 |
| 6220 |  | Precast wall panel erection - Hall 4 perimeter |  | 5d | 2027-02-10 | 2027-02-16 | 6210, 5225 | 96d | Precast Erection Crew [640 h] | 354,087.52 |
| 6230 |  | Panel joint gasketing and sealing - Hall 4 (within 5 wd, SPEC-02 4.4) |  | 4d | 2027-02-15 | 2027-02-18 | 6220 SS+3d | 125d | Precast Erection Crew [256 h] | 53,466.47 |
| 6235 |  | Metal deck, roof purlins and side rails - Hall 4 |  | 5d | 2027-02-17 | 2027-02-23 | 6220 | 111d | Structural Steel Crew [800 h] | 130,898.86 |
| 6260 |  | Insulated composite cladding - Hall 4 (east zone, after blasting, SPEC-03 4.5) |  | 7d | 2027-02-17 | 2027-02-25 | 6220, 5260, 6108 | 112d | Envelope Crew [1344 h] | 306,673.84 |
| 6250 |  | Warm roof build-up and single-ply membrane - Hall 4 |  | 7d | 2027-02-22 | 2027-03-02 | 6235 SS+3d, 5250 | 111d | Roofing Crew [560 h] | 198,467.03 |
| 6240 |  | Applied fire protection to structural steel - Hall 4 |  | 8d | 2027-02-24 | 2027-03-05 | 6235, 5240 | 118d | Fit-Out Crew [640 h] | 68,106.79 |
| 6265 |  | Acoustic louvres and doors - Hall 4 |  | 8d | 2027-02-26 | 2027-03-09 | 6260 | 112d | Envelope Crew [512 h] | 150,979.06 |
| 6245 |  | Fire-stopping to EI 120 penetrations and witnessed inspection - Hall 4 |  | 8d | 2027-03-02 | 2027-03-11 | 6240 SS+4d | 118d | Fire Protection Crew [384 h] | 53,466.47 |
| 6255 |  | Roof seam testing, flashings, upstands and rainwater goods - Hall 4 |  | 6d | 2027-03-03 | 2027-03-10 | 6250 | 111d | Roofing Crew [240 h] | 90,898.56 |
| 6270 |  | Air barrier lap inspection and airtightness test q50 <= 1.0 - Hall 4 |  | 5d | 2027-03-11 | 2027-03-17 | 6265, 6255, 6230 | 111d | QA/QC Inspector [80 h] | 38,693.3 |
| 6248 |  | Building Control frame and fire compartmentation inspection - Hall 4 |  | 3d | 2027-03-12 | 2027-03-16 | 6245, 6215 | 118d | Site Management [72 h] | 29,668.2 |
| 6275 |  | M: Hall 4 weathertight and enclosed | milestone | 0d | 2027-03-18 | 2027-03-18 | 6270 | 110d | Site Management |  |

| ID | WBS | Activity | Type | Duration | Start | Finish | Predecessors | Total float | Resources | Cost |
| --- | --- | --- | --- | --- | --- | --- | --- | --- | --- | --- |
|  | 6.3 | **6.3 MEP, ELV and Fit-Out** |  |  | 2027-03-18 | 2027-05-11 |  |  |  |  |
| 6310 |  | Hall 4 - overhead containment, cable tray and busway supports |  | 10d | 2027-03-18 | 2027-04-02 | 6240, 6275 SS, 5310 | 110d | Electrical Crew [1280 h] | 167,112.43 |
| 6330 |  | Hall 4 - CRAH units 7 nr (N+1), chilled-water riser and connections |  | 10d | 2027-03-18 | 2027-04-02 | 6275, 2184, 3434, 5330 | 119d | Mechanical Crew [1280 h] | 305,809.35 |
| 6340 |  | Hall 4 - internal partitions, linings and fire-rated boarding |  | 8d | 2027-03-18 | 2027-03-31 | 6275, 6245, 5225, 5340, 6248 | 117d | Fit-Out Crew [1280 h] | 240,590.29 |
| 6315 |  | Hall 4 - substation 20/0.4 kV, LV switchboards and distribution |  | 10d | 2027-03-25 | 2027-04-09 | 6310 SS+5d, 3521 | 116d | Electrical Crew [640 h] | 554,720.43 |
| 6345 |  | Hall 4 - plant room and battery room finishes |  | 6d | 2027-04-01 | 2027-04-08 | 6340, 5345 | 129d | Fit-Out Crew [480 h] | 103,293.21 |
| 6350 |  | Hall 4 - anti-static sealed floor coating (moisture hold, 2 coats) |  | 9d | 2027-04-01 | 2027-04-13 | 6340, 6135, 5350 | 117d | Fit-Out Crew [720 h] | 123,883.49 |
| 6370 |  | Hall 4 - access control, CCTV and structured cabling |  | 12d | 2027-04-01 | 2027-04-16 | 6340, 5370 | 123d | Security Systems Crew [384 h] | 246,038.22 |
| 6335 |  | Hall 4 - pipework pressure test 4 h witnessed and insulation |  | 8d | 2027-04-05 | 2027-04-14 | 6330, 5335 | 125d | Pipefitting Crew [384 h] | 455,009.38 |
| 6325 |  | Hall 4 - overhead busway, small power, lighting and metering |  | 14d | 2027-04-07 | 2027-04-26 | 6310, 2154, 5325 | 108d | Electrical Crew [1792 h] | 409,937.91 |
| 6360 |  | Hall 4 - aspirating smoke detection and suppression installation |  | 14d | 2027-04-07 | 2027-04-26 | 6310, 2244, 5360 | 117d | Fire Protection Crew [672 h] | 198,243.63 |
| 6365 |  | Hall 4 - BMS/DCIM field devices, points and integration |  | 14d | 2027-04-07 | 2027-04-26 | 6330, 5365 | 117d | BMS Crew [448 h] | 246,513.19 |
| 6320 |  | Hall 4 - UPS modules 4 nr (N+1) and battery room installation |  | 12d | 2027-04-12 | 2027-04-27 | 6315, 5320 | 116d | Electrical Crew [1536 h] | 286,180.04 |
| 6355 |  | Hall 4 - cold-aisle containment framework and blanking |  | 9d | 2027-04-27 | 2027-05-10 | 6350, 6325, 5355 | 108d | Fit-Out Crew [1440 h] | 205,048.54 |
| 6375 |  | M: Hall 4 installation complete - ready for L3 | milestone | 0d | 2027-05-11 | 2027-05-11 | 6355, 6360, 6365, 6370, 6320, 6335, 6345 | 107d | Site Management |  |
|  | 6.4 | **6.4 Administration and NOC Block** |  |  | 2027-02-08 | 2027-06-01 |  |  |  |  |
| 6410 |  | Admin/NOC block - structural steel frame and first floor deck (two storeys) |  | 10d | 2027-02-08 | 2027-02-19 | 6132, 6210 SS+5d | 93d | Structural Steel Crew [800 h] | 118,608.26 |
| 6415 |  | Admin/NOC block - precast panels, roof and cladding |  | 14d | 2027-02-22 | 2027-03-11 | 6410, 6220 SS+5d | 93d | Envelope Crew [1792 h] | 221,834.24 |
| 6420 |  | Admin/NOC block - windows, doors and airtightness works |  | 8d | 2027-03-12 | 2027-03-23 | 6415 | 93d | Envelope Crew [512 h] | 47,011.26 |
| 6425 |  | Admin/NOC block - MEP first fix, ventilation and comfort cooling |  | 18d | 2027-03-24 | 2027-04-20 | 6420, 3432 | 93d | Mechanical Crew [1152 h] | 713,123.32 |
| 6430 |  | Admin/NOC block - electrical first fix, lighting and small power |  | 16d | 2027-03-24 | 2027-04-16 | 6420, 3521 | 93d | Electrical Crew [1024 h] | 304,515.99 |
| 6435 |  | Admin/NOC block - partitions, linings, ceilings and painted finishes |  | 16d | 2027-04-07 | 2027-04-28 | 6425 SS+8d, 6430 SS+8d | 93d | Fit-Out Crew [2560 h] | 281,941.75 |
| 6440 |  | NOC raised access floor, joinery, sanitaryware and fit-out |  | 14d | 2027-04-29 | 2027-05-19 | 6435 | 93d | Fit-Out Crew [1120 h] | 1,230,291.26 |
| 6445 |  | Admin/NOC block - ELV, NOC consoles, access control and CCTV |  | 12d | 2027-05-07 | 2027-05-24 | 6440 SS+5d, 6370 SS | 98d | Security Systems Crew [384 h] | 139,809.56 |
| 6450 |  | Signage, wayfinding and hall labelling - whole site |  | 8d | 2027-05-20 | 2027-05-31 | 6440 | 93d | Fit-Out Crew [640 h] | 281,941.75 |
| 6455 |  | M: Admin/NOC block complete | milestone | 0d | 2027-06-01 | 2027-06-01 | 6445, 6450, 6435 | 92d | Site Management |  |

| ID | WBS | Activity | Type | Duration | Start | Finish | Predecessors | Total float | Constraint | Calendar | Resources | Cost |
| --- | --- | --- | --- | --- | --- | --- | --- | --- | --- | --- | --- | --- |
|  | 6.5 | **6.5 External Works, Security and Landscaping** |  |  | 2027-03-18 | 2027-05-24 |  |  |  |  |  |  |
| 6510 |  | Site roads, hardstanding and service yard - Sections 2 to 4 |  | 16d | 2027-03-18 | 2027-04-12 | 6275, 3752 | 141d |  |  | Civil Crew [1536 h] | 519,187.44 |
| 6515 |  | Stormwater attenuation, oil separators and discharge control - balance of site |  | 14d | 2027-03-25 | 2027-04-15 | 6510 SS+5d, 3754 | 157d |  |  | Civil Crew [1344 h] | 355,765.04 |
| 6520 |  | External lighting and small power - balance of site |  | 10d | 2027-04-13 | 2027-04-26 | 6510, 3758 | 141d |  |  | Electrical Crew [640 h] | 152,060.86 |
| 6525 |  | Perimeter fence completion, vehicle gates and gatehouse weighbridge |  | 10d | 2027-04-13 | 2027-04-26 | 6510, 3030 | 150d |  |  | Civil Crew [480 h] | 212,166.81 |
| 6530 |  | Landscaping, boundary screening and 2:1 tree replacement (Cond. 21-22) |  | 14d | 2027-05-03 | 2027-05-21 | 6510, 6520 SS+5d | 132d | start on 2027-05-03 |  | Landscaping Crew [448 h] | 212,311.4 |
| 6535 |  | M: External works and landscaping complete (before ground frost) | milestone | 0d | 2027-05-24 | 2027-05-24 | 6530, 6525, 6515 | 131d |  |  | Site Management |  |
|  | 6.6 | **6.6 Waste-Heat Recovery and District Heating Connection** |  |  | 2027-02-01 | 2027-10-06 |  |  |  |  |  |  |
| 6610 |  | Waste-heat recovery plant installation, heat exchangers and pumps (4 MW) |  | 20d | 2027-02-01 | 2027-02-26 | 2194, 3434 | 136d |  |  | Mechanical Crew [2560 h] | 938,303.13 |
| 6615 |  | Heat recovery pipework to site boundary chamber, welded and insulated |  | 14d | 2027-02-11 | 2027-03-02 | 6610 SS+8d | 136d |  |  | Pipefitting Crew [1344 h] | 322,294.21 |
| 6620 |  | Boundary chamber civils, flanged connection and heat metering skid |  | 12d | 2027-03-03 | 2027-03-18 | 6615 | 136d |  |  | Civil Crew [576 h] |  |
| 6625 |  | M: Employer boundary works ready for Offtaker connection (PDC-DH-001 7.2 - 1 Jul 2027) | milestone | 0d | 2027-03-19 | 2027-03-19 | 6620 | 135d |  |  | Site Management |  |
| 6630 |  | Waste-heat plant L3 start-up, control philosophy and cause-and-effect |  | 10d | 2027-03-19 | 2027-04-05 | 6620, 3742, 6625 | 136d |  |  | Commissioning Team [480 h] |  |
| 6635 |  | Issue 20 working days notice of 72 h heat delivery test to Offtaker |  | 20d | 2027-08-31 | 2027-09-27 | 6630, 1340 | 48d |  | CAL-02 Design/Office/Authority 5-day (FIN holidays) | Design Management [320 h] |  |
| 6640 |  | 72 h witnessed continuous heat delivery test - 4 MW at 70 C (heating season only) |  | 5d | 2027-10-01 | 2027-10-05 | 6635 | 63d | start on 2027-10-01 | CAL-04 Continuous commissioning 7-day | Commissioning Team [240 h] | 12,342.26 |
| 6645 |  | M: District heating waste-heat connection demonstrated (Permit Cond. 23) | milestone | 0d | 2027-10-06 | 2027-10-06 | 6640 | 43d |  |  | Site Management |  |
|  | 6.7 | **6.7 Commissioning, Final Inspection and Handover** |  |  | 2027-06-01 | 2027-10-29 |  |  |  |  |  |  |
| 6710 |  | L2/L3 component start-up and functional testing - Hall 4 and admin/NOC |  | 15d | 2027-06-01 | 2027-06-21 | 6375, 6455, 5410 | 93d |  |  | Commissioning Team [720 h] | 40,121.9 |
| 6715 |  | Discrimination re-verification and cause-and-effect witness - Hall 4 |  | 5d | 2027-06-22 | 2027-06-29 | 6710 | 93d |  |  | Commissioning Team [240 h] | 12,342.26 |
| 6730 |  | Suppression discharge test, operator training and as-built documentation - Section 4 |  | 10d | 2027-06-28 | 2027-07-09 | 6715 SS+3d | 98d |  |  | Commissioning Team [480 h] | 24,867.22 |
| 6720 |  | L4 integrated systems test - Hall 4 (failure modes, loss of utility) |  | 10d | 2027-06-30 | 2027-08-03 | 6715, 5450 | 93d |  |  | Commissioning Team [480 h] | 136,414.45 |
| 6725 |  | L5 24 h continuous load-bank test at full Section 4 load (2.5 MW) |  | 3d | 2027-08-04 | 2027-08-06 | 6720, 1290 | 132d |  | CAL-04 Continuous commissioning 7-day | Commissioning Team [144 h] | 147,782.32 |
| 6740 |  | Final snagging close-out and Section 4 completion documentation |  | 3d | 2027-08-09 | 2027-08-11 | 6725, 6730, 6535 | 93d |  |  | Site Management [144 h] | 29,668.2 |
| 6745 |  | Occupancy inspection - kayttoonottotarkastus Section 4 (Permit Cond. 6) |  | 2d | 2027-08-12 | 2027-08-13 | 6740 | 93d |  |  | Site Management [48 h] | 32,121.06 |
| 6735 |  | Whole-site as-built set, statutory certificates and vibration record lodgement |  | 12d | 2027-10-06 | 2027-10-21 | 6730 SS+3d, 6645 | 44d |  |  | BIM Team [384 h] | 49,734.43 |
| 6750 |  | Final occupancy inspection - whole permitted scope (Permit Cond. 7) |  | 2d | 2027-10-22 | 2027-10-25 | 6745, 6735, 6645, 6535 | 44d |  |  | Site Management [48 h] | 32,121.06 |
| 6755 |  | Tenant technical acceptance - Hall 4 and whole facility handover |  | 3d | 2027-10-26 | 2027-10-28 | 6750 | 44d |  |  | Commissioning Team [144 h] |  |
| 6760 |  | M: SECTION 4 TAKING OVER - WHOLE OF THE WORKS (contract Month 22 - 2 Jan 2028) | milestone | 0d | 2027-10-29 | 2027-10-29 | 6755 | 43d | finish on or before 2028-01-02 |  | Site Management |  |
