# Polaris DC-1 - Aviapolis Data Campus Phase 1

Schedule from Primavera P6, 2026-01-16 to 2027-10-28, data date 2026-01-16, costs in EUR.

## Calendars

- Site 5-day (Fin holidays + wks 28-30 shutdown): Mon-Fri 08:00-12:00, 13:00-17:00; Sat-Sun off. Exceptions (off unless hours are given): 2026-04-03, 2026-04-06, 2026-05-01, 2026-05-14, 2026-06-19 to 2026-06-20, 2026-07-06 to 2026-07-10, 2026-07-13 to 2026-07-17, 2026-07-20 to 2026-07-24, 2026-10-31, 2026-12-06, 2026-12-24 to 2026-12-26, 2027-01-01, 2027-01-06, 2027-03-26, 2027-03-29, 2027-05-01, 2027-05-06, 2027-06-25 to 2027-06-26, 2027-07-12 to 2027-07-16, 2027-07-19 to 2027-07-23, 2027-07-26 to 2027-07-30.
- Office-Design 5-day (Fin holidays): Mon-Fri 08:00-12:00, 13:00-17:00; Sat-Sun off. Exceptions (off unless hours are given): 2026-04-03, 2026-04-06, 2026-05-01, 2026-05-14, 2026-06-19 to 2026-06-20, 2026-10-31, 2026-12-06, 2026-12-24 to 2026-12-26, 2027-01-01, 2027-01-06, 2027-03-26, 2027-03-29, 2027-05-01, 2027-05-06, 2027-06-25 to 2027-06-26.
- Vendor-Third party 7-day continuous: Mon-Sun 08:00-12:00, 13:00-17:00.
- DNO 110 kV outage windows Mar-Apr / Sep-Oct (Mon-Fri): Mon-Fri 08:00-12:00, 13:00-17:00; Sat-Sun off. Exceptions (off unless hours are given): 2026-01-16, 2026-01-19 to 2026-01-23, 2026-01-26 to 2026-01-30, 2026-02-02 to 2026-02-06, 2026-02-09 to 2026-02-13, 2026-02-16 to 2026-02-20, 2026-02-23 to 2026-02-27, 2026-04-03, 2026-04-06, 2026-05-01, 2026-05-04 to 2026-05-08, 2026-05-11 to 2026-05-15, 2026-05-18 to 2026-05-22, 2026-05-25 to 2026-05-29, 2026-06-01 to 2026-06-05, 2026-06-08 to 2026-06-12, 2026-06-15 to 2026-06-20, 2026-06-22 to 2026-06-26, 2026-06-29 to 2026-07-03, 2026-07-06 to 2026-07-10, 2026-07-13 to 2026-07-17, 2026-07-20 to 2026-07-24, 2026-07-27 to 2026-07-31, 2026-08-03 to 2026-08-07, 2026-08-10 to 2026-08-14, 2026-08-17 to 2026-08-21, 2026-08-24 to 2026-08-28, 2026-08-31, 2026-10-31, 2026-11-02 to 2026-11-06, 2026-11-09 to 2026-11-13, 2026-11-16 to 2026-11-20, 2026-11-23 to 2026-11-27, 2026-11-30 to 2026-12-04, 2026-12-06 to 2026-12-11, 2026-12-14 to 2026-12-18, 2026-12-21 to 2026-12-26, 2026-12-28 to 2027-01-01, 2027-01-04 to 2027-01-08, 2027-01-11 to 2027-01-15, 2027-01-18 to 2027-01-22, 2027-01-25 to 2027-01-29, 2027-02-01 to 2027-02-05, 2027-02-08 to 2027-02-12, 2027-02-15 to 2027-02-19, 2027-02-22 to 2027-02-26, 2027-03-26, 2027-03-29, 2027-05-01, 2027-05-03 to 2027-05-07, 2027-05-10 to 2027-05-14, 2027-05-17 to 2027-05-21, 2027-05-24 to 2027-05-28, 2027-05-31 to 2027-06-04, 2027-06-07 to 2027-06-11, 2027-06-14 to 2027-06-18, 2027-06-21 to 2027-06-26, 2027-06-28 to 2027-07-02, 2027-07-05 to 2027-07-09, 2027-07-12 to 2027-07-16, 2027-07-19 to 2027-07-23, 2027-07-26 to 2027-07-30, 2027-08-02 to 2027-08-06, 2027-08-09 to 2027-08-13, 2027-08-16 to 2027-08-20, 2027-08-23 to 2027-08-27, 2027-08-30 to 2027-08-31.
- District heating season Oct-Apr (Mon-Fri): Mon-Fri 08:00-12:00, 13:00-17:00; Sat-Sun off. Exceptions (off unless hours are given): 2026-04-03, 2026-04-06, 2026-05-01, 2026-05-04 to 2026-05-08, 2026-05-11 to 2026-05-15, 2026-05-18 to 2026-05-22, 2026-05-25 to 2026-05-29, 2026-06-01 to 2026-06-05, 2026-06-08 to 2026-06-12, 2026-06-15 to 2026-06-20, 2026-06-22 to 2026-06-26, 2026-06-29 to 2026-07-03, 2026-07-06 to 2026-07-10, 2026-07-13 to 2026-07-17, 2026-07-20 to 2026-07-24, 2026-07-27 to 2026-07-31, 2026-08-03 to 2026-08-07, 2026-08-10 to 2026-08-14, 2026-08-17 to 2026-08-21, 2026-08-24 to 2026-08-28, 2026-08-31 to 2026-09-04, 2026-09-07 to 2026-09-11, 2026-09-14 to 2026-09-18, 2026-09-21 to 2026-09-25, 2026-09-28 to 2026-09-30, 2026-10-31, 2026-12-06, 2026-12-24 to 2026-12-26, 2027-01-01, 2027-01-06, 2027-03-26, 2027-03-29, 2027-05-01, 2027-05-03 to 2027-05-07, 2027-05-10 to 2027-05-14, 2027-05-17 to 2027-05-21, 2027-05-24 to 2027-05-28, 2027-05-31 to 2027-06-04, 2027-06-07 to 2027-06-11, 2027-06-14 to 2027-06-18, 2027-06-21 to 2027-06-26, 2027-06-28 to 2027-07-02, 2027-07-05 to 2027-07-09, 2027-07-12 to 2027-07-16, 2027-07-19 to 2027-07-23, 2027-07-26 to 2027-07-30, 2027-08-02 to 2027-08-06, 2027-08-09 to 2027-08-13, 2027-08-16 to 2027-08-20, 2027-08-23 to 2027-08-27, 2027-08-30 to 2027-09-03, 2027-09-06 to 2027-09-10, 2027-09-13 to 2027-09-17, 2027-09-20 to 2027-09-24, 2027-09-27 to 2027-09-30.

## Resources

| Resource | Group |
| --- | --- |
| Design Management | labor |
| Site Management | labor |
| Site Establishment Crew | labor |
| Civil Crew | labor |
| Environmental Crew | labor |
| Architectural Design | labor |
| MEP Design | labor |
| Structural Design | labor |
| Civil Design | labor |
| Specialist Design | labor |
| BIM Team | labor |
| Procurement | labor |
| Plant and Materials | material |
| QA/QC Inspector | labor |
| Logistics | labor |
| Earthworks Crew | labor |
| Surveying Team | labor |
| Blasting Crew | labor |
| Concrete Crew | labor |
| Piling Crew | labor |
| Structural Steel Crew | labor |
| Steel & Precast Crew | labor |
| Fire Protection Crew | labor |
| Waterproofing Crew | labor |
| Envelope Crew | labor |
| Plumbing Crew | labor |
| HV Specialist Crew | labor |
| Electrical Crew | labor |
| Mechanical Crew | labor |
| Commissioning Team | labor |
| Insulation Crew | labor |
| Fit-Out Crew | labor |
| ICT Crew | labor |
| BMS Crew | labor |
| Landscaping Crew | labor |

## Schedule

| ID | WBS | Activity | Type | Duration | Start | Finish | Predecessors | Total float | Calendar | Resources | Cost |
| --- | --- | --- | --- | --- | --- | --- | --- | --- | --- | --- | --- |
|  | 1 | **Project Management and Preliminaries** |  |  | 2026-01-16 | 2027-10-28 |  |  |  |  |  |
| PM-1000 |  | M: Advance Procurement Instruction (LOI) issued | milestone | 0d | 2026-01-16 | 2026-01-16 |  | 0d | Office-Design 5-day (Fin holidays) |  |  |
| PM-1005 |  | Pre-Contract period - PC Rev B/Rev C negotiation, execution, bonds and insurances |  | 31d | 2026-01-16 | 2026-02-27 | PM-1000 | 0d | Office-Design 5-day (Fin holidays) | Design Management [992 h] |  |
| PM-1020 |  | M: Commencement Date (Sub-Clause 8.1) | milestone | 0d | 2026-03-02 | 2026-03-02 | PM-1005 | 0d | Office-Design 5-day (Fin holidays) |  |  |
| PM-1050 |  | Appoint statutory supervisors and obtain Building Control approval (vastaava tyonjohtaja, KVV, IV) |  | 15d | 2026-03-02 | 2026-03-20 | PM-1020 | 0d | Office-Design 5-day (Fin holidays) | Site Management [360 h] | 203,206.82 |
| PM-1065 |  | Lodge permit fees and securities (landscaping EUR 85k, stormwater EUR 60k) |  | 5d | 2026-03-02 | 2026-03-06 | PM-1020 | 5d | Office-Design 5-day (Fin holidays) | Site Management [120 h] |  |
| PM-1070 |  | Performance security, advance payment guarantee and insurances |  | 10d | 2026-03-02 | 2026-03-13 | PM-1020 | 17d | Office-Design 5-day (Fin holidays) | Design Management [320 h] | 599,943.93 |
| PM-1080 |  | Crane aviation obstacle clearance - Fintraffic/Finavia (21-day lead) |  | 15d | 2026-03-02 | 2026-03-20 | PM-1020 | 116d | Office-Design 5-day (Fin holidays) | Site Management [360 h] |  |
| PM-1060 |  | Notice of commencement (aloitusilmoitus) and commencement inspection |  | 7d | 2026-03-16 | 2026-03-24 | PM-1050 SS+10d, PM-1065 | 0d | Office-Design 5-day (Fin holidays) | Site Management [168 h] |  |
| PM-1055 |  | M: Statutory supervisors approved (MS-04) | milestone | 0d | 2026-03-23 | 2026-03-23 | PM-1050 | 2d | Office-Design 5-day (Fin holidays) |  |  |
| PM-1085 |  | M: Crane aviation clearances held on Site | milestone | 0d | 2026-03-23 | 2026-03-23 | PM-1080 | 126d | Office-Design 5-day (Fin holidays) |  |  |
| PM-1030 |  | Site establishment - offices, welfare, hoarding and access |  | 15d | 2026-03-25 | 2026-04-16 | PM-1060, PM-1055, PM-1070 SS | 0d |  | Site Establishment Crew [960 h] | 1,141,828.77 |
| PM-9000 |  | Site management, supervision and QA/QC staff (level of effort) | level of effort | 374d | 2026-03-25 | 2027-10-28 | PM-1030 SS | 0d |  | Site Management [35904 h] | 2,043,679.98 |
| PM-9010 |  | Site security during construction (level of effort) | level of effort | 374d | 2026-03-25 | 2027-10-28 | PM-1030 SS | 0d |  | Site Management [8976 h] | 308,680.83 |
| PM-1040 |  | Temporary power, water and telecoms |  | 10d | 2026-04-01 | 2026-04-16 | PM-1030 SS+5d | 94d |  | Civil Crew [480 h] | 329,001.51 |
| PM-1090 |  | Tower and mobile cranage - mobilise and erect |  | 10d | 2026-04-17 | 2026-04-30 | PM-1085, PM-1030, PM-1040 | 94d |  | Site Establishment Crew [640 h] | 948,298.47 |
| PM-1100 |  | Environmental controls, vibration and noise monitoring - install |  | 10d | 2026-04-17 | 2026-04-30 | PM-1030 | 33d |  | Environmental Crew [320 h] | 192,320.74 |
|  | 2 | **Design and Engineering** |  |  | 2026-01-30 | 2026-08-17 |  |  |  |  |  |
|  | 1 | **Stage S1 - Concept Design** |  |  | 2026-03-02 | 2026-04-21 |  |  |  |  |  |
| DE-2000 |  | Design team mobilisation and design management plan |  | 10d | 2026-03-02 | 2026-03-13 | PM-1020 | 5d | Office-Design 5-day (Fin holidays) | Design Management [320 h] | 174,932.04 |
| DE-2010 |  | S1 Concept design - architecture, site layout and setting out |  | 15d | 2026-03-16 | 2026-04-07 | DE-2000 | 5d | Office-Design 5-day (Fin holidays) | Architectural Design [480 h] |  |
| DE-2020 |  | S1 Concept design - electrical topology, single-line diagrams and HV rating |  | 15d | 2026-03-16 | 2026-04-07 | DE-2000 | 5d | Office-Design 5-day (Fin holidays) | MEP Design [360 h] |  |
| DE-2030 |  | S1 Concept design - cooling strategy, free cooling and heat recovery |  | 15d | 2026-03-16 | 2026-04-07 | DE-2000 | 5d | Office-Design 5-day (Fin holidays) | MEP Design [360 h] |  |
| DE-2040 |  | S1 Concept design - structural system and foundation strategy |  | 10d | 2026-03-16 | 2026-03-27 | DE-2000 | 10d | Office-Design 5-day (Fin holidays) | Structural Design [240 h] |  |
| DE-2050 |  | M: S1 Concept design submission (MS-02, Month 1) | milestone | 0d | 2026-04-08 | 2026-04-08 | DE-2010, DE-2020, DE-2030, DE-2040 | 5d | Office-Design 5-day (Fin holidays) |  |  |
| DE-2060 |  | Engineer review - Stage S1 (14 days) |  | 10d | 2026-04-08 | 2026-04-21 | DE-2050 | 5d | Office-Design 5-day (Fin holidays) | Design Management [320 h] |  |

| ID | WBS | Activity | Type | Duration | Start | Finish | Predecessors | Total float | Calendar | Resources | Cost |
| --- | --- | --- | --- | --- | --- | --- | --- | --- | --- | --- | --- |
|  | 2 | **Stage S2 - Detailed Design** |  |  | 2026-04-15 | 2026-06-26 |  |  |  |  |  |
| DE-2080 |  | S2 Detailed design - structure, foundations and blasting-zone interface |  | 25d | 2026-04-15 | 2026-05-21 | DE-2060 SS+5d | 5d | Office-Design 5-day (Fin holidays) | Structural Design [600 h] | 316,223.3 |
| DE-2070 |  | S2 Detailed design - architectural, envelope and finishes |  | 30d | 2026-04-22 | 2026-06-04 | DE-2060 | 116d | Office-Design 5-day (Fin holidays) | Architectural Design [960 h] | 296,038.82 |
| DE-2090 |  | S2 Detailed design - mechanical (cooling, CRAH, pipework, heat recovery) |  | 30d | 2026-04-22 | 2026-06-04 | DE-2060 | 116d | Office-Design 5-day (Fin holidays) | MEP Design [720 h] | 645,902.93 |
| DE-2100 |  | S2 Detailed design - electrical (HV/MV, UPS, generation, busway) |  | 30d | 2026-04-22 | 2026-06-04 | DE-2060 | 97d | Office-Design 5-day (Fin holidays) | MEP Design [720 h] | 807,378.63 |
| DE-2110 |  | S2 Detailed design - ELV, BMS/DCIM, fire detection and security |  | 25d | 2026-04-22 | 2026-05-28 | DE-2060 | 121d | Office-Design 5-day (Fin holidays) | MEP Design [600 h] | 148,019.42 |
| DE-2120 |  | S2 Detailed design - civil, drainage and external works |  | 20d | 2026-04-22 | 2026-05-21 | DE-2060 | 126d | Office-Design 5-day (Fin holidays) | Civil Design [320 h] | 107,650.47 |
| DE-2140 |  | Commissioning strategy, L1-L5 method statements and cause-and-effect matrices |  | 20d | 2026-04-22 | 2026-05-21 | DE-2060 | 243d | Office-Design 5-day (Fin holidays) | Specialist Design [320 h] | 67,281.57 |
| DE-2170 |  | BIM model development and multi-discipline clash detection |  | 30d | 2026-05-07 | 2026-06-18 | DE-2070 SS+10d, DE-2100 SS+10d | 121d | Office-Design 5-day (Fin holidays) | BIM Team [960 h] |  |
| DE-2150 |  | M: S2 Detailed design submission (MS-03, Month 4) | milestone | 0d | 2026-06-05 | 2026-06-05 | DE-2070, DE-2080, DE-2090, DE-2100, DE-2110, DE-2120 | 116d | Office-Design 5-day (Fin holidays) |  |  |
| DE-2160 |  | Engineer review - Stage S2 (21 days) |  | 15d | 2026-06-05 | 2026-06-26 | DE-2150 | 116d | Office-Design 5-day (Fin holidays) | Design Management [480 h] |  |
|  | 3 | **Stage S3 - Construction Issue** |  |  | 2026-06-29 | 2026-08-17 |  |  |  |  |  |
| DE-2180 |  | S3 Construction issue - shop drawings, schedules and builder's work |  | 25d | 2026-06-29 | 2026-07-31 | DE-2160, DE-2170 | 116d | Office-Design 5-day (Fin holidays) | Architectural Design [800 h] | 127,834.95 |
| DE-2190 |  | Engineer review - Stage S3 (14 days) |  | 10d | 2026-08-03 | 2026-08-14 | DE-2180 | 116d | Office-Design 5-day (Fin holidays) | Design Management [320 h] |  |
| DE-2200 |  | M: Construction-issue design complete | milestone | 0d | 2026-08-17 | 2026-08-17 | DE-2190 | 116d | Office-Design 5-day (Fin holidays) |  |  |
|  | 4 | **Statutory and Third-Party Approvals** |  |  | 2026-01-30 | 2026-08-03 |  |  |  |  |  |
| DE-2330 |  | Substation design submission to the DNO for compatibility review (GC s.4.2) |  | 10d | 2026-01-30 | 2026-02-12 | PM-1000 FS+10d | 191d | Office-Design 5-day (Fin holidays) | MEP Design [240 h] |  |
| DE-2340 |  | DNO compatibility review period (12 weeks) |  | 60d | 2026-02-13 | 2026-04-13 | DE-2330 | 276d | Vendor-Third party 7-day continuous |  |  |
| DE-2350 |  | M: DNO compatibility review complete - switchgear order released | milestone | 0d | 2026-04-14 | 2026-04-14 | DE-2340 | 191d | Office-Design 5-day (Fin holidays) |  |  |
| DE-2300 |  | Fire engineering submission - white-space suppression (inert gas / water mist) |  | 25d | 2026-04-22 | 2026-05-28 | DE-2060 | 65d | Office-Design 5-day (Fin holidays) | Specialist Design [400 h] |  |
| DE-2310 |  | Authority review - white-space suppression approval |  | 20d | 2026-05-29 | 2026-06-26 | DE-2300 | 65d | Office-Design 5-day (Fin holidays) | Specialist Design [320 h] |  |
| DE-2360 |  | Protection coordination study - relay settings, discrimination, fault levels |  | 20d | 2026-06-05 | 2026-07-03 | DE-2100 | 97d | Office-Design 5-day (Fin holidays) | MEP Design [480 h] |  |
| DE-2320 |  | M: White-space suppression approach approved by the authority | milestone | 0d | 2026-06-29 | 2026-06-29 | DE-2310 | 65d | Office-Design 5-day (Fin holidays) |  |  |
| DE-2370 |  | DNO protection study review and approval (20 working days) |  | 20d | 2026-07-06 | 2026-07-31 | DE-2360 | 97d | Office-Design 5-day (Fin holidays) |  |  |
| DE-2380 |  | M: DNO protection study approved - precondition of energisation | milestone | 0d | 2026-08-03 | 2026-08-03 | DE-2370 | 97d | Office-Design 5-day (Fin holidays) |  |  |

| ID | WBS | Activity | Type | Duration | Start | Finish | Predecessors | Total float | Calendar | Resources | Cost |
| --- | --- | --- | --- | --- | --- | --- | --- | --- | --- | --- | --- |
|  | 3 | **Procurement** |  |  | 2026-01-16 | 2027-01-15 |  |  |  |  |  |
|  | 1 | **Package Tendering and Award** |  |  | 2026-03-02 | 2026-05-21 |  |  |  |  |  |
| PR-3000 |  | Subcontract tender period - TP-001 to TP-008 to return |  | 15d | 2026-03-02 | 2026-03-20 | PM-1020 | 23d | Office-Design 5-day (Fin holidays) | Procurement [360 h] |  |
| PR-3010 |  | Tender evaluation, scope normalisation and negotiation |  | 15d | 2026-03-23 | 2026-04-14 | PR-3000 | 23d | Office-Design 5-day (Fin holidays) | Procurement [360 h] |  |
| PR-3020 |  | Award TP-001 Earthworks/Blasting/Piling, TP-002 Steel and Precast, TP-008 External Works |  | 10d | 2026-04-15 | 2026-04-28 | PR-3010 | 23d | Office-Design 5-day (Fin holidays) | Procurement [240 h] |  |
| PR-3030 |  | Award TP-005 Mechanical, TP-006 Electrical, TP-007 ELV/BMS/Fire |  | 10d | 2026-04-15 | 2026-04-28 | PR-3010 | 63d | Office-Design 5-day (Fin holidays) | Procurement [240 h] |  |
| PR-3040 |  | Award TP-003 Envelope, TP-004 Finishes and Containment |  | 10d | 2026-05-07 | 2026-05-21 | PR-3010, DE-2070 SS+10d | 122d | Office-Design 5-day (Fin holidays) | Procurement [240 h] |  |
|  | 2 | **Long-Lead Plant - Electrical (TP-006)** |  |  | 2026-01-16 | 2027-01-15 |  |  |  |  |  |
| PR-3100 |  | Place advance order - 110/20 kV transformers (2 nr, 16 MVA) under LOI |  | 3d | 2026-01-16 | 2026-01-20 | PM-1000 | 28d | Office-Design 5-day (Fin holidays) | Procurement [72 h] |  |
| PR-3105 |  | 110/20 kV transformers - manufacture |  | 346d | 2026-01-21 | 2027-01-01 | PR-3100 | 40d | Vendor-Third party 7-day continuous | Plant and Materials | 985,963.34 |
| PR-3130 |  | 20 kV switchgear and protection - manufacture |  | 256d | 2026-01-21 | 2026-10-03 | PM-1000 FS+5d | 103d | Vendor-Third party 7-day continuous | Plant and Materials | 561,497.77 |
| PR-3150 |  | Standby generators 8 x 2.5 MVA with acoustic enclosures - manufacture |  | 262d | 2026-01-21 | 2026-10-09 | PM-1000 FS+5d | 91d | Vendor-Third party 7-day continuous | Plant and Materials | 3,292,114.88 |
| PR-3170 |  | UPS modules 16 x 1000 kVA - manufacture |  | 200d | 2026-01-21 | 2026-08-08 | PM-1000 FS+5d | 187d | Vendor-Third party 7-day continuous | Plant and Materials | 1,243,316.48 |
| PR-3200 |  | Overhead busway - manufacture |  | 135d | 2026-04-29 | 2026-09-10 | PR-3030 | 180d | Vendor-Third party 7-day continuous | Plant and Materials | 186,497.47 |
| PR-3190 |  | Lithium-ion battery systems - manufacture |  | 163d | 2026-06-29 | 2026-12-08 | PR-3030, DE-2320 | 91d | Vendor-Third party 7-day continuous | Plant and Materials | 441,176.82 |
| PR-3175 |  | L1 FAT witnessing - UPS modules |  | 5d | 2026-08-09 | 2026-08-13 | PR-3170 | 187d | Vendor-Third party 7-day continuous | QA/QC Inspector [80 h] | 62,523.29 |
| PR-3180 |  | UPS modules - delivery to Site |  | 5d | 2026-08-14 | 2026-08-18 | PR-3175 | 187d | Vendor-Third party 7-day continuous | Logistics [80 h] |  |
| PR-3205 |  | Busway - first delivery to Site |  | 5d | 2026-09-11 | 2026-09-15 | PR-3200 | 180d | Vendor-Third party 7-day continuous | Logistics [80 h] |  |
| PR-3135 |  | L1 FAT witnessing - 20 kV switchgear |  | 5d | 2026-10-04 | 2026-10-08 | PR-3130, DE-2350 | 103d | Vendor-Third party 7-day continuous | QA/QC Inspector [80 h] | 46,892.47 |
| PR-3140 |  | 20 kV switchgear - delivery to Site |  | 5d | 2026-10-09 | 2026-10-13 | PR-3135 | 103d | Vendor-Third party 7-day continuous | Logistics [80 h] |  |
| PR-3155 |  | L1 FAT witnessing - standby generators |  | 8d | 2026-10-10 | 2026-10-17 | PR-3150 | 91d | Vendor-Third party 7-day continuous | QA/QC Inspector [128 h] | 109,415.75 |
| PR-3160 |  | Standby generators - delivery to Site |  | 10d | 2026-10-18 | 2026-10-27 | PR-3155 | 91d | Vendor-Third party 7-day continuous | Logistics [160 h] |  |
| PR-3195 |  | Battery systems - delivery to Site |  | 5d | 2026-12-09 | 2026-12-13 | PR-3190 | 91d | Vendor-Third party 7-day continuous | Logistics [80 h] |  |
| PR-3110 |  | L1 FAT witnessing - 110/20 kV transformers |  | 5d | 2027-01-02 | 2027-01-06 | PR-3105 | 40d | Vendor-Third party 7-day continuous | QA/QC Inspector [80 h] | 46,892.47 |
| PR-3115 |  | Transformers - delivery to Site |  | 8d | 2027-01-07 | 2027-01-14 | PR-3110 | 40d | Vendor-Third party 7-day continuous | Logistics [128 h] |  |
| PR-3120 |  | M: Transformers on Site (LT-01 need date 15-Jan-2027) | milestone | 0d | 2027-01-15 | 2027-01-15 | PR-3115 | 28d |  |  |  |

| ID | WBS | Activity | Duration | Start | Finish | Predecessors | Total float | Calendar | Resources | Cost |
| --- | --- | --- | --- | --- | --- | --- | --- | --- | --- | --- |
|  | 3 | **Long-Lead Plant - Mechanical (TP-005)** |  | 2026-04-29 | 2026-11-24 |  |  |  |  |  |
| PR-3300 |  | Chillers 4 nr (N+1) - manufacture | 172d | 2026-04-29 | 2026-10-17 | PR-3030 | 96d | Vendor-Third party 7-day continuous | Plant and Materials | 875,979.14 |
| PR-3320 |  | Dry coolers / adiabatic units 10 nr - manufacture | 149d | 2026-04-29 | 2026-09-24 | PR-3030 | 92d | Vendor-Third party 7-day continuous | Plant and Materials | 1,184,500.1 |
| PR-3330 |  | CRAH units 28 nr (7 per hall, N+1) - manufacture | 149d | 2026-04-29 | 2026-09-24 | PR-3030 | 166d | Vendor-Third party 7-day continuous | Plant and Materials | 896,639.03 |
| PR-3340 |  | Waste-heat recovery plant 4 MW - manufacture | 205d | 2026-04-29 | 2026-11-19 | PR-3030 | 161d | Vendor-Third party 7-day continuous | Plant and Materials | 1,501,285.01 |
| PR-3325 |  | Dry coolers - delivery to Site | 5d | 2026-09-25 | 2026-09-29 | PR-3320 | 92d | Vendor-Third party 7-day continuous | Logistics [80 h] |  |
| PR-3335 |  | CRAH units - first delivery to Site (Section 1) | 5d | 2026-09-25 | 2026-09-29 | PR-3330 | 166d | Vendor-Third party 7-day continuous | Logistics [80 h] |  |
| PR-3305 |  | L1 FAT witnessing - chillers | 5d | 2026-10-18 | 2026-10-22 | PR-3300 | 96d | Vendor-Third party 7-day continuous | QA/QC Inspector [80 h] | 46,892.47 |
| PR-3310 |  | Chillers - delivery to Site | 5d | 2026-10-23 | 2026-10-27 | PR-3305 | 96d | Vendor-Third party 7-day continuous | Logistics [80 h] |  |
| PR-3345 |  | Waste-heat recovery plant - delivery to Site | 5d | 2026-11-20 | 2026-11-24 | PR-3340 | 161d | Vendor-Third party 7-day continuous | Logistics [80 h] |  |
|  | 4 | **Long-Lead Materials (TP-002 / TP-003 / TP-007)** |  | 2026-04-29 | 2026-11-15 |  |  |  |  |  |
| PR-3450 |  | BMS/DCIM hardware and licences - manufacture and staging | 107d | 2026-04-29 | 2026-08-13 | PR-3030 | 203d | Vendor-Third party 7-day continuous | Plant and Materials | 294,248.41 |
| PR-3400 |  | Structural steel - shop drawings and approval | 15d | 2026-05-07 | 2026-05-28 | PR-3020, DE-2080 SS+15d | 18d | Office-Design 5-day (Fin holidays) | Structural Design [360 h] |  |
| PR-3420 |  | Precast wall panels - production drawings and approval | 10d | 2026-05-07 | 2026-05-21 | PR-3020, DE-2080 SS+15d | 64d | Office-Design 5-day (Fin holidays) | Structural Design [240 h] |  |
| PR-3425 |  | Precast wall panels - factory production, Section 1 release | 84d | 2026-05-22 | 2026-08-13 | PR-3420 | 92d | Vendor-Third party 7-day continuous |  |  |
| PR-3440 |  | Acoustic louvres - manufacture | 107d | 2026-05-22 | 2026-09-05 | PR-3040 | 173d | Vendor-Third party 7-day continuous |  |  |
| PR-3405 |  | Structural steel - fabrication, Section 1 release | 91d | 2026-05-29 | 2026-08-27 | PR-3400 | 27d | Vendor-Third party 7-day continuous |  |  |
| PR-3427 |  | Precast wall panels - factory production, Sections 2-4 release | 84d | 2026-06-19 | 2026-09-10 | PR-3425 SS+28d | 117d | Vendor-Third party 7-day continuous |  |  |
| PR-3460 |  | Data hall suppression system - manufacture | 135d | 2026-06-29 | 2026-11-10 | PR-3030, DE-2320 | 151d | Vendor-Third party 7-day continuous | Plant and Materials | 512,025.48 |
| PR-3407 |  | Structural steel - fabrication, Sections 2-4 release | 91d | 2026-07-03 | 2026-10-01 | PR-3405 SS+35d | 67d | Vendor-Third party 7-day continuous |  |  |
| PR-3430 |  | Precast wall panels - Section 1 delivery to Site | 5d | 2026-08-14 | 2026-08-18 | PR-3425 | 92d | Vendor-Third party 7-day continuous | Logistics [80 h] |  |
| PR-3455 |  | BMS/DCIM - delivery to Site | 5d | 2026-08-14 | 2026-08-18 | PR-3450 | 203d | Vendor-Third party 7-day continuous | Logistics [80 h] |  |
| PR-3410 |  | Structural steel - third-party inspection and Section 1 delivery | 8d | 2026-08-28 | 2026-09-04 | PR-3405 | 27d | Vendor-Third party 7-day continuous | QA/QC Inspector [128 h] |  |
| PR-3445 |  | Acoustic louvres - delivery to Site | 5d | 2026-09-06 | 2026-09-10 | PR-3440 | 173d | Vendor-Third party 7-day continuous | Logistics [80 h] |  |
| PR-3432 |  | Precast wall panels - phased delivery, Sections 2-4 | 5d | 2026-09-11 | 2026-09-15 | PR-3427 | 117d | Vendor-Third party 7-day continuous | Logistics [80 h] |  |
| PR-3412 |  | Structural steel - third-party inspection and phased delivery, Sections 2-4 | 8d | 2026-10-02 | 2026-10-09 | PR-3407 | 67d | Vendor-Third party 7-day continuous | QA/QC Inspector [128 h] |  |
| PR-3465 |  | Suppression system - first delivery to Site | 5d | 2026-11-11 | 2026-11-15 | PR-3460 | 151d | Vendor-Third party 7-day continuous | Logistics [80 h] |  |

| ID | WBS | Activity | Type | Duration | Start | Finish | Predecessors | Total float | Calendar | Resources | Cost |
| --- | --- | --- | --- | --- | --- | --- | --- | --- | --- | --- | --- |
|  | 4 | **Enabling and Site-Wide Works** |  |  | 2026-04-17 | 2026-08-21 |  |  |  |  |  |
| EN-010 |  | Site clearance, topsoil strip and disposal - west and central zones (grid 1-13) |  | 15d | 2026-04-17 | 2026-05-08 | PM-1030, PM-1055 | 0d |  | Earthworks Crew [1920 h] | 101,107.36 |
| EN-030 |  | Pre-condition survey (katselmus) of neighbouring properties with photographic record |  | 10d | 2026-04-17 | 2026-04-30 | PM-1030 | 28d |  | Surveying Team [160 h] | 64,106.91 |
| EN-070 |  | Perimeter hoarding and temporary site fencing |  | 10d | 2026-04-24 | 2026-05-08 | EN-010 SS+5d | 191d |  | Site Establishment Crew [640 h] |  |
| EN-040 |  | Blasting permit application to the Vantaa rescue authority (pelastuslaitos) |  | 15d | 2026-04-29 | 2026-05-21 | DE-2080 SS+10d | 15d | Office-Design 5-day (Fin holidays) | Specialist Design [240 h] |  |
| EN-060 |  | Site-wide cut and fill, haul road (gridline N) and laydown compound |  | 20d | 2026-04-29 | 2026-05-28 | EN-010 SS+8d | 0d |  | Earthworks Crew [2560 h] | 64,562.47 |
| EN-020 |  | Site clearance, topsoil strip and disposal - east zone (grid 14-24) |  | 10d | 2026-05-11 | 2026-05-25 | EN-010 | 13d |  | Earthworks Crew [1280 h] | 67,404.9 |
| EN-080 |  | Unrecorded made ground, NW corner - excavation under archaeological watching brief |  | 15d | 2026-05-11 | 2026-06-01 | EN-010 | 8d |  | Environmental Crew [480 h] | 102,762.98 |
| EN-045 |  | M: Blasting permit issued and lodged with Building Control (MS-05) | milestone | 0d | 2026-05-22 | 2026-05-22 | EN-040, EN-030 | 15d | Office-Design 5-day (Fin holidays) |  |  |
| EN-050 |  | Neighbour written notification of blasting (7 days' notice) |  | 5d | 2026-05-22 | 2026-05-28 | EN-045 | 15d | Office-Design 5-day (Fin holidays) | Site Management [120 h] |  |
| EN-090 |  | Stormwater attenuation, oil separators and discharge control - first phase |  | 20d | 2026-05-29 | 2026-06-26 | EN-060 | 126d |  | Civil Crew [1920 h] | 391,341.55 |
| EN-100 |  | Segregate and stockpile sulphide-suspect material (BH-12 zone) pending classification |  | 10d | 2026-05-29 | 2026-06-11 | EN-060 | 0d |  | Environmental Crew [320 h] | 36,247.97 |
| S1-110 |  | Rock drilling and controlled blasting - eastern third, single campaign (generator compound and Hall 4 footprints) |  | 45d | 2026-05-29 | 2026-08-21 | EN-050, EN-020, PM-1100 | 15d |  | Blasting Crew [2160 h] | 465,945.85 |
| EN-110 |  | M: Site enabling works complete - Sections released | milestone | 0d | 2026-06-12 | 2026-06-12 | EN-020, EN-060, EN-080, EN-100 | 0d |  |  |  |
|  | 5 | **Section 1 - Hall 1 and Shared Infrastructure** |  |  | 2026-03-23 | 2027-06-17 |  |  |  |  |  |
|  | 1 | **S1 Substructure** |  |  | 2026-05-15 | 2026-10-20 |  |  |  |  |  |
| S1-100 |  | Bulk excavation to formation - Hall 1 and primary substation zone (grid 2-7) |  | 25d | 2026-05-15 | 2026-06-18 | EN-060 SS+10d, DE-2080 SS+15d | 0d |  | Earthworks Crew [3200 h] | 96,843.71 |
| S1-120 |  | Dewatering - sump pumping and well-pointing installation (perched water) |  | 10d | 2026-05-22 | 2026-06-04 | S1-100 SS+5d | 19d |  | Civil Crew [480 h] | 163,115.84 |
| S1-105 |  | Bulk excavation - shared MEP spine and cooling yard, full length (grid I-N / 2-23) |  | 25d | 2026-05-29 | 2026-07-03 | S1-100 SS+10d | 19d |  | Earthworks Crew [3200 h] | 86,083.3 |
| S1-130 |  | Pad and strip foundations - Hall 1 |  | 20d | 2026-06-05 | 2026-07-03 | S1-100 SS+12d, S1-120 | 19d |  | Concrete Crew [3200 h] | 96,238.35 |
| S1-135 |  | Pad foundations and plinths - primary substation and gatehouse |  | 15d | 2026-06-05 | 2026-06-26 | S1-100 SS+15d | 19d |  | Concrete Crew [1200 h] | 74,852.05 |
| S1-150 |  | Ground beams and pile caps - Hall 1 and primary substation |  | 20d | 2026-06-22 | 2026-08-07 | S1-130 SS+10d, S1-135 SS+10d | 19d |  | Concrete Crew [3200 h] | 189,214.38 |
| S1-155 |  | Substation cable basement - RC walls, tanking and drainage layer |  | 20d | 2026-06-29 | 2026-08-14 | S1-135 | 24d |  | Concrete Crew [1600 h] | 326,120.47 |
| S1-168 |  | Sub-base and ground-bearing slab - shared MEP spine and mezzanine base (full length) |  | 30d | 2026-07-27 | 2026-09-04 | S1-105 | 19d |  | Concrete Crew [4800 h] | 500,989.29 |
| S1-175 |  | Foundations and plinths - shared cooling yard, chillers and dry coolers (full length) |  | 20d | 2026-07-27 | 2026-08-21 | S1-105 | 91d |  | Concrete Crew [1600 h] | 85,545.2 |
| S1-160 |  | Sub-base, capping and geotextile - Hall 1 |  | 10d | 2026-07-29 | 2026-08-11 | S1-150 SS+12d, S1-130 | 19d |  | Civil Crew [960 h] | 88,991.52 |
| S1-170 |  | Slabs, plinths and transformer bases - primary substation and gatehouse |  | 20d | 2026-08-05 | 2026-09-01 | S1-155 SS+12d | 24d |  | Concrete Crew [3200 h] | 324,169.54 |
| S1-165 |  | Ground-bearing slab 250 mm, 25 kN/m2, FM2 flatness - Hall 1 |  | 20d | 2026-08-12 | 2026-09-08 | S1-160 | 19d |  | Concrete Crew [3200 h] | 308,852.92 |
| S1-115 |  | Muck away and trim to formation - generator compound |  | 10d | 2026-08-17 | 2026-08-28 | S1-110 FF+5d | 38d |  | Earthworks Crew [640 h] | 32,281.24 |
| S1-140 |  | Direct-to-rock and rock-socketed piers - generator compound |  | 15d | 2026-08-31 | 2026-09-18 | S1-115 | 38d |  | Piling Crew [720 h] | 148,012.52 |
| S1-172 |  | Slabs, plinths and generator bases - generator compound |  | 18d | 2026-09-21 | 2026-10-14 | S1-140 | 38d |  | Concrete Crew [2880 h] | 235,759.67 |
| S1-180 |  | Foundation inspection witnessed by Building Control |  | 3d | 2026-10-15 | 2026-10-19 | S1-170, S1-172, S1-165, S1-168, S1-175 | 228d |  | Site Management [72 h] |  |
| S1-185 |  | M: Section 1 substructure complete | milestone | 0d | 2026-10-20 | 2026-10-20 | S1-180 | 228d |  |  |  |

| ID | WBS | Activity | Type | Duration | Start | Finish | Predecessors | Total float | Calendar | Resources | Cost |
| --- | --- | --- | --- | --- | --- | --- | --- | --- | --- | --- | --- |
|  | 2 | **S1 Superstructure** |  |  | 2026-03-23 | 2026-11-20 |  |  |  |  |  |
| S1-200 |  | Obtain DNO written permission for crane operation within the 110 kV exclusion zone |  | 20d | 2026-03-23 | 2026-04-21 | PM-1080 | 116d | Office-Design 5-day (Fin holidays) | Site Management [480 h] |  |
| S1-205 |  | Steel erection - primary substation and switchgear building |  | 15d | 2026-09-07 | 2026-09-25 | S1-170, PR-3410, S1-200, PM-1090 | 21d |  | Structural Steel Crew [1200 h] | 235,382.65 |
| S1-215 |  | Steel erection - shared MEP spine and mezzanine (full length, grid I-K / 2-23) |  | 25d | 2026-09-07 | 2026-10-09 | S1-168, PR-3410 | 19d |  | Structural Steel Crew [4000 h] | 603,938.67 |
| S1-225 |  | Steel erection - gatehouse and loading |  | 5d | 2026-09-07 | 2026-09-11 | S1-170, PR-3410 | 66d |  | Structural Steel Crew [400 h] | 81,134.21 |
| S1-210 |  | Steel erection - Hall 1 frame, trusses and bracing |  | 14d | 2026-09-09 | 2026-09-28 | S1-165, PR-3410, PM-1090 | 19d |  | Structural Steel Crew [2240 h] | 621,987.09 |
| S1-245 |  | Metal deck, roof purlins and side rails - Section 1 |  | 20d | 2026-09-21 | 2026-10-16 | S1-210 SS+8d, S1-215 SS+10d, S1-205 SS+8d | 19d |  | Structural Steel Crew [3200 h] | 333,028.52 |
| S1-240 |  | In-situ RC blast and fire separation walls - primary substation |  | 15d | 2026-09-28 | 2026-10-16 | S1-205 | 88d |  | Concrete Crew [1200 h] | 309,454.64 |
| S1-230 |  | Precast concrete wall panels EI 120 - Hall 1 (64 nr) |  | 10d | 2026-09-29 | 2026-10-12 | S1-210, PR-3430 | 44d |  | Steel & Precast Crew [480 h] | 506,769.17 |
| S1-235 |  | Precast panels - shared MEP spine and primary substation (approx. 110 nr) |  | 18d | 2026-10-12 | 2026-11-04 | S1-215, S1-205, PR-3430 | 28d |  | Steel & Precast Crew [1728 h] | 682,301.92 |
| S1-220 |  | Steel erection - generator enclosure |  | 10d | 2026-10-15 | 2026-10-28 | S1-172, PR-3410 | 38d |  | Structural Steel Crew [800 h] | 181,293.18 |
| S1-250 |  | Intumescent and cementitious fire protection to steel - Section 1 |  | 25d | 2026-10-19 | 2026-11-20 | S1-245 | 46d |  | Fire Protection Crew [2400 h] | 186,807.2 |
| S1-237 |  | Precast panels - generator enclosure (approx. 38 nr) |  | 10d | 2026-10-29 | 2026-11-11 | S1-220, PR-3430 | 38d |  | Steel & Precast Crew [480 h] | 216,725.18 |
| S1-255 |  | Structural frame inspection witnessed by Building Control |  | 3d | 2026-11-05 | 2026-11-09 | S1-245, S1-235, S1-230, S1-240 | 213d |  | Site Management [72 h] |  |
| S1-260 |  | M: Section 1 structure complete | milestone | 0d | 2026-11-10 | 2026-11-10 | S1-255, S1-185 | 213d |  |  |  |
|  | 3 | **S1 Envelope** |  |  | 2026-10-05 | 2026-12-31 |  |  |  |  |  |
| S1-310 |  | Warm roof build-up (300 mm PIR, single ply, PV-ready) - Hall 1 |  | 16d | 2026-10-05 | 2026-10-26 | S1-245 SS+10d, S1-210 | 65d |  | Waterproofing Crew [512 h] | 183,923.12 |
| S1-315 |  | Warm roof build-up - substation, spine (full length) and gatehouse |  | 30d | 2026-10-05 | 2026-11-13 | S1-245 SS+10d, S1-205 | 19d |  | Waterproofing Crew [1920 h] | 442,777.87 |
| S1-300 |  | Insulated composite cladding U=0.17 - Hall 1 |  | 21d | 2026-10-13 | 2026-11-10 | S1-230 | 44d |  | Envelope Crew [1008 h] | 306,673.84 |
| S1-335 |  | Roof safety line, walkways and access hatches - Section 1 |  | 8d | 2026-10-27 | 2026-11-05 | S1-310 | 215d |  | Waterproofing Crew [256 h] | 108,341.25 |
| S1-305 |  | Cladding - primary substation, shared spine and gatehouse |  | 20d | 2026-11-05 | 2026-12-02 | S1-235, S1-225 | 28d |  | Envelope Crew [1920 h] | 518,777.71 |
| S1-307 |  | Cladding and acoustic treatment - generator enclosure |  | 12d | 2026-11-12 | 2026-11-27 | S1-237 | 38d |  | Envelope Crew [576 h] | 141,484.83 |
| S1-330 |  | Rainwater goods, outlets and syphonic drainage - Section 1 |  | 10d | 2026-11-16 | 2026-11-27 | S1-310, S1-315 | 199d |  | Plumbing Crew [480 h] | 170,250.54 |
| S1-320 |  | Acoustic louvres to cooling intake and discharge - Section 1 |  | 15d | 2026-12-03 | 2026-12-23 | S1-305, S1-307, PR-3445 | 181d |  | Envelope Crew [720 h] | 230,302.55 |
| S1-325 |  | Personnel and 3.0 x 3.5 m equipment doors - Section 1 |  | 10d | 2026-12-03 | 2026-12-16 | S1-300, S1-305 | 28d |  | Envelope Crew [480 h] | 121,032.66 |
| S1-348 |  | M: Primary substation and shared spine weathertight | milestone | 0d | 2026-12-03 | 2026-12-03 | S1-305, S1-315 | 33d |  |  |  |
| S1-340 |  | Airtightness works and q50 <= 1.0 test - Hall 1 |  | 8d | 2026-12-17 | 2026-12-30 | S1-300, S1-325, S1-310 | 178d |  | Envelope Crew [384 h] | 65,004.75 |
| S1-342 |  | M: Hall 1 weathertight and enclosed | milestone | 0d | 2026-12-17 | 2026-12-17 | S1-300, S1-310, S1-325 | 28d |  |  |  |
| S1-345 |  | M: Section 1 weathertight and enclosed | milestone | 0d | 2026-12-31 | 2026-12-31 | S1-340, S1-330, S1-320, S1-348, S1-307, S1-260, S1-335 | 178d |  |  |  |

| ID | WBS | Activity | Type | Duration | Start | Finish | Predecessors | Total float | Calendar | Resources | Cost |
| --- | --- | --- | --- | --- | --- | --- | --- | --- | --- | --- | --- |
|  | 4 | **S1 Primary Substation and HV** |  |  | 2026-08-03 | 2027-03-19 |  |  |  |  |  |
| S1-445 |  | Apply for the 110 kV outage window (MS-08, 16 weeks' notice) |  | 5d | 2026-08-03 | 2026-08-07 | DE-2380 | 97d | Office-Design 5-day (Fin holidays) | Site Management [120 h] |  |
| S1-450 |  | DNO outage-window notice period (16 weeks) |  | 112d | 2026-08-08 | 2026-11-27 | S1-445 | 139d | Vendor-Third party 7-day continuous |  |  |
| S1-400 |  | 110 kV termination, metering and protection - Contractor side of the boundary |  | 25d | 2026-12-03 | 2027-01-12 | S1-240, S1-348 | 65d |  | HV Specialist Crew [1200 h] | 1,524,900.93 |
| S1-420 |  | 20 kV ring main switchboard and protection relays (14 panels) |  | 25d | 2026-12-03 | 2027-01-12 | PR-3140, S1-348 | 33d |  | HV Specialist Crew [1200 h] | 842,246.65 |
| S1-435 |  | 20 kV ring cabling and containment - spine, full length |  | 25d | 2026-12-10 | 2027-01-19 | S1-420 SS+5d, S1-690 SS | 70d |  | Electrical Crew [3200 h] | 467,914.81 |
| S1-430 |  | Hall substation 20/0.4 kV, 3.3 MVA - Hall 1 |  | 10d | 2027-01-05 | 2027-01-19 | S1-420 SS+15d, S1-700 SS+10d | 28d |  | Electrical Crew [640 h] | 279,913.32 |
| S1-410 |  | Install, set and terminate 2 x 16 MVA 110/20 kV transformers |  | 25d | 2027-01-15 | 2027-02-18 | PR-3120, S1-348, S1-240 | 28d |  | HV Specialist Crew [2400 h] | 1,478,945.01 |
| S1-440 |  | Energy metering per hall and per feed - Section 1 |  | 10d | 2027-01-20 | 2027-02-02 | S1-430 | 40d |  | Electrical Crew [640 h] | 175,468.05 |
| S1-425 |  | Substation earthing, bonding and lightning protection |  | 12d | 2027-01-29 | 2027-02-15 | S1-410 SS+10d | 41d |  | Electrical Crew [768 h] | 213,068.35 |
| S1-415 |  | Transformer site acceptance testing (L2/L3) |  | 10d | 2027-02-19 | 2027-03-04 | S1-410 | 28d |  | HV Specialist Crew [480 h] |  |
| S1-455 |  | DNO 110 kV live-line connection works and Stage 1 energisation |  | 10d | 2027-03-05 | 2027-03-18 | S1-450, S1-415, S1-420, S1-425, S1-440, S1-400 | 28d | DNO 110 kV outage windows Mar-Apr / Sep-Oct (Mon-Fri) |  |  |
| S1-460 |  | M: Grid energisation Stage 1 - 6.5 MVA (MS-09) | milestone | 0d | 2027-03-19 | 2027-03-19 | S1-455 | 53d |  |  |  |
|  | 5 | **S1 Generator Compound and Fuel** |  |  | 2026-10-22 | 2027-02-05 |  |  |  |  |  |
| S1-520 |  | Bulk fuel storage, bunding, polishing and day tanks (48 h at full load) |  | 25d | 2026-10-22 | 2026-11-25 | S1-172, S1-220 SS+5d | 62d |  | Mechanical Crew [1600 h] | 1,232,454.17 |
| S1-530 |  | Oil separators (class I, full retention) to generator and fuel drainage |  | 8d | 2026-11-26 | 2026-12-07 | S1-520 | 62d |  | Civil Crew [384 h] | 106,729.51 |
| S1-500 |  | Install 8 x 2.5 MVA standby generators and acoustic enclosures |  | 30d | 2026-11-30 | 2027-01-14 | PR-3160, S1-307 | 38d |  | Electrical Crew [3840 h] | 4,938,172.28 |
| S1-510 |  | Generator paralleling, ATS and control system |  | 20d | 2026-12-21 | 2027-01-21 | S1-500 SS+15d | 41d |  | Electrical Crew [1280 h] | 1,378,677.55 |
| S1-540 |  | Generator L3 start-up and individual load test (09:00-16:00 window) |  | 15d | 2027-01-15 | 2027-02-04 | S1-510 SS+12d, S1-500, S1-520, S1-530 | 38d |  | Commissioning Team [480 h] | 20,462.17 |
| S1-545 |  | M: Standby generation available as commissioning power | milestone | 0d | 2027-02-05 | 2027-02-05 | S1-540 | 38d |  |  |  |
|  | 6 | **S1 Shared MEP Spine and Cooling Yard (full 10 MW)** |  |  | 2026-09-30 | 2027-02-18 |  |  |  |  |  |
| S1-620 |  | Install 10 dry coolers / adiabatic units - cooling yard, full length |  | 25d | 2026-09-30 | 2026-11-03 | PR-3325, S1-175 | 64d |  | Mechanical Crew [3200 h] | 1,776,750.15 |
| S1-690 |  | Overhead busway risers and containment - spine, full length |  | 20d | 2026-10-12 | 2026-11-06 | S1-215, PR-3205 | 113d |  | Electrical Crew [2560 h] | 62,165.82 |
| S1-600 |  | Chilled-water pipework - spine headers, full length, welded and pre-insulated |  | 40d | 2026-10-19 | 2026-12-11 | S1-215, S1-315 SS+10d | 19d |  | Plumbing Crew [3840 h] | 850,089.73 |
| S1-610 |  | Install 4 chillers (N+1) - shared backup-chiller zone |  | 20d | 2026-10-28 | 2026-11-24 | PR-3310, S1-175 | 64d |  | Mechanical Crew [1280 h] | 1,313,968.72 |
| S1-650 |  | Water treatment and adiabatic make-up plant (WUE <= 0.25 L/kWh) |  | 15d | 2026-11-04 | 2026-11-24 | S1-620, S1-840 | 64d |  | Mechanical Crew [960 h] | 895,261.7 |
| S1-630 |  | Primary and secondary pump sets with inverters |  | 15d | 2026-11-16 | 2026-12-04 | S1-600 SS+20d | 29d |  | Mechanical Crew [960 h] | 477,243.35 |
| S1-640 |  | Buffer vessels, pressurisation and glycol dosing |  | 15d | 2026-11-16 | 2026-12-04 | S1-600 SS+20d | 29d |  | Mechanical Crew [960 h] | 800,570.56 |
| S1-660 |  | Valves, strainers, commissioning sets and instrumentation - Section 1 |  | 25d | 2026-12-14 | 2027-01-21 | S1-630 SS+10d, S1-640 SS+10d, S1-600 | 19d |  | Mechanical Crew [3200 h] | 960,684.67 |
| S1-670 |  | Thermal insulation, identification and testing - Section 1 |  | 20d | 2027-01-04 | 2027-02-01 | S1-660 SS+12d | 19d |  | Insulation Crew [1280 h] | 420,084.34 |
| S1-680 |  | Pressure test, flush and chemically clean the shared CHW system |  | 12d | 2027-02-02 | 2027-02-17 | S1-670, S1-660, S1-610, S1-650 | 19d |  | Mechanical Crew [768 h] |  |
| S1-695 |  | M: Shared cooling spine complete and tested at full 10 MW capacity | milestone | 0d | 2027-02-18 | 2027-02-18 | S1-680, S1-620 | 19d |  |  |  |

| ID | WBS | Activity | Duration | Start | Finish | Predecessors | Total float | Resources | Cost |
| --- | --- | --- | --- | --- | --- | --- | --- | --- | --- |
|  | 7 | **S1 Hall 1 MEP and Fit-Out** |  | 2026-12-17 | 2027-03-03 |  |  |  |  |
| S1-700 |  | Containment, cable tray, small power and lighting - Hall 1 | 20d | 2026-12-17 | 2027-01-19 | S1-342, S1-250, DE-2200 SS | 28d | Electrical Crew [2560 h] | 374,331.84 |
| S1-735 |  | Chilled-water branch pipework and connections - Hall 1 | 20d | 2026-12-17 | 2027-01-19 | S1-600, S1-342 | 53d | Plumbing Crew [960 h] | 259,749.64 |
| S1-740 |  | Ventilation, smoke extract and comfort cooling - Hall 1 and support areas | 20d | 2026-12-17 | 2027-01-19 | S1-342 | 35d | Mechanical Crew [2560 h] | 698,992.79 |
| S1-760 |  | Sprinkler installation and dry risers - Section 1 ancillary areas | 18d | 2026-12-17 | 2027-01-15 | S1-342 | 77d | Fire Protection Crew [1728 h] | 80,120.35 |
| S1-790 |  | Internal partitions, linings and fire-rated boarding - Section 1 | 20d | 2026-12-17 | 2027-01-19 | S1-342, S1-250 | 55d | Fit-Out Crew [3200 h] | 288,708.35 |
| S1-730 |  | CRAH units 7 nr (N+1) - Hall 1 | 12d | 2026-12-28 | 2027-01-14 | PR-3335, S1-735 SS+5d | 53d | Mechanical Crew [768 h] | 336,239.64 |
| S1-705 |  | UPS modules 4 x 1000 kVA (3 duty + 1 standby) - Hall 1 | 15d | 2027-01-13 | 2027-02-02 | PR-3180, S1-430 SS+5d | 28d | Electrical Crew [960 h] | 466,243.68 |
| S1-715 |  | LV main switchboards and distribution - Hall 1 | 12d | 2027-01-13 | 2027-01-28 | S1-430 SS+5d | 37d | Electrical Crew [768 h] | 370,989.6 |
| S1-725 |  | Earthing and bonding - Hall 1 | 8d | 2027-01-20 | 2027-01-29 | S1-700 | 42d | Electrical Crew [512 h] | 127,841.01 |
| S1-745 |  | Aspirating smoke detection - Hall 1 white space | 12d | 2027-01-20 | 2027-02-04 | S1-700 | 48d | Fire Protection Crew [576 h] | 47,794.58 |
| S1-750 |  | Addressable fire detection and alarm - Section 1 support areas and spine | 10d | 2027-01-20 | 2027-02-02 | S1-700 | 65d | Fire Protection Crew [480 h] | 65,981.47 |
| S1-775 |  | Structured cabling, meet-me room and containment | 20d | 2027-01-20 | 2027-02-16 | S1-700, S1-830 | 35d | ICT Crew [1280 h] | 219,439.49 |
| S1-780 |  | Anti-static sealed screed to the structural slab - Hall 1 white space | 16d | 2027-01-20 | 2027-02-10 | S1-700, S1-342 | 44d | Fit-Out Crew [1280 h] | 123,883.49 |
| S1-795 |  | Floor and wall finishes to plant rooms - Section 1 | 15d | 2027-01-20 | 2027-02-09 | S1-790 | 55d | Fit-Out Crew [1200 h] | 165,269.13 |
| S1-720 |  | Overhead busway to rack PDUs - Hall 1 (240 m) | 12d | 2027-01-21 | 2027-02-05 | S1-715 SS+6d, PR-3205 | 37d | Electrical Crew [768 h] | 93,248.74 |
| S1-765 |  | BMS field devices, panels and BACnet/IP integration - Section 1 | 25d | 2027-01-22 | 2027-02-25 | PR-3455, S1-740, S1-660 | 33d | BMS Crew [1600 h] | 274,631.85 |
| S1-710 |  | Lithium-ion battery system and fire-rated battery room - Hall 1 | 12d | 2027-02-03 | 2027-02-18 | PR-3195, S1-705 | 28d | Electrical Crew [768 h] | 165,441.31 |
| S1-755 |  | Gaseous / water-mist suppression - Hall 1 | 15d | 2027-02-05 | 2027-02-25 | PR-3465, S1-745 | 48d | Fire Protection Crew [720 h] | 192,009.55 |
| S1-770 |  | DCIM installation and configuration - Section 1 | 15d | 2027-02-05 | 2027-02-25 | S1-765 SS+10d | 33d | BMS Crew [480 h] | 212,789.81 |
| S1-798 |  | Signage, wayfinding and hall labelling - Section 1 | 5d | 2027-02-10 | 2027-02-16 | S1-795 | 55d | Fit-Out Crew [400 h] | 70,485.44 |
| S1-785 |  | Cold-aisle containment framework and blanking - Hall 1 | 15d | 2027-02-11 | 2027-03-03 | S1-780, S1-720, S1-730 | 44d | Fit-Out Crew [1200 h] | 205,048.54 |
|  | 8 | **S1 Site Access, Gatehouse and Security** |  | 2026-05-29 | 2027-03-16 |  |  |  |  |
| S1-810 |  | Perimeter fencing, intrusion detection and vehicle gates (1,070 m) | 25d | 2026-05-29 | 2026-07-03 | EN-060, EN-070 | 178d | Civil Crew [1200 h] | 472,765.84 |
| S1-830 |  | Two diverse fibre entry routes, ducts and chambers (1,240 m) | 20d | 2026-06-29 | 2026-08-14 | EN-090 | 143d | Civil Crew [1920 h] | 298,842.64 |
| S1-840 |  | Foul, water and utility connections at the south-west corner chamber | 15d | 2026-06-29 | 2026-08-07 | EN-090 | 126d | Civil Crew [720 h] | 436,099.09 |
| S1-800 |  | Site access road, service yard and hardstanding - Section 1 | 25d | 2026-11-05 | 2026-12-09 | EN-090, S1-235 | 60d | Civil Crew [2400 h] | 394,761.48 |
| S1-820 |  | Gatehouse fit-out and weighbridge | 20d | 2026-12-10 | 2027-01-12 | S1-305, S1-800 | 60d | Fit-Out Crew [1600 h] | 275,431 |
| S1-850 |  | External lighting and small power - Section 1 | 12d | 2026-12-10 | 2026-12-29 | S1-800 | 179d | Electrical Crew [768 h] | 121,648.69 |
| S1-860 |  | Access control, five layers, mantrap and ANPR integration - Section 1 | 20d | 2027-02-17 | 2027-03-16 | S1-775, S1-820, S1-810 | 35d | ICT Crew [640 h] | 239,388.54 |
| S1-870 |  | CCTV with 90-day retention and analytics - Section 1 | 15d | 2027-02-17 | 2027-03-09 | S1-775 | 40d | ICT Crew [480 h] | 186,191.08 |

| ID | WBS | Activity | Type | Duration | Start | Finish | Predecessors | Total float | Calendar | Resources | Cost |
| --- | --- | --- | --- | --- | --- | --- | --- | --- | --- | --- | --- |
|  | 9 | **S1 Commissioning and Handover** |  |  | 2026-05-22 | 2027-06-17 |  |  |  |  |  |
| S1-925 |  | Apply for Building Control exemption - extended-hours generator and load-bank testing |  | 20d | 2026-05-22 | 2026-06-18 | DE-2140 | 243d | Office-Design 5-day (Fin holidays) | Site Management [480 h] |  |
| S1-928 |  | M: Extended-hours testing exemption granted (PP-001 cond. 15) | milestone | 0d | 2026-06-22 | 2026-06-22 | S1-925 | 243d | Office-Design 5-day (Fin holidays) |  |  |
| S1-900 |  | L2 site delivery and static inspection - Section 1 plant |  | 15d | 2027-01-20 | 2027-02-09 | S1-500 SS+10d, S1-610 SS+5d, S1-420 SS+10d, S1-705 SS+5d | 40d |  | Commissioning Team [480 h] | 54,565.78 |
| S1-905 |  | L3 component start-up and functional test - mechanical, Section 1 |  | 20d | 2027-02-18 | 2027-03-17 | S1-900 SS+10d, S1-695, S1-730 | 29d |  | Commissioning Team [1280 h] | 27,282.89 |
| S1-910 |  | L3 component start-up and functional test - electrical, Section 1 |  | 20d | 2027-02-19 | 2027-03-18 | S1-900 SS+10d, S1-545, S1-710, S1-720, S1-725, S1-440 | 28d |  | Commissioning Team [1280 h] | 27,282.89 |
| S1-965 |  | M: Tenant fit-out access to Hall 1 (Month 12, MS-10) | milestone | 0d | 2027-03-04 | 2027-03-04 | S1-785 | 143d |  |  |  |
| S1-915 |  | BMS point-to-point and cause-and-effect verification - Section 1 |  | 15d | 2027-03-05 | 2027-03-25 | S1-905 SS+10d, S1-910 SS+10d, S1-770 | 28d |  | BMS Crew [960 h] |  |
| S1-920 |  | Mobilise and connect 10 MW of temporary load banks at the hall substations |  | 10d | 2027-03-05 | 2027-03-18 | S1-910 SS+10d | 33d |  | Commissioning Team [320 h] | 103,934.82 |
| S1-930 |  | L4 Phase A - integrated systems testing on standby generation and load bank |  | 20d | 2027-03-30 | 2027-04-26 | S1-915, S1-920, S1-755, S1-745, S1-750, S1-760, S1-860, S1-870, S1-785, S1-798 | 28d |  | Commissioning Team [1280 h] | 120,044.71 |
| S1-945 |  | Section 1 as-built documentation, O&M manuals and training |  | 15d | 2027-04-13 | 2027-05-03 | S1-930 SS+10d | 94d |  | Design Management [480 h] | 49,734.43 |
| S1-935 |  | L4 Phase B - utility-loss, 10 s transfer and black-building demonstrations |  | 10d | 2027-04-27 | 2027-05-11 | S1-930, S1-460, S1-928 | 28d |  | Commissioning Team [640 h] | 65,478.93 |
| S1-940 |  | L5 integrated load-bank test - 24 h continuous at full 10 MW shared capacity |  | 10d | 2027-05-12 | 2027-05-25 | S1-935 | 28d |  | Commissioning Team [640 h] | 156,811.65 |
| S1-950 |  | Section 1 statutory inspections and occupancy inspection (kayttoonottotarkastus) |  | 8d | 2027-05-26 | 2027-06-04 | S1-940, S1-945, S1-850, S1-345 | 79d |  | Site Management [192 h] | 30,855.65 |
| S1-955 |  | Tenant technical acceptance - Hall 1 (PDC-TA-001 s.4) |  | 8d | 2027-06-07 | 2027-06-16 | S1-950, S1-965 SS | 79d |  | Commissioning Team [256 h] |  |
| S1-960 |  | M: Section 1 Taking Over (contract date 02-May-2027) | milestone | 0d | 2027-06-17 | 2027-06-17 | S1-955 | 79d |  |  |  |
|  | 6 | **Section 2 - Hall 2** |  |  | 2026-06-12 | 2027-08-24 |  |  |  |  |  |
|  | 1 | **S2 Substructure** |  |  | 2026-06-12 | 2026-10-05 |  |  |  |  |  |
| S2-100 |  | Bulk excavation to formation - Hall 2 zone (grid 8-12) |  | 20d | 2026-06-12 | 2026-07-31 | S1-100 SS+20d, EN-110 | 0d |  | Earthworks Crew [2560 h] | 64,562.47 |
| S2-120 |  | Dewatering - sump pumping, Hall 2 |  | 8d | 2026-06-22 | 2026-07-01 | S2-100 SS+5d | 51d |  | Civil Crew [384 h] | 54,371.95 |
| S2-130 |  | Pad and strip foundations - Hall 2 |  | 20d | 2026-07-02 | 2026-08-19 | S2-100 SS+12d, S2-120 | 51d |  | Concrete Crew [3200 h] | 74,852.05 |
| S2-150 |  | Ground beams and pile caps - Hall 2 |  | 15d | 2026-08-06 | 2026-08-26 | S2-130 SS+10d | 51d |  | Concrete Crew [2400 h] | 113,528.63 |
| S2-160 |  | Sub-base, capping and geotextile - Hall 2 |  | 10d | 2026-08-20 | 2026-09-02 | S2-150 SS+10d, S2-130 | 51d |  | Civil Crew [960 h] | 88,991.52 |
| S2-165 |  | Ground-bearing slab 250 mm, FM2 flatness - Hall 2 |  | 20d | 2026-09-03 | 2026-09-30 | S2-160 | 51d |  | Concrete Crew [3200 h] | 308,852.92 |
| S2-180 |  | Foundation inspection witnessed by Building Control - Hall 2 |  | 3d | 2026-10-01 | 2026-10-05 | S2-165 | 51d |  | Site Management [72 h] |  |

| ID | WBS | Activity | Type | Duration | Start | Finish | Predecessors | Total float | Resources | Cost |
| --- | --- | --- | --- | --- | --- | --- | --- | --- | --- | --- |
|  | 2 | **S2 Superstructure** |  |  | 2026-10-12 | 2027-01-29 |  |  |  |  |
| S2-210 |  | Steel erection - Hall 2 frame, trusses and bracing |  | 14d | 2026-10-12 | 2026-10-29 | S2-165, S2-180, PR-3412 | 47d | Structural Steel Crew [2240 h] | 605,947.15 |
| S2-245 |  | Metal deck, roof purlins and side rails - Hall 2 |  | 12d | 2026-10-22 | 2026-11-06 | S2-210 SS+8d | 70d | Structural Steel Crew [1920 h] | 148,012.68 |
| S2-230 |  | Precast concrete wall panels EI 120 - Hall 2 (64 nr) |  | 10d | 2026-10-30 | 2026-11-12 | S2-210, PR-3432 | 47d | Steel & Precast Crew [480 h] | 466,669.31 |
| S2-255 |  | Structural frame inspection witnessed by Building Control - Hall 2 |  | 3d | 2026-11-13 | 2026-11-17 | S2-245, S2-230 | 81d | Site Management [72 h] |  |
| S2-250 |  | Intumescent and cementitious fire protection to steel - Hall 2 |  | 15d | 2027-01-11 | 2027-01-29 | S2-345 | 56d | Fire Protection Crew [1440 h] | 70,052.7 |
|  | 3 | **S2 Envelope** |  |  | 2026-11-03 | 2027-01-11 |  |  |  |  |
| S2-310 |  | Warm roof build-up (300 mm PIR, single ply) - Hall 2 |  | 14d | 2026-11-03 | 2026-11-20 | S2-245 SS+8d | 70d | Waterproofing Crew [448 h] | 183,923.12 |
| S2-300 |  | Insulated composite cladding U=0.17 - Hall 2 |  | 21d | 2026-11-13 | 2026-12-11 | S2-230 | 47d | Envelope Crew [1008 h] | 306,673.84 |
| S2-330 |  | Rainwater goods and syphonic drainage - Hall 2 |  | 8d | 2026-11-23 | 2026-12-02 | S2-310 | 70d | Plumbing Crew [384 h] | 76,612.74 |
| S2-335 |  | Roof safety line, walkways and access hatches - Hall 2 |  | 6d | 2026-11-23 | 2026-11-30 | S2-310 | 72d | Waterproofing Crew [192 h] | 48,753.56 |
| S2-320 |  | Acoustic louvres to cooling intake and discharge - Hall 2 |  | 10d | 2026-12-14 | 2026-12-29 | S2-300, PR-3445 | 53d | Envelope Crew [480 h] | 115,151.27 |
| S2-325 |  | Personnel and equipment doors - Hall 2 |  | 8d | 2026-12-14 | 2026-12-23 | S2-300 | 47d | Envelope Crew [384 h] | 62,245.37 |
| S2-340 |  | Airtightness works and q50 <= 1.0 test - Hall 2 |  | 8d | 2026-12-28 | 2027-01-08 | S2-300, S2-325, S2-310 | 47d | Envelope Crew [384 h] | 51,075.16 |
| S2-345 |  | M: Hall 2 weathertight and enclosed | milestone | 0d | 2027-01-11 | 2027-01-11 | S2-340, S2-330, S2-320, S2-335, S2-255 | 47d |  |  |
|  | 7 | **S2 Hall 2 MEP and Fit-Out** |  |  | 2027-01-11 | 2027-05-20 |  |  |  |  |
| S2-430 |  | Hall substation 20/0.4 kV, 3.3 MVA - Hall 2 |  | 10d | 2027-01-11 | 2027-01-22 | S2-345, S1-435 SS+15d | 67d | Electrical Crew [640 h] | 279,913.32 |
| S2-740 |  | Ventilation, smoke extract and comfort cooling - Hall 2 |  | 18d | 2027-01-11 | 2027-02-03 | S2-345 | 76d | Mechanical Crew [2304 h] | 449,352.51 |
| S2-760 |  | Sprinkler installation and dry risers - Hall 2 ancillary areas |  | 12d | 2027-01-11 | 2027-01-26 | S2-345 | 110d | Fire Protection Crew [1152 h] | 45,401.53 |
| S2-715 |  | LV main switchboards and distribution - Hall 2 |  | 12d | 2027-01-18 | 2027-02-02 | S2-430 SS+5d | 81d | Electrical Crew [768 h] | 247,326.4 |
| S2-440 |  | Energy metering per hall and per feed - Hall 2 |  | 8d | 2027-01-25 | 2027-02-03 | S2-430 | 86d | Electrical Crew [512 h] | 87,734.03 |
| S2-705 |  | UPS modules 4 x 1000 kVA - Hall 2 |  | 15d | 2027-01-25 | 2027-02-12 | PR-3180, S2-430 | 67d | Electrical Crew [960 h] | 466,243.68 |
| S2-720 |  | Overhead busway to rack PDUs - Hall 2 (240 m) |  | 12d | 2027-01-26 | 2027-02-10 | S2-715 SS+6d, PR-3205 | 81d | Electrical Crew [768 h] | 93,248.74 |
| S2-700 |  | Containment, cable tray, small power and lighting - Hall 2 |  | 20d | 2027-02-01 | 2027-02-26 | S2-345, S2-250 | 56d | Electrical Crew [2560 h] | 374,331.84 |
| S2-790 |  | Internal partitions, linings and fire-rated boarding - Hall 2 |  | 15d | 2027-02-01 | 2027-02-19 | S2-345, S2-250 | 76d | Fit-Out Crew [2400 h] | 153,977.79 |
| S2-710 |  | Lithium-ion battery system and fire-rated battery room - Hall 2 |  | 12d | 2027-02-15 | 2027-03-02 | PR-3195, S2-705 | 67d | Electrical Crew [768 h] | 165,441.31 |
| S2-735 |  | Chilled-water branch pipework and connections - Hall 2 |  | 20d | 2027-02-18 | 2027-03-17 | S2-345, S1-695 | 19d | Plumbing Crew [960 h] | 259,749.64 |
| S2-795 |  | Floor and wall finishes to plant rooms - Hall 2 |  | 12d | 2027-02-22 | 2027-03-09 | S2-790 | 76d | Fit-Out Crew [960 h] | 74,371.11 |
| S2-730 |  | CRAH units 7 nr (N+1) - Hall 2 |  | 12d | 2027-02-25 | 2027-03-12 | PR-3335, S2-735 SS+5d | 58d | Mechanical Crew [768 h] | 336,239.64 |
| S2-725 |  | Earthing and bonding - Hall 2 |  | 8d | 2027-03-01 | 2027-03-10 | S2-700 | 61d | Electrical Crew [512 h] | 120,738.73 |
| S2-745 |  | Aspirating smoke detection - Hall 2 white space |  | 12d | 2027-03-01 | 2027-03-16 | S2-700 | 60d | Fire Protection Crew [576 h] | 47,794.58 |
| S2-750 |  | Addressable fire detection and alarm - Hall 2 support areas |  | 8d | 2027-03-01 | 2027-03-10 | S2-700 | 79d | Fire Protection Crew [384 h] | 37,389.5 |
| S2-775 |  | Structured cabling and containment - Hall 2 |  | 12d | 2027-03-01 | 2027-03-16 | S2-700 | 63d | ICT Crew [384 h] | 59,847.13 |
| S2-780 |  | Anti-static sealed screed - Hall 2 white space |  | 16d | 2027-03-01 | 2027-03-22 | S2-700 | 56d | Fit-Out Crew [1280 h] | 123,883.49 |
| S2-798 |  | Signage, wayfinding and hall labelling - Hall 2 |  | 4d | 2027-03-10 | 2027-03-15 | S2-795 | 76d | Fit-Out Crew [320 h] | 56,388.35 |
| S2-755 |  | Gaseous / water-mist suppression - Hall 2 |  | 15d | 2027-03-17 | 2027-04-08 | PR-3465, S2-745 | 60d | Fire Protection Crew [720 h] | 192,009.55 |
| S2-860 |  | Access control and CCTV extension - Hall 2 |  | 12d | 2027-03-17 | 2027-04-05 | S2-775, S1-860 | 63d | ICT Crew [384 h] | 159,592.36 |
| S2-630 |  | Secondary pump sets and inverters - Hall 2 |  | 10d | 2027-03-18 | 2027-04-02 | S2-735 | 19d | Mechanical Crew [640 h] | 103,402.73 |
| S2-785 |  | Cold-aisle containment framework and blanking - Hall 2 |  | 15d | 2027-03-23 | 2027-04-14 | S2-780, S2-720, S2-730 | 56d | Fit-Out Crew [1200 h] | 205,048.54 |
| S2-660 |  | Valves, strainers, commissioning sets and instrumentation - Hall 2 |  | 15d | 2027-04-05 | 2027-04-23 | S2-630 | 19d | Mechanical Crew [960 h] | 384,273.87 |
| S2-670 |  | Thermal insulation, identification and testing - Hall 2 |  | 12d | 2027-04-26 | 2027-05-12 | S2-660 | 19d | Insulation Crew [384 h] | 210,042.17 |
| S2-765 |  | BMS field devices, panels and BACnet/IP integration - Hall 2 |  | 18d | 2027-04-26 | 2027-05-20 | S1-765, S2-740, S2-660 | 21d | BMS Crew [576 h] | 137,315.92 |
| S2-770 |  | DCIM extension and configuration - Hall 2 |  | 10d | 2027-05-07 | 2027-05-20 | S2-765 SS+8d | 21d | BMS Crew [320 h] | 106,394.9 |

| ID | WBS | Activity | Type | Duration | Start | Finish | Predecessors | Total float | Resources | Cost |
| --- | --- | --- | --- | --- | --- | --- | --- | --- | --- | --- |
|  | 9 | **S2 Commissioning and Handover** |  |  | 2027-03-04 | 2027-08-24 |  |  |  |  |
| S2-900 |  | L2 site delivery and static inspection - Hall 2 plant |  | 10d | 2027-03-04 | 2027-03-17 | S2-705 SS+5d, S2-730 SS+5d, S2-430 SS+5d | 58d | Commissioning Team [320 h] | 34,103.61 |
| S2-910 |  | L3 component start-up and functional test - electrical, Hall 2 |  | 15d | 2027-03-16 | 2027-04-07 | S2-900 SS+8d, S2-710, S2-720, S2-725, S2-440 | 58d | Commissioning Team [480 h] | 17,051.81 |
| S2-920 |  | Mobilise and connect 2.5 MW of temporary load banks - Hall 2 |  | 6d | 2027-03-30 | 2027-04-06 | S2-910 SS+8d | 62d | Commissioning Team [192 h] | 51,967.41 |
| S2-460 |  | M: Grid capacity Stage 2 released - 3.5 MVA (earliest 30-Jun-2027) | milestone | 0d | 2027-04-08 | 2027-04-08 | S1-460, S2-910 | 84d |  |  |
| S2-905 |  | L3 component start-up and functional test - mechanical, Hall 2 |  | 15d | 2027-05-13 | 2027-06-02 | S2-900 SS+8d, S2-670, S2-740 | 19d | Commissioning Team [480 h] | 17,051.81 |
| S2-915 |  | BMS point-to-point and cause-and-effect verification - Hall 2 |  | 10d | 2027-05-25 | 2027-06-07 | S2-905 SS+8d, S2-910 SS+8d, S2-770 | 19d | BMS Crew [320 h] |  |
| S2-930 |  | L4 integrated systems testing and failure-mode demonstrations - Hall 2 |  | 15d | 2027-06-08 | 2027-06-29 | S2-915, S2-920, S2-755, S2-745, S2-750, S2-760, S2-860, S2-785, S2-798, S1-940 | 19d | Commissioning Team [960 h] | 120,044.71 |
| S2-945 |  | Hall 2 as-built documentation, O&M manuals and training |  | 12d | 2027-06-18 | 2027-07-06 | S2-930 SS+8d | 22d | Design Management [384 h] | 29,840.66 |
| S2-940 |  | L5 integrated load-bank test - 24 h continuous at 2.5 MW hall load - Hall 2 |  | 8d | 2027-06-30 | 2027-07-09 | S2-930, S1-928 | 19d | Commissioning Team [512 h] | 101,466.36 |
| S2-950 |  | Statutory and occupancy inspection (kayttoonottotarkastus) - Hall 2 |  | 8d | 2027-08-02 | 2027-08-11 | S2-940, S2-945, S2-460 | 19d | Site Management [192 h] | 24,684.52 |
| S2-955 |  | Tenant technical acceptance - Hall 2 (PDC-TA-001 s.4) |  | 8d | 2027-08-12 | 2027-08-23 | S2-950 | 19d | Commissioning Team [256 h] |  |
| S2-960 |  | M: Section 2 Taking Over (contract date 02-Jul-2027) | milestone | 0d | 2027-08-24 | 2027-08-24 | S2-955 | 19d |  |  |
|  | 7 | **Section 3 - Hall 3** |  |  | 2026-08-03 | 2027-08-24 |  |  |  |  |
|  | 1 | **S3 Substructure** |  |  | 2026-08-03 | 2026-11-02 |  |  |  |  |
| S3-100 |  | Bulk excavation to formation - Hall 3 zone (grid 14-18) |  | 20d | 2026-08-03 | 2026-08-28 | S2-100 SS+20d, EN-110 | 0d | Earthworks Crew [2560 h] | 64,562.47 |
| S3-120 |  | Dewatering - sump pumping, Hall 3 |  | 8d | 2026-08-10 | 2026-08-19 | S3-100 SS+5d | 31d | Civil Crew [384 h] | 54,371.95 |
| S3-130 |  | Pad and strip foundations - Hall 3 |  | 20d | 2026-08-20 | 2026-09-16 | S3-100 SS+12d, S3-120 | 31d | Concrete Crew [3200 h] | 74,852.05 |
| S3-150 |  | Ground beams and pile caps - Hall 3 |  | 15d | 2026-09-03 | 2026-09-23 | S3-130 SS+10d | 31d | Concrete Crew [2400 h] | 113,528.63 |
| S3-160 |  | Sub-base, capping and geotextile - Hall 3 |  | 10d | 2026-09-17 | 2026-09-30 | S3-150 SS+10d, S3-130 | 31d | Civil Crew [960 h] | 88,991.52 |
| S3-165 |  | Ground-bearing slab 250 mm, FM2 flatness - Hall 3 |  | 20d | 2026-10-01 | 2026-10-28 | S3-160 | 31d | Concrete Crew [3200 h] | 308,852.92 |
| S3-180 |  | Foundation inspection witnessed by Building Control - Hall 3 |  | 3d | 2026-10-29 | 2026-11-02 | S3-165 | 31d | Site Management [72 h] |  |
|  | 2 | **S3 Superstructure** |  |  | 2026-11-03 | 2027-02-22 |  |  |  |  |
| S3-210 |  | Steel erection - Hall 3 frame, trusses and bracing |  | 14d | 2026-11-03 | 2026-11-20 | S3-165, S3-180, PR-3412 | 31d | Structural Steel Crew [2240 h] | 605,947.15 |
| S3-245 |  | Metal deck, roof purlins and side rails - Hall 3 |  | 12d | 2026-11-13 | 2026-11-30 | S3-210 SS+8d | 54d | Structural Steel Crew [1920 h] | 148,012.68 |
| S3-230 |  | Precast concrete wall panels EI 120 - Hall 3 (64 nr) |  | 10d | 2026-11-23 | 2026-12-04 | S3-210, PR-3432 | 31d | Steel & Precast Crew [480 h] | 466,669.31 |
| S3-255 |  | Structural frame inspection witnessed by Building Control - Hall 3 |  | 3d | 2026-12-07 | 2026-12-09 | S3-245, S3-230 | 65d | Site Management [72 h] |  |
| S3-250 |  | Intumescent and cementitious fire protection to steel - Hall 3 |  | 15d | 2027-02-02 | 2027-02-22 | S3-345 | 40d | Fire Protection Crew [1440 h] | 70,052.7 |

| ID | WBS | Activity | Type | Duration | Start | Finish | Predecessors | Total float | Resources | Cost |
| --- | --- | --- | --- | --- | --- | --- | --- | --- | --- | --- |
|  | 3 | **S3 Envelope** |  |  | 2026-11-25 | 2027-02-02 |  |  |  |  |
| S3-310 |  | Warm roof build-up (300 mm PIR, single ply) - Hall 3 |  | 14d | 2026-11-25 | 2026-12-14 | S3-245 SS+8d | 54d | Waterproofing Crew [448 h] | 183,923.12 |
| S3-300 |  | Insulated composite cladding U=0.17 - Hall 3 |  | 21d | 2026-12-07 | 2027-01-08 | S3-230 | 31d | Envelope Crew [1008 h] | 306,673.84 |
| S3-330 |  | Rainwater goods and syphonic drainage - Hall 3 |  | 8d | 2026-12-15 | 2026-12-28 | S3-310 | 54d | Plumbing Crew [384 h] | 76,612.74 |
| S3-335 |  | Roof safety line, walkways and access hatches - Hall 3 |  | 6d | 2026-12-15 | 2026-12-22 | S3-310 | 56d | Waterproofing Crew [192 h] | 48,753.56 |
| S3-320 |  | Acoustic louvres to cooling intake and discharge - Hall 3 |  | 10d | 2027-01-11 | 2027-01-22 | S3-300, PR-3445 | 37d | Envelope Crew [480 h] | 115,151.27 |
| S3-325 |  | Personnel and equipment doors - Hall 3 |  | 8d | 2027-01-11 | 2027-01-20 | S3-300 | 31d | Envelope Crew [384 h] | 62,245.37 |
| S3-340 |  | Airtightness works and q50 <= 1.0 test - Hall 3 |  | 8d | 2027-01-21 | 2027-02-01 | S3-300, S3-325, S3-310 | 31d | Envelope Crew [384 h] | 51,075.16 |
| S3-345 |  | M: Hall 3 weathertight and enclosed | milestone | 0d | 2027-02-02 | 2027-02-02 | S3-340, S3-330, S3-320, S3-335, S3-255 | 31d |  |  |
|  | 7 | **S3 Hall 3 MEP and Fit-Out** |  |  | 2027-02-02 | 2027-05-20 |  |  |  |  |
| S3-430 |  | Hall substation 20/0.4 kV, 3.3 MVA - Hall 3 |  | 10d | 2027-02-02 | 2027-02-15 | S3-345, S1-435 SS+15d | 51d | Electrical Crew [640 h] | 279,913.32 |
| S3-740 |  | Ventilation, smoke extract and comfort cooling - Hall 3 |  | 18d | 2027-02-02 | 2027-02-25 | S3-345 | 60d | Mechanical Crew [2304 h] | 449,352.51 |
| S3-760 |  | Sprinkler installation and dry risers - Hall 3 ancillary areas |  | 12d | 2027-02-02 | 2027-02-17 | S3-345 | 94d | Fire Protection Crew [1152 h] | 45,401.53 |
| S3-715 |  | LV main switchboards and distribution - Hall 3 |  | 12d | 2027-02-09 | 2027-02-24 | S3-430 SS+5d | 65d | Electrical Crew [768 h] | 247,326.4 |
| S3-440 |  | Energy metering per hall and per feed - Hall 3 |  | 8d | 2027-02-16 | 2027-02-25 | S3-430 | 70d | Electrical Crew [512 h] | 87,734.03 |
| S3-705 |  | UPS modules 4 x 1000 kVA - Hall 3 |  | 15d | 2027-02-16 | 2027-03-08 | PR-3180, S3-430 | 51d | Electrical Crew [960 h] | 466,243.68 |
| S3-720 |  | Overhead busway to rack PDUs - Hall 3 (240 m) |  | 12d | 2027-02-17 | 2027-03-04 | S3-715 SS+6d, PR-3205 | 65d | Electrical Crew [768 h] | 93,248.74 |
| S3-735 |  | Chilled-water branch pipework and connections - Hall 3 |  | 20d | 2027-02-18 | 2027-03-17 | S3-345, S1-695 | 19d | Plumbing Crew [960 h] | 259,749.64 |
| S3-700 |  | Containment, cable tray, small power and lighting - Hall 3 |  | 20d | 2027-02-23 | 2027-03-22 | S3-345, S3-250 | 40d | Electrical Crew [2560 h] | 374,331.84 |
| S3-790 |  | Internal partitions, linings and fire-rated boarding - Hall 3 |  | 15d | 2027-02-23 | 2027-03-15 | S3-345, S3-250 | 60d | Fit-Out Crew [2400 h] | 153,977.79 |
| S3-730 |  | CRAH units 7 nr (N+1) - Hall 3 |  | 12d | 2027-02-25 | 2027-03-12 | PR-3335, S3-735 SS+5d | 58d | Mechanical Crew [768 h] | 336,239.64 |
| S3-710 |  | Lithium-ion battery system and fire-rated battery room - Hall 3 |  | 12d | 2027-03-09 | 2027-03-24 | PR-3195, S3-705 | 51d | Electrical Crew [768 h] | 165,441.31 |
| S3-795 |  | Floor and wall finishes to plant rooms - Hall 3 |  | 12d | 2027-03-16 | 2027-04-02 | S3-790 | 60d | Fit-Out Crew [960 h] | 74,371.11 |
| S3-630 |  | Secondary pump sets and inverters - Hall 3 |  | 10d | 2027-03-18 | 2027-04-02 | S3-735 | 19d | Mechanical Crew [640 h] | 103,402.73 |
| S3-725 |  | Earthing and bonding - Hall 3 |  | 8d | 2027-03-23 | 2027-04-05 | S3-700 | 45d | Electrical Crew [512 h] | 120,738.73 |
| S3-745 |  | Aspirating smoke detection - Hall 3 white space |  | 12d | 2027-03-23 | 2027-04-09 | S3-700 | 44d | Fire Protection Crew [576 h] | 47,794.58 |
| S3-750 |  | Addressable fire detection and alarm - Hall 3 support areas |  | 8d | 2027-03-23 | 2027-04-05 | S3-700 | 63d | Fire Protection Crew [384 h] | 37,389.5 |
| S3-775 |  | Structured cabling and containment - Hall 3 |  | 12d | 2027-03-23 | 2027-04-09 | S3-700 | 47d | ICT Crew [384 h] | 59,847.13 |
| S3-780 |  | Anti-static sealed screed - Hall 3 white space |  | 16d | 2027-03-23 | 2027-04-15 | S3-700 | 40d | Fit-Out Crew [1280 h] | 123,883.49 |
| S3-660 |  | Valves, strainers, commissioning sets and instrumentation - Hall 3 |  | 15d | 2027-04-05 | 2027-04-23 | S3-630 | 19d | Mechanical Crew [960 h] | 384,273.87 |
| S3-798 |  | Signage, wayfinding and hall labelling - Hall 3 |  | 4d | 2027-04-05 | 2027-04-08 | S3-795 | 60d | Fit-Out Crew [320 h] | 56,388.35 |
| S3-755 |  | Gaseous / water-mist suppression - Hall 3 |  | 15d | 2027-04-12 | 2027-04-30 | PR-3465, S3-745 | 44d | Fire Protection Crew [720 h] | 192,009.55 |
| S3-860 |  | Access control and CCTV extension - Hall 3 |  | 12d | 2027-04-12 | 2027-04-27 | S3-775, S1-860 | 47d | ICT Crew [384 h] | 159,592.36 |
| S3-785 |  | Cold-aisle containment framework and blanking - Hall 3 |  | 15d | 2027-04-16 | 2027-05-07 | S3-780, S3-720, S3-730 | 40d | Fit-Out Crew [1200 h] | 205,048.54 |
| S3-670 |  | Thermal insulation, identification and testing - Hall 3 |  | 12d | 2027-04-26 | 2027-05-12 | S3-660 | 19d | Insulation Crew [384 h] | 210,042.17 |
| S3-765 |  | BMS field devices, panels and BACnet/IP integration - Hall 3 |  | 18d | 2027-04-26 | 2027-05-20 | S1-765, S3-740, S3-660 | 21d | BMS Crew [576 h] | 137,315.92 |
| S3-770 |  | DCIM extension and configuration - Hall 3 |  | 10d | 2027-05-07 | 2027-05-20 | S3-765 SS+8d | 21d | BMS Crew [320 h] | 106,394.9 |

| ID | WBS | Activity | Type | Duration | Start | Finish | Predecessors | Total float | Resources | Cost |
| --- | --- | --- | --- | --- | --- | --- | --- | --- | --- | --- |
|  | 9 | **S3 Commissioning and Handover** |  |  | 2027-03-04 | 2027-08-24 |  |  |  |  |
| S3-900 |  | L2 site delivery and static inspection - Hall 3 plant |  | 10d | 2027-03-04 | 2027-03-17 | S3-705 SS+5d, S3-730 SS+5d, S3-430 SS+5d | 58d | Commissioning Team [320 h] | 34,103.61 |
| S3-910 |  | L3 component start-up and functional test - electrical, Hall 3 |  | 15d | 2027-04-06 | 2027-04-26 | S3-900 SS+8d, S3-710, S3-720, S3-725, S3-440 | 45d | Commissioning Team [480 h] | 17,051.81 |
| S3-920 |  | Mobilise and connect 2.5 MW of temporary load banks - Hall 3 |  | 6d | 2027-04-16 | 2027-04-23 | S3-910 SS+8d | 49d | Commissioning Team [192 h] | 51,967.41 |
| S3-460 |  | M: Grid capacity Stage 3 released - 3.0 MVA (earliest 31-Oct-2027) | milestone | 0d | 2027-04-27 | 2027-04-27 | S1-460, S3-910 | 71d |  |  |
| S3-905 |  | L3 component start-up and functional test - mechanical, Hall 3 |  | 15d | 2027-05-13 | 2027-06-02 | S3-900 SS+8d, S3-670, S3-740 | 19d | Commissioning Team [480 h] | 17,051.81 |
| S3-915 |  | BMS point-to-point and cause-and-effect verification - Hall 3 |  | 10d | 2027-05-25 | 2027-06-07 | S3-905 SS+8d, S3-910 SS+8d, S3-770 | 19d | BMS Crew [320 h] |  |
| S3-930 |  | L4 integrated systems testing and failure-mode demonstrations - Hall 3 |  | 15d | 2027-06-08 | 2027-06-29 | S3-915, S3-920, S3-755, S3-745, S3-750, S3-760, S3-860, S3-785, S3-798, S1-940 | 19d | Commissioning Team [960 h] | 120,044.71 |
| S3-945 |  | Hall 3 as-built documentation, O&M manuals and training |  | 12d | 2027-06-18 | 2027-07-06 | S3-930 SS+8d | 22d | Design Management [384 h] | 29,840.66 |
| S3-940 |  | L5 integrated load-bank test - 24 h continuous at 2.5 MW hall load - Hall 3 |  | 8d | 2027-06-30 | 2027-07-09 | S3-930, S1-928 | 19d | Commissioning Team [512 h] | 101,466.36 |
| S3-950 |  | Statutory and occupancy inspection (kayttoonottotarkastus) - Hall 3 |  | 8d | 2027-08-02 | 2027-08-11 | S3-940, S3-945, S3-460 | 19d | Site Management [192 h] | 24,684.52 |
| S3-955 |  | Tenant technical acceptance - Hall 3 (PDC-TA-001 s.4) |  | 8d | 2027-08-12 | 2027-08-23 | S3-950 | 19d | Commissioning Team [256 h] |  |
| S3-960 |  | M: Section 3 Taking Over (contract date 02-Oct-2027) | milestone | 0d | 2027-08-24 | 2027-08-24 | S3-955 | 19d |  |  |
|  | 8 | **Section 4 - Hall 4, Admin/NOC and External Works** |  |  | 2026-08-31 | 2027-09-17 |  |  |  |  |
|  | 1 | **S4 Substructure** |  |  | 2026-08-31 | 2026-12-15 |  |  |  |  |
| S4-100 |  | Bulk excavation to formation - Hall 4 zone (grid 19-23) |  | 20d | 2026-08-31 | 2026-09-25 | S3-100 SS+20d, EN-110 | 0d | Earthworks Crew [2560 h] | 64,562.47 |
| S4-120 |  | Dewatering - sump pumping, Hall 4 |  | 8d | 2026-09-07 | 2026-09-16 | S4-100 SS+5d | 11d | Civil Crew [384 h] | 54,371.95 |
| S4-115 |  | Muck away and trim to formation - Hall 4 (blasted rock) |  | 12d | 2026-09-14 | 2026-09-29 | S1-110, S4-100 SS+10d | 0d | Earthworks Crew [768 h] |  |
| S4-140 |  | Direct-to-rock and rock-socketed piers - Hall 4 |  | 18d | 2026-09-22 | 2026-10-15 | S4-115 SS+6d | 0d | Piling Crew [864 h] | 222,018.79 |
| S4-105 |  | Bulk excavation - admin/NOC block, external works and car park |  | 15d | 2026-09-28 | 2026-10-16 | S4-100 | 55d | Earthworks Crew [960 h] | 64,562.47 |
| S4-130 |  | Pad and strip foundations - Hall 4 |  | 20d | 2026-10-02 | 2026-10-29 | S4-140 SS+8d, S4-120 | 0d | Concrete Crew [3200 h] | 74,852.05 |
| S4-150 |  | Ground beams and pile caps - Hall 4 |  | 15d | 2026-10-16 | 2026-11-05 | S4-130 SS+10d | 0d | Concrete Crew [2400 h] | 113,528.63 |
| S4-160 |  | Sub-base, capping and geotextile - Hall 4 |  | 10d | 2026-10-30 | 2026-11-12 | S4-150 SS+10d, S4-130 | 0d | Civil Crew [960 h] | 88,991.52 |
| S4-165 |  | Ground-bearing slab 250 mm, FM2 flatness - Hall 4 |  | 20d | 2026-11-13 | 2026-12-10 | S4-160 | 0d | Concrete Crew [3200 h] | 308,852.92 |
| S4-180 |  | Foundation inspection witnessed by Building Control - Hall 4 |  | 3d | 2026-12-11 | 2026-12-15 | S4-165 | 0d | Site Management [72 h] |  |

| ID | WBS | Activity | Type | Duration | Start | Finish | Predecessors | Total float | Resources | Cost |
| --- | --- | --- | --- | --- | --- | --- | --- | --- | --- | --- |
|  | 2 | **S4 Superstructure** |  |  | 2026-12-16 | 2027-04-08 |  |  |  |  |
| S4-210 |  | Steel erection - Hall 4 frame, trusses and bracing |  | 14d | 2026-12-16 | 2027-01-08 | S4-165, S4-180, PR-3412 | 0d | Structural Steel Crew [2240 h] | 605,947.15 |
| S4-245 |  | Metal deck, roof purlins and side rails - Hall 4 |  | 12d | 2026-12-30 | 2027-01-18 | S4-210 SS+8d | 23d | Structural Steel Crew [1920 h] | 148,012.68 |
| S4-230 |  | Precast concrete wall panels EI 120 - Hall 4 (64 nr) |  | 10d | 2027-01-11 | 2027-01-22 | S4-210, PR-3432 | 0d | Steel & Precast Crew [480 h] | 474,689.28 |
| S4-255 |  | Structural frame inspection witnessed by Building Control - Hall 4 |  | 3d | 2027-01-25 | 2027-01-27 | S4-245, S4-230 | 34d | Site Management [72 h] |  |
| S4-250 |  | Intumescent and cementitious fire protection to steel - Hall 4 |  | 15d | 2027-03-17 | 2027-04-08 | S4-345 | 9d | Fire Protection Crew [1440 h] | 70,052.7 |
|  | 3 | **S4 Envelope** |  |  | 2027-01-13 | 2027-03-17 |  |  |  |  |
| S4-310 |  | Warm roof build-up (300 mm PIR, single ply) - Hall 4 |  | 14d | 2027-01-13 | 2027-02-01 | S4-245 SS+8d | 23d | Waterproofing Crew [448 h] | 183,923.12 |
| S4-300 |  | Insulated composite cladding U=0.17 - Hall 4 |  | 21d | 2027-01-25 | 2027-02-22 | S4-230 | 0d | Envelope Crew [1008 h] | 306,673.84 |
| S4-330 |  | Rainwater goods and syphonic drainage - Hall 4 |  | 8d | 2027-02-02 | 2027-02-11 | S4-310 | 23d | Plumbing Crew [384 h] | 76,612.74 |
| S4-335 |  | Roof safety line, walkways and access hatches - Hall 4 |  | 6d | 2027-02-02 | 2027-02-09 | S4-310 | 25d | Waterproofing Crew [192 h] | 48,753.56 |
| S4-320 |  | Acoustic louvres to cooling intake and discharge - Hall 4 |  | 10d | 2027-02-23 | 2027-03-08 | S4-300, PR-3445 | 6d | Envelope Crew [480 h] | 115,151.27 |
| S4-325 |  | Personnel and equipment doors - Hall 4 |  | 8d | 2027-02-23 | 2027-03-04 | S4-300 | 0d | Envelope Crew [384 h] | 62,245.37 |
| S4-340 |  | Airtightness works and q50 <= 1.0 test - Hall 4 |  | 8d | 2027-03-05 | 2027-03-16 | S4-300, S4-325, S4-310 | 0d | Envelope Crew [384 h] | 51,075.16 |
| S4-345 |  | M: Hall 4 weathertight and enclosed | milestone | 0d | 2027-03-17 | 2027-03-17 | S4-340, S4-330, S4-320, S4-335, S4-255 | 0d |  |  |
|  | 7 | **S4 Hall 4 MEP and Fit-Out** |  |  | 2027-03-17 | 2027-06-21 |  |  |  |  |
| S4-430 |  | Hall substation 20/0.4 kV, 3.3 MVA - Hall 4 |  | 10d | 2027-03-17 | 2027-04-01 | S4-345, S1-435 SS+15d | 20d | Electrical Crew [640 h] | 279,913.32 |
| S4-735 |  | Chilled-water branch pipework and connections - Hall 4 |  | 20d | 2027-03-17 | 2027-04-15 | S4-345, S1-695 | 0d | Plumbing Crew [960 h] | 259,749.64 |
| S4-740 |  | Ventilation, smoke extract and comfort cooling - Hall 4 |  | 18d | 2027-03-17 | 2027-04-13 | S4-345 | 29d | Mechanical Crew [2304 h] | 449,352.51 |
| S4-760 |  | Sprinkler installation and dry risers - Hall 4 ancillary areas |  | 12d | 2027-03-17 | 2027-04-05 | S4-345 | 63d | Fire Protection Crew [1152 h] | 45,401.53 |
| S4-715 |  | LV main switchboards and distribution - Hall 4 |  | 12d | 2027-03-24 | 2027-04-12 | S4-430 SS+5d | 34d | Electrical Crew [768 h] | 247,326.4 |
| S4-730 |  | CRAH units 7 nr (N+1) - Hall 4 |  | 12d | 2027-03-24 | 2027-04-12 | PR-3335, S4-735 SS+5d | 39d | Mechanical Crew [768 h] | 336,239.64 |
| S4-440 |  | Energy metering per hall and per feed - Hall 4 |  | 8d | 2027-04-02 | 2027-04-13 | S4-430 | 39d | Electrical Crew [512 h] | 87,734.03 |
| S4-705 |  | UPS modules 4 x 1000 kVA - Hall 4 |  | 15d | 2027-04-02 | 2027-04-22 | PR-3180, S4-430 | 20d | Electrical Crew [960 h] | 466,243.68 |
| S4-720 |  | Overhead busway to rack PDUs - Hall 4 (240 m) |  | 12d | 2027-04-05 | 2027-04-20 | S4-715 SS+6d, PR-3205 | 34d | Electrical Crew [768 h] | 93,248.74 |
| S4-700 |  | Containment, cable tray, small power and lighting - Hall 4 |  | 20d | 2027-04-09 | 2027-05-07 | S4-345, S4-250 | 9d | Electrical Crew [2560 h] | 374,331.84 |
| S4-790 |  | Internal partitions, linings and fire-rated boarding - Hall 4 |  | 15d | 2027-04-09 | 2027-04-29 | S4-345, S4-250 | 29d | Fit-Out Crew [2400 h] | 153,977.79 |
| S4-630 |  | Secondary pump sets and inverters - Hall 4 |  | 10d | 2027-04-16 | 2027-04-29 | S4-735 | 0d | Mechanical Crew [640 h] | 111,356.78 |
| S4-710 |  | Lithium-ion battery system and fire-rated battery room - Hall 4 |  | 12d | 2027-04-23 | 2027-05-11 | PR-3195, S4-705 | 20d | Electrical Crew [768 h] | 165,441.31 |
| S4-660 |  | Valves, strainers, commissioning sets and instrumentation - Hall 4 |  | 15d | 2027-04-30 | 2027-05-21 | S4-630 | 0d | Mechanical Crew [960 h] | 405,622.42 |
| S4-795 |  | Floor and wall finishes to plant rooms - Hall 4 |  | 12d | 2027-04-30 | 2027-05-18 | S4-790 | 29d | Fit-Out Crew [960 h] | 74,371.11 |
| S4-725 |  | Earthing and bonding - Hall 4 |  | 8d | 2027-05-10 | 2027-05-19 | S4-700 | 14d | Electrical Crew [512 h] | 127,841.01 |
| S4-745 |  | Aspirating smoke detection - Hall 4 white space |  | 12d | 2027-05-10 | 2027-05-25 | S4-700 | 13d | Fire Protection Crew [576 h] | 47,794.58 |
| S4-750 |  | Addressable fire detection and alarm - Hall 4 support areas |  | 8d | 2027-05-10 | 2027-05-19 | S4-700 | 32d | Fire Protection Crew [384 h] | 37,389.5 |
| S4-775 |  | Structured cabling and containment - Hall 4 |  | 12d | 2027-05-10 | 2027-05-25 | S4-700 | 16d | ICT Crew [384 h] | 59,847.13 |
| S4-780 |  | Anti-static sealed screed - Hall 4 white space |  | 16d | 2027-05-10 | 2027-05-31 | S4-700 | 9d | Fit-Out Crew [1280 h] | 123,883.49 |
| S4-798 |  | Signage, wayfinding and hall labelling - Hall 4 |  | 4d | 2027-05-19 | 2027-05-24 | S4-795 | 29d | Fit-Out Crew [320 h] | 56,388.35 |
| S4-670 |  | Thermal insulation, identification and testing - Hall 4 |  | 12d | 2027-05-24 | 2027-06-08 | S4-660 | 0d | Insulation Crew [384 h] | 210,042.17 |
| S4-765 |  | BMS field devices, panels and BACnet/IP integration - Hall 4 |  | 18d | 2027-05-24 | 2027-06-16 | S1-765, S4-740, S4-660 | 2d | BMS Crew [576 h] | 137,315.92 |
| S4-755 |  | Gaseous / water-mist suppression - Hall 4 |  | 15d | 2027-05-26 | 2027-06-15 | PR-3465, S4-745 | 13d | Fire Protection Crew [720 h] | 192,009.55 |
| S4-860 |  | Access control and CCTV extension - Hall 4 |  | 12d | 2027-05-26 | 2027-06-10 | S4-775, S1-860 | 16d | ICT Crew [384 h] | 159,592.36 |
| S4-785 |  | Cold-aisle containment framework and blanking - Hall 4 |  | 15d | 2027-06-01 | 2027-06-21 | S4-780, S4-720, S4-730 | 9d | Fit-Out Crew [1200 h] | 205,048.54 |
| S4-770 |  | DCIM extension and configuration - Hall 4 |  | 10d | 2027-06-03 | 2027-06-16 | S4-765 SS+8d | 2d | BMS Crew [320 h] | 106,394.9 |

| ID | WBS | Activity | Type | Duration | Start | Finish | Predecessors | Total float | Resources | Cost |
| --- | --- | --- | --- | --- | --- | --- | --- | --- | --- | --- |
|  | 8 | **S4 Administration / NOC Block** |  |  | 2026-10-19 | 2027-07-09 |  |  |  |  |
| S4-A10 |  | Pad and strip foundations - admin/NOC block |  | 15d | 2026-10-19 | 2026-11-06 | S4-105 | 55d | Concrete Crew [1200 h] | 53,465.75 |
| S4-A15 |  | Ground beams and pile caps - admin/NOC block |  | 10d | 2026-11-09 | 2026-11-20 | S4-A10 | 55d | Concrete Crew [800 h] | 100,914.34 |
| S4-A20 |  | Sub-base and ground-bearing slab - admin/NOC block |  | 15d | 2026-11-23 | 2026-12-11 | S4-A15 | 55d | Concrete Crew [2400 h] | 294,699.58 |
| S4-A25 |  | Steel erection - admin/NOC block (two storey, 40 kg/m2) |  | 12d | 2026-12-14 | 2026-12-31 | S4-A20, PR-3412 | 55d | Structural Steel Crew [960 h] | 154,248.45 |
| S4-A30 |  | Precast panels - admin/NOC block |  | 8d | 2027-01-04 | 2027-01-14 | S4-A25, PR-3432 | 55d | Steel & Precast Crew [384 h] | 144,498.95 |
| S4-A35 |  | Metal deck, purlins and side rails - admin/NOC block |  | 10d | 2027-01-04 | 2027-01-18 | S4-A25 | 61d | Structural Steel Crew [800 h] | 148,012.68 |
| S4-A45 |  | Cladding - admin/NOC block |  | 18d | 2027-01-15 | 2027-02-09 | S4-A30 | 55d | Envelope Crew [864 h] | 282,969.66 |
| S4-A50 |  | Warm roof build-up - admin/NOC block |  | 14d | 2027-01-19 | 2027-02-05 | S4-A35 | 61d | Waterproofing Crew [448 h] | 183,923.12 |
| S4-A40 |  | Fire protection to steel - admin/NOC block |  | 12d | 2027-02-08 | 2027-02-23 | S4-A50 | 61d | Fire Protection Crew [576 h] | 70,052.7 |
| S4-A60 |  | Rainwater goods - admin/NOC block |  | 5d | 2027-02-08 | 2027-02-12 | S4-A50 | 68d | Plumbing Crew [240 h] | 25,537.58 |
| S4-A70 |  | Roof safety line and access - admin/NOC block |  | 4d | 2027-02-08 | 2027-02-11 | S4-A50 | 69d | Waterproofing Crew [128 h] | 16,251.19 |
| S4-A55 |  | Doors, glazing and entrance screens - admin/NOC block |  | 10d | 2027-02-10 | 2027-02-23 | S4-A45 | 55d | Envelope Crew [480 h] | 38,038.83 |
| S4-A65 |  | Airtightness works and test - admin/NOC block |  | 6d | 2027-02-24 | 2027-03-03 | S4-A55, S4-A50 | 55d | Envelope Crew [288 h] | 13,929.59 |
| S4-A75 |  | M: Admin/NOC block weathertight | milestone | 0d | 2027-03-04 | 2027-03-04 | S4-A65, S4-A60, S4-A70, S4-A40 | 55d |  |  |
| S4-A80 |  | Ventilation, heating and comfort cooling - admin/NOC block |  | 18d | 2027-03-04 | 2027-03-31 | S4-A75 | 65d | Mechanical Crew [1152 h] | 449,352.51 |
| S4-B05 |  | Sprinkler and dry risers - admin/NOC block |  | 12d | 2027-03-04 | 2027-03-19 | S4-A75 | 111d | Fire Protection Crew [576 h] | 50,742.89 |
| S4-A85 |  | LV distribution boards - admin/NOC block |  | 10d | 2027-04-02 | 2027-04-15 | S4-A75, S4-430 | 36d | Electrical Crew [640 h] | 123,663.2 |
| S4-A90 |  | Containment, cabling, small power and lighting - admin/NOC block |  | 18d | 2027-04-16 | 2027-05-12 | S4-A85 | 36d | Electrical Crew [1152 h] | 374,331.84 |
| S4-B20 |  | Partitions, linings and suspended ceilings - admin/NOC block |  | 20d | 2027-04-28 | 2027-05-26 | S4-A90 SS+8d, S4-A80 SS+8d | 36d | Fit-Out Crew [3200 h] | 493,661.21 |
| S4-A95 |  | Addressable fire detection and alarm - admin/NOC block |  | 10d | 2027-05-13 | 2027-05-26 | S4-A90 | 66d | Fire Protection Crew [480 h] | 41,788.26 |
| S4-B15 |  | CCTV head-end, NOC video wall and 90-day retention store |  | 10d | 2027-05-13 | 2027-05-26 | S4-A90 | 66d | ICT Crew [320 h] | 69,821.66 |
| S4-B25 |  | Admin/NOC fit-out - joinery, sanitaryware, NOC raised floor and finishes |  | 25d | 2027-05-27 | 2027-07-01 | S4-B20 | 36d | Fit-Out Crew [4000 h] | 1,230,291.26 |
| S4-B35 |  | Floor and wall finishes to plant rooms - admin/NOC block |  | 8d | 2027-05-27 | 2027-06-07 | S4-B20 | 58d | Fit-Out Crew [640 h] | 24,790.37 |
| S4-B10 |  | Mantrap, reception access control and NOC security integration |  | 12d | 2027-06-11 | 2027-06-29 | S4-A90, S4-860 | 43d | ICT Crew [384 h] | 89,770.7 |
| S4-B30 |  | Signage and wayfinding - admin/NOC block and campus |  | 5d | 2027-07-02 | 2027-07-08 | S4-B25 | 36d | Fit-Out Crew [400 h] | 42,291.26 |
| S4-B40 |  | M: Admin/NOC block complete | milestone | 0d | 2027-07-09 | 2027-07-09 | S4-B30, S4-B35, S4-A95, S4-B05, S4-B10, S4-B15 | 36d |  |  |

| ID | WBS | Activity | Type | Duration | Start | Finish | Predecessors | Total float | Calendar | Resources | Cost |
| --- | --- | --- | --- | --- | --- | --- | --- | --- | --- | --- | --- |
|  | 9 | **S4 External Works** |  |  | 2027-02-10 | 2027-04-16 |  |  |  |  |  |
| S4-X10 |  | Roads, hardstanding, car park and service yard - balance of site |  | 30d | 2027-02-10 | 2027-03-23 | S4-105, S4-A45 | 94d |  | Civil Crew [2880 h] | 482,486.26 |
| S4-X15 |  | Stormwater attenuation completion and discharge-control commissioning |  | 15d | 2027-02-24 | 2027-03-16 | S4-X10 SS+10d | 114d |  | Civil Crew [720 h] | 213,459.03 |
| S4-X20 |  | External lighting and small power - balance of site |  | 15d | 2027-03-24 | 2027-04-15 | S4-X10 | 94d |  | Electrical Crew [960 h] | 182,473.04 |
| S4-X25 |  | Aviation obstacle lighting to the highest fixed plant - install and prove |  | 8d | 2027-03-24 | 2027-04-06 | S1-620, S4-X20 SS | 101d |  | Electrical Crew [512 h] |  |
| S4-X30 |  | M: External works complete | milestone | 0d | 2027-04-16 | 2027-04-16 | S4-X15, S4-X20, S4-X25 | 94d |  |  |  |
|  | 10 | **S4 Commissioning and Handover** |  |  | 2027-04-09 | 2027-09-17 |  |  |  |  |  |
| S4-900 |  | L2 site delivery and static inspection - Hall 4 plant |  | 10d | 2027-04-09 | 2027-04-22 | S4-705 SS+5d, S4-730 SS+5d, S4-430 SS+5d | 34d |  | Commissioning Team [320 h] | 34,103.61 |
| S4-910 |  | L3 component start-up and functional test - electrical, Hall 4 |  | 15d | 2027-05-20 | 2027-06-09 | S4-900 SS+8d, S4-710, S4-720, S4-725, S4-440 | 14d |  | Commissioning Team [480 h] | 20,462.17 |
| S4-920 |  | Mobilise and connect 2.5 MW of temporary load banks - Hall 4 |  | 6d | 2027-06-01 | 2027-06-08 | S4-910 SS+8d | 18d |  | Commissioning Team [192 h] | 51,967.41 |
| S4-905 |  | L3 component start-up and functional test - mechanical, Hall 4 |  | 15d | 2027-06-09 | 2027-06-30 | S4-900 SS+8d, S4-670, S4-740 | 0d |  | Commissioning Team [480 h] | 20,462.17 |
| S4-460 |  | M: Grid capacity Stage 4 released - 3.0 MVA (earliest 31-Jan-2028) | milestone | 0d | 2027-06-10 | 2027-06-10 | S1-460, S4-910 | 40d |  |  |  |
| S4-915 |  | BMS point-to-point and cause-and-effect verification - Hall 4 |  | 10d | 2027-06-21 | 2027-07-05 | S4-905 SS+8d, S4-910 SS+8d, S4-770 | 0d |  | BMS Crew [320 h] |  |
| S4-930 |  | L4 integrated systems testing and failure-mode demonstrations - Hall 4 |  | 15d | 2027-07-06 | 2027-08-16 | S4-915, S4-920, S4-755, S4-745, S4-750, S4-760, S4-860, S4-785, S4-798, S1-940 | 0d |  | Commissioning Team [960 h] | 120,044.71 |
| S4-945 |  | Hall 4 as-built documentation, O&M manuals and training |  | 12d | 2027-08-06 | 2027-08-23 | S4-930 SS+8d | 3d |  | Design Management [384 h] | 39,787.55 |
| S4-940 |  | L5 integrated load-bank test - 24 h continuous at 2.5 MW hall load - Hall 4 |  | 8d | 2027-08-17 | 2027-08-26 | S4-930, S1-928 | 0d |  | Commissioning Team [512 h] | 101,466.36 |
| S4-950 |  | Statutory and occupancy inspection (kayttoonottotarkastus) - Hall 4 |  | 8d | 2027-08-27 | 2027-09-07 | S4-940, S4-945, S4-460 | 0d |  | Site Management [192 h] | 24,684.52 |
| S4-955 |  | Tenant technical acceptance - Hall 4 (PDC-TA-001 s.4) |  | 8d | 2027-09-08 | 2027-09-17 | S4-950 | 0d |  | Commissioning Team [256 h] |  |
|  | 9 | **Waste-Heat Recovery and District Heating** |  |  | 2027-02-18 | 2027-10-14 |  |  |  |  |  |
| W-100 |  | Waste-heat recovery plant installation, 4 MW at 70 C flow |  | 30d | 2027-02-18 | 2027-04-02 | PR-3345, S1-695 | 52d |  | Mechanical Crew [3840 h] | 2,251,927.52 |
| W-110 |  | Heat-recovery pipework to the site boundary chamber (260 m) |  | 20d | 2027-03-04 | 2027-04-02 | W-100 SS+10d | 52d |  | Plumbing Crew [960 h] | 322,294.21 |
| W-120 |  | Boundary chamber civils, flanged connection and heat metering skid |  | 15d | 2027-04-05 | 2027-04-23 | W-110 | 52d |  | Civil Crew [720 h] |  |
| W-150 |  | Issue as-built heat-plant documentation and cause-and-effect matrices to the Offtaker |  | 10d | 2027-04-05 | 2027-04-16 | W-100 | 100d | Office-Design 5-day (Fin holidays) | Design Management [320 h] |  |
| W-130 |  | M: Boundary chamber ready for the Offtaker (DH-001 s.7.2, by 01-Jul-2027) | milestone | 0d | 2027-04-26 | 2027-04-26 | W-120 | 52d |  |  |  |
| W-140 |  | Offtaker boundary works and network reinforcement (third party) |  | 40d | 2027-04-26 | 2027-06-04 | W-130 | 95d | Vendor-Third party 7-day continuous |  |  |
| W-160 |  | Notice to the Offtaker of the 72 h heat-delivery test (20 working days) |  | 20d | 2027-06-07 | 2027-07-05 | W-150, W-140 | 66d | Office-Design 5-day (Fin holidays) | Site Management [480 h] |  |
| W-170 |  | 72 h witnessed waste-heat delivery test, 4 MW at 70 C (heating season only) |  | 8d | 2027-10-04 | 2027-10-13 | W-160, S3-960 | 2d | District heating season Oct-Apr (Mon-Fri) | Commissioning Team [512 h] |  |
| W-180 |  | M: Waste-heat demonstration lodged with Building Control (PP-001 cond. 23) | milestone | 0d | 2027-10-14 | 2027-10-14 | W-170 | 2d |  |  |  |

| ID | WBS | Activity | Type | Duration | Start | Finish | Predecessors | Total float | Calendar | Resources | Cost |
| --- | --- | --- | --- | --- | --- | --- | --- | --- | --- | --- | --- |
|  | 10 | **Project Close-Out** |  |  | 2027-04-16 | 2027-10-28 |  |  |  |  |  |
| Z-120 |  | Landscaping and 2:1 tree replacement (PP-001 cond. 21/22) |  | 20d | 2027-04-16 | 2027-05-14 | S4-X30 | 94d |  | Landscaping Crew [1280 h] | 212,311.4 |
| Z-100 |  | Final punch-list rectification - whole of the Works |  | 15d | 2027-09-20 | 2027-10-08 | S4-955, S4-B40, S4-X30, S2-960, S3-960 | 0d |  | Site Management [720 h] |  |
| Z-110 |  | Whole-works as-built set, statutory certificates and vibration monitoring record |  | 15d | 2027-09-27 | 2027-10-15 | Z-100 SS+5d | 0d | Office-Design 5-day (Fin holidays) | Design Management [480 h] | 29,840.66 |
| Z-140 |  | Spare parts, O&M handover and FM team training |  | 10d | 2027-10-11 | 2027-10-22 | Z-100 | 3d |  | Design Management [320 h] | 19,893.77 |
| Z-130 |  | Final occupancy inspection - whole permitted scope (PP-001 cond. 7) |  | 8d | 2027-10-18 | 2027-10-27 | Z-110, Z-120, W-180, Z-100 | 0d |  | Site Management [192 h] | 18,513.39 |
| Z-150 |  | M: Section 4 Taking Over / Whole of the Works (contract date 02-Jan-2028) | milestone | 0d | 2027-10-28 | 2027-10-28 | Z-130, Z-140, PM-9000 FF, PM-9010 FF | 0d |  |  |  |
