# Beyti PHASE-2

Schedule from Primavera P6, 2012-05-15 to 2012-12-29, data date 2012-05-15, costs in EGP.

## Calendars

- Beyti: Mon-Thu 08:00-16:00; Fri off; Sat-Sun 08:00-16:00. Exceptions (off unless hours are given): 2012-08-17 08:00-16:00, 2012-08-18 to 2012-08-23, 2012-10-23 to 2012-10-25, 2012-10-27 to 2012-11-01.
- walkable calendar: Mon-Thu 08:00-12:00, 13:00-17:00; Fri off; Sat-Sun 08:00-12:00, 13:00-17:00.

## Resources

| Resource | Group | Unit | Rate |
| --- | --- | --- | --- |
| cash | material |  | 1 |
| CASH-2 | material |  |  |
| SANDWICH PANEL FOR WALLS 120MM(FIRE RATED) | material | m2 |  |
| SANDWICH PANEL FOR WALLS 120MM THK | material | m2 |  |
| SANDWICH PANEL FOR ROOF 150MM THK | material | m2 |  |
| P.C. CONCRETE | material |  |  |
| STEEL STRUCTURE LABOUR | labor |  |  |
| CARPENTER | labor |  |  |
| STEEL LABOUR | labor |  |  |
| R.C. CONCRETE | material |  |  |
| STEEL STRUCTURE | material | ton |  |
| POLYETHELENE SHEET 400M | material | m2 |  |
| EPOXY PAINTER | labor |  |  |
| Painter | labor |  |  |
| POLYURETHANE | material | m2 |  |
| Brickwork Labor | labor |  |  |
| BRICKS | material | m2 |  |
| plastering worker | labor |  |  |

## Schedule

| ID | WBS | Activity | Type | Duration | Start | Finish | Predecessors | Total float | Free float | user_text1 | TYPE OF WORK |
| --- | --- | --- | --- | --- | --- | --- | --- | --- | --- | --- | --- |
|  | BEYTI-REV A | **Project Milestones & key dates** |  |  | 2012-05-15 | 2012-12-29 |  |  |  |  |  |
| Ms 100 |  | Letter of Acceptance | milestone | 0d | 2012-05-15 | 2012-05-15 |  | 0d |  |  |  |
| Ms 105 |  | Site handing over to the contractor | milestone | 0d | 2012-05-15 | 2012-05-15 | Ms 100 | 0d |  |  |  |
| Ms 106 |  | Contract agreement | milestone | 0d | 2012-05-15 | 2012-05-15 | Ms 105 | 0d |  |  |  |
| Ms 107 |  | Receive advanced payment | milestone | 0d | 2012-05-15 | 2012-05-15 | Ms 106 | 0d |  |  |  |
| Ms 108 |  | Commencement date | milestone | 0d | 2012-05-15 | 2012-05-15 | Ms 107 | 1d | 0d | Ms 100 |  |
| Ms 210 |  | Demobilization & Dismantling all temporary facilities |  | 7d | 2012-12-22 | 2012-12-29 | PET-Z2-AR-260 FF, PET-Z1-AR-290 FF | 0d |  |  |  |
| Ms 120 |  | As built drawings | milestone | 0d | 2012-12-29 | 2012-12-29 | PET-Z2-AR-260, PET-Z1-AR-290 | 0d |  | Ms 120 |  |
| Ms 170 |  | Pet filling finish date | milestone | 0d | 2012-12-29 | 2012-12-29 | PET-Z2-AR-260, PET-Z1-AR-290, PET-Z1-AR-350, PET-Z1-AR-260, PET-Z1-AR-250 | 0d |  | Ms 170 |  |
| Ms 180 |  | Snag list finish dates | milestone | 0d | 2012-12-29 | 2012-12-29 | PET-Z2-AR-260, PET-Z1-AR-290 | 0d |  | Ms 180 |  |
| Ms 200 |  | Project completion & final handing over | milestone | 0d | 2012-12-29 | 2012-12-29 | Ms 170, Ms 180, Ms 120 | 0d |  | Ms 200 |  |
|  | Procurement | **Procurement** |  |  | 2012-05-15 | 2012-12-11 |  |  |  |  |  |
|  | Procurement | **Purchase order** |  |  | 2012-05-15 | 2012-11-11 |  |  |  |  |  |
| PO 120 |  | Steel structure purchase order | milestone | 0d | 2012-05-15 | 2012-05-15 | Ms 107 | 0d |  | PO 120 | civil |
| PO 100 |  | Anchors purchase order | milestone | 0d | 2012-06-07 | 2012-06-07 | Ms 107 FS+20d | 16d | 0d |  |  |
| PO 140 |  | Dock leveler purchase order | milestone | 0d | 2012-06-19 | 2012-06-19 | Ms 107 FS+30d | 18d | 0d |  |  |
| PO 110 |  | Sandwich panel purchase order | milestone | 0d | 2012-07-12 | 2012-07-12 | Ms 107 FS+50d | 12d | 0d | PO 110 | arch |
| PO 130 |  | Walk on ceiling purchase order | milestone | 0d | 2012-07-12 | 2012-07-12 | Ms 107 FS+50d | 31d | 0d | PO 130 | arch |
| PO 190 |  | Steel Doors purchase orders | milestone | 0d | 2012-07-18 | 2012-07-18 | Ms 107 FS+55d | 17d | 0d | PO 140 | metal |
| PO 400 |  | Roll up&over head doors purchase order | milestone | 0d | 2012-07-18 | 2012-07-18 | Ms 107 FS+55d | 13d | 0d |  |  |
| PO 200 |  | Louvers purchase order | milestone | 0d | 2012-07-24 | 2012-07-24 | Ms 107 FS+60d | 27d | 0d |  |  |
| PO 180 |  | Windows purchase order | milestone | 0d | 2012-09-03 | 2012-09-03 | Ms 107 FS+90d | 20d | 0d | PO 140 | metal |
| PO 150 |  | Guard bollard purchase order | milestone | 0d | 2012-11-11 | 2012-11-11 | Ms 107 FS+140d | 6d | 0d |  | arch |
|  | Delivery date | **Delivery date** |  |  | 2012-05-15 | 2012-12-11 |  |  |  |  |  |
| DD150 |  | Steel stairs Delivery on site | milestone | 0d | 2012-05-15 | 2012-05-15 |  | 170d | 130d |  | metal |
| DD130 |  | Anchors delivery on site |  | 1d | 2012-06-07 | 2012-06-07 | PO 100 | 16d | 15d |  |  |
| DD110 |  | Steel structure delivery on site |  | 7d | 2012-08-11 | 2012-08-17 | SD 240 FS+50d | 0d |  | DD110 | civil |
| DD100 |  | Sandwich panel delivery on site | milestone | 0d | 2012-11-05 | 2012-11-05 | SD 190 FS+60d | 12d | 0d | DD100 | arch |
| DD120 |  | walk-on-ceiling delivery on site | milestone | 0d | 2012-11-05 | 2012-11-05 | SD 170 FS+60d | 31d | 23d | DD120 | arch |
| DD180 |  | Louvers delivery on site | milestone | 0d | 2012-11-15 | 2012-11-15 | SD 290 FS+60d | 27d | 10d |  |  |
| DD140 |  | Dock leveler delivery on site | milestone | 0d | 2012-11-20 | 2012-11-20 | SD 220 FS+90d | 18d | 0d |  |  |
| DD200 |  | Windows delivery on site | milestone | 0d | 2012-11-22 | 2012-11-22 | PO 180 FS+60d, SD 270 FS+60d | 20d | 5d | DD130 | metal |
| DD160 |  | Roll up&over head doors delivery on site | milestone | 0d | 2012-11-28 | 2012-11-28 | SD 450 FS+75d | 13d | 0d |  | arch |
| DD210 |  | Steel Doors delivery on site | milestone | 0d | 2012-11-28 | 2012-11-28 | SD 260 FS+75d | 17d | 0d | DD130 | metal |
| DD170 |  | Guard bollard delivery on site | milestone | 0d | 2012-12-11 | 2012-12-11 | PO 150 FS+26d | 6d | 0d |  | arch |

| ID | WBS | Activity | Type | Duration | Start | Finish | Predecessors | Total float | Free float | user_text1 | TYPE OF WORK |
| --- | --- | --- | --- | --- | --- | --- | --- | --- | --- | --- | --- |
|  | Engineering | **Engineering** |  |  | 2012-05-15 | 2012-12-27 |  |  |  |  |  |
|  | 12 | **Shop drawings** |  |  | 2012-05-15 | 2012-12-27 |  |  |  |  |  |
|  | 14 | **Submittal** |  |  | 2012-05-15 | 2012-12-27 |  |  |  |  |  |
| SD 100 |  | Plain concrete footings submittal |  | 1d | 2012-05-15 | 2012-05-15 | Ms 108 | 6d | 0d | SD 100 | civil |
| SD 120 |  | R.C footings submittal |  | 1d | 2012-05-15 | 2012-05-15 | Ms 108 | 10d | 0d | SD 120 | civil |
| SD 140 |  | Steel structure submittal |  | 1d | 2012-05-27 | 2012-05-27 | PO 120 FS+10d | 0d |  | SD 140 | civil |
| SD 160 |  | Masonry submittal |  | 1d | 2012-06-19 | 2012-06-19 | Ms 108 FS+30d | 6d | 0d | SD 160 | arch |
| SD 105 |  | Dock leveler submittal |  | 1d | 2012-07-05 | 2012-07-05 | PO 140 FS+14d | 18d | 0d |  |  |
| SD 110 |  | Walk on ceiling submittal |  | 1d | 2012-07-24 | 2012-07-24 | PO 130 FS+10d | 31d | 0d | SD 110 | arch |
| SD 130 |  | Sandwich panel submittal |  | 1d | 2012-07-24 | 2012-07-24 | PO 110 FS+10d | 12d | 0d | SD 130 | arch |
| SD 200 |  | Steel Doors submittal |  | 1d | 2012-07-30 | 2012-07-30 | PO 190 FS+10d | 17d | 0d | SD 200 | arch |
| SD 400 |  | Roll up&over head doors submittal |  | 1d | 2012-07-30 | 2012-07-30 | PO 400 FS+10d | 13d | 0d |  |  |
| SD 230 |  | Louvers submittal |  | 1d | 2012-08-05 | 2012-08-05 | PO 200 FS+10d | 27d | 0d | SD 230 | arch |
| SD 210 |  | Windows submittal |  | 1d | 2012-08-11 | 2012-08-11 | Ms 107 FS+75d | 20d | 0d | SD 210 | arch |
| SD 300 |  | As built submittal | milestone | 0d | 2012-12-27 | 2012-12-27 | PET-Z1-AR-280, PET-Z2-AR-250 | 1d |  | SD 300 | arch |
|  | 15 | **Approval** |  |  | 2012-05-31 | 2012-09-02 |  |  |  |  |  |
| SD 150 |  | Plain concrete footings Approval |  | 1d | 2012-05-31 | 2012-05-31 | SD 100 SS+14d, SD 100 FF+14d | 6d | 5d | SD 150 | civil |
| SD 180 |  | R.C footings Approval |  | 1d | 2012-05-31 | 2012-05-31 | SD 120 FF+14d, SD 120 SS+14d | 10d | 9d | SD 180 | civil |
| SD 240 |  | Steel structure Approval |  | 1d | 2012-06-12 | 2012-06-12 | SD 140 FF+14d, SD 140 SS+14d | 0d |  | SD 240 | civil |
| SD 250 |  | Masonry Approval |  | 1d | 2012-07-05 | 2012-07-05 | SD 160 SS+14d, SD 160 FF+14d | 6d | 5d | SD 250 | arch |
| SD 220 |  | Dock levelerApproval |  | 1d | 2012-07-22 | 2012-07-22 | SD 105 SS+14d, SD 105 FF+14d | 18d | 0d |  |  |
| SD 170 |  | Walk on ceiling Approval |  | 1d | 2012-08-09 | 2012-08-09 | SD 110 FF+14d, SD 110 SS+14d | 31d | 0d | SD 170 | arch |
| SD 190 |  | Sandwich panel Approval |  | 1d | 2012-08-09 | 2012-08-09 | SD 130 SS+14d, SD 130 FF+14d | 12d | 0d | SD 190 | arch |
| SD 260 |  | Steel Doors Approval |  | 1d | 2012-08-15 | 2012-08-15 | SD 200 FF+14d, SD 200 SS+14d | 17d | 0d | SD 260 | arch |
| SD 450 |  | Roll up&over head doors approval |  | 1d | 2012-08-15 | 2012-08-15 | SD 400 SS+14d, SD 400 FF+14d | 13d | 0d |  |  |
| SD 290 |  | Louvers Approval |  | 1d | 2012-08-27 | 2012-08-27 | SD 230 FF+14d, SD 230 SS+14d | 27d | 0d | SD 290 | arch |
| SD 270 |  | Windows Approval |  | 1d | 2012-09-02 | 2012-09-02 | SD 210 FF+14d, SD 210 SS+14d | 20d | 0d | SD 270 | arch |

| ID | WBS | Activity | Duration | Start | Finish | Predecessors | Total float | Free float | Calendar | Resources | Cost | user_text1 | TYPE OF WORK | FLOOR LEVEL | PET FILLING BUILDING |
| --- | --- | --- | --- | --- | --- | --- | --- | --- | --- | --- | --- | --- | --- | --- | --- |
|  | 7 | **Construction** |  | 2012-05-15 | 2012-12-29 |  |  |  |  |  |  |  |  |  |  |
|  | 2 | **Pet Filling Line** |  | 2012-05-15 | 2012-12-29 |  |  |  |  |  |  |  |  |  |  |
|  | 2 | **zone-1 (b314 to b325) processing area** |  | 2012-05-15 | 2012-12-29 |  |  |  |  |  |  |  |  |  |  |
|  | 2 | **Civil works** |  | 2012-05-15 | 2012-12-17 |  |  |  |  |  |  |  |  |  |  |
| PET-Z1-CC-110 |  | Excavation | 14d | 2012-05-15 | 2012-05-30 | Ms 108 | 1d | 0d |  | cash [50000] | 50,000 | PET-C110 | civil | FOOTING | PET-Z 1 |
| PET-Z1-CC-130 |  | Replacement Under Footings | 15d | 2012-05-21 | 2012-06-06 | PET-Z1-CC-110 SS+5d | 1d | 0d |  | cash [40000] | 40,000 | PET-C160 | civil | FOOTING | PET-Z 1 |
| PET-Z1-CC-150 |  | Plain Concrete footings | 12d | 2012-06-07 | 2012-06-20 | PET-Z1-CC-130, SD 150 | 1d | 0d |  | CARPENTER [12 h]; cash [18300]; P.C. CONCRETE [300] | 18,300 | PET-C200 | civil | FOOTING | PET-Z 1 |
| PET-Z1-CC-160 |  | R.C. footings & tie beams & planting tie beams | 12d | 2012-06-12 | 2012-06-25 | PET-Z1-CC-150 SS+4d, SD 180, PET-Z1-CC-150 FF | 1d | 0d |  | cash [232800]; STEEL LABOUR [110 h]; CARPENTER [75 h]; R.C. CONCRETE [145] | 232,800 | PET-C220 | civil | FOOTING | PET-Z 1 |
| PET-Z1-CC-170 |  | Bituminous waterproofing for foundations | 15d | 2012-06-25 | 2012-07-11 | PET-Z1-CC-180 FF+4d, PET-Z1-CC-190 FF+4d | 1d | 0d |  | cash [19300] | 19,300 | PET-C240 | civil | FOOTING | PET-Z 1 |
| PET-Z1-CC-180 |  | RC for pedestals | 10d | 2012-06-26 | 2012-07-07 | PET-Z1-CC-160 | 1d | 0d |  | R.C. CONCRETE [8]; cash [23000] | 23,000 | PET-C260 | civil | FOOTING | PET-Z 1 |
| PET-Z1-CC-190 |  | Anchors for steel structure | 10d | 2012-06-26 | 2012-07-07 | PET-Z1-CC-180 SS, DD130 | 1d | 0d |  | CASH-2 [80] |  | PET-C270 | civil | GROUND | PET-Z 1 |
| PET-Z1-CC-390 |  | Backfilling between foundations | 12d | 2012-07-16 | 2012-07-29 | PET-Z1-AR-730 FF+5d | 1d | 0d |  |  | 70,000 |  |  |  |  |
| PET-Z1-CC-400 |  | Base course under S.O.G | 16d | 2012-07-30 | 2012-08-16 | PET-Z1-CC-390 | 1d | 0d |  |  |  |  |  |  |  |
| PET-Z1-CC-220 |  | Steel structure erection(columns&rafters&bracings) | 20d | 2012-08-25 | 2012-09-16 | DD110, PET-Z1-CC-190, PET-Z1-CC-180, PET-Z1-CC-400 | 0d |  |  | STEEL STRUCTURE [100 ton]; STEEL STRUCTURE LABOUR [100 h]; cash [786035] | 1,144,335 | PET-C330 | civil | GROUND | PET-Z 1 |
| PET-Z1-CC-350 |  | Steel structure erection(purlins & tie rods) | 14d | 2012-09-10 | 2012-09-25 | PET-Z1-CC-220 SS+14d, PET-Z1-AR-120 FF+1d, PET-Z1-AR-120 SS+1d | 0d |  |  | STEEL STRUCTURE LABOUR [30 h]; CASH-2 [120] |  |  | civil | GROUND | PET-Z 1 |
| PET-Z1-CC-310 |  | corrugated sheet (@level 17) area-1 | 10d | 2012-09-26 | 2012-10-07 | PET-Z1-AR-720, PET-Z1-CC-350 | 37d | 0d |  | CASH-2 [80] |  | PET-C460 | civil | MEZZ | PET-Z 1 |
| PET-Z1-ID-40 |  | Excavation for drainage system | 2d | 2012-09-26 | 2012-09-27 | PET-Z1-CC-350 | 0d |  |  |  |  |  |  |  |  |
| PET-Z1-ID-50 |  | Compaction&Backfilling with clean sand 10 cm | 2d | 2012-09-29 | 2012-09-30 | PET-Z1-ID-40 SS+2d | 0d |  |  |  |  |  |  |  |  |
| PET-Z1-ID-60 |  | Installing pipes | 10d | 2012-10-03 | 2012-10-14 | PET-Z1-ID-50 SS+4d | 0d |  |  |  |  |  |  |  |  |
| PET-Z1-CC-250 |  | corrugated sheet (@level 16) area-2 | 10d | 2012-10-08 | 2012-10-18 | PET-Z1-CC-310 | 37d | 0d |  | CASH-2 [120] |  | PET-C400 | civil | MEZZ | PET-Z 1 |
| PET-Z1-CC-320 |  | RC casting for deck floor (area-1) | 3d | 2012-10-08 | 2012-10-10 | PET-Z1-CC-310 | 48d | 0d |  | cash [92930] | 92,930 | PET-C480 | civil | MEZZ | PET-Z 1 |
| PET-Z1-ID-70 |  | Testing the line | 3d | 2012-10-15 | 2012-10-17 | PET-Z1-ID-60 | 0d |  |  |  |  |  |  |  |  |
| PET-Z1-ID-80 |  | Compaction&Backfilling with clean sand 30cm | 3d | 2012-10-18 | 2012-10-21 | PET-Z1-ID-70 | 0d |  |  |  |  |  |  |  |  |
| PET-Z1-CC-270 |  | RC casting for deck floors (area-2) | 3d | 2012-10-20 | 2012-10-22 | PET-Z1-CC-250 | 37d | 0d |  | cash [92000] | 92,000 | PET-C450 | civil | MEZZ | PET-Z 1 |
| PET-Z1-CC-230 |  | Plain concrete 50mm thick | 5d | 2012-10-22 | 2012-11-06 | PET-Z1-ID-80 | 0d |  |  | P.C. CONCRETE [1985]; cash [60000] | 60,000 | PET-C360 | civil | GROUND | PET-Z 1 |
| PET-Z1-CC-240 |  | Membrane sheet 400 micron | 5d | 2012-10-22 | 2012-11-06 | PET-Z1-CC-230 SS, PET-Z1-CC-230 FF | 0d |  |  | POLYETHELENE SHEET 400M [2000 m2]; cash [33745] | 33,745 | PET-C370 | civil | GROUND | PET-Z 1 |
| PET-Z1-CC-260 |  | Slab On Grade | 15d | 2012-11-07 | 2012-11-24 | PET-Z1-CC-240, PET-Z1-CC-230 | 0d |  |  | P.C. CONCRETE [1985]; cash [413850] | 413,850 | PET-C390 | civil | GROUND | PET-Z 1 |
| PET-Z1-CC-300 |  | Concrete Screed | 14d | 2012-11-15 | 2012-12-01 | PET-Z1-CC-260 SS+7d | 0d |  |  | cash [189000] | 189,000 | PET-C420 | civil | GROUND | PET-Z 1 |
| PET-Z1-CC-330 |  | Expansion joint | 7d | 2012-11-24 | 2012-12-01 | PET-Z1-CC-300 SS, PET-Z1-CC-300 FF | 24d |  |  | CASH-2 [56] |  |  | civil | GROUND | PET-Z 1 |
| PET-Z1-CC-340 |  | Stainless steel pane fixation | 7d | 2012-11-24 | 2012-12-01 | PET-Z1-CC-300 FF, PET-Z1-CC-300 SS | 22d |  |  | CASH-2 [56] |  |  | civil | GROUND | PET-Z 1 |
| PET-Z1-CC-280 |  | walk on ceiling installation ( @level 15) area-1 | 14d | 2012-12-01 | 2012-12-17 | DD120, PET-Z1-CC-300 | 8.12d |  | walkable calendar | cash [900000] | 900,000 | PET-C430 | s.panel | MEZZ | PET-Z 1 |
| PET-Z1-CC-290 |  | walk on ceiling installation ( @level 17.2) area-2 | 14d | 2012-12-01 | 2012-12-17 | PET-Z1-CC-300, DD120 | 8.12d |  | walkable calendar | cash [900000] | 900,000 | PET-C440 | s.panel | MEZZ | PET-Z 1 |

Notes:
- PET-Z1-CC-390: Anticipated Problems: CHECK EXPENSES / Expenses: (New Expense Item) 70000
- PET-Z1-CC-220: Expenses: (New Expense Item) 358300

| ID | WBS | Activity | Duration | Start | Finish | Predecessors | Total float | Free float | Resources | Cost | user_text1 | TYPE OF WORK | FLOOR LEVEL | PET FILLING BUILDING |
| --- | --- | --- | --- | --- | --- | --- | --- | --- | --- | --- | --- | --- | --- | --- |
|  | 3 | **Arch works** |  | 2012-07-12 | 2012-12-29 |  |  |  |  |  |  |  |  |  |
| PET-Z1-AR-730 |  | Masonry under slab on grade | 10d | 2012-07-12 | 2012-07-23 | PET-Z1-CC-170, SD 250 | 1d | 0d |  |  |  |  |  |  |
| PET-Z1-AR-100 |  | Masonry | 20d | 2012-08-17 | 2012-09-15 | PET-Z1-CC-400, SD 250 | 40d | 0d | Brickwork Labor [120 h]; BRICKS [1020 m2]; cash [115936]; cash [28984] | 144,920 | PET-A100 | arch | GROUND | PET-Z 1 |
| PET-Z1-AR-120 |  | Steel structure paintings | 20d | 2012-09-02 | 2012-09-24 | PET-Z1-CC-220 SS+7d | 0d |  | cash [50000] | 50,000 | PET-A180 | arch | GROUND | PET-Z 1 |
| PET-Z1-AR-720 |  | Steel structure paintings (fire rated) | 14d | 2012-09-02 | 2012-09-17 | PET-Z1-CC-220 SS+7d | 44d | 7d |  |  |  |  |  |  |
| PET-Z1-AR-160 |  | External Cement Plaster | 20d | 2012-09-16 | 2012-10-08 | PET-Z1-AR-100 | 40d | 37d | plastering worker [20 h]; cash [9000] | 9,000 | PET-A130 | arch | GROUND | PET-Z 1 |
| PET-Z1-AR-130 |  | Sandwich Panel For roof | 25d | 2012-09-18 | 2012-10-16 | PET-Z1-CC-350 FF+1d, PET-Z1-CC-350 SS+7d | 52d |  | SANDWICH PANEL FOR ROOF 150MM THK [1700 m2]; cash [827000] | 827,000 | PET-A200 | s.panel | GROUND | PET-Z 1 |
| PET-Z1-AR-180 |  | Epoxy Paint (@level 17.8) area-1 | 9d | 2012-10-11 | 2012-10-21 | PET-Z1-CC-320 | 48d |  | cash [28000]; EPOXY PAINTER [20 h] | 28,000 | PET-C490 | arch | MEZZ | PET-Z 1 |
| PET-Z1-AR-270 |  | Erection of Steel ladder & handrail & cheker plates& painting | 10d | 2012-10-20 | 2012-11-10 | DD150, PET-Z1-CC-310, PET-Z1-CC-250 | 40d |  | cash [64340] | 64,340 | PET-A310 | metal | GROUND | PET-Z 1 |
| PET-Z1-AR-140 |  | Epoxy Paint (@level 15) area-2 | 10d | 2012-11-03 | 2012-11-13 | PET-Z1-CC-270 | 37d |  | EPOXY PAINTER [4 h]; cash [37350] | 37,350 | PET-C470 | arch | MEZZ | PET-Z 1 |
| PET-Z1-AR-190 |  | Sandwich Panel For Walls | 21d | 2012-11-05 | 2012-11-28 | DD100, PET-Z1-AR-720 SS+7d, PET-Z1-AR-720 FF+2d | 12d | 0d | SANDWICH PANEL FOR WALLS 120MM(FIRE RATED) [140 m2]; cash [480000]; SANDWICH PANEL FOR WALLS 120MM THK [90 m2] | 480,000 | PET-A230 | s.panel | GROUND | PET-Z 1 |
| PET-Z1-AR-150 |  | Fair face conc. guard base(kerb) | 14d | 2012-11-21 | 2012-12-06 | PET-Z1-CC-300 SS+5d | 2d |  | cash [24000] | 24,000 | PET-A210 | arch | GROUND | PET-Z 1 |
| PET-Z1-AR-230 |  | Dismantle Works (doors & windows) | 3d | 2012-11-29 | 2012-12-02 | PET-Z1-AR-190 | 12d | 0d | cash [8117] | 8,117 | PET-A270 | arch | GROUND | PET-Z 1 |
| PET-Z1-AR-250 |  | Louvers erection | 9d | 2012-11-29 | 2012-12-09 | PET-Z1-AR-190, DD180 | 17d |  | cash [14518] | 14,518 | PET-A290 | metal | GROUND | PET-Z 1 |
| PET-Z1-AR-260 |  | Windows erection | 9d | 2012-11-29 | 2012-12-09 | PET-Z1-AR-190, DD200 | 17d |  | cash [5701] | 5,701 | PET-A300 | metal | GROUND | PET-Z 1 |
| PET-Z1-AR-170 |  | Epoxy Paint for walls | 10d | 2012-12-02 | 2012-12-12 | PET-Z1-CC-300, PET-Z1-AR-160 | 3d | 0d | EPOXY PAINTER [16 h]; cash [50000] | 50,000 | PET-A240 | arch | GROUND | PET-Z 1 |
| PET-Z1-AR-240 |  | Steel Doors erection | 4d | 2012-12-02 | 2012-12-05 | PET-Z1-AR-190, PET-Z1-AR-230 SS, DD210, PET-Z1-CC-300 | 19d |  | cash [121788] | 121,788 | PET-A280 | arch | GROUND | PET-Z 1 |
| PET-Z1-AR-350 |  | Stainless steel doors erection | 5d | 2012-12-02 | 2012-12-06 | DD210, PET-Z1-CC-300, PET-Z1-AR-230 SS, PET-Z1-AR-190 | 19d |  | cash [221046] | 221,046 |  | metal | GROUND | PET-Z 1 |
| PET-Z1-AR-300 |  | Roll up shutter doors erection | 9d | 2012-12-03 | 2012-12-12 | DD160, PET-Z1-CC-300, PET-Z1-AR-230, PET-Z1-AR-190 | 12d |  | cash [218147] | 218,147 |  | metal | GROUND | PET-Z 1 |
| PET-Z1-AR-200 |  | Polyurethane Flooring | 15d | 2012-12-10 | 2012-12-26 | PET-Z1-CC-300 FS+7d, PET-Z1-CC-340 FF, PET-Z1-AR-150 | 0d |  | POLYURETHANE [1800 m2]; cash [216000] | 216,000 | PET-A260 | arch | GROUND | PET-Z 1 |
| PET-Z1-AR-220 |  | Acrylic paint for external plaster | 10d | 2012-12-12 | 2012-12-23 | PET-Z1-AR-160, PET-Z1-AR-170 SS+9d | 3d |  | Painter [12 h]; cash [8000] | 8,000 | PET-A340 | arch | GROUND | PET-Z 1 |
| PET-Z1-AR-210 |  | Guard bollard erection | 5d | 2012-12-22 | 2012-12-26 | PET-Z1-AR-200 FF, DD170 | 0d |  | cash [54250] | 54,250 | PET-A430 | arch | GROUND | PET-Z 1 |
| PET-Z1-AR-280 |  | Final touch up | 1d | 2012-12-27 | 2012-12-27 | PET-Z1-CC-280, PET-Z1-AR-180, PET-Z1-AR-270, PET-Z1-AR-210, PET-Z1-AR-300, PET-Z1-AR-200, PET-Z1-AR-240 FF, PET-Z1-AR-240 SS+3d, PET-Z1-AR-220, PET-Z1-CC-290, PET-Z1-AR-140, PET-Z1-AR-130 | 0d |  | CASH-2 [24] |  | PET-A380 | arch | GROUND | PET-Z 1 |
| PET-Z1-AR-290 |  | Handing over & comissioning | 1d | 2012-12-29 | 2012-12-29 | PET-Z1-AR-280 | 0d |  | CASH-2 [32] |  | PET-A410 | arch | GROUND | PET-Z 1 |

| ID | WBS | Activity | Duration | Start | Finish | Predecessors | Total float | Free float | Resources | Cost | user_text1 | TYPE OF WORK | FLOOR LEVEL | PET FILLING BUILDING |
| --- | --- | --- | --- | --- | --- | --- | --- | --- | --- | --- | --- | --- | --- | --- |
|  | 1 | **zone-2 (b30 to b313)-stroage area** |  | 2012-05-15 | 2012-12-22 |  |  |  |  |  |  |  |  |  |
|  | 1 | **Civil works** |  | 2012-05-15 | 2012-11-07 |  |  |  |  |  |  |  |  |  |
| PET-Z2-CC-110 |  | Excavation | 14d | 2012-05-15 | 2012-05-30 | Ms 108 | 24d | 0d | cash [50000] | 50,000 | PET-C140 | civil | FOOTING | PET-Z 2 |
| PET-Z2-CC-130 |  | Replacement Under Footings | 12d | 2012-05-21 | 2012-06-03 | PET-Z2-CC-110 SS+5d | 24d | 0d | cash [40000] | 40,000 | PET-C180 | civil | FOOTING | PET-Z 2 |
| PET-Z2-CC-150 |  | Plain Concrete footings | 10d | 2012-06-04 | 2012-06-14 | PET-Z2-CC-130 | 24d | 0d | CARPENTER [12 h]; P.C. CONCRETE [305]; cash [18000] | 18,000 | PET-C210 | civil | FOOTING | PET-Z 2 |
| PET-Z2-CC-160 |  | R.C. footings & tie beams &planting tie beams | 15d | 2012-06-09 | 2012-06-25 | PET-Z2-CC-150 SS+4d, PET-Z2-CC-150 FF+4d | 24d | 0d | CARPENTER [75 h]; STEEL LABOUR [110 h]; R.C. CONCRETE [145]; cash [225000] | 225,000 | PET-C230 | civil | FOOTING | PET-Z 2 |
| PET-Z2-CC-180 |  | RC for pedestals | 10d | 2012-06-26 | 2012-07-07 | PET-Z2-CC-160 | 24d | 0d | R.C. CONCRETE [8]; cash [23448] | 23,448 | PET-C290 | civil | FOOTING | PET-Z 2 |
| PET-Z2-CC-200 |  | Anchors for steel structure | 10d | 2012-06-26 | 2012-07-07 | PET-Z2-CC-180 SS, DD130 | 24d | 0d | CASH-2 [64] |  | PET-C310 | civil | GROUND | PET-Z 2 |
| PET-Z2-CC-170 |  | Bituminous waterproofing for foundations | 10d | 2012-07-01 | 2012-07-11 | PET-Z2-CC-180 FF+4d, PET-Z2-CC-200 FF+4d | 24d | 0d | cash [18500] | 18,500 | PET-C250 | civil | FOOTING | PET-Z 2 |
| PET-Z2-CC-190 |  | Backfilling between foundations | 10d | 2012-07-22 | 2012-08-01 | PET-Z2-AR-740 FF+4d | 24d | 0d | cash [72920] | 72,920 | PET-C300 | civil | GROUND | PET-Z 2 |
| PET-Z1-CC-410 |  | Base course under S.O.G | 16d | 2012-08-02 | 2012-08-26 | PET-Z2-CC-190 | 24d | 0d |  |  |  |  |  |  |
| PET-Z2-CC-220 |  | Steel structure erection(columns&rafters&bracings) | 20d | 2012-08-27 | 2012-09-18 | DD110, PET-Z2-CC-180, PET-Z2-CC-200, PET-Z1-CC-410 | 24d | 0d | STEEL STRUCTURE LABOUR [100 h]; STEEL STRUCTURE [110 ton]; cash [358300] | 1,144,335 | PET-C320 | civil | GROUND | PET-Z 2 |
| PET-Z2-CC-290 |  | Steel structure erection(purlins & tie rods) | 20d | 2012-09-06 | 2012-09-29 | PET-Z2-AR-730 SS+2d, PET-Z2-AR-730 FF+2d | 66d | 0d | STEEL STRUCTURE LABOUR [30 h]; CASH-2 [120] |  |  | civil | ROOF | PET-Z 2 |
| PET-Z2-CC-210 |  | Dock leveler structure system | 14d | 2012-09-19 | 2012-10-04 | PET-Z2-CC-220 | 49d | 31d |  |  |  |  |  |  |
| PET-Z2-CC-230 |  | Plain concrete 50mm thick | 5d | 2012-09-19 | 2012-09-24 | PET-Z2-CC-220 | 24d | 0d | P.C. CONCRETE [1985]; cash [59100] | 59,100 | PET-C340 | civil | GROUND | PET-Z 2 |
| PET-Z2-CC-240 |  | Membrane sheet 400 micron | 5d | 2012-09-19 | 2012-09-24 | PET-Z2-CC-230 FF, PET-Z2-CC-230 SS | 24d | 0d | POLYETHELENE SHEET 400M [1970 m2]; cash [33745] | 33,745 | PET-C350 | civil | GROUND | PET-Z 2 |
| PET-Z2-CC-250 |  | Slab On Grade | 14d | 2012-09-25 | 2012-10-10 | PET-Z2-CC-240, PET-Z2-CC-230 | 24d | 0d | P.C. CONCRETE [1985]; cash [400000] | 400,000 | PET-C380 | civil | GROUND | PET-Z 2 |
| PET-Z2-CC-260 |  | Concrete Screed | 15d | 2012-10-11 | 2012-11-07 | PET-Z2-CC-250 | 24d | 0d | P.C. CONCRETE [1600]; cash [171200] | 171,200 | PET-C410 | civil | GROUND | PET-Z 2 |
| PET-Z2-CC-280 |  | Expansion joint | 7d | 2012-10-21 | 2012-11-07 | PET-Z2-CC-260 FF, PET-Z2-CC-260 SS | 39d | 33d | CASH-2 [56] |  |  | civil | GROUND | PET-Z 2 |
|  | 2 | **Arch works** |  | 2012-07-12 | 2012-12-22 |  |  |  |  |  |  |  |  |  |
| PET-Z2-AR-740 |  | Masonry under slab on grade | 14d | 2012-07-12 | 2012-07-28 | SD 250, PET-Z2-CC-170 | 24d | 0d |  |  |  |  |  |  |
| PET-Z2-AR-130 |  | Steel structure paintings(fire rated) | 20d | 2012-09-04 | 2012-09-26 | PET-Z2-CC-220 SS+7d | 50d | 37d | cash [50000] | 50,000 | PET-A170 | arch | GROUND | PET-Z 2 |
| PET-Z2-AR-730 |  | Steel structure paintings | 20d | 2012-09-04 | 2012-09-26 | PET-Z2-CC-220 SS+7d | 66d | 0d |  |  |  |  |  |  |
| PET-Z2-AR-120 |  | Erection of Roof Sandwich Panel | 20d | 2012-09-10 | 2012-10-02 | PET-Z2-CC-290 SS+3d, PET-Z2-CC-290 FF+3d | 66d | 0d | SANDWICH PANEL FOR ROOF 150MM THK [1700 m2]; cash [825000] | 825,000 | PET-A160 | s.panel | GROUND | PET-Z 2 |
| PET-Z2-AR-330 |  | Galvanized steel flashing&pur foam | 10d | 2012-09-22 | 2012-10-02 | PET-Z2-AR-120 SS, PET-Z2-AR-120 FF | 66d | 65d | CASH-2 [80] |  |  | arch | ROOF | PET-Z 2 |
| PET-Z2-AR-150 |  | Sandwich Panel For Walls | 20d | 2012-11-05 | 2012-11-27 | PET-Z2-AR-130 FF+3d, DD100, PET-Z2-AR-130 SS+7d | 13d | 0d | SANDWICH PANEL FOR WALLS 120MM(FIRE RATED) [145 m2]; cash [498675]; SANDWICH PANEL FOR WALLS 120MM THK [90 m2] | 498,675 | PET-A220 | s.panel | GROUND | PET-Z 2 |
| PET-Z2-AR-140 |  | Fair face conc. guard base(kerb) | 15d | 2012-11-08 | 2012-11-25 | PET-Z2-CC-260 | 24d | 18d | cash [24000] | 24,000 | PET-A190 | arch | GROUND | PET-Z 2 |
| PET-Z2-AR-750 |  | Dock leveler erection | 10d | 2012-11-21 | 2012-12-02 | DD140, PET-Z2-CC-210 | 18d | 12d |  |  |  |  |  |  |
| PET-Z2-AR-190 |  | Dismantle Works (doors & windows) | 3d | 2012-11-28 | 2012-12-01 | PET-Z2-AR-200 SS, PET-Z2-AR-310 SS | 19d | 13d | cash [2881] | 2,881 | PET-A320 | arch | GROUND | PET-Z 2 |
| PET-Z2-AR-200 |  | Steel Doors erection | 5d | 2012-11-28 | 2012-12-03 | DD210, PET-Z2-AR-150, PET-Z2-CC-260 | 17d | 0d | cash [67700] | 67,700 | PET-A330 | arch | GROUND | PET-Z 2 |
| PET-Z2-AR-210 |  | Louvers erection | 5d | 2012-11-28 | 2012-12-03 | PET-Z2-AR-150, DD180 | 17d | 11d | cash [14518] | 14,518 | PET-A350 | arch | GROUND | PET-Z 2 |
| PET-Z2-AR-220 |  | Windows erection | 7d | 2012-11-28 | 2012-12-05 | DD200, PET-Z2-AR-150 | 15d | 9d | cash [5000] | 5,000 | PET-A360 | arch | GROUND | PET-Z 2 |
| PET-Z2-AR-310 |  | Stainless steel doors erection | 5d | 2012-11-28 | 2012-12-03 | PET-Z2-AR-150, DD210, PET-Z2-CC-260 | 17d | 0d | cash [221046] | 221,046 |  | arch | GROUND | PET-Z 2 |
| PET-Z2-AR-320 |  | Roll up shutter doors erection | 9d | 2012-11-28 | 2012-12-08 | DD160, PET-Z2-CC-260, PET-Z2-AR-150 | 13d | 7d | cash [218146] | 218,146 |  | arch | GROUND | PET-Z 2 |
| PET-Z2-AR-180 |  | Guard bollard erection | 5d | 2012-12-11 | 2012-12-16 | PET-Z2-CC-260, DD170 | 6d | 0d | cash [54250] | 54,250 | PET-A440 | arch | GROUND | PET-Z 2 |
| PET-Z2-AR-250 |  | Final touch up | 2d | 2012-12-17 | 2012-12-18 | PET-Z2-AR-200, PET-Z2-CC-280, PET-Z2-AR-220, PET-Z2-AR-140, PET-Z2-AR-180, PET-Z2-AR-330 SS, PET-Z2-AR-210, PET-Z2-AR-320, PET-Z2-AR-310, PET-Z2-AR-190, PET-Z2-AR-750 | 6d | 0d | CASH-2 [24] |  | PET-A400 | arch | GROUND | PET-Z 2 |
| PET-Z2-AR-260 |  | Handing over & comissioning | 3d | 2012-12-19 | 2012-12-22 | PET-Z2-AR-250 | 6d |  | CASH-2 [40] |  | PET-A420 | arch | GROUND | PET-Z 2 |

Notes:
- PET-Z2-CC-220: Expenses: (New Expense Item) 786035

## Activity codes

| Code | Value | Meaning |
| --- | --- | --- |
| FLOOR LEVEL | FOOTING | FOOTING LEVEL |
| FLOOR LEVEL | GROUND | GROUND LEVEL |
| FLOOR LEVEL | MEZZ | MEZZANINE LEVEL |
| FLOOR LEVEL | ROOF | ROOF LEVEL |
| PET FILLING BUILDING | PET-Z 1 | ZONE 1 |
| PET FILLING BUILDING | PET-Z 2 | ZONE 2 |
| TYPE OF WORK | arch | arch works |
| TYPE OF WORK | civil | civil works |
| TYPE OF WORK | metal | metal works |
| TYPE OF WORK | s.panel | sandwich panel |

## Issues

| Issue | Status | Raised |
| --- | --- | --- |
| (New Issue) | IS_Open | 2011-10-10 |
