# Office Building 14B01 Substructure Package

Schedule from Primavera P6, 2010-07-01 to 2010-10-07, data date 2010-07-01.

## Calendars

- Gama projects calender: Mon-Thu 08:00-16:00; Fri off; Sat-Sun 08:00-16:00. Exceptions (off unless hours are given): 2010-09-09.

## Resources

| Resource | Group |
| --- | --- |
| Form work labours | labor |
| Steel Fixing labours | labor |
| Pouring labours | labor |
| insulation & water proofing labours | labor |

## Schedule

| ID | WBS | Activity | Type | Duration | Start | Finish | Predecessors | Total float | Free float |
| --- | --- | --- | --- | --- | --- | --- | --- | --- | --- |
|  | 1 | **General** |  |  | 2010-07-01 | 2010-10-07 |  |  |  |
| A1000 |  | Start project | milestone | 0d | 2010-07-01 | 2010-07-01 |  | 0d |  |
| A1020 |  | Mobilization |  | 8d | 2010-07-01 | 2010-07-10 | A1000 | 76d |  |
| A1320 |  | Receive issue for construction drawings | milestone | 0d | 2010-07-01 | 2010-07-01 | A1000 | 1d |  |
| A1010 |  | Finish project | milestone | 0d | 2010-10-07 | 2010-10-07 | A2390, A2400, A2160, A2370, A2380, A2180 | 0d |  |
|  | 2 | **Engineering** |  |  | 2010-07-01 | 2010-08-18 |  |  |  |
|  | 1 | **Tower 1** |  |  | 2010-07-01 | 2010-08-08 |  |  |  |
|  | 1 | **Submittals** |  |  | 2010-07-01 | 2010-08-04 |  |  |  |
| A1140 |  | Submittal of All R.C raft dimension | milestone | 0d | 2010-07-01 | 2010-07-01 | A1000 FS+1d, A1320 | 0d |  |
| A1150 |  | Submittal of All column layout | milestone | 0d | 2010-07-01 | 2010-07-01 | A1000 FS+1d, A1320 | 2d | 0d |
| A1160 |  | Submittal of All R.C raft RFT&starters | milestone | 0d | 2010-07-11 | 2010-07-11 | A1000 FS+9d, A1320 | 72d | 0d |
| A1170 |  | Submittal of All basement columns & walls RFT | milestone | 0d | 2010-07-21 | 2010-07-21 | A1000 FS+18d, A1320 | 1d | 0d |
| A1180 |  | Submittal of All basement slab concrete dimension | milestone | 0d | 2010-07-28 | 2010-07-28 | A1000 FS+24d, A1320 | 4d | 0d |
| A1190 |  | Submittal of All basement slab RFT | milestone | 0d | 2010-08-04 | 2010-08-04 | A1000 FS+30d, A1320 | 4d | 0d |
|  | 2 | **Approvals** |  |  | 2010-07-05 | 2010-08-08 |  |  |  |
| A1141 |  | Approval of All R.C raft dimension | milestone | 0d | 2010-07-05 | 2010-07-05 | A1140 FS+3d | 0d |  |
| A1151 |  | Approval of All column layout | milestone | 0d | 2010-07-05 | 2010-07-05 | A1150 FS+3d | 2d |  |
| A1161 |  | Approval of All R.C raft RFT&starters | milestone | 0d | 2010-07-14 | 2010-07-14 | A1160 FS+3d | 72d |  |
| A1171 |  | Approval of All basement columns & walls RFT | milestone | 0d | 2010-07-25 | 2010-07-25 | A1170 FS+3d | 1d |  |
| A1181 |  | Approval of All basement slab concrete dimension | milestone | 0d | 2010-08-01 | 2010-08-01 | A1180 FS+3d | 4d |  |
| A1191 |  | Approval of All basement slab RFT | milestone | 0d | 2010-08-08 | 2010-08-08 | A1190 FS+3d | 4d |  |
|  | 3 | **Tank** |  |  | 2010-07-08 | 2010-07-12 |  |  |  |
| A1260 |  | submittals of all tank's shop drawings | milestone | 0d | 2010-07-08 | 2010-07-08 | A1000 FS+7d, A1320 | 0d |  |
| A2170 |  | Approval of all tank's shop drawings | milestone | 0d | 2010-07-12 | 2010-07-12 | A1260 FS+3d | 0d |  |

| ID | WBS | Activity | Type | Duration | Start | Finish | Predecessors | Total float | Free float | Resources | location | type of work | detailed work |
| --- | --- | --- | --- | --- | --- | --- | --- | --- | --- | --- | --- | --- | --- |
|  | 2 | **Tower 2** |  |  | 2010-07-11 | 2010-08-18 |  |  |  |  |  |  |  |
|  | 1 | **Submittals** |  |  | 2010-07-11 | 2010-08-15 |  |  |  |  |  |  |  |
| A1200 |  | Submittal of All R.C raft dimension | milestone | 0d | 2010-07-11 | 2010-07-11 | A1000 FS+9d, A1320 | 0d |  |  |  |  |  |
| A1210 |  | Submittal of All column layout | milestone | 0d | 2010-07-11 | 2010-07-11 | A1000 FS+9d, A1320 | 3d | 0d |  |  |  |  |
| A1220 |  | Submittal of All R.C raft RFT&starters | milestone | 0d | 2010-07-21 | 2010-07-21 | A1000 FS+18d, A1320 | 63d | 0d |  |  |  |  |
| A1230 |  | Submittal of All basement columns & walls RFT | milestone | 0d | 2010-07-28 | 2010-07-28 | A1000 FS+24d, A1320 | 58d | 0d |  |  |  |  |
| A1240 |  | Submittal of All basement slab concrete dimension | milestone | 0d | 2010-08-04 | 2010-08-04 | A1000 FS+30d, A1320 | 9d | 0d |  |  |  |  |
| A1250 |  | Submittal of All basement slab RFT | milestone | 0d | 2010-08-15 | 2010-08-15 | A1000 FS+39d, A1320 | 6d | 0d |  |  |  |  |
|  | 2 | **Approvals** |  |  | 2010-07-14 | 2010-08-18 |  |  |  |  |  |  |  |
| A1201 |  | Approval of All R.C raft dimension | milestone | 0d | 2010-07-14 | 2010-07-14 | A1200 FS+3d | 0d |  |  |  |  |  |
| A1211 |  | Approval of All column layout | milestone | 0d | 2010-07-14 | 2010-07-14 | A1210 FS+3d | 3d |  |  |  |  |  |
| A1221 |  | Approval of All R.C raft RFT&starters | milestone | 0d | 2010-07-25 | 2010-07-25 | A1220 FS+3d | 63d |  |  |  |  |  |
| A1231 |  | Approval of All basement columns & walls RFT | milestone | 0d | 2010-07-31 | 2010-07-31 | A1230 FS+2d | 58d |  |  |  |  |  |
| A1241 |  | Approval of All basement slab concrete dimension | milestone | 0d | 2010-08-08 | 2010-08-08 | A1240 FS+3d | 9d |  |  |  |  |  |
| A1251 |  | Approval of All basement slab RFT | milestone | 0d | 2010-08-18 | 2010-08-18 | A1250 FS+3d | 6d |  |  |  |  |  |
|  | 3 | **construction** |  |  | 2010-07-06 | 2010-10-07 |  |  |  |  |  |  |  |
|  | OFC | **Office building** |  |  | 2010-07-06 | 2010-10-07 |  |  |  |  |  |  |  |
|  | P1 | **Tower 1** |  |  | 2010-07-06 | 2010-10-07 |  |  |  |  |  |  |  |
|  | 3 | **R.C Raft** |  |  | 2010-07-06 | 2010-08-05 |  |  |  |  |  |  |  |
| A2410 |  | Formwork For R.C raft |  | 26d | 2010-07-06 | 2010-08-04 | A1141 | 0d |  | Form work labours [480 h] | 01 | 02 | 02 |
| A2420 |  | Rebar For R.C raft |  | 24d | 2010-07-08 | 2010-08-04 | A2410 SS+2d, A1151 | 0d |  | Steel Fixing labours [3488 h] | 01 | 02 | 02 |
| A2700 |  | M&E conduits For R.C raft (by others) area 1 | milestone | 0d | 2010-07-19 | 2010-07-19 | A2420 SF+10d | 3d | 0d |  | 01 | 05 |  |
| A2780 |  | Pouring For R.C raft (area 1) |  | 1d | 2010-07-20 | 2010-07-20 | A2700 | 3d |  | Pouring labours [168 h] | 01 | 02 | 02 |
| A2690 |  | M&E conduits For R.C raft (by others) area 2 | milestone | 0d | 2010-07-22 | 2010-07-22 | A2420 SF+13d | 0d |  |  | 01 | 05 |  |
| A2790 |  | Pouring For R.C raft (area 2) |  | 1d | 2010-07-24 | 2010-07-24 | A2690 | 0d |  | Pouring labours [56 h] | 01 | 02 | 02 |
| A2710 |  | M&E conduits For R.C raft (by others) area 3 | milestone | 0d | 2010-08-04 | 2010-08-04 | A2420 SF+24d | 0d |  |  | 01 | 05 |  |
| A2440 |  | Pouring For R.C raft (area 3) |  | 1d | 2010-08-05 | 2010-08-05 | A2710 | 0d |  | Pouring labours [56 h] | 01 | 02 | 02 |

| ID | WBS | Activity | Type | Duration | Start | Finish | Predecessors | Total float | Free float | Resources | location | type of work | detailed work |
| --- | --- | --- | --- | --- | --- | --- | --- | --- | --- | --- | --- | --- | --- |
|  | 4 | **Basement Walls & Columns** |  |  | 2010-07-25 | 2010-08-21 |  |  |  |  |  |  |  |
| A2450 |  | Formwork For basement walls & col. |  | 23d | 2010-07-25 | 2010-08-19 | A2440 FS-11d, A2790, A2780 | 0d |  | Form work labours [2400 h] | 01 | 02 | 03 |
| A2460 |  | Rebar For basement walls & col. |  | 20d | 2010-07-27 | 2010-08-18 | A2450 SS+2d, A1171 | 0d |  | Steel Fixing labours [2400 h] | 01 | 02 | 03 |
| A2470 |  | Pouring For basement walls & col. |  | 18d | 2010-08-01 | 2010-08-21 | A2450 SS+5d, A2460 SS+4d | 0d |  | Pouring labours [160 h] | 01 | 02 | 03 |
|  | 5 | **Basement Slab** |  |  | 2010-08-07 | 2010-09-30 |  |  |  |  |  |  |  |
| A2480 |  | Formwork For basement Slab & stairs |  | 44d | 2010-08-07 | 2010-09-27 | A1181, A2470 FS-13d | 0d |  | Form work labours [4800 h] | 01 | 02 | 04 |
| A2490 |  | Rebar For basement Slab & stairs |  | 40d | 2010-08-14 | 2010-09-29 | A2480 SS+6d, A1191 | 0d |  | Steel Fixing labours [1800 h] | 01 | 02 | 04 |
| A2770 |  | M&E conduits For basement Slab & stairs (by others) Area 3 | milestone | 0d | 2010-08-17 | 2010-08-17 | A2490 SF+4d | 39d | 0d |  | 01 | 05 |  |
| A2800 |  | Pouring For basement Slab & stairs (Area 3) |  | 1d | 2010-08-19 | 2010-08-19 | A2770 FS+1d | 39d |  | Pouring labours [32 h] | 01 | 02 | 04 |
| A2760 |  | M&E conduits For basement Slab & stairs (by others) Area 2 | milestone | 0d | 2010-08-21 | 2010-08-21 | A2490 SF+7d | 35d | 0d |  | 01 | 05 |  |
| A2810 |  | Pouring For basement Slab & stairs (Area 2) |  | 1d | 2010-08-24 | 2010-08-24 | A2760 FS+2d | 35d |  | Pouring labours [96 h] | 01 | 02 | 04 |
| A2500 |  | M&E conduits For basement Slab & stairs (by others) Area 1 | milestone | 0d | 2010-09-27 | 2010-09-27 | A2490 SF+38d | 0d |  |  | 01 | 05 |  |
| A2510 |  | Pouring For basement Slab & stairs ( Area 1) |  | 1d | 2010-09-30 | 2010-09-30 | A2500 FS+2d | 0d |  | Pouring labours [32 h] | 01 | 02 | 04 |
|  | 6 | **Insulation & Water Proofing** |  |  | 2010-08-04 | 2010-08-31 |  |  |  |  |  |  |  |
| A2530 |  | Isolation For Foundation bituminous emulsion |  | 20d | 2010-08-04 | 2010-08-26 | A2470 FS-15d | 22d | 4d | insulation & water proofing labours [1280 h] | 01 | 04 |  |
| A2520 |  | Water proofing bituminous membrane |  | 20d | 2010-08-05 | 2010-08-28 | A2470 FS-14d | 18d | 0d | insulation & water proofing labours [400 h] | 01 | 04 |  |
| A2540 |  | Water proofing protection layer cartonal |  | 16d | 2010-08-14 | 2010-08-31 | A2520 FS-13d | 18d | 0d | insulation & water proofing labours [1360 h] | 01 | 04 |  |
|  | 1 | **Earth Work For Tower 1** |  |  | 2010-09-01 | 2010-09-14 |  |  |  |  |  |  |  |
| A2370 |  | Backfilling Around Foundation |  | 11d | 2010-09-01 | 2010-09-14 | A2530, A2540 | 18d |  |  |  |  |  |
|  | 2 | **Handingover For Tower 1** |  |  | 2010-10-06 | 2010-10-07 |  |  |  |  |  |  |  |
| A2390 |  | Handingover |  | 2d | 2010-10-06 | 2010-10-07 | A2370, A2510 FS+4d, A2800, A2810 | 0d |  |  |  |  |  |
|  | P2 | **Tower 2** |  |  | 2010-07-17 | 2010-10-07 |  |  |  |  |  |  |  |
|  | 3 | **R.C Raft** |  |  | 2010-07-17 | 2010-08-11 |  |  |  |  |  |  |  |
| A2550 |  | Formwork For R.C raft |  | 20d | 2010-07-17 | 2010-08-08 | A1201 FS+1d | 0d |  | Form work labours [480 h] | 01 | 02 | 02 |
| A2560 |  | Rebar For R.C raft |  | 20d | 2010-07-19 | 2010-08-10 | A1211, A2550 SS+2d | 0d |  | Steel Fixing labours [3488 h] | 01 | 02 | 02 |
| A2570 |  | M&E conduits For R.C raft (by others) Area 1 | milestone | 0d | 2010-07-24 | 2010-07-24 | A2560 SF+5d | 0d |  |  | 01 | 05 |  |
| A2580 |  | Pouring For R.C raft (Area 1) |  | 1d | 2010-07-27 | 2010-07-27 | A2570 FS+2d | 0d |  | Pouring labours [56 h] | 01 | 02 | 02 |
| A2720 |  | M&E conduits For R.C raft (by others) Area 2 | milestone | 0d | 2010-08-01 | 2010-08-01 | A2560 SF+12d | 54d | 0d |  | 01 | 05 |  |
| A2820 |  | Pouring For R.C raft (Area 2) |  | 1d | 2010-08-04 | 2010-08-04 | A2720 FS+2d | 54d |  | Pouring labours [168 h] | 01 | 02 | 02 |
| A2730 |  | M&E conduits For R.C raft (by others) Area 3 | milestone | 0d | 2010-08-09 | 2010-08-09 | A2560 SF+19d | 48d | 0d |  | 01 | 05 |  |
| A2830 |  | Pouring For R.C raft (Area 3) |  | 1d | 2010-08-11 | 2010-08-11 | A2730 FS+1d | 48d |  | Pouring labours [56 h] | 01 | 02 | 02 |

| ID | WBS | Activity | Type | Duration | Start | Finish | Predecessors | Total float | Free float | Resources | location | type of work | detailed work |
| --- | --- | --- | --- | --- | --- | --- | --- | --- | --- | --- | --- | --- | --- |
|  | 4 | **Basement Walls & Columns** |  |  | 2010-07-31 | 2010-08-17 |  |  |  |  |  |  |  |
| A2590 |  | Formwork For basement walls & col. |  | 15d | 2010-07-31 | 2010-08-16 | A2580 SS+3d | 0d |  | Form work labours [2400 h] | 01 | 02 | 03 |
| A2600 |  | Rebar For basement walls & col. |  | 12d | 2010-08-02 | 2010-08-15 | A2590 SS+2d | 0d |  | Steel Fixing labours [2400 h] | 01 | 02 | 03 |
| A2610 |  | Pouring For basement walls & col. |  | 6d | 2010-08-11 | 2010-08-17 | A2590 SS+8d, A2600 SS+8d | 0d |  | Pouring labours [160 h] | 01 | 02 | 03 |
|  | 5 | **Basement Slab** |  |  | 2010-08-19 | 2010-09-22 |  |  |  |  |  |  |  |
| A2620 |  | Formwork For basement Slab & stairs |  | 23d | 2010-08-19 | 2010-09-15 | A2610 SS+7d, A1241 | 0d |  | Form work labours [4800 h] | 01 | 02 | 04 |
| A2630 |  | Rebar For basement Slab & stairs |  | 22d | 2010-08-26 | 2010-09-21 | A1251, A2620 SS+6d | 0d |  | Steel Fixing labours [1800 h] | 01 | 02 | 04 |
| A2640 |  | M&E conduits For basement Slab & stairs (by others) Area 1 | milestone | 0d | 2010-08-28 | 2010-08-28 | A2630 SF+2d | 19d | 0d |  | 01 | 05 |  |
| A2650 |  | Pouring For basement Slab & stairs (Area 1) |  | 1d | 2010-08-30 | 2010-08-30 | A2640 FS+1d | 19d |  | Pouring labours [32 h] | 01 | 02 | 04 |
| A2740 |  | M&E conduits For basement Slab & stairs (by others) Area 2 | milestone | 0d | 2010-09-08 | 2010-09-08 | A2630 SF+12d | 16d | 0d |  | 01 | 05 |  |
| A2840 |  | Pouring For basement Slab & stairs (Area 2) |  | 1d | 2010-09-12 | 2010-09-12 | A2740 FS+1d | 16d |  | Pouring labours [96 h] | 01 | 02 | 04 |
| A2750 |  | M&E conduits For basement Slab & stairs (by others) Area 3 | milestone | 0d | 2010-09-20 | 2010-09-20 | A2630 SF+21d | 0d |  |  | 01 | 05 |  |
| A2850 |  | Pouring For basement Slab & stairs (Area3) |  | 1d | 2010-09-22 | 2010-09-22 | A2750 FS+1d | 0d |  | Pouring labours [32 h] | 01 | 02 | 04 |
|  | 6 | **Insulation & Water Proofing** |  |  | 2010-08-12 | 2010-08-24 |  |  |  |  |  |  |  |
| A2660 |  | Isolation For Foundation bituminous emulsion |  | 6d | 2010-08-12 | 2010-08-18 | A2610 SS+1d | 19d | 0d | insulation & water proofing labours [1280 h] | 01 | 04 |  |
| A2670 |  | Water proofing bituminous membrane |  | 6d | 2010-08-14 | 2010-08-19 | A2610 SS+2d | 41d |  | insulation & water proofing labours [400 h] | 01 | 04 |  |
| A2680 |  | Water proofing protection layer cartonal |  | 6d | 2010-08-18 | 2010-08-24 | A2660 SS+5d | 19d | 0d | insulation & water proofing labours [1360 h] | 01 | 04 |  |
|  | 1 | **Earth Work For Tower 2** |  |  | 2010-08-25 | 2010-09-07 |  |  |  |  |  |  |  |
| A2380 |  | Backfilling Around Foundation |  | 12d | 2010-08-25 | 2010-09-07 | A2660, A2680 | 19d |  |  |  |  |  |
|  | 2 | **Handingover For Tower 2** |  |  | 2010-10-02 | 2010-10-07 |  |  |  |  |  |  |  |
| A2400 |  | Handingover |  | 6d | 2010-10-02 | 2010-10-07 | A2650 FS+7d, A2380, A2850 FS+7d, A2840 | 0d |  |  |  |  |  |
|  | TANK | **Tank** |  |  | 2010-07-21 | 2010-10-07 |  |  |  |  |  |  |  |
| A2060 |  | Formworks for R.C raft |  | 2d | 2010-07-21 | 2010-07-22 | A2170 FS+7d | 0d |  | Form work labours [80 h] | 03 | 02 | 02 |
| A2070 |  | Rebar for R.C raft |  | 3d | 2010-07-24 | 2010-07-26 | A2060 | 0d |  | Steel Fixing labours [120 h] | 03 | 02 | 02 |
| A2079 |  | M&E conduits For R.C raft (by others) | milestone | 0d | 2010-07-25 | 2010-07-25 | A2070 FS-2d | 1d |  |  |  |  |  |
| A2080 |  | Pouring For R.C raft |  | 1d | 2010-07-27 | 2010-07-27 | A2070, A2079 FS+1d | 0d |  | Pouring labours [40 h] | 03 | 02 | 02 |
| A2090 |  | Formwork For Tank walls |  | 8d | 2010-07-28 | 2010-08-05 | A2080 | 0d |  | Form work labours [240 h] | 03 | 02 | 03 |
| A2100 |  | Rebar For Tank walls |  | 6d | 2010-08-07 | 2010-08-12 | A2090 | 0d |  | Steel Fixing labours [120 h] | 03 | 02 | 03 |
| A2109 |  | M&E conduits For R.C walls (by others) | milestone | 0d | 2010-08-11 | 2010-08-11 | A2100 FS-2d | 1d |  |  |  |  |  |
| A2110 |  | Pouring For Tank walls |  | 1d | 2010-08-14 | 2010-08-14 | A2100, A2109 FS+1d | 0d |  | Pouring labours [40 h] | 03 | 02 | 03 |
| A2120 |  | Formwork For Tank Slab |  | 10d | 2010-08-15 | 2010-08-25 | A2110 | 0d |  | Form work labours [120 h] | 03 | 02 | 04 |
| A2130 |  | Rebar For Tank Slab |  | 6d | 2010-08-26 | 2010-09-01 | A2120 | 0d |  | Steel Fixing labours [160 h] | 03 | 02 | 04 |
| A2119 |  | M&E conduits For tank's slab (by others) | milestone | 0d | 2010-08-31 | 2010-08-31 | A2130 FS-2d | 1d |  |  |  |  |  |
| A2140 |  | Pouring For Tank slab |  | 1d | 2010-09-02 | 2010-09-02 | A2130, A2119 FS+1d | 0d |  | Pouring labours [40 h] | 03 | 02 | 04 |
| A2150 |  | Internal insulation |  | 15d | 2010-09-04 | 2010-09-21 | A2140 | 0d |  |  | 03 | 04 |  |
| A2160 |  | External insulation |  | 10d | 2010-09-22 | 2010-10-03 | A2150 | 0d |  |  | 03 | 04 |  |
| A2180 |  | Testing & Handingover |  | 4d | 2010-10-04 | 2010-10-07 | A2160 | 0d |  |  |  |  |  |

## Activity codes

| Code | Value | Meaning |
| --- | --- | --- |
| detailed work | 02 | R.C foundation |
| detailed work | 03 | columns and walls |
| detailed work | 04 | slab |
| location | 01 | Part 1 |
| location | 03 | Tank |
| type of work | 02 | concrete works |
| type of work | 04 | insulation works |
| type of work | 05 | electro mrchanical work |
