# Cleopatra elmohandeseen

Schedule from Primavera P6, 2010-06-20 to 2011-03-22, data date 2010-06-20.

## Calendars

- Elmohandeseen Building: Mon-Thu 08:00-16:00; Fri off; Sat-Sun 08:00-16:00. Exceptions (off unless hours are given): 2010-09-11 to 2010-09-12, 2010-11-13 to 2010-11-18.

## Schedule

| ID | WBS | Activity | Type | Duration | Start | Finish | Predecessors | Total float | Free float |
| --- | --- | --- | --- | --- | --- | --- | --- | --- | --- |
|  | GEN | **General** |  |  | 2010-06-20 | 2010-06-28 |  |  |  |
| A1000 |  | start project | milestone | 0d | 2010-06-20 | 2010-06-20 |  | 0d |  |
| A1010 |  | finish project | milestone | 0d | 2010-06-28 | 2010-06-28 | A1040 | 219d |  |
|  | ENG | **Engineering** |  |  | 2010-06-20 | 2010-06-20 |  |  |  |
| A1020 |  | Receive issue for construction | milestone | 0d | 2010-06-20 | 2010-06-20 | A1000 | 0d |  |
|  | 1 | **Construction Phase** |  |  | 2010-06-20 | 2011-03-22 |  |  |  |
|  | F. L | **Foundation Level** |  |  | 2010-06-20 | 2010-08-28 |  |  |  |
| A1030 |  | pouring for R.C raft |  | 4d | 2010-06-20 | 2010-06-23 | A1000, A1020 | 0d |  |
| A1040 |  | Piles surface preparation |  | 4d | 2010-06-24 | 2010-06-28 | A1030 | 0d |  |
| A1041 |  | PVC Insulation |  | 7d | 2010-06-29 | 2010-07-06 | A1040 | 0d |  |
| A1150 |  | removing the pile's steel bracing |  | 5d | 2010-08-23 | 2010-08-28 | A1210 FS+2d | 0d |  |
|  | -2 L | **-2 Floor level** |  |  | 2010-06-27 | 2010-08-08 |  |  |  |
| A1050 |  | Form work for columns |  | 6d | 2010-06-27 | 2010-07-03 | A1030 FS+2d | 1d | 0d |
| A1060 |  | Rebar for columns |  | 3d | 2010-06-29 | 2010-07-01 | A1050 SS+2d | 1d | 0d |
| A1070 |  | Pouring for columns |  | 1d | 2010-07-05 | 2010-07-05 | A1060 FS+2d, A1050 | 1d |  |
| A1090 |  | Rebar for retaining walls |  | 6d | 2010-07-07 | 2010-07-13 | A1070, A1041 | 0d |  |
| A1080 |  | Form work for retaining walls |  | 7d | 2010-07-14 | 2010-07-21 | A1090 | 0d |  |
| A1100 |  | Pouring for retaining walls |  | 1d | 2010-07-22 | 2010-07-22 | A1080 | 0d |  |
| A1110 |  | Form work for slab |  | 6d | 2010-07-25 | 2010-07-31 | A1100 FS+1d | 0d |  |
| A1120 |  | Rebar for slab |  | 6d | 2010-08-01 | 2010-08-07 | A1110 | 0d |  |
| A1129 |  | E&M works for slab |  | 2d | 2010-08-03 | 2010-08-04 | A1120 SS+2d | 2d |  |
| A1130 |  | pouring for slab |  | 1d | 2010-08-08 | 2010-08-08 | A1120, A1129 | 0d |  |
|  | -1L | **-1 Floor level** |  |  | 2010-08-11 | 2010-09-18 |  |  |  |
| A1190 |  | Rebar for retaining walls |  | 4d | 2010-08-11 | 2010-08-15 | A1130 FS+2d | 0d |  |
| A1191 |  | Form work for retaining walls |  | 5d | 2010-08-14 | 2010-08-18 | A1190 FS-2d | 0d |  |
| A1210 |  | Pouring for retaining walls |  | 1d | 2010-08-19 | 2010-08-19 | A1191 | 0d |  |
| A2900 |  | Form work for slabs & columns |  | 10d | 2010-08-30 | 2010-09-14 | A1150 FS+1d | 0d |  |
| A2910 |  | Rebar for columns |  | 3d | 2010-09-01 | 2010-09-04 | A2900 SS+2d | 0d |  |
| A2920 |  | Pouring for columns |  | 1d | 2010-09-07 | 2010-09-07 | A2910 FS+2d | 0d |  |
| A2930 |  | Rebar for slab |  | 4d | 2010-09-13 | 2010-09-16 | A2920 | 0d |  |
| A2940 |  | E&M works for slab |  | 2d | 2010-09-15 | 2010-09-16 | A2930 SS+2d | 0d |  |
| A2950 |  | pouring for slab |  | 1d | 2010-09-18 | 2010-09-18 | A2930, A2940 | 0d |  |

| ID | WBS | Activity | Duration | Start | Finish | Predecessors | Total float |
| --- | --- | --- | --- | --- | --- | --- | --- |
|  | 0 L | **Ground Floor** |  | 2010-09-20 | 2010-10-04 |  |  |
| A1260 |  | Form work for slabs & columns | 12d | 2010-09-20 | 2010-10-03 | A2950 FS+1d | 0d |
| A1270 |  | Rebar for columns | 4d | 2010-09-20 | 2010-09-23 | A1260 SS | 0d |
| A1280 |  | Pouring for columns | 1d | 2010-09-27 | 2010-09-27 | A1270 FS+2d | 0d |
| A1330 |  | Rebar for slab | 5d | 2010-09-28 | 2010-10-03 | A1280 | 0d |
| A1340 |  | E&M works for slab | 2d | 2010-10-02 | 2010-10-03 | A1330 SS+3d | 0d |
| A1350 |  | pouring for slab | 1d | 2010-10-04 | 2010-10-04 | A1330, A1340 | 0d |
|  | 0 L1 | **1st Floor** |  | 2010-10-06 | 2010-10-20 |  |  |
| A2960 |  | Form work for slabs & columns | 12d | 2010-10-06 | 2010-10-19 | A1350 FS+1d | 0d |
| A2970 |  | Rebar for columns | 4d | 2010-10-06 | 2010-10-10 | A2960 SS | 0d |
| A2980 |  | Pouring for columns | 1d | 2010-10-13 | 2010-10-13 | A2970 FS+2d | 0d |
| A2990 |  | Rebar for slab | 5d | 2010-10-14 | 2010-10-19 | A2980 | 0d |
| A3010 |  | E&M works for slab | 2d | 2010-10-18 | 2010-10-19 | A2990 SS+3d | 0d |
| A3000 |  | pouring for slab | 1d | 2010-10-20 | 2010-10-20 | A2990, A3010 | 0d |
|  | 0 L2 | **2 nd Floor** |  | 2010-10-23 | 2010-11-06 |  |  |
| A3020 |  | Form work for slabs & columns | 12d | 2010-10-23 | 2010-11-04 | A3000 FS+1d | 0d |
| A3030 |  | Rebar for columns | 4d | 2010-10-23 | 2010-10-26 | A3020 SS | 0d |
| A3040 |  | Pouring for columns | 1d | 2010-10-30 | 2010-10-30 | A3030 FS+2d | 0d |
| A3050 |  | Rebar for slab | 5d | 2010-10-31 | 2010-11-04 | A3040 | 0d |
| A3070 |  | E&M works for slab | 2d | 2010-11-03 | 2010-11-04 | A3050 SS+3d | 0d |
| A3060 |  | pouring for slab | 1d | 2010-11-06 | 2010-11-06 | A3050, A3070 | 0d |
|  | 0 L21 | **3 rd Floor** |  | 2010-11-08 | 2010-11-29 |  |  |
| A3200 |  | Form work for slabs & columns | 12d | 2010-11-08 | 2010-11-28 | A3060 FS+1d | 0d |
| A3210 |  | Rebar for columns | 4d | 2010-11-08 | 2010-11-11 | A3200 SS | 0d |
| A3220 |  | Pouring for columns | 1d | 2010-11-22 | 2010-11-22 | A3210 FS+2d | 0d |
| A3230 |  | Rebar for slab | 5d | 2010-11-23 | 2010-11-28 | A3220 | 0d |
| A3250 |  | E&M works for slab | 2d | 2010-11-27 | 2010-11-28 | A3230 SS+3d | 0d |
| A3240 |  | pouring for slab | 1d | 2010-11-29 | 2010-11-29 | A3230, A3250 | 0d |

| ID | WBS | Activity | Duration | Start | Finish | Predecessors | Total float |
| --- | --- | --- | --- | --- | --- | --- | --- |
|  | 0 L11 | **4 th Floor** |  | 2010-12-01 | 2010-12-15 |  |  |
| A3140 |  | Form work for slabs & columns | 12d | 2010-12-01 | 2010-12-14 | A3240 FS+1d | 0d |
| A3150 |  | Rebar for columns | 4d | 2010-12-01 | 2010-12-05 | A3140 SS | 0d |
| A3160 |  | Pouring for columns | 1d | 2010-12-08 | 2010-12-08 | A3150 FS+2d | 0d |
| A3170 |  | Rebar for slab | 5d | 2010-12-09 | 2010-12-14 | A3160 | 0d |
| A3190 |  | E&M works for slab | 2d | 2010-12-13 | 2010-12-14 | A3170 SS+3d | 0d |
| A3180 |  | pouring for slab | 1d | 2010-12-15 | 2010-12-15 | A3170, A3190 | 0d |
|  | 0 L3 | **5 th Floor** |  | 2010-12-18 | 2011-01-01 |  |  |
| A3080 |  | Form work for slabs & columns | 12d | 2010-12-18 | 2010-12-30 | A3180 FS+1d | 0d |
| A3090 |  | Rebar for columns | 4d | 2010-12-18 | 2010-12-21 | A3080 SS | 0d |
| A3100 |  | Pouring for columns | 1d | 2010-12-25 | 2010-12-25 | A3090 FS+2d | 0d |
| A3110 |  | Rebar for slab | 5d | 2010-12-26 | 2010-12-30 | A3100 | 0d |
| A3130 |  | E&M works for slab | 2d | 2010-12-29 | 2010-12-30 | A3110 SS+3d | 0d |
| A3120 |  | pouring for slab | 1d | 2011-01-01 | 2011-01-01 | A3110, A3130 | 0d |
|  | 0 L12 | **6 th Floor** |  | 2011-01-03 | 2011-01-17 |  |  |
| A3320 |  | Form work for slabs & columns | 12d | 2011-01-03 | 2011-01-16 | A3120 FS+1d | 0d |
| A3330 |  | Rebar for columns | 4d | 2011-01-03 | 2011-01-06 | A3320 SS | 0d |
| A3340 |  | Pouring for columns | 1d | 2011-01-10 | 2011-01-10 | A3330 FS+2d | 0d |
| A3350 |  | Rebar for slab | 5d | 2011-01-11 | 2011-01-16 | A3340 | 0d |
| A3370 |  | E&M works for slab | 2d | 2011-01-15 | 2011-01-16 | A3350 SS+3d | 0d |
| A3360 |  | pouring for slab | 1d | 2011-01-17 | 2011-01-17 | A3350, A3370 | 0d |
|  | 0 L22 | **7 th Floor** |  | 2011-01-19 | 2011-02-02 |  |  |
| A3380 |  | Form work for slabs & columns | 12d | 2011-01-19 | 2011-02-01 | A3360 FS+1d | 0d |
| A3390 |  | Rebar for columns | 4d | 2011-01-19 | 2011-01-23 | A3380 SS | 0d |
| A3400 |  | Pouring for columns | 1d | 2011-01-26 | 2011-01-26 | A3390 FS+2d | 0d |
| A3410 |  | Rebar for slab | 5d | 2011-01-27 | 2011-02-01 | A3400 | 0d |
| A3430 |  | E&M works for slab | 2d | 2011-01-31 | 2011-02-01 | A3410 SS+3d | 0d |
| A3420 |  | pouring for slab | 1d | 2011-02-02 | 2011-02-02 | A3410, A3430 | 0d |

| ID | WBS | Activity | Duration | Start | Finish | Predecessors | Total float |
| --- | --- | --- | --- | --- | --- | --- | --- |
|  | 0 L111 | **8 th Floor** |  | 2011-02-05 | 2011-02-19 |  |  |
| A3500 |  | Form work for slabs & columns | 12d | 2011-02-05 | 2011-02-17 | A3420 FS+1d | 0d |
| A3510 |  | Rebar for columns | 4d | 2011-02-05 | 2011-02-08 | A3500 SS | 0d |
| A3520 |  | Pouring for columns | 1d | 2011-02-12 | 2011-02-12 | A3510 FS+2d | 0d |
| A3530 |  | Rebar for slab | 5d | 2011-02-13 | 2011-02-17 | A3520 | 0d |
| A3550 |  | E&M works for slab | 2d | 2011-02-16 | 2011-02-17 | A3530 SS+3d | 0d |
| A3540 |  | pouring for slab | 1d | 2011-02-19 | 2011-02-19 | A3530, A3550 | 0d |
|  | 0 L211 | **9 th Floor** |  | 2011-02-21 | 2011-03-07 |  |  |
| A3560 |  | Form work for slabs & columns | 12d | 2011-02-21 | 2011-03-06 | A3540 FS+1d | 0d |
| A3570 |  | Rebar for columns | 4d | 2011-02-21 | 2011-02-24 | A3560 SS | 0d |
| A3580 |  | Pouring for columns | 1d | 2011-02-28 | 2011-02-28 | A3570 FS+2d | 0d |
| A3590 |  | Rebar for slab | 5d | 2011-03-01 | 2011-03-06 | A3580 | 0d |
| A3610 |  | E&M works for slab | 2d | 2011-03-05 | 2011-03-06 | A3590 SS+3d | 0d |
| A3600 |  | pouring for slab | 1d | 2011-03-07 | 2011-03-07 | A3590, A3610 | 0d |
|  | 0 L2111 | **Roof Floor** |  | 2011-03-08 | 2011-03-22 |  |  |
| A3620 |  | Form work for slabs & columns | 12d | 2011-03-08 | 2011-03-21 | A3600 | 0d |
| A3630 |  | Rebar for columns | 4d | 2011-03-08 | 2011-03-12 | A3620 SS | 0d |
| A3640 |  | Pouring for columns | 1d | 2011-03-15 | 2011-03-15 | A3630 FS+2d | 0d |
| A3650 |  | Rebar for slab | 5d | 2011-03-16 | 2011-03-21 | A3640 | 0d |
| A3670 |  | E&M works for slab | 2d | 2011-03-20 | 2011-03-21 | A3650 SS+3d | 0d |
| A3660 |  | pouring for slab | 1d | 2011-03-22 | 2011-03-22 | A3650, A3670 | 0d |
