# Polaris DC-1 — Aviapolis Data Campus Baseline

Schedule from Primavera P6, 2026-07-31 to 2028-02-29, costs in EUR.
Must finish by 2028-02-29

## Resources

| Resource | Group | Rate |
| --- | --- | --- |
| Earthworks Crew | labor | 42 |
| Civil Crew | labor | 42 |
| Piling Crew | labor | 55 |
| Concrete Crew | labor | 48 |
| Facade Crew | labor | 50 |
| Steel Erection Crew | labor | 52 |
| Roofing Crew | labor | 45 |
| Envelope Crew | labor | 46 |
| Waterproofing Crew | labor | 44 |
| Electrical Crew | labor | 50 |
| Fit-Out Crew | labor | 44 |
| Mechanical Crew | labor | 50 |
| Commissioning Engineer | labor | 62 |

## Schedule

| ID | Activity | Type | Duration | Start | Finish | Predecessors | Total float | Resources | Cost |
| --- | --- | --- | --- | --- | --- | --- | --- | --- | --- |
| 1 | Project Commencement | milestone | 0d | 2026-07-31 | 2026-07-31 |  | 0d |  |  |
| 2 | Design Team Mobilisation |  | 10d | 2026-07-31 | 2026-08-13 | 1 | 0d |  |  |
| 61 | Site Mobilisation — Hoarding & Temporary Facilities |  | 10d | 2026-07-31 | 2026-08-13 | 1 | 154d |  |  |
| 3 | Pre-Application Meeting — Vantaa Rakennusvalvonta |  | 5d | 2026-08-14 | 2026-08-20 | 2 | 84d |  |  |
| 4 | Topographic Survey & Geotechnical Investigation |  | 15d | 2026-08-14 | 2026-09-03 | 2 | 62d |  |  |
| 62 | M: Site Set Up Complete | milestone | 0d | 2026-08-14 | 2026-08-14 | 61 | 154d |  |  |
| 63 | Site Clearance & Strip Topsoil |  | 12d | 2026-08-14 | 2026-08-31 | 62 | 154d | Earthworks Crew [1536 h] | 64,512 |
| 7 | Archaeological Pre-Commencement Investigation |  | 5d | 2026-08-14 | 2026-08-20 | 2 | 392d |  |  |
| 71 | Underground Service Trenches — Site Spine |  | 25d | 2026-08-14 | 2026-09-17 | 62 | 367d | Civil Crew [2400 h] | 100,800 |
| 76 | Fire Water Storage Tank — Civil |  | 8d | 2026-08-14 | 2026-08-25 | 62 | 394d |  |  |
| 9 | Concept Design — 4-Hall Campus Layout |  | 20d | 2026-08-14 | 2026-09-10 | 2 | 0d |  |  |
| 8 | M: Archaeology Clearance Received | milestone | 0d | 2026-08-28 | 2026-08-28 | 7 FS+5d | 392d |  |  |
| 64 | Bulk Earthworks — Cut & Fill (All Halls Platform) |  | 20d | 2026-09-01 | 2026-09-28 | 63 | 154d | Earthworks Crew [2560 h] | 107,520 |
| 10 | Schematic Design — Architecture & Structure |  | 25d | 2026-09-11 | 2026-10-15 | 9 | 0d |  |  |
| 5 | M: Geotechnical Report Issued | milestone | 0d | 2026-09-18 | 2026-09-18 | 4 FS+10d | 62d |  |  |
| 6 | Foundation Design — Pile Strategy & Ground Model |  | 8d | 2026-09-18 | 2026-09-29 | 5 | 62d |  |  |
| 72 | District Heating Connection — Site Entry |  | 10d | 2026-09-18 | 2026-10-01 | 71 | 367d |  |  |
| 118 | Admin/NOC Building — Foundation & Ground Slab |  | 12d | 2026-09-29 | 2026-10-14 | 64 | 235d | Concrete Crew [1536 h] | 73,728 |
| 65 | Piling — Hall 1 |  | 20d | 2026-09-29 | 2026-10-26 | 64 | 154d | Piling Crew [1920 h] | 105,600 |
| 66 | Piling — Hall 2 |  | 20d | 2026-09-29 | 2026-10-26 | 64 | 154d | Piling Crew [1920 h] | 105,600 |
| 77 | Generator Yard — Hardstanding & Fuel Storage |  | 12d | 2026-09-29 | 2026-10-14 | 64 | 358d |  |  |
| 119 | Admin/NOC Building — RC Frame (2 Storeys) |  | 25d | 2026-10-15 | 2026-11-18 | 118 | 235d | Concrete Crew [4000 h] | 192,000 |
| 68 | Piling — Hall 3 |  | 20d | 2026-10-15 | 2026-11-11 | 65 SS+12d | 162d | Piling Crew [1920 h] | 105,600 |
| 69 | Piling — Hall 4 |  | 20d | 2026-10-15 | 2026-11-11 | 66 SS+12d | 162d | Piling Crew [1920 h] | 105,600 |
| 11 | MEP Concept & Load Assessment |  | 10d | 2026-10-16 | 2026-10-29 | 10 | 0d |  |  |
| 13 | Building Permit Application Preparation |  | 25d | 2026-10-16 | 2026-11-19 | 10, 3 | 44d |  |  |
| 18 | Detailed Design — Structural (All Halls) |  | 25d | 2026-10-16 | 2026-11-19 | 6, 10 | 50d |  |  |
| 22 | BIM Model Development — Architectural LOD350 |  | 20d | 2026-10-16 | 2026-11-12 | 10 | 70d |  |  |
| 67 | M: Hall 1+2 Piling Complete | milestone | 0d | 2026-10-27 | 2026-10-27 | 65, 66 | 154d |  |  |
| 78 | Hall 1 Foundation — Pile Caps |  | 10d | 2026-10-27 | 2026-11-09 | 67 | 154d | Concrete Crew [1280 h] | 61,440 |
| 79 | Hall 2 Foundation — Pile Caps |  | 10d | 2026-10-27 | 2026-11-09 | 67 | 159d | Concrete Crew [1280 h] | 61,440 |
| 12 | 110 kV Grid Connection — Fingrid Application & Design |  | 15d | 2026-10-30 | 2026-11-19 | 11 | 0d |  |  |
| 19 | Detailed Design — Mechanical (All Halls) |  | 25d | 2026-10-30 | 2026-12-03 | 11 | 15d |  |  |
| 80 | Hall 1 Ground Floor Slab |  | 8d | 2026-11-10 | 2026-11-19 | 78 | 154d | Concrete Crew [1280 h] | 61,440 |
| 81 | Hall 2 Ground Floor Slab |  | 8d | 2026-11-10 | 2026-11-19 | 79 | 159d | Concrete Crew [1280 h] | 61,440 |
| 70 | M: Hall 3+4 Piling Complete | milestone | 0d | 2026-11-12 | 2026-11-12 | 68, 69 | 162d |  |  |
| 82 | Hall 3 Foundation — Pile Caps |  | 10d | 2026-11-12 | 2026-11-25 | 70 | 165d | Concrete Crew [1280 h] | 61,440 |
| 83 | Hall 4 Foundation — Pile Caps |  | 10d | 2026-11-12 | 2026-11-25 | 70 | 162d | Concrete Crew [1280 h] | 61,440 |
| 120 | Admin/NOC Building — Curtain Wall Facade |  | 20d | 2026-11-19 | 2026-12-16 | 119 | 235d | Facade Crew [1280 h] | 64,000 |
| 121 | Admin/NOC Building — Roof |  | 10d | 2026-11-19 | 2026-12-02 | 119 | 245d |  |  |
| 14 | M: Building Permit Application Submitted | milestone | 0d | 2026-11-20 | 2026-11-20 | 13 | 44d |  |  |
| 15 | Authority Review & Condition Response |  | 45d | 2026-11-20 | 2027-01-21 | 14 | 287d |  |  |
| 17 | Detailed Design — Architecture (All Halls) |  | 35d | 2026-11-20 | 2027-01-07 | 14 | 44d |  |  |
| 20 | Detailed Design — Electrical (All Halls) |  | 25d | 2026-11-20 | 2026-12-24 | 12 | 0d |  |  |
| 23 | BIM Model Development — Structural LOD350 |  | 15d | 2026-11-20 | 2026-12-10 | 18 | 50d |  |  |
| 73 | Fingrid 110 kV Substation Compound — Civil Works |  | 25d | 2026-11-20 | 2026-12-24 | 62, 12 | 211d | Civil Crew [2400 h] | 100,800 |
| 84 | Hall 3 Ground Floor Slab |  | 8d | 2026-11-26 | 2026-12-07 | 82 | 165d | Concrete Crew [1280 h] | 61,440 |
| 85 | Hall 4 Ground Floor Slab |  | 8d | 2026-11-26 | 2026-12-07 | 83 | 162d | Concrete Crew [1280 h] | 61,440 |
| 122 | M: Admin/NOC Weathertight | milestone | 0d | 2026-12-17 | 2026-12-17 | 120, 121 | 235d |  |  |
| 183 | Admin/NOC — MEP First Fix |  | 20d | 2026-12-17 | 2027-01-13 | 122 | 235d |  |  |
| 21 | Detailed Design — ELV / BMS / Fire (All Halls) |  | 20d | 2026-12-25 | 2027-01-21 | 19, 20 | 0d |  |  |
| 74 | Fingrid 110 kV Equipment Installation (Fingrid Scope) |  | 40d | 2026-12-25 | 2027-02-18 | 73 | 211d |  |  |
| 184 | Admin/NOC — Interior Fit-Out (Partitions/Ceilings/Floor) |  | 25d | 2027-01-14 | 2027-02-17 | 183 | 235d |  |  |
| 16 | M: Building Permit Approved | milestone | 0d | 2027-01-22 | 2027-01-22 | 15 | 287d |  |  |
| 24 | BIM Model Development — MEP LOD350 |  | 20d | 2027-01-22 | 2027-02-18 | 21 | 0d |  |  |
| 185 | Admin/NOC — MEP Second Fix & Finishes |  | 15d | 2027-02-18 | 2027-03-10 | 184 | 235d |  |  |
| 25 | Multi-Discipline Clash Detection & Coordination |  | 12d | 2027-02-19 | 2027-03-08 | 22, 23, 24 | 0d |  |  |
| 75 | M: 110 kV Substation Energisation Ready | milestone | 0d | 2027-02-19 | 2027-02-19 | 74 | 211d |  |  |
| 26 | IFC Package — Architectural (Hall 1+2) |  | 8d | 2027-03-09 | 2027-03-18 | 17, 25 | 2d |  |  |
| 27 | IFC Package — Structural (Hall 1+2) |  | 8d | 2027-03-09 | 2027-03-18 | 25 | 2d |  |  |
| 28 | IFC Package — MEP (Hall 1+2) |  | 10d | 2027-03-09 | 2027-03-22 | 25 | 0d |  |  |
| 29 | M: IFC Packages Issued — Hall 1+2 | milestone | 0d | 2027-03-23 | 2027-03-23 | 26, 27, 28 | 0d |  |  |
| 30 | IFC Package — Hall 3+4 & Admin/NOC |  | 6d | 2027-03-23 | 2027-03-30 | 26, 27, 28 | 24d |  |  |
| 31 | Procurement — 110 kV Transformers (LT-01) Expediting |  | 5d | 2027-03-23 | 2027-03-29 | 29 | 240d |  |  |
| 32 | Procurement — MV Switchgear (LT-02) Tender |  | 5d | 2027-03-23 | 2027-03-29 | 29 | 25d |  |  |
| 34 | Procurement — Emergency Generators (LT-04) Tender |  | 5d | 2027-03-23 | 2027-03-29 | 29 | 7d |  |  |
| 36 | Procurement — LV Switchgear (LT-03) Tender & Award |  | 10d | 2027-03-23 | 2027-04-05 | 29 | 25d |  |  |
| 38 | Procurement — UPS Systems (LT-05) Tender & Award |  | 10d | 2027-03-23 | 2027-04-05 | 29 | 54d |  |  |
| 40 | Procurement — CRAC/CRAH Units (LT-06) Tender & Award |  | 10d | 2027-03-23 | 2027-04-05 | 29 | 65d |  |  |
| 42 | Procurement — Chillers (LT-08) Tender & Award |  | 10d | 2027-03-23 | 2027-04-05 | 29 | 0d |  |  |

| ID | Activity | Type | Duration | Start | Finish | Predecessors | Total float | Resources | Cost |
| --- | --- | --- | --- | --- | --- | --- | --- | --- | --- |
| 44 | Procurement — AHUs (LT-07) Tender & Award |  | 10d | 2027-03-23 | 2027-04-05 | 29 | 25d |  |  |
| 46 | Procurement — Busbar Trunking (LT-09) Tender & Award |  | 8d | 2027-03-23 | 2027-04-01 | 29 | 57d |  |  |
| 48 | Procurement — BMS Controllers (LT-11) Tender & Award |  | 8d | 2027-03-23 | 2027-04-01 | 29 | 104d |  |  |
| 50 | Procurement — Fire Alarm Panel (LT-10) Tender & Award |  | 8d | 2027-03-23 | 2027-04-01 | 29 | 112d |  |  |
| 52 | Procurement — Raised Floor System (LT-12) Tender |  | 8d | 2027-03-23 | 2027-04-01 | 29 | 105d |  |  |
| 54 | Procurement — Steel Frame (Hall 1+2) Tender & Award |  | 12d | 2027-03-23 | 2027-04-07 | 29 | 10d |  |  |
| 56 | Procurement — Composite Cladding (All Halls) Tender |  | 10d | 2027-03-23 | 2027-04-05 | 29 | 65d |  |  |
| 33 | Procurement — MV Switchgear (LT-02) Award & Lead Time |  | 125d | 2027-03-30 | 2027-09-20 | 32 | 25d |  |  |
| 35 | Procurement — Emergency Generators (LT-04) Award & Lead Time |  | 160d | 2027-03-30 | 2027-11-08 | 34 | 7d |  |  |
| 58 | Procurement — Steel Frame (Hall 3+4) Tender & Award |  | 12d | 2027-03-31 | 2027-04-15 | 30 | 24d |  |  |
| 60 | Procurement — Hall 3+4 Equipment Packages |  | 8d | 2027-03-31 | 2027-04-09 | 30 | 231d |  |  |
| 47 | Procurement — Busbar Trunking (LT-09) Lead Time |  | 70d | 2027-04-02 | 2027-07-08 | 46 | 57d |  |  |
| 49 | Procurement — BMS Controllers (LT-11) Lead Time |  | 60d | 2027-04-02 | 2027-06-24 | 48 | 104d |  |  |
| 51 | Procurement — Fire Alarm Panel (LT-10) Lead Time |  | 50d | 2027-04-02 | 2027-06-10 | 50 | 112d |  |  |
| 53 | Procurement — Raised Floor System (LT-12) Lead Time |  | 40d | 2027-04-02 | 2027-05-27 | 52 | 105d |  |  |
| 37 | Procurement — LV Switchgear (LT-03) Lead Time |  | 100d | 2027-04-06 | 2027-08-23 | 36 | 25d |  |  |
| 39 | Procurement — UPS Systems (LT-05) Lead Time |  | 110d | 2027-04-06 | 2027-09-06 | 38 | 54d |  |  |
| 41 | Procurement — CRAC/CRAH Units (LT-06) Lead Time |  | 90d | 2027-04-06 | 2027-08-09 | 40 | 65d |  |  |
| 43 | Procurement — Chillers (LT-08) Lead Time |  | 100d | 2027-04-06 | 2027-08-23 | 42 | 0d |  |  |
| 45 | Procurement — AHUs (LT-07) Lead Time |  | 80d | 2027-04-06 | 2027-07-26 | 44 | 25d |  |  |
| 57 | Procurement — Composite Cladding (All Halls) Lead Time |  | 50d | 2027-04-06 | 2027-06-14 | 56 | 65d |  |  |
| 55 | Procurement — Steel Frame (Hall 1+2) Lead Time |  | 45d | 2027-04-08 | 2027-06-09 | 54 | 10d |  |  |
| 59 | Procurement — Steel Frame (Hall 3+4) Lead Time |  | 45d | 2027-04-16 | 2027-06-17 | 58 | 24d |  |  |
| 86 | Hall 1 Steel Frame — Columns & Primary Trusses |  | 20d | 2027-06-10 | 2027-07-07 | 80, 55 | 10d | Steel Erection Crew [2560 h] | 133,120 |
| 87 | Hall 2 Steel Frame — Columns & Primary Trusses |  | 20d | 2027-06-10 | 2027-07-07 | 81, 55 | 15d | Steel Erection Crew [2560 h] | 133,120 |
| 102 | Hall 3 Steel Frame — Columns & Primary Trusses |  | 20d | 2027-07-01 | 2027-07-28 | 84, 86 SS+15d, 59 | 18d | Steel Erection Crew [2560 h] | 133,120 |
| 103 | Hall 4 Steel Frame — Columns & Primary Trusses |  | 20d | 2027-07-01 | 2027-07-28 | 85, 87 SS+15d, 59 | 15d | Steel Erection Crew [2560 h] | 133,120 |
| 88 | Hall 1 Mezzanine Plant Deck — Steel & Composite Slab |  | 12d | 2027-07-08 | 2027-07-23 | 86 | 61d |  |  |
| 89 | Hall 2 Mezzanine Plant Deck — Steel & Composite Slab |  | 12d | 2027-07-08 | 2027-07-23 | 87 | 53d |  |  |
| 90 | Hall 1 Roof — Composite Metal Deck & Insulation |  | 15d | 2027-07-08 | 2027-07-28 | 86 | 10d | Roofing Crew [720 h] | 32,400 |
| 91 | Hall 2 Roof — Composite Metal Deck & Insulation |  | 15d | 2027-07-08 | 2027-07-28 | 87 | 20d | Roofing Crew [720 h] | 32,400 |
| 96 | Hall 1 Composite Cladding — Walls |  | 25d | 2027-07-08 | 2027-08-11 | 86, 57 | 51d | Envelope Crew [3200 h] | 147,200 |
| 97 | Hall 2 Composite Cladding — Walls |  | 25d | 2027-07-08 | 2027-08-11 | 87, 57 | 48d | Envelope Crew [3200 h] | 147,200 |
| 104 | Hall 3 Mezzanine Plant Deck |  | 12d | 2027-07-29 | 2027-08-13 | 102 | 46d |  |  |
| 105 | Hall 4 Mezzanine Plant Deck |  | 12d | 2027-07-29 | 2027-08-13 | 103 | 43d |  |  |
| 106 | Hall 3 Roof — Composite Deck & Insulation |  | 15d | 2027-07-29 | 2027-08-18 | 102 | 18d | Roofing Crew [720 h] | 32,400 |
| 107 | Hall 4 Roof — Composite Deck & Insulation |  | 15d | 2027-07-29 | 2027-08-18 | 103 | 15d | Roofing Crew [720 h] | 32,400 |
| 112 | Hall 3 Composite Cladding — Walls |  | 25d | 2027-07-29 | 2027-09-01 | 96 SS+15d, 57 | 51d | Envelope Crew [3200 h] | 147,200 |
| 113 | Hall 4 Composite Cladding — Walls |  | 25d | 2027-07-29 | 2027-09-01 | 97 SS+15d, 57 | 48d | Envelope Crew [3200 h] | 147,200 |
| 129 | Hall 1 — MEP Overhead Containment & Cable Trays |  | 15d | 2027-07-29 | 2027-08-18 | 90, 88 | 58d | Electrical Crew [1920 h] | 96,000 |
| 138 | Hall 2 — MEP Overhead Containment & Cable Trays |  | 15d | 2027-07-29 | 2027-08-18 | 91, 89 | 50d | Electrical Crew [1920 h] | 96,000 |
| 92 | Hall 1 Roof Waterproofing |  | 8d | 2027-07-29 | 2027-08-09 | 90 | 10d | Waterproofing Crew [256 h] | 11,264 |
| 93 | Hall 2 Roof Waterproofing |  | 8d | 2027-07-29 | 2027-08-09 | 91 | 20d |  |  |
| 128 | Hall 1 — Raised Access Floor (Data Floor) |  | 12d | 2027-08-03 | 2027-08-18 | 96 SS+18d, 53 | 66d | Fit-Out Crew [576 h] | 25,344 |
| 137 | Hall 2 — Raised Access Floor (Data Floor) |  | 12d | 2027-08-03 | 2027-08-18 | 97 SS+18d, 53 | 58d | Fit-Out Crew [576 h] | 25,344 |
| 123 | Hall 1 — HV/MV Electrical Room First Fix |  | 10d | 2027-08-10 | 2027-08-23 | 94 | 33d |  |  |
| 127 | Hall 1 — Mechanical First Fix — Ventilation Ductwork |  | 15d | 2027-08-10 | 2027-08-30 | 94, 45 | 15d | Mechanical Crew [1920 h] | 96,000 |
| 132 | Hall 2 — HV/MV Electrical Room First Fix |  | 10d | 2027-08-10 | 2027-08-23 | 95 | 25d |  |  |
| 94 | M: Hall 1 Weathertight | milestone | 0d | 2027-08-10 | 2027-08-10 | 92 | 10d |  |  |
| 95 | M: Hall 2 Weathertight | milestone | 0d | 2027-08-10 | 2027-08-10 | 93 | 20d |  |  |
| 98 | Hall 1 Roller Shutter Doors & Access Hatches |  | 5d | 2027-08-12 | 2027-08-18 | 96 | 138d |  |  |
| 99 | Hall 2 Roller Shutter Doors & Access Hatches |  | 5d | 2027-08-12 | 2027-08-18 | 97 | 138d |  |  |
| 100 | M: Hall 1 Envelope Complete | milestone | 0d | 2027-08-19 | 2027-08-19 | 98 | 138d |  |  |
| 101 | M: Hall 2 Envelope Complete | milestone | 0d | 2027-08-19 | 2027-08-19 | 99 | 138d |  |  |
| 108 | Hall 3 Roof Waterproofing |  | 8d | 2027-08-19 | 2027-08-30 | 106 | 18d |  |  |
| 109 | Hall 4 Roof Waterproofing |  | 8d | 2027-08-19 | 2027-08-30 | 107 | 15d |  |  |
| 147 | Hall 3 — MEP Overhead Containment & Cable Trays |  | 15d | 2027-08-19 | 2027-09-08 | 106, 104 | 43d | Electrical Crew [1920 h] | 96,000 |
| 156 | Hall 4 — MEP Overhead Containment & Cable Trays |  | 15d | 2027-08-19 | 2027-09-08 | 107, 105 | 40d | Electrical Crew [1920 h] | 96,000 |
| 222 | Tenant Fit-Out Access — Hall 1 (Month 12) | milestone | 0d | 2027-08-19 | 2027-08-19 | 100 | 138d |  |  |
| 223 | Tenant Fit-Out Access — Hall 2 (Month 14) | milestone | 0d | 2027-08-19 | 2027-08-19 | 101 | 138d |  |  |
| 125 | Hall 1 — LV Switchgear & Busbar Installation |  | 15d | 2027-08-24 | 2027-09-13 | 123, 37, 47 | 33d |  |  |
| 126 | Hall 1 — Mechanical First Fix — Chilled Water Pipework |  | 20d | 2027-08-24 | 2027-09-20 | 94, 43 | 0d | Mechanical Crew [1920 h] | 96,000 |
| 134 | Hall 2 — LV Switchgear & Busbar Installation |  | 15d | 2027-08-24 | 2027-09-13 | 132, 37, 47 | 25d |  |  |
| 136 | Hall 2 — Mechanical First Fix — Ventilation Ductwork |  | 15d | 2027-08-24 | 2027-09-13 | 95, 127 SS+10d, 45 | 15d | Mechanical Crew [1920 h] | 96,000 |
| 146 | Hall 3 — Raised Access Floor (Data Floor) |  | 12d | 2027-08-24 | 2027-09-08 | 112 SS+18d, 53 | 51d | Fit-Out Crew [576 h] | 25,344 |
| 155 | Hall 4 — Raised Access Floor (Data Floor) |  | 12d | 2027-08-24 | 2027-09-08 | 113 SS+18d, 53 | 48d | Fit-Out Crew [576 h] | 25,344 |
| 110 | M: Hall 3 Weathertight | milestone | 0d | 2027-08-31 | 2027-08-31 | 108 | 18d |  |  |
| 111 | M: Hall 4 Weathertight | milestone | 0d | 2027-08-31 | 2027-08-31 | 109 | 15d |  |  |
| 141 | Hall 3 — HV/MV Electrical Room First Fix |  | 10d | 2027-08-31 | 2027-09-13 | 110 | 18d |  |  |
| 150 | Hall 4 — HV/MV Electrical Room First Fix |  | 10d | 2027-08-31 | 2027-09-13 | 111 | 15d |  |  |

| ID | Activity | Type | Duration | Start | Finish | Predecessors | Total float | Resources | Cost |
| --- | --- | --- | --- | --- | --- | --- | --- | --- | --- |
| 114 | Hall 3 Roller Shutter Doors |  | 5d | 2027-09-02 | 2027-09-08 | 112 | 123d |  |  |
| 115 | Hall 4 Roller Shutter Doors |  | 5d | 2027-09-02 | 2027-09-08 | 113 | 123d |  |  |
| 135 | Hall 2 — Mechanical First Fix — Chilled Water Pipework |  | 20d | 2027-09-07 | 2027-10-04 | 95, 126 SS+10d, 43 | 0d | Mechanical Crew [1920 h] | 96,000 |
| 116 | M: Hall 3 Envelope Complete | milestone | 0d | 2027-09-09 | 2027-09-09 | 114 | 123d |  |  |
| 117 | M: Hall 4 Envelope Complete | milestone | 0d | 2027-09-09 | 2027-09-09 | 115 | 123d |  |  |
| 224 | Tenant Fit-Out Access — Hall 3 (Month 17) | milestone | 0d | 2027-09-09 | 2027-09-09 | 116 | 123d |  |  |
| 225 | Tenant Fit-Out Access — Hall 4 (Month 20) | milestone | 0d | 2027-09-09 | 2027-09-09 | 117 | 123d |  |  |
| 130 | Hall 1 — Electrical First Fix — Cable Pulling |  | 15d | 2027-09-14 | 2027-10-04 | 129 SS+8d, 125 | 33d | Electrical Crew [1440 h] | 72,000 |
| 139 | Hall 2 — Electrical First Fix — Cable Pulling |  | 15d | 2027-09-14 | 2027-10-04 | 138 SS+8d, 134 | 25d | Electrical Crew [1440 h] | 72,000 |
| 143 | Hall 3 — LV Switchgear & Busbar Installation |  | 15d | 2027-09-14 | 2027-10-04 | 141, 37, 47 | 18d |  |  |
| 145 | Hall 3 — Mechanical First Fix — Ventilation Ductwork |  | 15d | 2027-09-14 | 2027-10-04 | 110, 136 SS+15d, 45 | 15d | Mechanical Crew [1920 h] | 96,000 |
| 152 | Hall 4 — LV Switchgear & Busbar Installation |  | 15d | 2027-09-14 | 2027-10-04 | 150, 37, 47 | 15d |  |  |
| 124 | Hall 1 — MV Switchgear Installation |  | 10d | 2027-09-21 | 2027-10-04 | 123, 33 | 33d |  |  |
| 133 | Hall 2 — MV Switchgear Installation |  | 10d | 2027-09-21 | 2027-10-04 | 132, 33 | 25d |  |  |
| 142 | Hall 3 — MV Switchgear Installation |  | 10d | 2027-09-21 | 2027-10-04 | 141, 33 | 33d |  |  |
| 151 | Hall 4 — MV Switchgear Installation |  | 10d | 2027-09-21 | 2027-10-04 | 150, 33 | 30d |  |  |
| 144 | Hall 3 — Mechanical First Fix — Chilled Water Pipework |  | 20d | 2027-09-28 | 2027-10-25 | 110, 135 SS+15d, 43 | 0d | Mechanical Crew [1920 h] | 96,000 |
| 131 | M: Hall 1 MEP First Fix Complete | milestone | 0d | 2027-10-05 | 2027-10-05 | 124, 126, 127, 128, 130 | 33d |  |  |
| 140 | M: Hall 2 MEP First Fix Complete | milestone | 0d | 2027-10-05 | 2027-10-05 | 133, 135, 136, 137, 139 | 25d |  |  |
| 148 | Hall 3 — Electrical First Fix — Cable Pulling |  | 15d | 2027-10-05 | 2027-10-25 | 147 SS+8d, 143 | 18d | Electrical Crew [1440 h] | 72,000 |
| 154 | Hall 4 — Mechanical First Fix — Ventilation Ductwork |  | 15d | 2027-10-05 | 2027-10-25 | 111, 145 SS+15d, 45 | 15d | Mechanical Crew [1920 h] | 96,000 |
| 157 | Hall 4 — Electrical First Fix — Cable Pulling |  | 15d | 2027-10-05 | 2027-10-25 | 156 SS+8d, 152 | 15d | Electrical Crew [1440 h] | 72,000 |
| 161 | Hall 1 — UPS System Installation |  | 8d | 2027-10-05 | 2027-10-14 | 131, 39 | 37d |  |  |
| 162 | Hall 1 — BMS & EPMS Panel Installation |  | 10d | 2027-10-05 | 2027-10-18 | 131, 49 | 35d |  |  |
| 163 | Hall 1 — Fire Alarm & Suppression System Installation |  | 12d | 2027-10-05 | 2027-10-20 | 131, 51 | 33d |  |  |
| 165 | Hall 2 — CRAC/CRAH Unit Installation |  | 12d | 2027-10-05 | 2027-10-20 | 140, 41 | 25d | Mechanical Crew [576 h] | 28,800 |
| 167 | Hall 2 — UPS System Installation |  | 8d | 2027-10-05 | 2027-10-14 | 140, 39 | 37d |  |  |
| 168 | Hall 2 — BMS & EPMS Panel Installation |  | 10d | 2027-10-05 | 2027-10-18 | 140, 49 | 35d |  |  |
| 169 | Hall 2 — Fire Alarm & Suppression System |  | 12d | 2027-10-05 | 2027-10-20 | 140, 51 | 33d |  |  |
| 159 | Hall 1 — CRAC/CRAH Unit Installation |  | 12d | 2027-10-15 | 2027-11-01 | 131, 165 SS+8d, 41 | 25d | Mechanical Crew [576 h] | 28,800 |
| 153 | Hall 4 — Mechanical First Fix — Chilled Water Pipework |  | 20d | 2027-10-19 | 2027-11-15 | 111, 144 SS+15d, 43 | 0d | Mechanical Crew [1920 h] | 96,000 |
| 186 | Admin/NOC — BMS Integration |  | 8d | 2027-10-19 | 2027-10-28 | 185, 162, 168 | 77d |  |  |
| 149 | M: Hall 3 MEP First Fix Complete | milestone | 0d | 2027-10-26 | 2027-10-26 | 142, 144, 145, 146, 148 | 18d |  |  |
| 171 | Hall 3 — CRAC/CRAH Unit Installation |  | 12d | 2027-10-26 | 2027-11-10 | 149, 165 SS+8d, 41 | 18d | Mechanical Crew [576 h] | 28,800 |
| 173 | Hall 3 — UPS System Installation |  | 8d | 2027-10-26 | 2027-11-04 | 149, 39 | 22d |  |  |
| 174 | Hall 3 — BMS & EPMS Panel Installation |  | 10d | 2027-10-26 | 2027-11-08 | 149, 49 | 20d |  |  |
| 175 | Hall 3 — Fire Alarm & Suppression System |  | 12d | 2027-10-26 | 2027-11-10 | 149, 51 | 18d |  |  |
| 187 | M: Admin/NOC Complete | milestone | 0d | 2027-10-29 | 2027-10-29 | 186 | 77d |  |  |
| 215 | Admin/NOC — Commissioning & Snagging |  | 10d | 2027-10-29 | 2027-11-11 | 187 | 77d |  |  |
| 160 | Hall 1 — Generator Installation & Fuel System |  | 10d | 2027-11-09 | 2027-11-22 | 131, 35 | 10d |  |  |
| 166 | Hall 2 — Generator Installation & Fuel System |  | 10d | 2027-11-09 | 2027-11-22 | 140, 35 | 10d |  |  |
| 172 | Hall 3 — Generator Installation & Fuel System |  | 10d | 2027-11-09 | 2027-11-22 | 149, 35 | 10d |  |  |
| 158 | M: Hall 4 MEP First Fix Complete | milestone | 0d | 2027-11-16 | 2027-11-16 | 151, 153, 154, 155, 157 | 0d |  |  |
| 177 | Hall 4 — CRAC/CRAH Unit Installation |  | 12d | 2027-11-16 | 2027-12-01 | 158, 41 | 0d | Mechanical Crew [576 h] | 28,800 |
| 178 | Hall 4 — Generator Installation & Fuel System |  | 10d | 2027-11-16 | 2027-11-29 | 158, 35 | 2d |  |  |
| 179 | Hall 4 — UPS System Installation |  | 8d | 2027-11-16 | 2027-11-25 | 158, 39 | 4d |  |  |
| 180 | Hall 4 — BMS & EPMS Panel Installation |  | 10d | 2027-11-16 | 2027-11-29 | 158, 49 | 2d |  |  |
| 181 | Hall 4 — Fire Alarm & Suppression System |  | 12d | 2027-11-16 | 2027-12-01 | 158, 51 | 0d |  |  |
| 164 | M: Hall 1 MEP Second Fix Complete | milestone | 0d | 2027-11-23 | 2027-11-23 | 159, 160, 161, 162, 163 | 10d |  |  |
| 170 | M: Hall 2 MEP Second Fix Complete | milestone | 0d | 2027-11-23 | 2027-11-23 | 165, 166, 167, 168, 169 | 10d |  |  |
| 176 | M: Hall 3 MEP Second Fix Complete | milestone | 0d | 2027-11-23 | 2027-11-23 | 171, 172, 173, 174, 175 | 10d |  |  |
| 188 | Hall 1 — Pre-Commissioning |  | 5d | 2027-11-23 | 2027-11-29 | 164 | 10d |  |  |
| 195 | Hall 2 — Pre-Commissioning |  | 5d | 2027-11-23 | 2027-11-29 | 170 | 10d |  |  |
| 202 | Hall 3 — Pre-Commissioning |  | 5d | 2027-11-23 | 2027-11-29 | 176 | 10d |  |  |
| 189 | Hall 1 — HVAC Commissioning (Cooling + Ventilation) |  | 12d | 2027-11-30 | 2027-12-15 | 188 | 10d | Commissioning Engineer [384 h] | 23,808 |
| 190 | Hall 1 — Electrical Commissioning (MV/LV/UPS) |  | 10d | 2027-11-30 | 2027-12-13 | 188, 75 | 12d |  |  |
| 196 | Hall 2 — HVAC Commissioning |  | 12d | 2027-11-30 | 2027-12-15 | 195 | 10d | Commissioning Engineer [384 h] | 23,808 |
| 197 | Hall 2 — Electrical Commissioning |  | 10d | 2027-11-30 | 2027-12-13 | 195, 75 | 12d |  |  |
| 203 | Hall 3 — HVAC Commissioning |  | 12d | 2027-11-30 | 2027-12-15 | 202 | 10d |  |  |
| 204 | Hall 3 — Electrical Commissioning |  | 10d | 2027-11-30 | 2027-12-13 | 202, 75 | 12d |  |  |
| 182 | M: Hall 4 MEP Second Fix Complete | milestone | 0d | 2027-12-02 | 2027-12-02 | 177, 178, 179, 180, 181 | 0d |  |  |
| 209 | Hall 4 — Pre-Commissioning |  | 5d | 2027-12-02 | 2027-12-08 | 182 | 0d |  |  |
| 210 | Hall 4 — HVAC Commissioning |  | 12d | 2027-12-09 | 2027-12-24 | 209 | 0d |  |  |
| 211 | Hall 4 — Electrical Commissioning |  | 10d | 2027-12-09 | 2027-12-22 | 209, 75 | 2d |  |  |
| 191 | Hall 1 — Generator Load Bank Testing |  | 5d | 2027-12-16 | 2027-12-22 | 189, 190 | 10d |  |  |
| 198 | Hall 2 — Generator Load Bank Testing |  | 5d | 2027-12-16 | 2027-12-22 | 196, 197 | 10d |  |  |
| 205 | Hall 3 — Generator Load Bank Testing |  | 5d | 2027-12-16 | 2027-12-22 | 203, 204 | 10d |  |  |
| 192 | Hall 1 — IST — Integrated Systems Test |  | 10d | 2027-12-23 | 2028-01-05 | 191 | 10d |  |  |
| 199 | Hall 2 — IST — Integrated Systems Test |  | 10d | 2027-12-23 | 2028-01-05 | 198 | 10d |  |  |
| 206 | Hall 3 — IST — Integrated Systems Test |  | 10d | 2027-12-23 | 2028-01-05 | 205 | 10d |  |  |

| ID | Activity | Type | Duration | Start | Finish | Predecessors | Total float |
| --- | --- | --- | --- | --- | --- | --- | --- |
| 212 | Hall 4 — Generator Load Bank Testing |  | 5d | 2027-12-27 | 2027-12-31 | 210, 211 | 0d |
| 216 | External Works — Hall 1 Perimeter & Services |  | 12d | 2027-12-28 | 2028-01-12 | 194 FS-15d | 10d |
| 217 | External Works — Hall 2 Perimeter & Services |  | 12d | 2027-12-28 | 2028-01-12 | 201 FS-15d | 10d |
| 218 | External Works — Hall 3 Perimeter & Services |  | 12d | 2027-12-28 | 2028-01-12 | 208 FS-15d | 10d |
| 213 | Hall 4 — IST — Integrated Systems Test |  | 10d | 2028-01-03 | 2028-01-14 | 212 | 0d |
| 193 | Hall 1 — Snagging & Punch List |  | 8d | 2028-01-06 | 2028-01-17 | 192 | 10d |
| 200 | Hall 2 — Snagging & Punch List |  | 8d | 2028-01-06 | 2028-01-17 | 199 | 10d |
| 207 | Hall 3 — Snagging & Punch List |  | 8d | 2028-01-06 | 2028-01-17 | 206 | 10d |
| 214 | Hall 4 — Snagging & Punch List |  | 8d | 2028-01-17 | 2028-01-26 | 213 | 0d |
| 194 | M: Section 1 Handover — Hall 1 + Shared Infrastructure | milestone | 0d | 2028-01-18 | 2028-01-18 | 193 | 10d |
| 201 | M: Section 2 Handover — Hall 2 | milestone | 0d | 2028-01-18 | 2028-01-18 | 200 | 10d |
| 208 | M: Section 3 Handover — Hall 3 | milestone | 0d | 2028-01-18 | 2028-01-18 | 207 | 10d |
| 219 | External Works — Hall 4 & Site Completion |  | 15d | 2028-01-27 | 2028-02-16 | 214, 216, 217, 218 | 0d |
| 220 | M: Section 4 Handover — Hall 4 + Admin/NOC | milestone | 0d | 2028-01-27 | 2028-01-27 | 214, 215 | 23d |
| 221 | M: External Works Complete | milestone | 0d | 2028-02-17 | 2028-02-17 | 219 | 0d |
| 226 | Site Demobilisation & Final Clean |  | 8d | 2028-02-17 | 2028-02-28 | 221 | 0d |
| 227 | M: Project Handover — Completed | milestone | 0d | 2028-02-29 | 2028-02-29 | 220, 226, 222, 223, 224, 225, 8, 72, 76, 77, 16, 31, 60 | 0d |
